# DUKHAN HOUSING PROJECT PHASE IX 6th update

Schedule from Primavera P6, 2012-11-01 to 2015-04-28, data date 2013-04-27, costs in U.K., A marks actual dates.
Must finish by 2015-03-31

## Calendars

- DH01-CONSTRUCTION: Mon-Thu 08:00-12:00, 13:00-17:00; Fri off; Sat-Sun 08:00-12:00, 13:00-17:00. Exceptions (off unless hours are given): 2013-08-10 to 2013-08-11, 2013-10-19, 2014-08-02 to 2014-08-03, 2014-10-11.
- DH01-PROCUREMENT: Mon-Sun 08:00-12:00, 13:00-17:00.

## Resources

| Resource | Group | Unit |
| --- | --- | --- |
| LABOR- SUBCONTRACTOR | labor |  |
| AC TECHNICIAN SK | labor |  |
| ELECTRICIANS SK | labor |  |
| DRAFTMAN SK | labor |  |
| MECHANICALS SK | labor |  |
| QUANTITY SURVEYOUR | labor |  |
| SAFETY OFFICER | labor |  |
| CARPENTERS SK | labor |  |
| BLOCK MASON SK | labor |  |
| PLASTER MASON SK | labor |  |
| STEEL FIXERS SK | labor |  |
| LABOR - CIVIL | labor |  |
| POCLAIN | equipment |  |
| TRUCK | equipment |  |
| EQUIP OPERATORS | labor |  |
| MATERIAL ENGG | labor |  |
| EXTERNAL PLASTER QTY | material | Sqm |
| TILE MASON SK | labor |  |
| STONE CLADDING QTY | material | Sqm |
| GRC SK | labor |  |
| PAINT QTY | material | Sqm |
| PAINTERS SK | labor |  |
| SCREED MASON SK | labor |  |
| ROOF WP SCREED QTY | material | Sqm |
| ROOF WP MEMBRANE QTY | material | Sqm |
| WATERPROOFING SPECIALIST SK | labor |  |
| ROOF WP INSULATION QTY | material | Sqm |
| LIME STONE QTY | material | Sqm |
| PRECAST PAVING SLAB QTY | material | Sqm |
| PRE CAST CONCRETE SK | labor |  |
| CABINET QTY | material | ea |
| JOINERY WORK SK | labor |  |
| ALUMINIUM SCREEN QTY | material | Sqm |
| DOOR ERECTOR SK | labor |  |
| LADDER QTY | material | ea |
| LADDER ERECTOR SK | labor |  |
| COUNTER QTY | material | ea |
| COUNTER SK | labor |  |
| GRANITE MASON SK | labor |  |
| GRANITE COUNTER TOP QTY | material | ea |
| S.S.BALUSTRADE QTY | material | lm |
| HANDRAIL ERECTOR SKILLED | labor |  |
| ALUMINIUM DOOR QTY | material | ea |
| BLOCK QTY | material | Sqm |
| PLASTER QTY | material | Sqm |
| FLOORING SCREED QTY | material | Sqm |
| WETAREA WATERPROOFING QTY | material | Sqm |
| FIRSTCOAT PAINT QTY | material | Sqm |
| CERAMIC WALL TILE QTY | material | Sqm |
| PORCELAIN FLOORING QTY | material | Sqm |
| COBBLE STONE QTY | material | Sqm |
| SLATE TILE QTY | material | Sqm |
| GRANITE QTY | material | Sqm |
| SUSPENSION QTY | material | Sqm |
| FALSE CEILING SKILLED SK | labor |  |
| FALSE CEILING QTY | material | Sqm |
| WOODEN DOOR QTY | material | ea |
| ALUMINIUM WINDOWS QTY | material | ea |
| WINDOW ERECTOR SK | labor |  |
| EPOXY QTY | material | Sqm |
| EPOXY SK | labor |  |
| WARDROBE QTY | material | ea |
| SHELVES QTY | material | ea |
| SOCKET BOXES QTY | material | ea |
| CODUITS QTY | material | lm |
| CABLE TRAY QTY | material | lm |
| CABLE QTY | material | lm |
| MCCB QTY | material | ea |
| DB QTY | material | ea |
| LIGHTS QTY | material | ea |
| SMOKE DETECTOR POINTS QTY | material | ea |
| FIRE EXTINGUISHER QTY | material | ea |
| TELEPHONE SOCKETS QTY | material | ea |
| ISOLATOR QTY | material | ea |
| CONTROL BOX QTY | material | ea |
| SWITCHING BOX QTY | material | ea |
| AC PIPES QTY | material | lm |
| AC UNITS QTY | material | ea |
| VENTILIATION EQP QTY | material | ea |
| SPLIT UNIT QTY | material | ea |
| PLUMB PIPES QTY | material | lm |
| DRAINAGE PIPES QTY | material | lm |
| SANITARY ACC QTY | material | ea |
| WATER HEATER QTY | material | ea |
| WATER TANK QTY | material | ea |
| EXCAVATION QTY | material | Cum |
| LOADER | equipment |  |
| ANTITERMITE QTY | material | sqft |
| ANTITERMITE SK | labor |  |
| BLINDING MASON SK | labor |  |
| BLINDING QTY | material | Sqm |
| SCREED QTY | material | Sqm |
| WATERPROOFING QTY | material | Sqm |
| CONCRETE MASON SK | labor |  |
| REINFORCEMENT BARS QTY | material | kg |
| FORMWORK QTY | material | Sqm |
| CONCRETE QTY | material | Cum |
| BACKFILLING QTY | material | Cum |
| BOBCAT | equipment |  |
| PLATE COMPACTOR | equipment |  |
| WELDED WIRE MESH | material | Sqm |
| SWEET SOIL QTY | material | Cum |
| GRASS QTY | material | Sqm |
| LANDSCAPING SK | labor |  |
| PLAM TREES QTY | material | ea |
| ROLLING SHUTTER QTY | material | ea |
| INTERLOCK MASON SK | labor |  |
| INTERLOCK QTY | material | Sqm |
| GREASE TRAP QTY | material | lm |
| MANHOLES SK | labor |  |
| MANHOLES QTY | material | ea |
| SOAKPIT QTY | material | ea |
| GATE QTY | material | ea |
| GATE ERECTOR SK | labor |  |
| STEEL ERECTOR SK | labor |  |
| STRUCTURAL STEEL QTY | material | kg |
| SS SHED COVER QTY | material | Sqm |
| CHILLER QTY | material | ea |
| PUMP QTY | material | ea |
| KERBSTONE MASON SK | labor |  |
| KERBSTONE QTY | material | lm |
| SURVEYOR SK | labor |  |
| BREAKER | equipment |  |
| EXPANSION JOINT QTY | material | Sqm |
| EXPANSION JOINT SKILLED SK | labor |  |
| PARKING SHED QTY | material | ea |
| WATER PIPES QTY | material | lm |
| DRAINAGE PIPES TEST QTY | material | lm |
| CHAMPER QTY | material | lm |
| SOAKWAY QTY | material | ea |
| ROAD GULLY QTY | material | ea |
| DUCT BANK QTY | material | lm |
| COLUMN BASE QTY | material | ea |
| LIGHTPOST COLUMN QTY | material | ea |
| IRRIGATION PIPES QTY | material | lm |
| THRUST BLOCKS QTY | material | ea |
| PULL BOX QTY | material | ea |
| PULL BOX SK | labor |  |
| GROUND COVER QTY | material | Sqm |
| SHRUBS QTY | material | ea |
| STONE BOULDERS QTY | material | Sqm |
| SPEED HUMPS | material | ea |
| SUBGRADE QTY | material | Sqm |
| GRANULAR SUBBASE QTY | material | Sqm |
| EDGE STONE QTY | material | Sqm |
| HEAVY ROLLER | equipment |  |
| ASPHALT CONCRETE QTY | material | Cum |
| ASPHALT PAVER MACHINE | equipment |  |
| HAND ROLLER | equipment |  |
| ASPHALT WEARING COURSE QTY | material | Sqm |
| TRAFFIC SIGN QTY | material | ea |
| ROAD MARKING QTY | material | lm |
| ASPHALT SK | labor |  |
| BOUNDARY WIRE MESH QTY | material | Sqm |
| HANDRAIL QTY | material | lm |
| WOODEN WORKS QTY | material | ea |
| DOOR WORK SK | labor |  |
| SPILIT UNIT QTY | material | ea |
| RAINWATER PIPES QTY | material | lm |
| ROOF TILES QTY | material | Sqm |

## Schedule

| ID | WBS | Activity | Type | Duration | Start | Finish | Predecessors | Complete | Remaining | Planned start | Planned finish | Total float | Free float | Constraint | Expected finish | Calendar | Cost | P3 ACTID | P6 ID (old) | NP61D | PROJECT | PHASES | PACKAGE | PART | RES PACK | BILL NOS | BILL DIVISION |
| --- | --- | --- | --- | --- | --- | --- | --- | --- | --- | --- | --- | --- | --- | --- | --- | --- | --- | --- | --- | --- | --- | --- | --- | --- | --- | --- | --- |
|  | K10 | **KEY DATES & MILESTONES** |  |  | 2012-11-01 | 2015-04-28 |  |  |  |  |  |  |  |  |  |  |  |  |  |  |  |  |  |  |  |  |  |
|  | L10 | **GENERAL** |  |  | 2012-11-01 | 2015-04-28 |  |  |  |  |  |  |  |  |  |  |  |  |  |  |  |  |  |  |  |  |  |
| DUKHKYDGEN0000001000 |  | Project Commencement | milestone | 0d | 2012-11-01 A | 2012-11-01 A |  | 100% |  |  |  |  |  |  |  | DH01-PROCUREMENT |  | SADASD12 | DUKHMILGN0000000100 | DUKHKYDGEN0000001000 | DH | KYD | OA |  |  |  |  |
| DUKHKYDGEN0000002000 |  | Project Completion Date | milestone | 0d | 2015-04-28 | 2015-04-28 | DUKHKYDP030000003000 FF, DUKHKYDP010000001000 FF, DUKHKYDP020000002000 FF |  |  |  |  | -24d | 0d |  |  |  |  |  |  |  |  |  |  |  |  |  |  |
|  | L15 | **PACKAGE-1** |  |  | 2015-04-28 | 2015-04-28 |  |  |  |  |  |  |  |  |  |  |  |  |  |  |  |  |  |  |  |  |  |
| DUKHKYDP010000001000 |  | Package -1 (Milestone -1) -29 Months | milestone | 0d | 2015-04-28 | 2015-04-28 | DUKHMOBGEN0000003025 FF, DUKHHANP1BGNDM009020 FF, DUKHHANP1AGNDM009020 FF |  |  |  |  | -24d | 0d |  |  |  |  | SADASD20 | DUKHMIL1A0000001000 | DUKHKYDP010000001000 | DH | KYD | OA |  |  |  |  |
|  | L30 | **PACKAGE-2** |  |  | 2014-12-23 | 2014-12-23 |  |  |  |  |  |  |  |  |  |  |  |  |  |  |  |  |  |  |  |  |  |
| DUKHKYDP020000002000 |  | Package -2 (Milestone-2) -23 Months | milestone | 0d | 2014-12-23 | 2014-12-23 | DUKHHANP2BGNDM009020 FF, DUKHHANP2AGNDM009020 FF |  |  |  |  | -69d | 107d | finish on or before 2014-09-30 |  |  |  | SADASD30 | DUKHMIL2A0000002000 | DUKHKYDP020000002000 | DH | KYD | OA |  |  |  |  |
|  | L45 | **PACKAGE-3** |  |  | 2015-01-01 | 2015-01-01 |  |  |  |  |  |  |  |  |  |  |  |  |  |  |  |  |  |  |  |  |  |
| DUKHKYDP030000003000 |  | Package -3 (Milestone -3) -25 Months | milestone | 0d | 2015-01-01 | 2015-01-01 | DUKHHANP03GNDM009020 |  |  |  |  | -27d | 99d | finish on or before 2014-11-30 |  |  |  | SADASD40 | DUKHMIL3P0000003000 | DUKHKYDP030000003000 | DH | KYD | OA |  |  |  |  |
|  | K15 | **MOBILIZATION** |  |  | 2012-11-01 | 2015-03-31 |  |  |  |  |  |  |  |  |  |  |  |  |  |  |  |  |  |  |  |  |  |
|  | L05 | **PROVISIONAL SUM** |  |  | 2012-11-26 | 2014-12-10 |  |  |  |  |  |  |  |  |  |  |  |  |  |  |  |  |  |  |  |  |  |
|  | 05 | **PACKAGE 1A - VILLA** |  |  | 2012-11-26 | 2014-12-10 |  |  |  |  |  |  |  |  |  |  |  |  |  |  |  |  |  |  |  |  |  |
| DUKHMOBP1APS00002000 |  | Receiving of Site Instruction | milestone | 0d | 2012-11-26 A | 2012-11-26 A | DUKHKYDGEN0000001000 SS+25d | 100% |  |  |  |  |  |  |  |  |  | PRSM1AV100 | DUKHPRS1A00VI002000 | DUKHMOBP1APS00002000 | DH | MOB | 1A | PM | RES-1A |  |  |
| DUKHMOBP1APS00002005 |  | Finalization of Subcontractor |  | 21d | 2012-11-26 A | 2012-12-20 A | DUKHMOBP1APS00002000 | 100% |  |  |  |  |  |  |  |  |  | PRSM1AV105 | DUKHPRS1A00VI002005 | DUKHMOBP1APS00002005 | DH | MOB | 1A | PM | RES-1A |  |  |
| DUKHMOBP1APS00002010 |  | Submission of Cost Proposal |  | 7d | 2012-12-20 A | 2012-12-29 A | DUKHMOBP1APS00002005 | 100% |  | 2012-12-20 | 2012-12-27 |  |  |  |  |  |  | PRSM1AV110 | DUKHPRS1A00VI002010 | DUKHMOBP1APS00002010 | DH | MOB | 1A | PM | RES-1A |  |  |
| DUKHMOBP1APS00002015 |  | Approval of Cost Proposal |  | 30d | 2012-12-29 A | 2013-02-01 A | DUKHMOBP1APS00002010 | 100% |  | 2012-12-29 | 2013-01-31 |  |  |  |  |  |  | PRSM1AV115 | DUKHPRS1A00VI002015 | DUKHMOBP1APS00002015 | DH | MOB | 1A | PM | RES-1A |  |  |
| DUKHMOBP1APS00002020 |  | Receiving of Variation Order | milestone | 0d | 2013-02-02 A | 2013-02-02 A | DUKHMOBP1APS00002015 | 100% |  |  |  |  |  |  |  |  |  | PRSM1AV120 | DUKHPRS1A00VI002020 | DUKHMOBP1APS00002020 | DH | MOB | 1A | PM | RES-1A |  |  |
| DUKHMOBP1APS00002025 |  | Engineering & Procurement |  | 190d | 2013-02-02 A | 2013-09-15 | DUKHMOBP1APS00002020 | 37% | 119d |  |  | 91d | 0d |  | 2013-09-15 |  |  | PRSM1AV125 | DUKHPRS1A00VI002025 | DUKHMOBP1APS00002025 | DH | MOB | 1A | PM | RES-1A |  |  |
| DUKHMOBP1APS00002030 |  | Commencement of Construction Work |  | 290d | 2013-12-31 | 2014-12-10 | DUKHMOBP1APS00002025, DUKHCONP1AZ1MSEX5000 SS |  |  |  |  | 3d | 27d |  |  |  | 3,700,000 | PRSM1AV130 | DUKHPRS1A00VI002030 | DUKHMOBP1APS00002030 | DH | MOB | 1A | PM | RES-1A | B02 | B02-D13 |
|  | 10 | **PACKAGE 1A - INFRASTRUCTURE** |  |  | 2012-11-26 | 2014-11-13 |  |  |  |  |  |  |  |  |  |  |  |  |  |  |  |  |  |  |  |  |  |
| DUKHMOBI1APS00002035 |  | Receiving of Site Instruction | milestone | 0d | 2012-11-26 A | 2012-11-26 A | DUKHMOBP1APS00002000 SS | 100% |  |  |  |  |  |  |  |  |  | PRSM1AF100 | DUKHPRS1A00FR002035 | DUKHMOBI1APS00002035 | DH | MOB | 1AF | PM | RES-1A |  |  |
| DUKHMOBI1APS00002040 |  | Finalization of Subcontractor |  | 21d | 2012-11-26 A | 2012-12-19 A | DUKHMOBI1APS00002035 | 100% |  | 2012-11-26 | 2012-12-20 |  |  |  |  |  |  | PRSM1AF105 | DUKHPRS1A00FR002040 | DUKHMOBI1APS00002040 | DH | MOB | 1AF | PM | RES-1A |  |  |
| DUKHMOBI1APS00001000 |  | Submission of New Site Design Layout |  | 14d | 2012-12-01 A | 2012-12-16 A | DUKHCONP1AGNSP001000 SS | 100% |  |  |  |  |  |  |  |  |  | 1ASP010000 | DUKHCON1AGNCI001000 | DUKHCONP1AGNSP001000 | DH | MOB | 1AF | PM | RES-1A | B03 | B03-D02 |
| DUKHMOBI1APS00002043 |  | Submission & Approval of General Site Layout |  | 21d | 2012-12-04 A | 2012-12-29 A | DUKHMOBI1APS00002040 SS+7d | 100% |  |  |  |  |  |  |  |  |  | PRSM1AF107 | DUKHPRS1A00FR002043 | DUKHMOBI1APS00002043 | DH | MOB | 1AF | PM |  |  |  |
| DUKHMOBI1APS00001200 |  | Approval of New Site Design Layout |  | 21d | 2012-12-17 A | 2013-01-10 A | DUKHMOBI1APS00001000 | 100% |  |  |  |  |  |  |  |  |  | 1ASP010000 | DUKHCON1AGNCI001000 | DUKHCONP1AGNSP001000 | DH | MOB | 1AF | PM | RES-1A | B03 | B03-D02 |
| DUKHMOBI1APS00002045 |  | Submission of Cost Proposal |  | 7d | 2012-12-30 A | 2013-01-06 A | DUKHMOBI1APS00002043 | 100% |  |  |  |  |  |  |  |  |  | PRSM1AF110 | DUKHPRS1A00FR002045 | DUKHMOBI1APS00002045 | DH | MOB | 1AF | PM | RES-1A |  |  |
| DUKHMOBI1APS00001225 |  | Submission of Finished Floor Level |  | 7d | 2013-01-12 A | 2013-01-19 A | DUKHMOBI1APS00001200 | 100% |  |  |  |  |  |  |  |  |  | 1ASP010000 | DUKHCON1AGNCI001000 | DUKHCONP1AGNSP001000 | DH | MOB | 1AF | PM | RES-1A | B03 | B03-D02 |
| DUKHMOBI1APS00001300 |  | Submission of New Site Design MEP Services Layout |  | 14d | 2013-01-12 A | 2013-01-27 A | DUKHMOBI1APS00001200 | 100% |  |  |  |  |  |  |  |  |  | 1ASP010000 | DUKHCON1AGNCI001000 | DUKHCONP1AGNSP001000 | DH | MOB | 1AF | PM | RES-1A | B03 | B03-D02 |
| DUKHMOBI1APS00001250 |  | Approval of Finished Floor Level |  | 21d | 2013-01-20 A | 2013-02-13 A | DUKHMOBI1APS00001225 | 100% |  |  |  |  |  |  |  |  |  | 1ASP010000 | DUKHCON1AGNCI001000 | DUKHCONP1AGNSP001000 | DH | MOB | 1AF | PM | RES-1A | B03 | B03-D02 |
| DUKHMOBI1APS00001400 |  | Approval of New Site Design MEP Services Layout |  | 16.38d | 2013-01-28 A | 2013-02-21 A | DUKHMOBI1APS00001300 | 100% |  | 2013-01-28 | 2013-02-17 |  |  |  |  |  |  | 1ASP010000 | DUKHCON1AGNCI001000 | DUKHCONP1AGNSP001000 | DH | MOB | 1AF | PM | RES-1A | B03 | B03-D02 |
| DUKHMOBI1APS00002050 |  | Approval of Cost Proposal |  | 45d | 2013-02-02 A | 2013-03-26 A | DUKHMOBI1APS00002045 | 100% |  |  |  |  |  |  |  |  |  | PRSM1AF115 | DUKHPRS1A00FR002050 | DUKHMOBI1APS00002050 | DH | MOB | 1AF | PM | RES-1A |  |  |
| DUKHMOBI1APS00002055 |  | Receiving of Variation Order | milestone | 0d | 2013-03-26 A | 2013-03-26 A | DUKHMOBI1APS00002050 | 100% |  |  |  |  |  |  |  |  |  | PRSM1AF120 | DUKHPRS1A00FR002055 | DUKHMOBI1APS00002055 | DH | MOB | 1AF | PM | RES-1A |  |  |
| DUKHMOBI1APS00002060 |  | Engineering & Procurement |  | 180d | 2013-03-27 A | 2013-10-28 | DUKHMOBI1APS00002055 | 14% | 154d |  |  | 26d | 0d |  | 2013-10-28 |  |  | PRSM1AF125 | DUKHPRS1A00FR002060 | DUKHMOBI1APS00002060 | DH | MOB | 1AF | PM | RES-1A |  |  |
| DUKHMOBI1APS00002065 |  | Commencement of Construction Work |  | 320d | 2013-10-29 | 2014-11-13 | DUKHCONI1AZ1DRGL5115 SS, DUKHMOBI1APS00002060 |  |  |  |  | 26d | 50d |  |  |  | 8,400,000 | PRSM1AF130 | DUKHPRS1A00FR002065 | DUKHMOBI1APS00002065 | DH | MOB | 1AF | PM | RES-1A | B03 | B03-D01 |

Notes:
- DUKHMOBP1APS00002030: Expenses: P1A-Provisional sums 3700000
- DUKHMOBI1APS00002065: Expenses: I1A-Provisional sums 8400000

| ID | WBS | Activity | Type | Duration | Start | Finish | Predecessors | Complete | Remaining | Planned start | Planned finish | Total float | Free float | Expected finish | Cost | P3 ACTID | P6 ID (old) | NP61D | PROJECT | PHASES | PACKAGE | PART | RES PACK | BILL NOS | BILL DIVISION |
| --- | --- | --- | --- | --- | --- | --- | --- | --- | --- | --- | --- | --- | --- | --- | --- | --- | --- | --- | --- | --- | --- | --- | --- | --- | --- |
|  | 15 | **PACKAGE 1B - VILLA** |  |  | 2012-11-26 | 2014-12-02 |  |  |  |  |  |  |  |  |  |  |  |  |  |  |  |  |  |  |  |
| DUKHMOBP1BPS00002070 |  | Receiving of Site Instruction | milestone | 0d | 2012-11-26 A | 2012-11-26 A | DUKHKYDGEN0000001000 SS+25d | 100% |  |  |  |  |  |  |  | PRSM1BV100 | DUKHPRS1B00VI002070 | DUKHMOBP1BPS00002070 | DH | MOB | 1B | PM | RES-1B |  |  |
| DUKHMOBP1BPS00002075 |  | Finalization of Subcontractor |  | 21d | 2012-11-26 A | 2012-12-19 A | DUKHMOBP1BPS00002070 | 100% |  | 2012-11-26 | 2012-12-20 |  |  |  |  | PRSM1BV105 | DUKHPRS1B00VI002075 | DUKHMOBP1BPS00002075 | DH | MOB | 1B | PM | RES-1B |  |  |
| DUKHMOBP1BPS00002080 |  | Submission of Cost Proposal |  | 7d | 2012-12-20 A | 2012-12-29 A | DUKHMOBP1BPS00002075 | 100% |  | 2012-12-20 | 2012-12-27 |  |  |  |  | PRSM1BV110 | DUKHPRS1B00VI002080 | DUKHMOBP1BPS00002080 | DH | MOB | 1B | PM | RES-1B |  |  |
| DUKHMOBP1BPS00002085 |  | Approval of Cost Proposal |  | 31d | 2012-12-29 A | 2013-02-01 A | DUKHMOBP1BPS00002080 | 100% |  | 2012-12-29 | 2013-02-02 |  |  |  |  | PRSM1BV115 | DUKHPRS1B00VI002085 | DUKHMOBP1BPS00002085 | DH | MOB | 1B | PM | RES-1B |  |  |
| DUKHMOBP1BPS00002090 |  | Receiving of Variation Order | milestone | 0d | 2013-02-02 A | 2013-02-02 A | DUKHMOBP1BPS00002085 | 100% |  |  |  |  |  |  |  | PRSM1BV120 | DUKHPRS1B00VI002090 | DUKHMOBP1BPS00002090 | DH | MOB | 1B | PM | RES-1B |  |  |
| DUKHMOBP1BPS00002095 |  | Engineering & Procurement |  | 187d | 2013-03-02 A | 2013-10-08 | DUKHMOBP1BPS00002090 | 26% | 139d |  |  | 81d | 0d | 2013-10-08 |  | PRSM1BV125 | DUKHPRS1B00VI002095 | DUKHMOBP1BPS00002095 | DH | MOB | 1B | PM | RES-1B |  |  |
| DUKHMOBP1BPS00002100 |  | Commencement of Construction Work |  | 280d | 2014-01-04 | 2014-12-02 | DUKHCONP1BZ1MSEX5000 SS, DUKHMOBP1BPS00002095 |  |  |  |  | 10d | 18d |  | 2,600,000 | PRSM1BV130 | DUKHPRS1B00VI002100 | DUKHMOBP1BPS00002100 | DH | MOB | 1B | PM | RES-1B | B04 | B04-D13 |
|  | 20 | **PACKAGE 1B -INFRASTRUCTURE** |  |  | 2012-12-01 | 2014-11-06 |  |  |  |  |  |  |  |  |  |  |  |  |  |  |  |  |  |  |  |
| DUKHMOBI1BPS00001000 |  | Submission of New Site Design Layout |  | 14d | 2012-12-01 A | 2012-12-16 A | DUKHCONP1BGNSP001000 SS | 100% |  |  |  |  |  |  |  | 1BSP010000 | DUKHCON1BGNCI001000 | DUKHCONP1BGNSP001000 | DH | MOB | 1BF | PM | RES-1B | B05 | B05-D02 |
| DUKHMOBI1BPS00002105 |  | Receiving of Site Instruction | milestone | 0d | 2012-12-01 A | 2012-12-01 A | DUKHMOBP1BPS00002070 SS | 100% |  |  |  |  |  |  |  | PRSM1BF100 | DUKHPRS1B00FR002105 | DUKHMOBI1BPS00002105 | DH | MOB | 1BF | PM | RES-1B |  |  |
| DUKHMOBI1BPS00002110 |  | Finalization of Subcontractor |  | 16d | 2012-12-01 A | 2012-12-19 A | DUKHMOBI1BPS00002105 | 100% |  |  |  |  |  |  |  | PRSM1BF105 | DUKHPRS1B00FR002110 | DUKHMOBI1BPS00002110 | DH | MOB | 1BF | PM | RES-1B |  |  |
| DUKHMOBI1BPS00002113 |  | Submission & Approval of General Site Layout |  | 21d | 2012-12-09 A | 2012-12-28 A | DUKHMOBI1BPS00002110 SS+7d | 100% |  | 2012-12-09 | 2013-01-02 |  |  |  |  | PRSM1BF107 | DUKHPRS1B00FR002113 | DUKHMOBI1BPS00002113 | DH | MOB | 1BF | PM |  |  |  |
| DUKHMOBI1BPS00001200 |  | Approval of New Site Design Layout |  | 21d | 2012-12-17 A | 2012-12-29 A | DUKHMOBI1BPS00001000 | 100% |  | 2012-12-17 | 2013-01-10 |  |  |  |  | 1BSP010000 | DUKHCON1BGNCI001000 | DUKHCONP1BGNSP001000 | DH | MOB | 1BF | PM | RES-1B | B05 | B05-D02 |
| DUKHMOBI1BPS00001225 |  | Submission of Finished Floor Level |  | 7d | 2012-12-29 A | 2013-01-05 A | DUKHMOBI1BPS00001200 | 100% |  |  |  |  |  |  |  | 1BSP010000 | DUKHCON1BGNCI001000 | DUKHCONP1BGNSP001000 | DH | MOB | 1BF | PM | RES-1B | B05 | B05-D02 |
| DUKHMOBI1BPS00001300 |  | Submission of New Site Design MEP Services Layout |  | 14d | 2012-12-29 A | 2013-01-13 A | DUKHMOBI1BPS00001200 | 100% |  |  |  |  |  |  |  | 1BSP010000 | DUKHCON1BGNCI001000 | DUKHCONP1BGNSP001000 | DH | MOB | 1BF | PM | RES-1B | B05 | B05-D02 |
| DUKHMOBI1BPS00002115 |  | Submission of Cost Proposal |  | 7d | 2012-12-29 A | 2013-01-05 A | DUKHMOBI1BPS00002113 | 100% |  |  |  |  |  |  |  | PRSM1BF110 | DUKHPRS1B00FR002115 | DUKHMOBI1BPS00002115 | DH | MOB | 1BF | PM | RES-1B |  |  |
| DUKHMOBI1BPS00001250 |  | Approval of Finished Floor Level |  | 21d | 2013-01-06 A | 2013-01-29 A | DUKHMOBI1BPS00001225 | 100% |  |  |  |  |  |  |  | 1BSP010000 | DUKHCON1BGNCI001000 | DUKHCONP1BGNSP001000 | DH | MOB | 1BF | PM | RES-1B | B05 | B05-D02 |
| DUKHMOBI1BPS00002120 |  | Approval of Cost Proposal |  | 30d | 2013-01-06 A | 2013-02-09 A | DUKHMOBI1BPS00002115 | 100% |  |  |  |  |  |  |  | PRSM1BF115 | DUKHPRS1B00FR002120 | DUKHMOBI1BPS00002120 | DH | MOB | 1BF | PM | RES-1B |  |  |
| DUKHMOBI1BPS00001400 |  | Approval of New Site Design MEP Services Layout |  | 21d | 2013-01-14 A | 2013-02-06 A | DUKHMOBI1BPS00001300 | 100% |  |  |  |  |  |  |  | 1BSP010000 | DUKHCON1BGNCI001000 | DUKHCONP1BGNSP001000 | DH | MOB | 1BF | PM | RES-1B | B05 | B05-D02 |
| DUKHMOBI1BPS00002125 |  | Receiving of Variation Order | milestone | 0d | 2013-02-09 A | 2013-02-09 A | DUKHMOBI1BPS00002120 | 100% |  |  |  |  |  |  |  | PRSM1BF120 | DUKHPRS1B00FR002125 | DUKHMOBI1BPS00002125 | DH | MOB | 1BF | PM | RES-1B |  |  |
| DUKHMOBI1BPS00002130 |  | Engineering & Procurement |  | 204d | 2013-03-02 A | 2013-10-30 | DUKHMOBI1BPS00002125 | 24% | 156d |  |  | 64d | 0d | 2013-10-30 |  | PRSM1BF125 | DUKHPRS1B00FR002130 | DUKHMOBI1BPS00002130 | DH | MOB | 1BF | PM | RES-1B |  |  |
| DUKHMOBI1BPS00002135 |  | Commencement of Construction Work |  | 280d | 2013-12-08 | 2014-11-06 | DUKHMOBI1BPS00002130, DUKHCONI1BZ1DRGL5115 SS |  |  |  |  | 32d | 40d |  | 6,450,000 | PRSM1BF130 | DUKHPRS1B00FR002135 | DUKHMOBI1BPS00002135 | DH | MOB | 1BF | PM | RES-1B | B05 | B05-D01 |
|  | 25 | **PACKAGE 2A - VILLA** |  |  | 2012-12-01 | 2014-07-05 |  |  |  |  |  |  |  |  |  |  |  |  |  |  |  |  |  |  |  |
| DUKHMOBP2APS00002140 |  | Receiving of Site Instruction | milestone | 0d | 2012-12-01 A | 2012-12-01 A | DUKHKYDGEN0000001000 SS+25d | 100% |  |  |  |  |  |  |  | PRSM2AV100 | DUKHPRS2A00VI002140 | DUKHMOBP2APS00002140 | DH | MOB | 2A | PM | RSE-2A |  |  |
| DUKHMOBP2APS00002145 |  | Finalization of Subcontractor |  | 16d | 2012-12-01 A | 2012-12-19 A | DUKHMOBP2APS00002140 | 100% |  |  |  |  |  |  |  | PRSM2AV105 | DUKHPRS2A00VI002145 | DUKHMOBP2APS00002145 | DH | MOB | 2A | PM | RSE-2A |  |  |
| DUKHMOBP2APS00002150 |  | Submission of Cost Proposal |  | 7d | 2012-12-20 A | 2012-12-27 A | DUKHMOBP2APS00002145 | 100% |  |  |  |  |  |  |  | PRSM2AV110 | DUKHPRS2A00VI002150 | DUKHMOBP2APS00002150 | DH | MOB | 2A | PM | RSE-2A |  |  |
| DUKHMOBP2APS00002155 |  | Approval of Cost Proposal |  | 30d | 2012-12-29 A | 2013-01-31 A | DUKHMOBP2APS00002150 | 100% |  |  |  |  |  |  |  | PRSM2AV115 | DUKHPRS2A00VI002155 | DUKHMOBP2APS00002155 | DH | MOB | 2A | PM | RSE-2A |  |  |
| DUKHMOBP2APS00002160 |  | Receiving of Variation Order | milestone | 0d | 2013-01-31 A | 2013-01-31 A | DUKHMOBP2APS00002155 | 100% |  |  |  |  |  |  |  | PRSM2AV120 | DUKHPRS2A00VI002160 | DUKHMOBP2APS00002160 | DH | MOB | 2A | PM | RSE-2A |  |  |
| DUKHMOBP2APS00002165 |  | Engineering & Procurement |  | 121d | 2013-03-02 A | 2013-07-20 | DUKHMOBP2APS00002160 | 40% | 73d |  |  | 95d | 0d | 2013-07-20 |  | PRSM2AV125 | DUKHPRS2A00VI002165 | DUKHMOBP2APS00002165 | DH | MOB | 2A | PM | RSE-2A |  |  |
| DUKHMOBP2APS00002170 |  | Commencement of Construction Work |  | 180d | 2013-12-05 | 2014-07-05 | DUKHCONP2AZ1MSEX5020 SS, DUKHMOBP2APS00002165 |  |  |  |  | -18d | 11d |  | 600,000 | PRSM2AV130 | DUKHPRS2A00VI002170 | DUKHMOBP2APS00002170 | DH | MOB | 2A | PM | RSE-2A | B06 | B06-D13 |

Notes:
- DUKHMOBP1BPS00002100: Expenses: P1B-Provisional sums 2600000
- DUKHMOBI1BPS00002135: Expenses: I1B-Provisional sums 6450000
- DUKHMOBP2APS00002170: Expenses: P2A-Provisional sums 600000

| ID | WBS | Activity | Type | Duration | Start | Finish | Predecessors | Complete | Remaining | Planned start | Planned finish | Total float | Free float | Expected finish | Cost | P3 ACTID | P6 ID (old) | NP61D | PROJECT | PHASES | PACKAGE | PART | RES PACK | BILL NOS | BILL DIVISION |
| --- | --- | --- | --- | --- | --- | --- | --- | --- | --- | --- | --- | --- | --- | --- | --- | --- | --- | --- | --- | --- | --- | --- | --- | --- | --- |
|  | 30 | **PACKAGE 2A- INFRASTRUCTURE** |  |  | 2012-12-01 | 2014-07-16 |  |  |  |  |  |  |  |  |  |  |  |  |  |  |  |  |  |  |  |
| DUKHMOBI2APS00002175 |  | Receiving of Site Instruction | milestone | 0d | 2012-12-01 A | 2012-12-01 A | DUKHMOBP2APS00002140 SS | 100% |  |  |  |  |  |  |  | PRSM2AF100 | DUKHPRS2A00FR002175 | DUKHMOBI2APS00002175 | DH | MOB | 2AF | PM | RSE-2A |  |  |
| DUKHMOBI2APS00002180 |  | Finalization of Subcontractor |  | 16d | 2012-12-01 A | 2012-12-19 A | DUKHMOBI2APS00002175 | 100% |  |  |  |  |  |  |  | PRSM2AF105 | DUKHPRS2A00FR002180 | DUKHMOBI2APS00002180 | DH | MOB | 2AF | PM | RSE-2A |  |  |
| DUKHMOBI2APS00002185 |  | Submission of Cost Proposal |  | 7d | 2012-12-20 A | 2012-12-27 A | DUKHMOBI2APS00002180 | 100% |  |  |  |  |  |  |  | PRSM2AF110 | DUKHPRS2A00FR002185 | DUKHMOBI2APS00002185 | DH | MOB | 2AF | PM | RSE-2A |  |  |
| DUKHMOBI2APS00002190 |  | Approval of Cost Proposal |  | 60d | 2012-12-29 A | 2013-03-09 A | DUKHMOBI2APS00002185 | 100% |  |  |  |  |  |  |  | PRSM2AF115 | DUKHPRS2A00FR002190 | DUKHMOBI2APS00002190 | DH | MOB | 2AF | PM | RSE-2A |  |  |
| DUKHMOBI2APS00002195 |  | Receiving of Variation Order | milestone | 0d | 2013-03-09 A | 2013-03-09 A | DUKHMOBI2APS00002190 | 100% |  |  |  |  |  |  |  | PRSM2AF120 | DUKHPRS2A00FR002195 | DUKHMOBI2APS00002195 | DH | MOB | 2AF | PM | RSE-2A |  |  |
| DUKHMOBI2APS00002200 |  | Engineering & Procurement |  | 120d | 2013-03-10 A | 2013-09-28 | DUKHMOBI2APS00002195 |  | 130d | 2013-03-10 | 2013-07-27 | 8d | 0d | 2013-09-28 |  | PRSM2AF125 | DUKHPRS2A00FR002200 | DUKHMOBI2APS00002200 | DH | MOB | 2AF | PM | RSE-2A |  |  |
| DUKHMOBI2APS00002205 |  | Commencement of Construction Work |  | 210d | 2013-11-12 | 2014-07-16 | DUKHMOBI2APS00002200, DUKHCONI2AZ1DRGL5115 SS |  |  |  |  | -28d | 1d |  | 320,000 | PRSM2AF130 | DUKHPRS2A00FR002205 | DUKHMOBI2APS00002205 | DH | MOB | 2AF | PM | RSE-2A | B07 | B07-D01 |
|  | 35 | **PACKAGE 2B - VILLA** |  |  | 2012-12-01 | 2014-07-17 |  |  |  |  |  |  |  |  |  |  |  |  |  |  |  |  |  |  |  |
| DUKHMOBP2BPS00002210 |  | Receiving of Site Instruction | milestone | 0d | 2012-12-01 A | 2012-12-01 A | DUKHKYDGEN0000001000 SS+25d | 100% |  |  |  |  |  |  |  | PRSM2BV100 | DUKHPRS2B00VI002210 | DUKHMOBP2BPS00002210 | DH | MOB | 2B | PM | RES-2B |  |  |
| DUKHMOBP2BPS00002215 |  | Finalization of Subcontractor |  | 16d | 2012-12-01 A | 2012-12-19 A | DUKHMOBP2BPS00002210 | 100% |  |  |  |  |  |  |  | PRSM2BV105 | DUKHPRS2B00VI002215 | DUKHMOBP2BPS00002215 | DH | MOB | 2B | PM | RES-2B |  |  |
| DUKHMOBP2BPS00002220 |  | Submission of Cost Proposal |  | 7d | 2012-12-20 A | 2012-12-27 A | DUKHMOBP2BPS00002215 | 100% |  |  |  |  |  |  |  | PRSM2BV110 | DUKHPRS2B00VI002220 | DUKHMOBP2BPS00002220 | DH | MOB | 2B | PM | RES-2B |  |  |
| DUKHMOBP2BPS00002225 |  | Approval of Cost Proposal |  | 30d | 2012-12-29 A | 2013-02-01 A | DUKHMOBP2BPS00002220 | 100% |  | 2012-12-29 | 2013-01-31 |  |  |  |  | PRSM2BV115 | DUKHPRS2B00VI002225 | DUKHMOBP2BPS00002225 | DH | MOB | 2B | PM | RES-2B |  |  |
| DUKHMOBP2BPS00002230 |  | Receiving of Variation Order | milestone | 0d | 2013-02-02 A | 2013-02-02 A | DUKHMOBP2BPS00002225 | 100% |  |  |  |  |  |  |  | PRSM2BV120 | DUKHPRS2B00VI002230 | DUKHMOBP2BPS00002230 | DH | MOB | 2B | PM | RES-2B |  |  |
| DUKHMOBP2BPS00002235 |  | Engineering & Procurement |  | 150d | 2013-02-02 A | 2013-07-27 | DUKHMOBP2BPS00002230 | 47% | 79d |  |  | 89d | 0d | 2013-07-27 |  | PRSM2BV125 | DUKHPRS2B00VI002235 | DUKHMOBP2BPS00002235 | DH | MOB | 2B | PM | RES-2B |  |  |
| DUKHMOBP2BPS00002240 |  | Commencement of Construction Work |  | 180d | 2013-12-19 | 2014-07-17 | DUKHMOBP2BPS00002235, DUKHCONP2BZ3MSEX5000 SS |  |  |  |  | -29d | 40d |  | 900,000 | PRSM2BV130 | DUKHPRS2B00VI002240 | DUKHMOBP2BPS00002240 | DH | MOB | 2B | PM | RES-2B | B08 | B08-D13 |
|  | 40 | **PACKAGE 2B - INFRASTRUCTURE** |  |  | 2012-12-01 | 2014-09-06 |  |  |  |  |  |  |  |  |  |  |  |  |  |  |  |  |  |  |  |
| DUKHMOBI2BPS00002245 |  | Receiving of Site Instruction | milestone | 0d | 2012-12-01 A | 2012-12-01 A | DUKHMOBP2BPS00002210 SS | 100% |  |  |  |  |  |  |  | PRSM2BF100 | DUKHPRS2B00FR002245 | DUKHMOBI2BPS00002245 | DH | MOB | 2BF | PM | RES-2B |  |  |
| DUKHMOBI2BPS00002250 |  | Finalization of Subcontractor |  | 16d | 2012-12-01 A | 2012-12-19 A | DUKHMOBI2BPS00002245 | 100% |  |  |  |  |  |  |  | PRSM2BF105 | DUKHPRS2B00FR002250 | DUKHMOBI2BPS00002250 | DH | MOB | 2BF | PM | RES-2B |  |  |
| DUKHMOBI2BPS00002255 |  | Submission of Cost Proposal |  | 7d | 2012-12-20 A | 2012-12-27 A | DUKHMOBI2BPS00002250 | 100% |  |  |  |  |  |  |  | PRSM2BF110 | DUKHPRS2B00FR002255 | DUKHMOBI2BPS00002255 | DH | MOB | 2BF | PM | RES-2B |  |  |
| DUKHMOBI2BPS00002260 |  | Approval of Cost Proposal |  | 45d | 2012-12-29 A | 2013-02-19 A | DUKHMOBI2BPS00002255 | 100% |  |  |  |  |  |  |  | PRSM2BF115 | DUKHPRS2B00FR002260 | DUKHMOBI2BPS00002260 | DH | MOB | 2BF | PM | RES-2B |  |  |
| DUKHMOBI2BPS00002265 |  | Receiving of Variation Order | milestone | 0d | 2013-02-19 A | 2013-02-19 A | DUKHMOBI2BPS00002260 | 100% |  |  |  |  |  |  |  | PRSM2BF120 | DUKHPRS2B00FR002265 | DUKHMOBI2BPS00002265 | DH | MOB | 2BF | PM | RES-2B |  |  |
| DUKHMOBI2BPS00002270 |  | Engineering & Procurement |  | 235d | 2013-03-02 A | 2013-12-05 | DUKHMOBI2BPS00002265 | 20% | 187d |  |  | -69d | 0d | 2013-12-05 |  | PRSM2BF125 | DUKHPRS2B00FR002270 | DUKHMOBI2BPS00002270 | DH | MOB | 2BF | PM | RES-2B |  |  |
| DUKHMOBI2BPS00002275 |  | Commencement of Construction Work |  | 230d | 2013-12-07 | 2014-09-06 | DUKHMOBI2BPS00002270, DUKHCONI2BZ1DRGL5115 SS |  |  |  |  | -69d | 0d |  | 36,000 | PRSM2BF130 | DUKHPRS2B00FR002275 | DUKHMOBI2BPS00002275 | DH | MOB | 2BF | PM | RES-2B | B09 | B09-D01 |

Notes:
- DUKHMOBI2APS00002205: Expenses: I2A-Provisional sums 320000
- DUKHMOBP2BPS00002240: Expenses: P2B-Provisional sums 900000
- DUKHMOBI2BPS00002275: Expenses: I2B-Provisional sums 36000

| ID | WBS | Activity | Type | Duration | Start | Finish | Predecessors | Complete | Remaining | Planned start | Planned finish | Total float | Free float | Expected finish | Calendar | Resources | Cost | P3 ACTID | P6 ID (old) | NP61D | PROJECT | PHASES | PACKAGE | PART | RES PACK | BILL NOS | BILL DIVISION |
| --- | --- | --- | --- | --- | --- | --- | --- | --- | --- | --- | --- | --- | --- | --- | --- | --- | --- | --- | --- | --- | --- | --- | --- | --- | --- | --- | --- |
|  | 45 | **PACKAGE 3 - APARTMENT** |  |  | 2012-11-26 | 2014-05-14 |  |  |  |  |  |  |  |  |  |  |  |  |  |  |  |  |  |  |  |  |  |
| DUKHMOBP03PS00002280 |  | Receiving of Site Instruction | milestone | 0d | 2012-11-26 A | 2012-11-26 A | DUKHKYDGEN0000001000 SS+25d | 100% |  |  |  |  |  |  |  |  |  | PRSMP3A100 | DUKHPRS3P00VI002280 | DUKHMOBP03PS00002280 | DH | MOB | P3 | PM | RES-3 |  |  |
| DUKHMOBP03PS00002285 |  | Finalization of Subcontractor |  | 21d | 2012-11-26 A | 2012-12-19 A | DUKHMOBP03PS00002280 | 100% |  | 2012-11-26 | 2012-12-20 |  |  |  |  |  |  | PRSMP3A105 | DUKHPRS3P00VI002285 | DUKHMOBP03PS00002285 | DH | MOB | P3 | PM | RES-3 |  |  |
| DUKHMOBP03PS00002290 |  | Submission of Cost Proposal |  | 7d | 2012-12-20 A | 2012-12-27 A | DUKHMOBP03PS00002285 | 100% |  |  |  |  |  |  |  |  |  | PRSMP3A110 | DUKHPRS3P00VI002290 | DUKHMOBP03PS00002290 | DH | MOB | P3 | PM | RES-3 |  |  |
| DUKHMOBP03PS00002295 |  | Approval of Cost Proposal |  | 30d | 2012-12-29 A | 2013-02-01 A | DUKHMOBP03PS00002290 | 100% |  | 2012-12-29 | 2013-01-31 |  |  |  |  |  |  | PRSMP3A115 | DUKHPRS3P00VI002295 | DUKHMOBP03PS00002295 | DH | MOB | P3 | PM | RES-3 |  |  |
| DUKHMOBP03PS00002300 |  | Receiving of Variation Order | milestone | 0d | 2013-02-02 A | 2013-02-02 A | DUKHMOBP03PS00002295 | 100% |  |  |  |  |  |  |  |  |  | PRSMP3A120 | DUKHPRS3P00VI002300 | DUKHMOBP03PS00002300 | DH | MOB | P3 | PM | RES-3 |  |  |
| DUKHMOBP03PS00002305 |  | Engineering & Procurement |  | 150d | 2013-02-02 A | 2013-07-27 | DUKHMOBP03PS00002300 | 47% | 79d |  |  | 99d | 0d | 2013-07-27 |  |  |  | PRSMP3A125 | DUKHPRS3P00VI002305 | DUKHMOBP03PS00002305 | DH | MOB | P3 | PM | RES-3 |  |  |
| DUKHMOBP03PS00002310 |  | Commencement of Construction Work |  | 120d | 2013-12-25 | 2014-05-14 | DUKHMOBP03PS00002305, DUKHCONP03Z1MSEX5000 SS |  |  |  |  | -24d | 3d |  |  |  | 1,125,000 | PRSMP3A130 | DUKHPRS3P00VI002310 | DUKHMOBP03PS00002310 | DH | MOB | P3 | PM | RES-3 | B10 | B10-D13 |
|  | 50 | **PACKAGE 3 - INFRASTRUCTURE** |  |  | 2012-11-26 | 2014-05-12 |  |  |  |  |  |  |  |  |  |  |  |  |  |  |  |  |  |  |  |  |  |
| DUKHMOBI03PS00002315 |  | Receiving of Site Instruction | milestone | 0d | 2012-11-26 A | 2012-11-26 A | DUKHMOBP03PS00002280 SS | 100% |  |  |  |  |  |  |  |  |  | PRSMP3F100 | DUKHPRS3P00FR002315 | DUKHMOBI03PS00002315 | DH | MOB | 3IF | PM | RES-3 |  |  |
| DUKHMOBI03PS00002320 |  | Finalization of Subcontractor |  | 30d | 2012-11-26 A | 2012-12-30 A | DUKHMOBI03PS00002315 | 100% |  | 2012-11-26 | 2012-12-31 |  |  |  |  |  |  | PRSMP3F105 | DUKHPRS3P00FR002320 | DUKHMOBI03PS00002320 | DH | MOB | 3IF | PM | RES-3 |  |  |
| DUKHMOBI03PS00002325 |  | Submission of Cost Proposal |  | 7d | 2012-12-31 A | 2013-01-03 A | DUKHMOBI03PS00002320 | 100% |  | 2012-12-31 | 2013-01-07 |  |  |  |  |  |  | PRSMP3F110 | DUKHPRS3P00FR002325 | DUKHMOBI03PS00002325 | DH | MOB | 3IF | PM | RES-3 |  |  |
| DUKHMOBI03PS00002330 |  | Approval of Cost Proposal |  | 30d | 2013-01-05 A | 2013-02-07 A | DUKHMOBI03PS00002325 | 100% |  |  |  |  |  |  |  |  |  | PRSMP3F115 | DUKHPRS3P00FR002330 | DUKHMOBI03PS00002330 | DH | MOB | 3IF | PM | RES-3 |  |  |
| DUKHMOBI03PS00002335 |  | Receiving of Variation Order | milestone | 0d | 2013-02-07 A | 2013-02-07 A | DUKHMOBI03PS00002330 | 100% |  |  |  |  |  |  |  |  |  | PRSMP3F120 | DUKHPRS3P00FR002335 | DUKHMOBI03PS00002335 | DH | MOB | 3IF | PM | RES-3 |  |  |
| DUKHMOBI03PS00002340 |  | Engineering & Procurement |  | 120d | 2013-02-09 A | 2013-06-29 | DUKHMOBI03PS00002335 | 54% | 55d |  |  | 43d | 0d | 2013-06-29 |  |  |  | PRSMP3F125 | DUKHPRS3P00FR002340 | DUKHMOBI03PS00002340 | DH | MOB | 3IF | PM | RES-3 |  |  |
| DUKHMOBI03PS00002345 |  | Commencement of Construction Work |  | 200d | 2013-09-17 | 2014-05-12 | DUKHCONI03Z1DRGL5115 SS, DUKHMOBI03PS00002340 |  |  |  |  | -22d | 5d |  |  |  | 4,715,000 | PRSMP3F130 | DUKHPRS3P00FR002345 | DUKHMOBI03PS00002345 | DH | MOB | 3IF | PM | RES-3 | B11 | B11-D01 |
|  | L10 | **GENERAL** |  |  | 2012-11-01 | 2015-03-31 |  |  |  |  |  |  |  |  |  |  |  |  |  |  |  |  |  |  |  |  |  |
| DUKHMOBGEN0000003000 |  | Performance Bond (Clause 10) |  | 30d | 2012-11-01 A | 2012-12-05 A | DUKHKYDGEN0000001000 SS | 100% |  |  |  |  |  |  |  | QUANTITY SURVEYOUR [240 h] | 3,500,000 | GEN1000125 | DUKHMOBGN0000003000 | DUKHMOBGEN0000003000 | DH | MOB | OA |  |  | B01 | B01-D01 |
| DUKHMOBGEN0000003005 |  | Setting Out (Clause 17) |  | 30d | 2012-11-01 A | 2012-12-05 A | DUKHKYDGEN0000001000 SS | 100% |  |  |  |  |  |  |  |  | 1,000,000 | GEN1000130 | DUKHMOBGN0000003005 | DUKHMOBGEN0000003005 | DH | MOB | OA |  |  | B01 | B01-D01 |
| DUKHMOBGEN0000003010 |  | Insurance of works (Clause 21-23) |  | 30d | 2012-11-01 A | 2012-12-05 A | DUKHKYDGEN0000001000 SS | 100% |  |  |  |  |  |  |  |  | 1,500,000 | GEN1000135 | DUKHMOBGN0000003010 | DUKHMOBGEN0000003010 | DH | MOB | OA |  |  | B01 | B01-D01 |
| DUKHMOBGEN0000003015 |  | Commencement of works (Clause 41) |  | 30d | 2012-11-01 A | 2012-12-05 A | DUKHKYDGEN0000001000 SS | 100% |  |  |  |  |  |  |  |  | 5,000,000 | GEN1000140 | DUKHMOBGN0000003015 | DUKHMOBGEN0000003015 | DH | MOB | OA |  |  | B01 | B01-D01 |
| DUKHMOBGEN0000003020 |  | Construction of plant,Temporary works & material |  | 30d | 2012-11-01 A | 2012-12-05 A | DUKHKYDGEN0000001000 SS | 100% |  |  |  |  |  |  |  |  | 1,800,000 | GEN1000145 | DUKHMOBGN0000003020 | DUKHMOBGEN0000003020 | DH | MOB | OA |  |  | B01 | B01-D01 |
| DUKHMOBGEN0000003025 |  | Construction Running Cost |  | 881d | 2012-11-01 A | 2015-03-31 | DUKHKYDGEN0000001000 SS | 20% | 704d |  |  | 0d |  | 2015-03-31 | DH01-PROCUREMENT |  | 14,150,000 | GEN1000150 | DUKHMOBGN0000003025 | DUKHMOBGEN0000003025 | DH | MOB | OA |  |  | B01 | B01-D01 |
| DUKHMOBGEN0000003030 |  | Sub & App -Key Personnel CVs |  | 60d | 2012-11-06 A | 2013-01-15 A | DUKHKYDGEN0000001000 SS+5d | 100% |  |  |  |  |  |  |  | QUANTITY SURVEYOUR [200 h] |  | GEN1000100 | DUKHMOBGN0000003030 | DUKHMOBGEN0000003030 | DH | MOB | OA |  |  |  |  |
| DUKHMOBGEN0000003035 |  | Sub & App -HSE plan |  | 60d | 2012-11-12 A | 2013-01-21 A | DUKHMOBGEN0000003030 SS+5d | 100% |  |  |  |  |  |  |  | SAFETY OFFICER [200 h] |  | GEN1000110 | DUKHMOBGN0000003035 | DUKHMOBGEN0000003035 | DH | MOB | OA |  |  |  |  |
| DUKHMOBGEN0000003040 |  | Sub & App -Quality plan |  | 60d | 2012-11-18 A | 2013-01-27 A | DUKHMOBGEN0000003035 SS+5d | 100% |  |  |  |  |  |  |  | QUANTITY SURVEYOUR [200 h] |  | GEN1000120 | DUKHMOBGN0000003040 | DUKHMOBGEN0000003040 | DH | MOB | OA |  |  |  |  |

Notes:
- DUKHMOBP03PS00002310: Expenses: P03-Provisional sums 1125000
- DUKHMOBI03PS00002345: Expenses: I03-Provisional sums 4715000
- DUKHMOBGEN0000003000: Expenses: GEN-Preliminaries for all Packages 3500000
- DUKHMOBGEN0000003005: Expenses: GEN-Preliminaries for all Packages 1000000
- DUKHMOBGEN0000003010: Expenses: GEN-Preliminaries for all Packages 1500000
- DUKHMOBGEN0000003015: Expenses: GEN-Preliminaries for all Packages 5000000
- DUKHMOBGEN0000003020: Expenses: GEN-Preliminaries for all Packages 1800000
- DUKHMOBGEN0000003025: Expenses: GEN-Preliminaries for all Packages 14150000

| ID | WBS | Activity | Duration | Start | Finish | Predecessors | Complete | Planned start | Planned finish | Resources | Cost | P3 ACTID | P6 ID (old) | NP61D | PROJECT | PHASES | PACKAGE | BILL NOS | BILL DIVISION |
| --- | --- | --- | --- | --- | --- | --- | --- | --- | --- | --- | --- | --- | --- | --- | --- | --- | --- | --- | --- |
|  | L15 | **PACKAGE-1** |  | 2012-11-01 | 2013-02-13 |  |  |  |  |  |  |  |  |  |  |  |  |  |  |
| DUKHMOBP010000004000 |  | Securing Gate Passes/Access Permit & Courses | 25d | 2012-11-01 A | 2012-11-29 A | DUKHKYDGEN0000001000 | 100% |  |  | SAFETY OFFICER [100 h] |  | MO00100100 | DUKHMOB1A0000004000 | DUKHMOBP010000004000 | DH | MOB | OA |  |  |
| DUKHMOBP010000004010 |  | Sub & Approval of Site Logistic Plan | 30d | 2012-11-08 A | 2012-12-12 A | DUKHMOBP010000004000 SS+6d | 100% |  |  | DRAFTMAN SK [100 h] |  | MO00100110 | DUKHMOB1A0000004010 | DUKHMOBP010000004010 | DH | MOB | MO1 |  |  |
| DUKHMOBP010000004020 |  | Sub & App of Method Statement-Temporary Struct. | 30d | 2012-12-06 A | 2012-12-31 A | DUKHMOBGEN0000003000 FF, DUKHMOBP010000004000 SS+2d, DUKHMOBP010000004010 SS+5d, DUKHMOBGEN0000003010 FF, DUKHMOBGEN0000003020, DUKHMOBGEN0000003005 FF | 100% | 2012-12-06 | 2013-01-10 | QUANTITY SURVEYOUR [100 h] |  | MO00100120 | DUKHMOB1A0000004020 | DUKHMOBP010000004020 | DH | MOB | MO1 |  |  |
| DUKHMOBP010000004030 |  | Sub & App of Layout Drawings-Temporary Struct. | 30d | 2012-12-12 A | 2013-01-16 A | DUKHMOBGEN0000003015, DUKHMOBP010000004020 SS+5d, DUKHMOBP010000004000 SS+2d | 100% |  |  | DRAFTMAN SK [100 h] |  | MO00100130 | DUKHMOB1A0000004030 | DUKHMOBP010000004030 | DH | MOB | MO1 |  |  |
| DUKHMOBP010000004040 |  | Securing Permit To Work | 20d | 2012-12-13 A | 2013-01-20 A | DUKHMOBP010000004010 | 100% | 2012-12-13 | 2013-01-06 | SAFETY OFFICER [100 h] |  | MO00100140 | DUKHMOB1A0000004040 | DUKHMOBP010000004040 | DH | MOB | MO1 |  |  |
| DUKHMOBP010000004050 |  | Site Cleaning & Leveling Works | 25d | 2012-12-26 A | 2013-01-23 A | DUKHMOBP010000004040 SS+10d | 100% |  |  | LABOR - CIVIL [117.19 h]; POCLAIN [15.75 h]; TRUCK [15.75 h]; EQUIP OPERATORS [31.5 h] |  | MO00100210 | DUKHMOB1A0000004050 | DUKHMOBP010000004050 | DH | MOB | MO1 |  |  |
| DUKHMOBP010000004060 |  | Establishment of Security Fences & Gates | 20d | 2013-01-21 A | 2013-02-13 A | DUKHMOBP010000004000 SS+1d, DUKHMOBP010000004040, DUKHMOBGEN0000003040 SS+14d, DUKHMOBP010000004010 | 100% |  |  | LABOR - CIVIL [75 h]; CARPENTERS SK [50 h]; BLOCK MASON SK [50 h]; PLASTER MASON SK [50 h]; STEEL FIXERS SK [75 h] | 345,000 | MO00100150 | DUKHMOB1A0000004060 | DUKHMOBP010000004060 | DH | MOB | MO1 | B01 | B01-D01 |
| DUKHMOBP010000004070 |  | Establishment of Site offices | 20d | 2013-01-21 A | 2013-02-13 A | DUKHMOBP010000004030, DUKHMOBP010000004040, DUKHMOBP010000004010 | 100% |  |  | CARPENTERS SK [125 h]; BLOCK MASON SK [125 h]; PLASTER MASON SK [125 h]; LABOR - CIVIL [187.5 h]; MECHANICALS SK [67.5 h]; ELECTRICIANS SK [70 h] | 172,500 | MO00100160 | DUKHMOB1A0000004070 | DUKHMOBP010000004070 | DH | MOB | MO1 | B01 | B01-D01 |
| DUKHMOBP010000004080 |  | Establishment of Labour Mess & Toilets | 20d | 2013-01-21 A | 2013-02-13 A | DUKHMOBP010000004040 | 100% |  |  | BLOCK MASON SK [75 h]; LABOR - CIVIL [75 h]; MECHANICALS SK [101.25 h]; ELECTRICIANS SK [70 h]; PLASTER MASON SK [50 h] |  | MO00100170 | DUKHMOB1A0000004080 | DUKHMOBP010000004080 | DH | MOB | MO1 |  |  |
| DUKHMOBP010000004090 |  | Establishment of Stores & Workshops | 20d | 2013-01-21 A | 2013-02-13 A | DUKHMOBP010000004040 | 100% |  |  | LABOR - CIVIL [93.75 h]; BLOCK MASON SK [50 h]; PLASTER MASON SK [50 h]; ELECTRICIANS SK [70 h]; MECHANICALS SK [67.5 h]; CARPENTERS SK [75 h] |  | MO00100180 | DUKHMOB1A0000004090 | DUKHMOBP010000004090 | DH | MOB | MO1 |  |  |
|  | L30 | **PACKAGE-2** |  | 2012-11-01 | 2013-04-11 |  |  |  |  |  |  |  |  |  |  |  |  |  |  |
| DUKHMOBP020000004000 |  | Securing Gate Passes/Access Permit & Courses | 25d | 2012-11-01 A | 2012-11-29 A | DUKHKYDGEN0000001000 | 100% |  |  | SAFETY OFFICER [100 h] |  | MO00200100 | DUKHMOB1B0000004000 | DUKHMOBP020000004000 | DH | MOB | MO2 |  |  |
| DUKHMOBP020000004010 |  | Sub & Approval of Site Logistic Plan | 30d | 2012-11-14 A | 2012-12-19 A | DUKHMOBP020000004000 SS+11d | 100% |  |  | DRAFTMAN SK [100 h] |  | MO00200110 | DUKHMOB1B0000004010 | DUKHMOBP020000004010 | DH | MOB | MO2 |  |  |
| DUKHMOBP020000004020 |  | Sub & App of Method Statement-Temporary Struct. | 30d | 2012-11-20 A | 2012-12-25 A | DUKHMOBP020000004000 SS+2d, DUKHMOBP020000004010 SS+5d | 100% |  |  | DRAFTMAN SK [100 h] |  | MO00200120 | DUKHMOB1B0000004020 | DUKHMOBP020000004020 | DH | MOB | MO2 |  |  |
| DUKHMOBP020000004040 |  | Securing Permit To Work | 15d | 2012-12-02 A | 2012-12-19 A | DUKHMOBP020000004010 FF | 100% |  |  | SAFETY OFFICER [100 h] |  | MO00200140 | DUKHMOB1B0000004040 | DUKHMOBP020000004040 | DH | MOB | MO2 |  |  |
| DUKHMOBP020000004050 |  | Site Cleaning & Leveling Works | 25d | 2012-12-13 A | 2013-01-12 A | DUKHMOBP020000004040 SS+10d | 100% |  |  | LABOR - CIVIL [117.19 h]; POCLAIN [15.75 h]; TRUCK [15.75 h]; EQUIP OPERATORS [31.5 h] |  | MO00200190 | DUKHMOB1B0000004050 | DUKHMOBP020000004050 | DH | MOB | MO2 |  |  |
| DUKHMOBP020000004070 |  | Establishment of Site offices | 20d | 2012-12-20 A | 2013-01-12 A | DUKHMOBP020000004040, DUKHMOBP020000004010 | 100% |  |  | CARPENTERS SK [125 h]; BLOCK MASON SK [125 h]; PLASTER MASON SK [125 h]; LABOR - CIVIL [187.5 h]; MECHANICALS SK [67.5 h]; ELECTRICIANS SK [70 h] | 27,500 | MO00200160 | DUKHMOB1B0000004070 | DUKHMOBP020000004070 | DH | MOB | MO2 | B01 | B01-D01 |
| DUKHMOBP020000004080 |  | Establishment of Labour Mess & Toilets | 20d | 2012-12-20 A | 2013-01-12 A | DUKHMOBP020000004040 | 100% |  |  | BLOCK MASON SK [75 h]; LABOR - CIVIL [75 h]; MECHANICALS SK [101.25 h]; ELECTRICIANS SK [70 h]; PLASTER MASON SK [50 h] |  | MO00200170 | DUKHMOB1B0000004080 | DUKHMOBP020000004080 | DH | MOB | MO2 |  |  |
| DUKHMOBP020000004090 |  | Establishment of Stores & Workshops | 20d | 2012-12-20 A | 2013-01-12 A | DUKHMOBP020000004040 | 100% |  |  | CARPENTERS SK [75 h]; LABOR - CIVIL [93.75 h]; BLOCK MASON SK [50 h]; PLASTER MASON SK [50 h]; ELECTRICIANS SK [70 h]; MECHANICALS SK [67.5 h] |  | MO00200180 | DUKHMOB1B0000004090 | DUKHMOBP020000004090 | DH | MOB | MO2 |  |  |
| DUKHMOBP020000004030 |  | Sub & App of Layout Drawings-Temporary Struct. | 30d | 2012-12-26 A | 2013-01-30 A | DUKHMOBP020000004020, DUKHMOBP020000004000 SS+2d | 100% | 2012-12-26 | 2013-01-29 | DRAFTMAN SK [100 h] |  | MO00200130 | DUKHMOB1B0000004030 | DUKHMOBP020000004030 | DH | MOB | MO2 |  |  |
| DUKHMOBP020000004060 |  | Establishment of Security Fences & Gates | 20d | 2013-01-30 A | 2013-04-11 A | DUKHMOBP020000004010, DUKHMOBP020000004040, DUKHMOBP020000004030, DUKHMOBP020000004000 SS+1d | 100% | 2013-01-30 | 2013-02-23 | LABOR- SUBCONTRACTOR [75 h]; CARPENTERS SK [50 h]; BLOCK MASON SK [50 h]; PLASTER MASON SK [50 h]; STEEL FIXERS SK [75 h] | 55,000 | MO00200150 | DUKHMOB1B0000004060 | DUKHMOBP020000004060 | DH | MOB | MO2 | B01 | B01-D01 |
|  | L45 | **PACKAGE-3** |  | 2012-11-01 | 2013-03-01 |  |  |  |  |  |  |  |  |  |  |  |  |  |  |
| DUKHMOBP030000004000 |  | Securing Gate Passes/Access Permit & Courses | 25d | 2012-11-01 A | 2012-11-29 A | DUKHKYDGEN0000001000 | 100% |  |  | SAFETY OFFICER [100 h] |  | MO00300100 | DUKHMOB3P0000004000 | DUKHMOBP030000004000 | DH | MOB | MO3 |  |  |
| DUKHMOBP030000004010 |  | Sub & Approval of Site Logistic Plan | 30d | 2012-11-10 A | 2012-12-13 A | DUKHMOBP030000004000 SS+7d | 100% |  |  | DRAFTMAN SK [100 h] |  | MO00300110 | DUKHMOB3P0000004010 | DUKHMOBP030000004010 | DH | MOB | MO3 |  |  |
| DUKHMOBP030000004020 |  | Sub & App of Method Statement-Temporary Struct. | 30d | 2012-11-17 A | 2012-12-22 A | DUKHMOBP030000004000 SS+2d, DUKHMOBP030000004010 SS+6d | 100% |  |  | DRAFTMAN SK [100 h] |  | MO00300120 | DUKHMOB3P0000004020 | DUKHMOBP030000004020 | DH | MOB | MO3 |  |  |
| DUKHMOBP030000004030 |  | Sub & App of Layout Drawings-Temporary Struct. | 30d | 2012-11-17 A | 2012-12-22 A | DUKHMOBP030000004000 SS+2d, DUKHMOBP030000004020 SS | 100% |  |  | DRAFTMAN SK [100 h] |  | MO00300130 | DUKHMOB3P0000004030 | DUKHMOBP030000004030 | DH | MOB | MO3 |  |  |
| DUKHMOBP030000004040 |  | Securing Permit To Work | 20d | 2012-12-15 A | 2013-01-07 A | DUKHMOBP030000004010 | 100% |  |  | SAFETY OFFICER [100 h] |  | MO00300140 | DUKHMOB3P0000004040 | DUKHMOBP030000004040 | DH | MOB | MO3 |  |  |
| DUKHMOBP030000004050 |  | Site Cleaning & Leveling Works | 25d | 2012-12-20 A | 2013-01-17 A | DUKHMOBP030000004040 SS+4d | 100% |  |  | LABOR - CIVIL [117.19 h]; POCLAIN [15.75 h]; TRUCK [15.75 h]; EQUIP OPERATORS [31.5 h] |  | MO00300210 | DUKHMOB3P0000004050 | DUKHMOBP030000004050 | DH | MOB | MO3 |  |  |
| DUKHMOBP030000004070 |  | Establishment of Site offices | 20d | 2013-01-08 A | 2013-01-30 A | DUKHMOBP030000004040, DUKHMOBP030000004010, DUKHMOBP030000004030 | 100% |  |  | CARPENTERS SK [125 h]; BLOCK MASON SK [125 h]; PLASTER MASON SK [125 h]; LABOR - CIVIL [187.5 h]; MECHANICALS SK [67.5 h]; ELECTRICIANS SK [70 h] | 50,000 | MO00300160 | DUKHMOB3P0000004070 | DUKHMOBP030000004070 | DH | MOB | MO3 | B01 | B01-D01 |
| DUKHMOBP030000004080 |  | Establishment of Labour Mess & Toilets | 20d | 2013-01-08 A | 2013-01-30 A | DUKHMOBP030000004040 | 100% |  |  | BLOCK MASON SK [75 h]; LABOR - CIVIL [75 h]; MECHANICALS SK [101.25 h]; ELECTRICIANS SK [70 h]; PLASTER MASON SK [50 h] |  | MO00300170 | DUKHMOB3P0000004080 | DUKHMOBP030000004080 | DH | MOB | MO3 |  |  |
| DUKHMOBP030000004090 |  | Establishment of Stores & Workshops | 20d | 2013-01-08 A | 2013-01-30 A | DUKHMOBP030000004040 | 100% |  |  | CARPENTERS SK [75 h]; LABOR - CIVIL [93.75 h]; BLOCK MASON SK [50 h]; PLASTER MASON SK [50 h]; ELECTRICIANS SK [70 h]; MECHANICALS SK [67.5 h] |  | MO00300180 | DUKHMOB3P0000004090 | DUKHMOBP030000004090 | DH | MOB | MO3 |  |  |
| DUKHMOBP030000004060 |  | Establishment of Security Fences & Gates | 59d | 2013-02-02 A | 2013-03-01 A | DUKHMOBP030000004010, DUKHMOBP030000004000 SS+1d, DUKHMOBP030000004040 | 100% | 2013-02-02 | 2013-04-11 | LABOR - CIVIL [75 h]; CARPENTERS SK [50 h]; BLOCK MASON SK [50 h]; PLASTER MASON SK [50 h]; STEEL FIXERS SK [75 h] | 100,000 | MO00300150 | DUKHMOB3P0000004060 | DUKHMOBP030000004060 | DH | MOB | MO3 | B01 | B01-D01 |

Notes:
- DUKHMOBP010000004060: Expenses: GEN-Preliminaries for all Packages 345000
- DUKHMOBP010000004070: Expenses: GEN-Preliminaries for all Packages 172500
- DUKHMOBP020000004070: Expenses: GEN-Preliminaries for all Packages 27500
- DUKHMOBP020000004060: Expenses: GEN-Preliminaries for all Packages 55000
- DUKHMOBP030000004070: Expenses: GEN-Preliminaries for all Packages 50000
- DUKHMOBP030000004060: Expenses: GEN-Preliminaries for all Packages 100000

| ID | WBS | Activity | Duration | Start | Finish | Predecessors | Complete | Planned start | Planned finish | Resources | Cost | P3 ACTID | P6 ID (old) | NP61D | PROJECT | PHASES | PACKAGE | PART | ELEMENTS | STEP | RES PACK |
| --- | --- | --- | --- | --- | --- | --- | --- | --- | --- | --- | --- | --- | --- | --- | --- | --- | --- | --- | --- | --- | --- |
|  | K20 | **ENGINEERING** |  | 2012-11-26 | 2013-09-07 |  |  |  |  |  |  |  |  |  |  |  |  |  |  |  |  |
|  | L20 | **PACKAGE-1A** |  | 2012-12-01 | 2013-08-27 |  |  |  |  |  |  |  |  |  |  |  |  |  |  |  |  |
|  | E05 | **SHOP DRAWINGS SUBMISSION & APPROVAL** |  | 2012-12-01 | 2013-08-27 |  |  |  |  |  |  |  |  |  |  |  |  |  |  |  |  |
|  | H05 | **STRUCTURAL DRAWINGS** |  | 2012-12-01 | 2013-03-01 |  |  |  |  |  |  |  |  |  |  |  |  |  |  |  |  |
|  | G10 | **SUBMISSION OF DRAWINGS** |  | 2012-12-01 | 2013-01-28 |  |  |  |  |  |  |  |  |  |  |  |  |  |  |  |  |
| DUKHENGP1ADWSTSM4000 |  | Footing Drawings-Sub | 10d | 2012-12-01 A | 2012-12-11 A | DUKHMOBP010000004000 | 100% |  |  | DRAFTMAN SK [20 h] | 516,789 | 1ADWSTSB05 | DUKHENG1ADWSTSM4000 | DUKHENGP1ADWSTSM4000 | DH | ENG | 1A | DRWG | STDW | SUB | RES-1A |
| DUKHENGP1ADWSTSM4010 |  | Grade Beam & Slab Drawings-Sub | 15d | 2012-12-06 A | 2012-12-24 A | DUKHENGP1ADWSTSM4000 SS+5d | 100% |  |  | DRAFTMAN SK [30 h] | 603,850 | 1ADWSTSB10 | DUKHENG1ADWSTSM4010 | DUKHENGP1ADWSTSM4010 | DH | ENG | 1A | DRWG | STDW | SUB | RES-1A |
| DUKHENGP1ADWSTSM4020 |  | Column Drawings-Sub | 15d | 2012-12-12 A | 2012-12-30 A | DUKHENGP1ADWSTSM4010 SS+5d | 100% |  |  | DRAFTMAN SK [30 h] | 208,800 | 1ADWSTSB15 | DUKHENG1ADWSTSM4020 | DUKHENGP1ADWSTSM4020 | DH | ENG | 1A | DRWG | STDW | SUB | RES-1A |
| DUKHENGP1ADWSTSM4030 |  | GF Beams & Slabs Drawings-Sub | 15d | 2012-12-25 A | 2013-01-10 A | DUKHENGP1ADWSTSM4020 SS+10d | 100% |  |  | DRAFTMAN SK [30 h] | 470,761 | 1ADWSTSB20 | DUKHENG1ADWSTSM4030 | DUKHENGP1ADWSTSM4030 | DH | ENG | 1A | DRWG | STDW | SUB | RES-1A |
| DUKHENGP1ADWSTSM4040 |  | FF Beams & Slabs Drawings-Sub | 15d | 2013-01-12 A | 2013-01-28 A | DUKHENGP1ADWSTSM4030 | 100% |  |  | DRAFTMAN SK [30 h] | 441,187 | 1ADWSTSB25 | DUKHENG1ADWSTSM4040 | DUKHENGP1ADWSTSM4040 | DH | ENG | 1A | DRWG | STDW | SUB | RES-1A |
|  | G20 | **APPROVAL OF DRAWINGS** |  | 2012-12-12 | 2013-03-01 |  |  |  |  |  |  |  |  |  |  |  |  |  |  |  |  |
| DUKHENGP1ADWSTAP4000 |  | Footing Drawings-App | 25d | 2012-12-12 A | 2012-12-28 A | DUKHENGP1ADWSTSM4000 | 100% | 2012-12-12 | 2013-01-10 |  |  | 1ADWSTAP30 | DUKHENG1ADWSTAP4000 | DUKHENGP1ADWSTAP4000 | DH | ENG | 1A | DRWG | STDW | APP | RES-1A |
| DUKHENGP1ADWSTAP4010 |  | Grade Beam & Slab Drawings-App | 30d | 2012-12-25 A | 2013-01-28 A | DUKHENGP1ADWSTSM4010 | 100% |  |  |  |  | 1ADWSTAP35 | DUKHENG1ADWSTAP4010 | DUKHENGP1ADWSTAP4010 | DH | ENG | 1A | DRWG | STDW | APP | RES-1A |
| DUKHENGP1ADWSTAP4020 |  | Column Drawings-App | 32d | 2012-12-29 A | 2013-02-01 A | DUKHENGP1ADWSTSM4020 | 100% | 2012-12-29 | 2013-02-03 |  |  | 1ADWSTAP40 | DUKHENG1ADWSTAP4020 | DUKHENGP1ADWSTAP4020 | DH | ENG | 1A | DRWG | STDW | APP | RES-1A |
| DUKHENGP1ADWSTAP4030 |  | GF Beams & Slabs Drawings-App | 12d | 2013-02-02 A | 2013-02-16 A | DUKHENGP1ADWSTSM4030 | 100% |  |  |  |  | 1ADWSTAP45 | DUKHENG1ADWSTAP4030 | DUKHENGP1ADWSTAP4030 | DH | ENG | 1A | DRWG | STDW | APP | RES-1A |
| DUKHENGP1ADWSTAP4040 |  | FF Beams & Slabs Drawings-App | 27d | 2013-02-02 A | 2013-03-01 A | DUKHENGP1ADWSTSM4040 | 100% | 2013-02-02 | 2013-03-05 |  |  | 1ADWSTAP50 | DUKHENG1ADWSTAP4040 | DUKHENGP1ADWSTAP4040 | DH | ENG | 1A | DRWG | STDW | APP | RES-1A |
|  | H10 | **ARCHITECTURAL DRAWINGS** |  | 2013-01-29 | 2013-05-27 |  |  |  |  |  |  |  |  |  |  |  |  |  |  |  |  |
|  | G10 | **SUBMISSION OF DRAWINGS** |  | 2013-01-29 | 2013-04-22 |  |  |  |  |  |  |  |  |  |  |  |  |  |  |  |  |
| DUKHENGP1ADWARSM4050 |  | Ground Floor Plan-Sub | 15d | 2013-01-29 A | 2013-02-16 A | DUKHENGP1ADWSTSM4040 | 100% |  |  | DRAFTMAN SK [30 h] | 389,667 | 1ADWARSB05 | DUKHENG1ADWARSM4050 | DUKHENGP1ADWARSM4050 | DH | ENG | 1A | DRWG | ARDW | SUB | RES-1A |
| DUKHENGP1ADWARSM4060 |  | First Floor Plan-Sub | 15d | 2013-02-11 A | 2013-02-28 A | DUKHENGP1ADWARSM4050 SS+11d | 100% |  |  | DRAFTMAN SK [30 h] | 229,725 | 1ADWARSB10 | DUKHENG1ADWARSM4060 | DUKHENGP1ADWARSM4060 | DH | ENG | 1A | DRWG | ARDW | SUB | RES-1A |
| DUKHENGP1ADWARSM4070 |  | Roof Floor Plan-Sub | 15d | 2013-02-20 A | 2013-03-07 A | DUKHENGP1ADWARSM4060 SS+7d | 100% | 2013-02-20 | 2013-03-09 | DRAFTMAN SK [30 h] | 35,899 | 1ADWARSB15 | DUKHENG1ADWARSM4070 | DUKHENGP1ADWARSM4070 | DH | ENG | 1A | DRWG | ARDW | SUB | RES-1A |
| DUKHENGP1ADWARSM4080 |  | Ceramic Flooring & Wall Drawings-Sub | 15d | 2013-03-02 A | 2013-03-18 A | DUKHENGP1ADWARSM4050, DUKHENGP1ADWARSM4060, DUKHENGP1ADWARSM4070 SS+3d | 100% |  |  | DRAFTMAN SK [20 h] | 208,957 | 1ADWARSB20 | DUKHENG1ADWARSM4080 | DUKHENGP1ADWARSM4080 | DH | ENG | 1A | DRWG | ARDW | SUB | RES-1A |
| DUKHENGP1ADWARSM4090 |  | Porcelain Floor Drawings-Sub | 15d | 2013-03-02 A | 2013-03-18 A | DUKHENGP1ADWARSM4080 SS | 100% |  |  | DRAFTMAN SK [20 h] | 231,002 | 1ADWARSB25 | DUKHENG1ADWARSM4090 | DUKHENGP1ADWARSM4090 | DH | ENG | 1A | DRWG | ARDW | SUB | RES-1A |
| DUKHENGP1ADWARSM4100 |  | Cobble & Slate Flooring Drawings-Sub | 15d | 2013-03-02 A | 2013-03-18 A | DUKHENGP1ADWARSM4090 SS | 100% |  |  | DRAFTMAN SK [20 h] | 171,088 | 1ADWARSB30 | DUKHENG1ADWARSM4100 | DUKHENGP1ADWARSM4100 | DH | ENG | 1A | DRWG | ARDW | SUB | RES-1A |
| DUKHENGP1ADWARSM4110 |  | Gypsum False Ceiling Drawings-Sub | 15d | 2013-03-10 A | 2013-03-26 A | DUKHPROGEN00PQAP2050, DUKHPROGEN00PQAP1050 | 100% |  |  | DRAFTMAN SK [20 h] | 187,542 | 1ADWARSB35 | DUKHENG1ADWARSM4110 | DUKHENGP1ADWARSM4110 | DH | ENG | 1A | DRWG | ARDW | SUB | RES-1A |
| DUKHENGP1ADWARSM4120 |  | Aluminum False Ceiling Drawings-Sub | 15d | 2013-03-10 A | 2013-03-26 A | DUKHPROGEN00PQAP1050, DUKHPROGEN00PQAP2050 | 100% |  |  | DRAFTMAN SK [20 h] | 11,812 | 1ADWARSB40 | DUKHENG1ADWARSM4120 | DUKHENGP1ADWARSM4120 | DH | ENG | 1A | DRWG | ARDW | SUB | RES-1A |
| DUKHENGP1ADWARSM4130 |  | Doors & window Drawings-Sub | 15d | 2013-03-20 A | 2013-03-30 A | DUKHPROGEN00PQAP1080, DUKHENGP1ADWARSM4050, DUKHPROGEN00PQAP2080 | 100% | 2013-03-20 | 2013-04-06 | DRAFTMAN SK [20 h] | 876,774 | 1ADWARSB45 | DUKHENG1ADWARSM4130 | DUKHENGP1ADWARSM4130 | DH | ENG | 1A | DRWG | ARDW | SUB | RES-1A |
| DUKHENGP1ADWARSM4140 |  | Carpentry & Joinery Drawings-Sub | 15d | 2013-04-06 A | 2013-04-22 A | DUKHENGP1ADWARSM4050, DUKHPROGEN00PQAP1150, DUKHPROGEN00PQAP2150 | 100% |  |  | DRAFTMAN SK [30 h] | 533,421 | 1ADWARSB50 | DUKHENG1ADWARSM4140 | DUKHENGP1ADWARSM4140 | DH | ENG | 1A | DRWG | ARDW | SUB | RES-1A |

Notes:
- DUKHENGP1ADWSTSM4000: Expenses: P1A-Concrete Works 433317; P1A-Excavation and Earth Works 83472
- DUKHENGP1ADWSTSM4010: Expenses: P1A-Concrete Works 580864; P1A-Excavation and Earth Works 22986
- DUKHENGP1ADWSTSM4020: Expenses: P1A-Concrete Works 208800
- DUKHENGP1ADWSTSM4030: Expenses: P1A-Concrete Works 470761
- DUKHENGP1ADWSTSM4040: Expenses: P1A-Concrete Works 441187
- DUKHENGP1ADWARSM4050: Expenses: P1A-Block work 287786; P1A-Finishes 101881
- DUKHENGP1ADWARSM4060: Expenses: P1A-Block work 162912; P1A-Finishes 66813
- DUKHENGP1ADWARSM4070: Expenses: P1A-Block work 22699; P1A-Finishes 13200
- DUKHENGP1ADWARSM4080: Expenses: P1A-Finishes 208957
- DUKHENGP1ADWARSM4090: Expenses: P1A-Finishes 231002
- DUKHENGP1ADWARSM4100: Expenses: P1A-Finishes 171088
- DUKHENGP1ADWARSM4110: Expenses: P1A-Finishes 187542
- DUKHENGP1ADWARSM4120: Expenses: P1A-Finishes 11812
- DUKHENGP1ADWARSM4130: Expenses: P1A-Carpentry and Joinery 481158; P1A-Metal work 395616
- DUKHENGP1ADWARSM4140: Expenses: P1A-Carpentry and Joinery 533421

| ID | WBS | Activity | Duration | Start | Finish | Predecessors | Complete | Remaining | Planned start | Planned finish | Total float | Free float | Expected finish | Resources | Cost | P3 ACTID | P6 ID (old) | NP61D | PROJECT | PHASES | PACKAGE | PART | ELEMENTS | STEP | RES PACK |
| --- | --- | --- | --- | --- | --- | --- | --- | --- | --- | --- | --- | --- | --- | --- | --- | --- | --- | --- | --- | --- | --- | --- | --- | --- | --- |
|  | G20 | **APPROVAL OF DRAWINGS** |  | 2013-02-17 | 2013-05-27 |  |  |  |  |  |  |  |  |  |  |  |  |  |  |  |  |  |  |  |  |
| DUKHENGP1ADWARAP4050 |  | Ground Floor Plan-App | 30d | 2013-02-17 A | 2013-03-23 A | DUKHENGP1ADWARSM4050 | 100% |  |  |  |  |  |  |  |  | 1ADWARAP05 | DUKHENG1ADWARAP4050 | DUKHENGP1ADWARAP4050 | DH | ENG | 1A | DRWG | ARDW | APP | RES-1A |
| DUKHENGP1ADWARAP4060 |  | First Floor Plan-App | 30d | 2013-03-02 A | 2013-03-30 A | DUKHENGP1ADWARSM4060 | 100% |  | 2013-03-02 | 2013-04-04 |  |  |  |  |  | 1ADWARAP10 | DUKHENG1ADWARAP4060 | DUKHENGP1ADWARAP4060 | DH | ENG | 1A | DRWG | ARDW | APP | RES-1A |
| DUKHENGP1ADWARAP4070 |  | Roof Floor Plan-App | 30d | 2013-03-09 A | 2013-04-11 A | DUKHENGP1ADWARSM4070 | 100% |  |  |  |  |  |  |  |  | 1ADWARAP15 | DUKHENG1ADWARAP4070 | DUKHENGP1ADWARAP4070 | DH | ENG | 1A | DRWG | ARDW | APP | RES-1A |
| DUKHENGP1ADWARAP4080 |  | Ceramic Flooring & Wall Drawings-App | 30d | 2013-03-19 A | 2013-04-22 A | DUKHENGP1ADWARSM4080 | 100% |  |  |  |  |  |  |  |  | 1ADWARAP20 | DUKHENG1ADWARAP4080 | DUKHENGP1ADWARAP4080 | DH | ENG | 1A | DRWG | ARDW | APP | RES-1A |
| DUKHENGP1ADWARAP4090 |  | Porcelain Floor Drawings-App | 30d | 2013-03-19 A | 2013-04-22 A | DUKHENGP1ADWARSM4090 | 100% |  |  |  |  |  |  |  |  | 1ADWARAP25 | DUKHENG1ADWARAP4090 | DUKHENGP1ADWARAP4090 | DH | ENG | 1A | DRWG | ARDW | APP | RES-1A |
| DUKHENGP1ADWARAP4100 |  | Cobble & Slate Flooring Drawings-App | 30d | 2013-03-19 A | 2013-04-22 A | DUKHENGP1ADWARSM4100 | 100% |  |  |  |  |  |  |  |  | 1ADWARAP30 | DUKHENG1ADWARAP4100 | DUKHENGP1ADWARAP4100 | DH | ENG | 1A | DRWG | ARDW | APP | RES-1A |
| DUKHENGP1ADWARAP4110 |  | Gypsum False Ceiling Drawings-App | 28d | 2013-03-30 A | 2013-04-30 | DUKHENGP1ADWARSM4110 | 86% | 4d |  |  | 71d | 0d | 2013-04-30 |  |  | 1ADWARAP35 | DUKHENG1ADWARAP4110 | DUKHENGP1ADWARAP4110 | DH | ENG | 1A | DRWG | ARDW | APP | RES-1A |
| DUKHENGP1ADWARAP4120 |  | Aluminum False Ceiling Drawings-App | 28d | 2013-03-30 A | 2013-04-30 | DUKHENGP1ADWARSM4120 | 86% | 4d |  |  | 86d | 0d | 2013-04-30 |  |  | 1ADWARAP40 | DUKHENG1ADWARAP4120 | DUKHENGP1ADWARAP4120 | DH | ENG | 1A | DRWG | ARDW | APP | RES-1A |
| DUKHENGP1ADWARAP4130 |  | Doors & Window Drawings-App | 30d | 2013-04-13 A | 2013-05-16 | DUKHENGP1ADWARAP4060, DUKHENGP1ADWARSM4130, DUKHENGP1ADWARAP4070 | 40% | 18d |  |  | 56d | 0d | 2013-05-16 |  |  | 1ADWARAP45 | DUKHENG1ADWARAP4130 | DUKHENGP1ADWARAP4130 | DH | ENG | 1A | DRWG | ARDW | APP | RES-1A |
| DUKHENGP1ADWARAP4140 |  | Carpentry & Joinery Drawings-App | 27d | 2013-04-27 | 2013-05-27 | DUKHENGP1ADWARSM4140 |  |  |  |  | 84d | 0d | 2013-05-27 |  |  | 1ADWARAP50 | DUKHENG1ADWARAP4140 | DUKHENGP1ADWARAP4140 | DH | ENG | 1A | DRWG | ARDW | APP | RES-1A |
|  | H20 | **ELECTRICAL DRAWINGS** |  | 2013-02-17 | 2013-06-06 |  |  |  |  |  |  |  |  |  |  |  |  |  |  |  |  |  |  |  |  |
|  | G10 | **SUBMISSION OF DRAWINGS** |  | 2013-02-17 | 2013-05-02 |  |  |  |  |  |  |  |  |  |  |  |  |  |  |  |  |  |  |  |  |
| DUKHENGP1ADWELSM4150 |  | Single Line Diagram-Sub | 15d | 2013-02-17 A | 2013-03-01 A | DUKHPROGEN00PQAP1040, DUKHPROGEN00PQAP2040 | 100% |  | 2013-02-17 | 2013-03-05 |  |  |  | DRAFTMAN SK [20 h] | 147,871 | 1ADWELSB05 | DUKHENG1ADWELSM4150 | DUKHENGP1ADWELSM4150 | DH | ENG | 1A | DRWG | ELDW | SUB | RES-1A |
| DUKHENGP1ADWELSM4160 |  | Lighting Layout Drawings-Sub | 15d | 2013-02-17 A | 2013-03-01 A | DUKHENGP1ADWELSM4150 SS | 100% |  | 2013-02-17 | 2013-03-05 |  |  |  | DRAFTMAN SK [20 h] | 475,783 | 1ADWELSB10 | DUKHENG1ADWELSM4160 | DUKHENGP1ADWELSM4160 | DH | ENG | 1A | DRWG | ELDW | SUB | RES-1A |
| DUKHENGP1ADWELSM4170 |  | Power Layout Drawings-Sub | 14d | 2013-03-02 A | 2013-03-17 A | DUKHENGP1ADWELSM4150 SS+10d, DUKHENGP1ADWELSM4160 SS | 100% |  |  |  |  |  |  | DRAFTMAN SK [20 h] | 228,578 | 1ADWELSB15 | DUKHENG1ADWELSM4170 | DUKHENGP1ADWELSM4170 | DH | ENG | 1A | DRWG | ELDW | SUB | RES-1A |
| DUKHENGP1ADWELSM4180 |  | Central Alarm Monitoring System Drawings-Sub | 15d | 2013-03-18 A | 2013-03-30 A | DUKHENGP1ADWELSM4170 | 100% |  | 2013-03-18 | 2013-04-03 |  |  |  | DRAFTMAN SK [20 h] | 97,514 | 1ADWELSB20 | DUKHENG1ADWELSM4180 | DUKHENGP1ADWELSM4180 | DH | ENG | 1A | DRWG | ELDW | SUB | RES-1A |
| DUKHENGP1ADWELSM4190 |  | Audio Video Intercom System Drawings-Sub | 15d | 2013-03-30 A | 2013-04-15 A | DUKHENGP1ADWELSM4180 | 100% |  |  |  |  |  |  | DRAFTMAN SK [30 h] | 54,879 | 1ADWELSB25 | DUKHENG1ADWELSM4190 | DUKHENGP1ADWELSM4190 | DH | ENG | 1A | DRWG | ELDW | SUB | RES-1A |
| DUKHENGP1ADWELSM4200 |  | Telephone & TV System Drawings-Sub | 15d | 2013-04-16 A | 2013-05-02 | DUKHENGP1ADWELSM4190 | 60% | 6d |  |  | 79d | 0d | 2013-05-02 | DRAFTMAN SK [30 h] | 110,924 | 1ADWELSB30 | DUKHENG1ADWELSM4200 | DUKHENGP1ADWELSM4200 | DH | ENG | 1A | DRWG | ELDW | SUB | RES-1A |
|  | G20 | **APPROVAL OF DRAWINGS** |  | 2013-03-02 | 2013-06-06 |  |  |  |  |  |  |  |  |  |  |  |  |  |  |  |  |  |  |  |  |
| DUKHENGP1ADWELAP4150 |  | Single Line Diagram-App | 30d | 2013-03-02 A | 2013-04-04 A | DUKHENGP1ADWELSM4150 | 100% |  |  |  |  |  |  |  |  | 1ADWELAP05 | DUKHENG1ADWELAP4150 | DUKHENGP1ADWELAP4150 | DH | ENG | 1A | DRWG | ELDW | APP | RES-1A |
| DUKHENGP1ADWELAP4160 |  | Lighting Layout Drawings-App | 30d | 2013-03-02 A | 2013-04-04 A | DUKHENGP1ADWELSM4160 | 100% |  |  |  |  |  |  |  |  | 1ADWELAP10 | DUKHENG1ADWELAP4160 | DUKHENGP1ADWELAP4160 | DH | ENG | 1A | DRWG | ELDW | APP | RES-1A |
| DUKHENGP1ADWELAP4170 |  | Power Layout Drawings-App | 30d | 2013-03-18 A | 2013-04-21 A | DUKHENGP1ADWELSM4170 | 100% |  |  |  |  |  |  |  |  | 1ADWELAP15 | DUKHENG1ADWELAP4170 | DUKHENGP1ADWELAP4170 | DH | ENG | 1A | DRWG | ELDW | APP | RES-1A |
| DUKHENGP1ADWELAP4180 |  | Central Alarm Monitoring System Drawings-App | 30d | 2013-03-30 A | 2013-05-02 | DUKHENGP1ADWELSM4180 | 80% | 6d |  |  | 103d | 0d | 2013-05-02 |  |  | 1ADWELAP20 | DUKHENG1ADWELAP4180 | DUKHENGP1ADWELAP4180 | DH | ENG | 1A | DRWG | ELDW | APP | RES-1A |
| DUKHENGP1ADWELAP4190 |  | Audio Video Intercom System Drawings-App | 30d | 2013-04-16 A | 2013-05-20 | DUKHENGP1ADWELSM4190 | 30% | 21d |  |  | 94d | 0d | 2013-05-20 |  |  | 1ADWELAP25 | DUKHENG1ADWELAP4190 | DUKHENGP1ADWELAP4190 | DH | ENG | 1A | DRWG | ELDW | APP | RES-1A |
| DUKHENGP1ADWELAP4200 |  | Telephone & TV System Drawings-App | 30d | 2013-05-04 | 2013-06-06 | DUKHENGP1ADWELSM4200 |  |  |  |  | 79d | 58d |  |  |  | 1ADWELAP30 | DUKHENG1ADWELAP4200 | DUKHENGP1ADWELAP4200 | DH | ENG | 1A | DRWG | ELDW | APP | RES-1A |

Notes:
- DUKHENGP1ADWELSM4150: Expenses: P1A-Electrical Installations 147871
- DUKHENGP1ADWELSM4160: Expenses: P1A-Electrical Installations 475783
- DUKHENGP1ADWELSM4170: Expenses: P1A-Electrical Installations 228578
- DUKHENGP1ADWELSM4180: Expenses: P1A-Electrical Installations 97514
- DUKHENGP1ADWELSM4190: Expenses: P1A-Electrical Installations 53149; P1A-External works within the Plot Curtilage 1730
- DUKHENGP1ADWELSM4200: Expenses: P1A-Electrical Installations 110924

| ID | WBS | Activity | Duration | Start | Finish | Predecessors | Complete | Remaining | Planned start | Planned finish | Total float | Free float | Expected finish | Resources | Cost | P3 ACTID | P6 ID (old) | NP61D | PROJECT | PHASES | PACKAGE | PART | ELEMENTS | STEP | RES PACK |
| --- | --- | --- | --- | --- | --- | --- | --- | --- | --- | --- | --- | --- | --- | --- | --- | --- | --- | --- | --- | --- | --- | --- | --- | --- | --- |
|  | H30 | **PLUMBING,DRAINAGE,FIREFIGHTING & AC DRAWINGS** |  | 2013-02-17 | 2013-05-30 |  |  |  |  |  |  |  |  |  |  |  |  |  |  |  |  |  |  |  |  |
|  | G10 | **SUBMISSION OF DRAWINGS** |  | 2013-02-17 | 2013-03-29 |  |  |  |  |  |  |  |  |  |  |  |  |  |  |  |  |  |  |  |  |
| DUKHENGP1ADWMESM4210 |  | Plumbing Layout & Details Drawings-Sub | 15d | 2013-02-17 A | 2013-03-05 A | DUKHPROGEN00PQAP2040, DUKHPROGEN00PQAP1040 | 100% |  |  |  |  |  |  | DRAFTMAN SK [20 h] | 274,917 | 1ADWPLSB05 | DUKHENG1ADWMESM4210 | DUKHENGP1ADWMESM4210 | DH | ENG | 1A | DRWG | PLDW | SUB | RES-1A |
| DUKHENGP1ADWMESM4220 |  | Drainage Layout & Details Drawings-Sub | 15d | 2013-02-17 A | 2013-03-05 A | DUKHPROGEN00PQAP2040, DUKHPROGEN00PQAP1040 | 100% |  |  |  |  |  |  | DRAFTMAN SK [20 h] | 102,184 | 1ADWPLSB10 | DUKHENG1ADWMESM4220 | DUKHENGP1ADWMESM4220 | DH | ENG | 1A | DRWG | PLDW | SUB | RES-1A |
| DUKHENGP1ADWMESM4230 |  | Fire Fighting Layout & Details Drawings-Sub | 15d | 2013-03-06 A | 2013-03-23 A | DUKHPROGEN00PQAP2040, DUKHPROGEN00PQAP1040, DUKHENGP1ADWMESM4220 | 100% |  |  |  |  |  |  | DRAFTMAN SK [20 h] | 97,514 | 1ADWPLSB15 | DUKHENG1ADWMESM4230 | DUKHENGP1ADWMESM4230 | DH | ENG | 1A | DRWG | PLDW | SUB | RES-1A |
| DUKHENGP1ADWMESM4240 |  | AC Layout & Details Drawings-Sub | 15d | 2013-03-24 A | 2013-03-29 A | DUKHPROGEN00PQAP1040, DUKHENGP1ADWMESM4230, DUKHPROGEN00PQAP2040 | 100% |  | 2013-03-24 | 2013-04-09 |  |  |  | DRAFTMAN SK [30 h] | 202,141 | 1ADWPLSB20 | DUKHENG1ADWMESM4240 | DUKHENGP1ADWMESM4240 | DH | ENG | 1A | DRWG | PLDW | SUB | RES-1A |
|  | G20 | **APPROVAL OF DRAWINGS** |  | 2013-03-30 | 2013-05-30 |  |  |  |  |  |  |  |  |  |  |  |  |  |  |  |  |  |  |  |  |
| DUKHENGP1ADWMEAP4210 |  | Plumbing Layout & Details Drawings-App | 10d | 2013-03-30 A | 2013-04-09 A | DUKHENGP1ADWMESM4210 | 100% |  |  |  |  |  |  |  |  | 1ADWPLAP05 | DUKHENG1ADWMEAP4210 | DUKHENGP1ADWMEAP4210 | DH | ENG | 1A | DRWG | PLDW | APP | RES-1A |
| DUKHENGP1ADWMEAP4220 |  | Drainage Layout & Details Drawings-App | 10d | 2013-03-30 A | 2013-04-09 A | DUKHENGP1ADWMESM4210, DUKHENGP1ADWMESM4220 | 100% |  |  |  |  |  |  |  |  | 1ADWPLAP10 | DUKHENG1ADWMEAP4220 | DUKHENGP1ADWMEAP4220 | DH | ENG | 1A | DRWG | PLDW | APP | RES-1A |
| DUKHENGP1ADWMEAP4230 |  | Fire Fighting Layout & Details Drawings-App | 25d | 2013-03-30 A | 2013-04-27 | DUKHENGP1ADWMESM4230 | 100% | 0d |  |  | 150d | 94d |  |  |  | 1ADWPLAP15 | DUKHENG1ADWMEAP4230 | DUKHENGP1ADWMEAP4230 | DH | ENG | 1A | DRWG | PLDW | APP | RES-1A |
| DUKHENGP1ADWMEAP4240 |  | AC Layout & Details Drawings-App | 30d | 2013-04-27 | 2013-05-30 | DUKHENGP1ADWMESM4240 |  |  |  |  | 54d | 40d |  |  |  | 1ADWPLAP20 | DUKHENG1ADWMEAP4240 | DUKHENGP1ADWMEAP4240 | DH | ENG | 1A | DRWG | PLDW | APP | RES-1A |
|  | H40 | **INFRA DRAWINGS** |  | 2013-03-30 | 2013-08-27 |  |  |  |  |  |  |  |  |  |  |  |  |  |  |  |  |  |  |  |  |
|  | G10 | **SUBMISSION OF DRAWINGS** |  | 2013-03-30 | 2013-07-02 |  |  |  |  |  |  |  |  |  |  |  |  |  |  |  |  |  |  |  |  |
| DUKHENGI1ADWDRSM4250 |  | Drainage Line Layout & Details-Sub | 15d | 2013-03-30 A | 2013-04-15 A | DUKHMOBI1APS00001400, DUKHPROGEN00PQAP2040, DUKHPROGEN00PQAP1040, DUKHENGP1ADWMESM4240 | 100% |  |  |  |  |  |  | DRAFTMAN SK [30 h] | 40,535 | 1ADWINSB15 | DUKHENG1ADWINSM4250 | DUKHENGI1ADWDRSM4250 | DH | ENG | 1A | DRWG | IFDW | SUB | RES-1A |
| DUKHENGI1ADWFFSM4260 |  | Fire Fighting Line Layout & Details-Sub | 15d | 2013-03-30 A | 2013-04-15 A | DUKHENGI1ADWWSSM4270 SS | 100% |  |  |  |  |  |  | DRAFTMAN SK [30 h] | 43,820 | 1ADWINSB20 | DUKHENG1ADWINSM4260 | DUKHENGI1ADWFFSM4260 | DH | ENG | 1A | DRWG | IFDW | SUB | RES-1A |
| DUKHENGI1ADWWSSM4270 |  | Water Supply Line Layout & Details-Sub | 15d | 2013-03-30 A | 2013-04-15 A | DUKHENGI1ADWDRSM4250 SS | 100% |  |  |  |  |  |  | DRAFTMAN SK [30 h] | 32,335 | 1ADWINSB25 | DUKHENG1ADWINSM4270 | DUKHENGI1ADWWSSM4270 | DH | ENG | 1A | DRWG | IFDW | SUB | RES-1A |
| DUKHENGI1ADWELSM4280 |  | Electrical Line Layout & Details-Sub | 15d | 2013-04-16 A | 2013-05-02 | DUKHENGI1ADWFFSM4260, DUKHPROGEN00PQAP1040, DUKHPROGEN00PQAP2040 | 60% | 6d |  |  | 63d | 0d | 2013-05-02 | DRAFTMAN SK [30 h] | 257,550 | 1ADWINSB05 | DUKHENG1ADWINSM4280 | DUKHENGI1ADWELSM4280 | DH | ENG | 1A | DRWG | IFDW | SUB | RES-1A |
| DUKHENGI1ADWSTSM4290 |  | Street Lighting Layout & details -Sub | 15d | 2013-04-16 A | 2013-05-02 | DUKHENGI1ADWELSM4280 SS | 60% | 6d |  |  | 63d | 0d | 2013-05-02 | DRAFTMAN SK [30 h] | 80,015 | 1ADWINSB10 | DUKHENG1ADWINSM4290 | DUKHENGI1ADWSTSM4290 | DH | ENG | 1A | DRWG | IFDW | SUB | RES-1A |
| DUKHENGI1ADWTCSM4300 |  | Telecommunication Line Layout & Details-Sub | 15d | 2013-04-16 A | 2013-05-02 | DUKHENGI1ADWSTSM4290 SS | 60% | 6d |  |  | 63d | 0d | 2013-05-02 | DRAFTMAN SK [30 h] | 38,520 | 1ADWINSB35 | DUKHENG1ADWINSM4300 | DUKHENGI1ADWTCSM4300 | DH | ENG | 1A | DRWG | IFDW | SUB | RES-1A |
| DUKHENGI1ADWBWSM4330 |  | Boundary Wall Layout & Details-Sub | 15d | 2013-05-04 | 2013-05-20 | DUKHENGI1ADWSLSM4320 SS |  |  |  |  | 63d | 0d |  | DRAFTMAN SK [30 h] | 348,030 | 1ADWINSB50 | DUKHENG1ADWINSM4330 | DUKHENGI1ADWBWSM4330 | DH | ENG | 1A | DRWG | IFDW | SUB | RES-1A |
| DUKHENGI1ADWIRSM4310 |  | Irrigation Layout & Details-Sub | 15d | 2013-05-04 | 2013-05-20 | DUKHENGI1ADWTCSM4300, DUKHENGI1ADWWSSM4270 |  |  |  |  | 63d | 0d |  | DRAFTMAN SK [30 h] | 45,560 | 1ADWINSB30 | DUKHENG1ADWINSM4310 | DUKHENGI1ADWIRSM4310 | DH | ENG | 1A | DRWG | IFDW | SUB | RES-1A |
| DUKHENGI1ADWSLSM4320 |  | Soft & HardLandscaping Layout & Detail-Sub | 15d | 2013-05-04 | 2013-05-20 | DUKHENGI1ADWIRSM4310 SS |  |  |  |  | 63d | 0d |  | DRAFTMAN SK [30 h] | 326,159 | 1ADWINSB45 | DUKHENG1ADWINSM4320 | DUKHENGI1ADWSLSM4320 | DH | ENG | 1A | DRWG | IFDW | SUB | RES-1A |
| DUKHENGI1ADWIWSM4360 |  | Irrigation Water Tank & Pump Room Details- Sub | 15d | 2013-05-12 | 2013-05-28 | DUKHENGI1ADWRWSM4350 SS |  |  |  |  | 63d | 0d |  | DRAFTMAN SK [30 h] | 20,612 | 1ADWINSB60 | DUKHENG1ADWINSM4360 | DUKHENGI1ADWIWSM4360 | DH | ENG | 1A | DRWG | IFDW | SUB | RES-1A |
| DUKHENGI1ADWPSSM4340 |  | Parking Shed Layout & Details Drawings-Sub | 15d | 2013-05-12 | 2013-05-28 | DUKHENGI1ADWBWSM4330 SS+7d |  |  |  |  | 63d | 0d |  | DRAFTMAN SK [30 h] | 183,835 | 1ADWINSB40 | DUKHENG1ADWINSM4340 | DUKHENGI1ADWPSSM4340 | DH | ENG | 1A | DRWG | IFDW | SUB | RES-1A |
| DUKHENGI1ADWRWSM4350 |  | Road Layout & Details-Sub | 15d | 2013-05-12 | 2013-05-28 | DUKHENGI1ADWPSSM4340 SS |  |  |  |  | 63d | 0d |  | DRAFTMAN SK [30 h] | 336,300 | 1ADWINSB55 | DUKHENG1ADWINSM4350 | DUKHENGI1ADWRWSM4350 | DH | ENG | 1A | DRWG | IFDW | SUB | RES-1A |
| DUKHENGI1ADWTRSM4370 |  | Telephone Room Details-Sub | 15d | 2013-05-29 | 2013-06-15 | DUKHENGI1ADWIWSM4360 |  |  |  |  | 74d | 0d |  | DRAFTMAN SK [30 h] | 6,093 | 1ADWINSB65 | DUKHENG1ADWINSM4370 | DUKHENGI1ADWTRSM4370 | DH | ENG | 1A | DRWG | IFDW | SUB | RES-1A |
| DUKHENGI1ADWGHSM4390 |  | Guard House Plan & Details-Sub | 15d | 2013-06-16 | 2013-07-02 | DUKHENGI1ADWTRSM4370 |  |  |  |  | 301d | 15d |  | DRAFTMAN SK [30 h] | 2,607 | 1ADWINSB75 | DUKHENG1ADWINSM4390 | DUKHENGI1ADWGHSM4390 | DH | ENG | 1A | DRWG | IFDW | SUB | RES-1A |
| DUKHENGI1ADWGZSM4380 |  | Gazebo Plan & Details-Sub | 15d | 2013-06-16 | 2013-07-02 | DUKHENGI1ADWTRSM4370 |  |  |  |  | 89d | 15d |  | DRAFTMAN SK [30 h] | 23,753 | 1ADWINSB70 | DUKHENG1ADWINSM4380 | DUKHENGI1ADWGZSM4380 | DH | ENG | 1A | DRWG | IFDW | SUB | RES-1A |

Notes:
- DUKHENGP1ADWMESM4210: Expenses: P1A-Plumbing and Drainage works 274917
- DUKHENGP1ADWMESM4220: Expenses: P1A-Plumbing and Drainage works 102184
- DUKHENGP1ADWMESM4230: Expenses: P1A-Electrical Installations 97514
- DUKHENGP1ADWMESM4240: Expenses: P1A-Air-conditioning and Ventilation works 202141
- DUKHENGI1ADWDRSM4250: Expenses: I1A-Surface Water drainage and Sewerage system 40535
- DUKHENGI1ADWFFSM4260: Expenses: I1A-Water supply system 43820
- DUKHENGI1ADWWSSM4270: Expenses: I1A-Water supply system 32335
- DUKHENGI1ADWELSM4280: Expenses: I1A-Electrical power supply and distribution 257550
- DUKHENGI1ADWSTSM4290: Expenses: I1A-Street lighting 80015
- DUKHENGI1ADWTCSM4300: Expenses: I1A-Telecommunication 38520
- DUKHENGI1ADWBWSM4330: Expenses: I1A-Hard and soft landscaping 348030
- DUKHENGI1ADWIRSM4310: Expenses: I1A-Water supply system 45560
- DUKHENGI1ADWSLSM4320: Expenses: I1A-Hard and soft landscaping 326159
- DUKHENGI1ADWIWSM4360: Expenses: I1A-Water supply system 20612
- DUKHENGI1ADWPSSM4340: Expenses: I1A-Road work 183835
- DUKHENGI1ADWRWSM4350: Expenses: I1A-Road work 336300
- DUKHENGI1ADWTRSM4370: Expenses: I1A-Telecommunication 6093
- DUKHENGI1ADWGHSM4390: Expenses: I1A-Hard and soft landscaping 2607
- DUKHENGI1ADWGZSM4380: Expenses: I1A-Hard and soft landscaping 23753

| ID | WBS | Activity | Duration | Start | Finish | Predecessors | Complete | Total float | Free float | Expected finish | Resources | Cost | P3 ACTID | P6 ID (old) | NP61D | PROJECT | PHASES | PACKAGE | PART | ELEMENTS | STEP | RES PACK |
| --- | --- | --- | --- | --- | --- | --- | --- | --- | --- | --- | --- | --- | --- | --- | --- | --- | --- | --- | --- | --- | --- | --- |
|  | G20 | **APPROVAL OF DRAWINGS** |  | 2013-04-27 | 2013-08-27 |  |  |  |  |  |  |  |  |  |  |  |  |  |  |  |  |  |
| DUKHENGI1ADWDRAP4250 |  | Drainage Line Layout & Details-App | 21d | 2013-04-27 | 2013-05-20 | DUKHENGI1ADWDRSM4250 |  | 98d | 0d | 2013-05-20 |  |  | 1ADWINAP15 | DUKHENG1ADWINAP4250 | DUKHENGI1ADWDRAP4250 | DH | ENG | 1A | DRWG | IFDW | APP | RES-1A |
| DUKHENGI1ADWFFAP4260 |  | Fire Fighting Line Layout & Details-App | 21d | 2013-04-27 | 2013-05-20 | DUKHENGI1ADWFFSM4260 |  | 59d | 0d | 2013-05-20 |  |  | 1ADWINAP20 | DUKHENG1ADWINAP4260 | DUKHENGI1ADWFFAP4260 | DH | ENG | 1A | DRWG | IFDW | APP | RES-1A |
| DUKHENGI1ADWWSAP4270 |  | Water Supply Line Layout & Details-App | 21d | 2013-04-27 | 2013-05-20 | DUKHENGI1ADWWSSM4270 |  | 100d | 0d | 2013-05-20 |  |  | 1ADWINAP25 | DUKHENG1ADWINAP4270 | DUKHENGI1ADWWSAP4270 | DH | ENG | 1A | DRWG | IFDW | APP | RES-1A |
| DUKHENGI1ADWELAP4280 |  | Electrical Line Layout & Details-App | 30d | 2013-05-04 | 2013-06-06 | DUKHENGI1ADWELSM4280 |  | 74d | 0d |  |  |  | 1ADWINAP05 | DUKHENG1ADWINAP4280 | DUKHENGI1ADWELAP4280 | DH | ENG | 1A | DRWG | IFDW | APP | RES-1A |
| DUKHENGI1ADWBWAP4330 |  | Boundary Wall Layout & Details-App | 30d | 2013-05-21 | 2013-06-24 | DUKHENGI1ADWBWSM4330 |  | 99d | 59d |  |  |  | 1ADWINAP50 | DUKHENG1ADWINAP4330 | DUKHENGI1ADWBWAP4330 | DH | ENG | 1A | DRWG | IFDW | APP | RES-1A |
| DUKHENGI1ADWIRAP4310 |  | Irrigation Layout & Details-App | 30d | 2013-05-21 | 2013-06-24 | DUKHENGI1ADWIRSM4310 |  | 105d | 29d |  |  |  | 1ADWINAP30 | DUKHENG1ADWINAP4310 | DUKHENGI1ADWIRAP4310 | DH | ENG | 1A | DRWG | IFDW | APP | RES-1A |
| DUKHENGI1ADWSLAP4320 |  | Soft & HardLandscaping Layout & Detail-App | 30d | 2013-05-21 | 2013-06-24 | DUKHENGI1ADWSLSM4320 |  | 81d | 55d |  |  |  | 1ADWINAP45 | DUKHENG1ADWINAP4320 | DUKHENGI1ADWSLAP4320 | DH | ENG | 1A | DRWG | IFDW | APP | RES-1A |
| DUKHENGI1ADWIWAP4360 |  | Irrigation Water Tank & Pump Room Details-App | 30d | 2013-05-29 | 2013-07-02 | DUKHENGI1ADWIWSM4360 |  | 63d | 22d |  |  |  | 1ADWINAP60 | DUKHENG1ADWINAP4360 | DUKHENGI1ADWIWAP4360 | DH | ENG | 1A | DRWG | IFDW | APP | RES-1A |
| DUKHENGI1ADWPSAP4340 |  | Parking Shed Layout & Details Drawings-App | 30d | 2013-05-29 | 2013-07-02 | DUKHENGI1ADWPSSM4340 |  | 164d | 37d |  |  |  | 1ADWINAP40 | DUKHENG1ADWINAP4340 | DUKHENGI1ADWPSAP4340 | DH | ENG | 1A | DRWG | IFDW | APP | RES-1A |
| DUKHENGI1ADWRWAP4350 |  | Road Layout & Details-App | 30d | 2013-05-29 | 2013-07-02 | DUKHENGI1ADWRWSM4350 |  | 163d | 33d |  |  |  | 1ADWINAP55 | DUKHENG1ADWINAP4350 | DUKHENGI1ADWRWAP4350 | DH | ENG | 1A | DRWG | IFDW | APP | RES-1A |
| DUKHENGI1ADWSTAP4290 |  | Street Lighting Layout & details -App | 30d | 2013-06-08 | 2013-07-11 | DUKHENGI1ADWSTSM4290, DUKHENGI1ADWELAP4280 |  | 74d | 0d |  |  |  | 1ADWINAP10 | DUKHENG1ADWINAP4290 | DUKHENGI1ADWSTAP4290 | DH | ENG | 1A | DRWG | IFDW | APP | RES-1A |
| DUKHENGI1ADWTRAP4370 |  | Telephone Room Details-App | 30d | 2013-06-16 | 2013-07-20 | DUKHENGI1ADWTRSM4370 |  | 74d | 0d |  |  |  | 1ADWINAP65 | DUKHENG1ADWINAP4370 | DUKHENGI1ADWTRAP4370 | DH | ENG | 1A | DRWG | IFDW | APP | RES-1A |
| DUKHENGI1ADWTCAP4300 |  | Telecommunication Line Layout & Details-App | 30d | 2013-07-13 | 2013-08-19 | DUKHENGI1ADWTCSM4300, DUKHENGI1ADWSTAP4290 |  | 74d | 9d |  |  |  | 1ADWINAP35 | DUKHENG1ADWINAP4300 | DUKHENGI1ADWTCAP4300 | DH | ENG | 1A | DRWG | IFDW | APP | RES-1A |
| DUKHENGI1ADWGHAP4390 |  | Guard House Plan & Details-App | 30d | 2013-07-21 | 2013-08-27 | DUKHENGI1ADWGHSM4390, DUKHENGI1ADWTRAP4370 |  | 286d | 280d |  |  |  | 1ADWINAP75 | DUKHENG1ADWINAP4390 | DUKHENGI1ADWGHAP4390 | DH | ENG | 1A | DRWG | IFDW | APP | RES-1A |
| DUKHENGI1ADWGZAP4380 |  | Gazebo Plan & Details-App | 30d | 2013-07-21 | 2013-08-27 | DUKHENGI1ADWGZSM4380, DUKHENGI1ADWTRAP4370 |  | 74d | 9d |  |  |  | 1ADWINAP70 | DUKHENG1ADWINAP4380 | DUKHENGI1ADWGZAP4380 | DH | ENG | 1A | DRWG | IFDW | APP | RES-1A |
|  | L30 | **PACKAGE-1B** |  | 2012-12-12 | 2013-08-26 |  |  |  |  |  |  |  |  |  |  |  |  |  |  |  |  |  |
|  | E05 | **SHOP DRAWINGS SUBMISSION & APPROVAL** |  | 2012-12-12 | 2013-08-26 |  |  |  |  |  |  |  |  |  |  |  |  |  |  |  |  |  |
|  | H05 | **STRUCTURAL DRAWINGS** |  | 2012-12-12 | 2013-03-17 |  |  |  |  |  |  |  |  |  |  |  |  |  |  |  |  |  |
|  | G10 | **SUBMISSION OF DRAWINGS** |  | 2012-12-12 | 2013-02-09 |  |  |  |  |  |  |  |  |  |  |  |  |  |  |  |  |  |
| DUKHENGP1BDWSTSM4400 |  | Footing Drawings-Sub | 15d | 2012-12-12 A | 2012-12-30 A | DUKHMOBP010000004020 SS+5d | 100% |  |  |  | DRAFTMAN SK [30 h] | 386,868 | 1BDWSTSB05 | DUKHENG1BDWSTSM4400 | DUKHENGP1BDWSTSM4400 | DH | ENG | 1B | DRWG | STDW | SUB | RES-1B |
| DUKHENGP1BDWSTSM4410 |  | Grade Beam & Slab Drawings-Sub | 15d | 2012-12-19 A | 2013-01-05 A | DUKHENGP1BDWSTSM4400 SS+5d | 100% |  |  |  | DRAFTMAN SK [30 h] | 499,170 | 1BDWSTSB10 | DUKHENG1BDWSTSM4410 | DUKHENGP1BDWSTSM4410 | DH | ENG | 1B | DRWG | STDW | SUB | RES-1B |
| DUKHENGP1BDWSTSM4420 |  | Column Drawings-Sub | 15d | 2012-12-25 A | 2013-01-10 A | DUKHENGP1BDWSTSM4410 SS+5d | 100% |  |  |  | DRAFTMAN SK [30 h] | 172,332 | 1BDWSTSB15 | DUKHENG1BDWSTSM4420 | DUKHENGP1BDWSTSM4420 | DH | ENG | 1B | DRWG | STDW | SUB | RES-1B |
| DUKHENGP1BDWSTSM4430 |  | GF Beams & Slabs Drawings-Sub | 15d | 2013-01-06 A | 2013-01-22 A | DUKHENGP1BDWSTSM4420 SS+10d | 100% |  |  |  | DRAFTMAN SK [30 h] | 370,440 | 1BDWSTSB20 | DUKHENG1BDWSTSM4430 | DUKHENGP1BDWSTSM4430 | DH | ENG | 1B | DRWG | STDW | SUB | RES-1B |
| DUKHENGP1BDWSTSM4440 |  | FF Beams & Slabs Drawings-Sub | 15d | 2013-01-23 A | 2013-02-09 A | DUKHENGP1BDWSTSM4430 | 100% |  |  |  | DRAFTMAN SK [30 h] | 358,054 | 1BDWSTSB25 | DUKHENG1BDWSTSM4440 | DUKHENGP1BDWSTSM4440 | DH | ENG | 1B | DRWG | STDW | SUB | RES-1B |

Notes:
- DUKHENGP1BDWSTSM4400: Expenses: P1B-Concrete Works 317012; P1B-Excavation and Earth Works 69856
- DUKHENGP1BDWSTSM4410: Expenses: P1B-Concrete Works 474040; P1B-Excavation and Earth Works 25130
- DUKHENGP1BDWSTSM4420: Expenses: P1B-Concrete Works 172332
- DUKHENGP1BDWSTSM4430: Expenses: P1B-Concrete Works 370440
- DUKHENGP1BDWSTSM4440: Expenses: P1B-Concrete Works 358054

| ID | WBS | Activity | Duration | Start | Finish | Predecessors | Complete | Remaining | Planned start | Planned finish | Total float | Free float | Expected finish | Resources | Cost | P3 ACTID | P6 ID (old) | NP61D | PROJECT | PHASES | PACKAGE | PART | ELEMENTS | STEP | RES PACK |
| --- | --- | --- | --- | --- | --- | --- | --- | --- | --- | --- | --- | --- | --- | --- | --- | --- | --- | --- | --- | --- | --- | --- | --- | --- | --- |
|  | G20 | **APPROVAL OF DRAWINGS** |  | 2012-12-29 | 2013-03-17 |  |  |  |  |  |  |  |  |  |  |  |  |  |  |  |  |  |  |  |  |
| DUKHENGP1BDWSTAP4400 |  | Footing Drawings-App | 32d | 2012-12-29 A | 2013-02-01 A | DUKHENGP1BDWSTSM4400 | 100% |  | 2012-12-29 | 2013-02-03 |  |  |  |  |  | 1BDWSTAP30 | DUKHENG1BDWSTAP4400 | DUKHENGP1BDWSTAP4400 | DH | ENG | 1B | DRWG | STDW | APP | RES-1B |
| DUKHENGP1BDWSTAP4410 |  | Grade Beam & Slab Drawings-App | 30d | 2013-01-06 A | 2013-02-09 A | DUKHENGP1BDWSTSM4410 | 100% |  |  |  |  |  |  |  |  | 1BDWSTAP35 | DUKHENG1BDWSTAP4410 | DUKHENGP1BDWSTAP4410 | DH | ENG | 1B | DRWG | STDW | APP | RES-1B |
| DUKHENGP1BDWSTAP4420 |  | Column Drawings-App | 12d | 2013-02-02 A | 2013-02-16 A | DUKHENGP1BDWSTSM4420 | 100% |  |  |  |  |  |  |  |  | 1BDWSTAP40 | DUKHENG1BDWSTAP4420 | DUKHENGP1BDWSTAP4420 | DH | ENG | 1B | DRWG | STDW | APP | RES-1B |
| DUKHENGP1BDWSTAP4430 |  | GF Beams & Slabs Drawings-App | 22d | 2013-02-02 A | 2013-02-27 A | DUKHENGP1BDWSTSM4430 | 100% |  |  |  |  |  |  |  |  | 1BDWSTAP45 | DUKHENG1BDWSTAP4430 | DUKHENGP1BDWSTAP4430 | DH | ENG | 1B | DRWG | STDW | APP | RES-1B |
| DUKHENGP1BDWSTAP4440 |  | FF Beams & Slabs Drawings-App | 30d | 2013-02-10 A | 2013-03-17 A | DUKHENGP1BDWSTSM4440 | 100% |  |  |  |  |  |  |  |  | 1BDWSTAP50 | DUKHENG1BDWSTAP4440 | DUKHENGP1BDWSTAP4440 | DH | ENG | 1B | DRWG | STDW | APP | RES-1B |
|  | H10 | **ARCHITECTURAL DRAWINGS** |  | 2013-02-10 | 2013-05-27 |  |  |  |  |  |  |  |  |  |  |  |  |  |  |  |  |  |  |  |  |
|  | G10 | **SUBMISSION OF DRAWINGS** |  | 2013-02-10 | 2013-04-22 |  |  |  |  |  |  |  |  |  |  |  |  |  |  |  |  |  |  |  |  |
| DUKHENGP1BDWARSM4450 |  | Ground Floor Plan-Sub | 15d | 2013-02-10 A | 2013-02-27 A | DUKHENGP1BDWSTSM4440 | 100% |  |  |  |  |  |  | DRAFTMAN SK [30 h] | 235,002 | 1BDWARSB05 | DUKHENG1BDWARSM4450 | DUKHENGP1BDWARSM4450 | DH | ENG | 1B | DRWG | ARDW | SUB | RES-1B |
| DUKHENGP1BDWARSM4460 |  | First Floor Plan-Sub | 15d | 2013-02-19 A | 2013-03-07 A | DUKHENGP1BDWARSM4450 SS+7d | 100% |  |  |  |  |  |  | DRAFTMAN SK [30 h] | 183,522 | 1BDWARSB10 | DUKHENG1BDWARSM4460 | DUKHENGP1BDWARSM4460 | DH | ENG | 1B | DRWG | ARDW | SUB | RES-1B |
| DUKHENGP1BDWARSM4470 |  | Roof Floor Plan-Sub | 15d | 2013-02-27 A | 2013-03-16 A | DUKHENGP1BDWARSM4460 SS+7d | 100% |  |  |  |  |  |  | DRAFTMAN SK [20 h] | 34,358 | 1BDWARSB15 | DUKHENG1BDWARSM4470 | DUKHENGP1BDWARSM4470 | DH | ENG | 1B | DRWG | ARDW | SUB | RES-1B |
| DUKHENGP1BDWARSM4500 |  | Ceramic Flooring & Wall Drawings-Sub | 15d | 2013-03-09 A | 2013-03-25 A | DUKHENGP1BDWARSM4460, DUKHENGP1BDWARSM4450, DUKHENGP1BDWARSM4470 SS+3d | 100% |  |  |  |  |  |  | DRAFTMAN SK [20 h] | 102,688 | 1BDWARSB20 | DUKHENG1BDWARSM4500 | DUKHENGP1BDWARSM4500 | DH | ENG | 1B | DRWG | ARDW | SUB | RES-1B |
| DUKHENGP1BDWARSM4510 |  | Porcelain Floor Drawings-Sub | 15d | 2013-03-09 A | 2013-03-25 A | DUKHENGP1BDWARSM4500 SS | 100% |  |  |  |  |  |  | DRAFTMAN SK [20 h] | 155,442 | 1BDWARSB25 | DUKHENG1BDWARSM4510 | DUKHENGP1BDWARSM4510 | DH | ENG | 1B | DRWG | ARDW | SUB | RES-1B |
| DUKHENGP1BDWARSM4520 |  | Cobble & Slate Flooring Drawings-Sub | 15d | 2013-03-09 A | 2013-03-25 A | DUKHENGP1BDWARSM4510 SS | 100% |  |  |  |  |  |  | DRAFTMAN SK [20 h] | 190,184 | 1BDWARSB30 | DUKHENG1BDWARSM4520 | DUKHENGP1BDWARSM4520 | DH | ENG | 1B | DRWG | ARDW | SUB | RES-1B |
| DUKHENGP1BDWARSM4480 |  | Gypsum False Ceiling Drawings-Sub | 15d | 2013-03-10 A | 2013-03-26 A | DUKHPROGEN00PQAP1050, DUKHPROGEN00PQAP2050 | 100% |  |  |  |  |  |  | DRAFTMAN SK [20 h] | 115,544 | 1BDWARSB35 | DUKHENG1BDWARSM4480 | DUKHENGP1BDWARSM4480 | DH | ENG | 1B | DRWG | ARDW | SUB | RES-1B |
| DUKHENGP1BDWARSM4490 |  | Aluminum False Ceiling Drawings-Sub | 15d | 2013-03-10 A | 2013-03-26 A | DUKHPROGEN00PQAP1050, DUKHPROGEN00PQAP2050 | 100% |  |  |  |  |  |  | DRAFTMAN SK [20 h] | 7,190 | 1BDWARSB40 | DUKHENG1BDWARSM4490 | DUKHENGP1BDWARSM4490 | DH | ENG | 1B | DRWG | ARDW | SUB | RES-1B |
| DUKHENGP1BDWARSM4530 |  | Doors & window Drawings-Sub | 15d | 2013-03-20 A | 2013-04-06 A | DUKHPROGEN00PQAP1080, DUKHENGP1BDWARSM4450, DUKHPROGEN00PQAP2080 | 100% |  |  |  |  |  |  | DRAFTMAN SK [20 h] | 660,874 | 1BDWARSB45 | DUKHENG1BDWARSM4530 | DUKHENGP1BDWARSM4530 | DH | ENG | 1B | DRWG | ARDW | SUB | RES-1B |
| DUKHENGP1BDWARSM4540 |  | Carpentry & Joinery Drawings-Sub | 15d | 2013-04-06 A | 2013-04-22 A | DUKHENGP1BDWARSM4450, DUKHPROGEN00PQAP2150, DUKHPROGEN00PQAP1150 | 100% |  |  |  |  |  |  | DRAFTMAN SK [30 h] | 373,892 | 1BDWARSB50 | DUKHENG1BDWARSM4540 | DUKHENGP1BDWARSM4540 | DH | ENG | 1B | DRWG | ARDW | SUB | RES-1B |
|  | G20 | **APPROVAL OF DRAWINGS** |  | 2013-03-02 | 2013-05-27 |  |  |  |  |  |  |  |  |  |  |  |  |  |  |  |  |  |  |  |  |
| DUKHENGP1BDWARAP4450 |  | Ground Floor Plan-App | 29d | 2013-03-02 A | 2013-04-03 A | DUKHENGP1BDWARSM4450 | 100% |  |  |  |  |  |  |  |  | 1BDWARAP05 | DUKHENG1BDWARAP4450 | DUKHENGP1BDWARAP4450 | DH | ENG | 1B | DRWG | ARDW | APP | RES-1B |
| DUKHENGP1BDWARAP4460 |  | First Floor Plan-App | 12d | 2013-03-30 A | 2013-04-11 A | DUKHENGP1BDWARSM4460 | 100% |  |  |  |  |  |  |  |  | 1BDWARAP10 | DUKHENG1BDWARAP4460 | DUKHENGP1BDWARAP4460 | DH | ENG | 1B | DRWG | ARDW | APP | RES-1B |
| DUKHENGP1BDWARAP4470 |  | Roof Floor Plan-App | 19d | 2013-03-30 A | 2013-04-20 A | DUKHENGP1BDWARSM4470 | 100% |  |  |  |  |  |  |  |  | 1BDWARAP15 | DUKHENG1BDWARAP4470 | DUKHENGP1BDWARAP4470 | DH | ENG | 1B | DRWG | ARDW | APP | RES-1B |
| DUKHENGP1BDWARAP4480 |  | Gypsum False Ceiling Drawings-App | 28d | 2013-03-30 A | 2013-04-30 | DUKHENGP1BDWARSM4480 | 86% | 4d |  |  | 71d | 0d | 2013-04-30 |  |  | 1BDWARAP35 | DUKHENG1BDWARAP4480 | DUKHENGP1BDWARAP4480 | DH | ENG | 1B | DRWG | ARDW | APP | RES-1B |
| DUKHENGP1BDWARAP4490 |  | Aluminum False Ceiling Drawings-App | 28d | 2013-03-30 A | 2013-04-30 | DUKHENGP1BDWARSM4490 | 86% | 4d |  |  | 86d | 0d | 2013-04-30 |  |  | 1BDWARAP40 | DUKHENG1BDWARAP4490 | DUKHENGP1BDWARAP4490 | DH | ENG | 1B | DRWG | ARDW | APP | RES-1B |
| DUKHENGP1BDWARAP4500 |  | Ceramic Flooring & Wall Drawings-App | 27d | 2013-03-30 A | 2013-04-29 | DUKHENGP1BDWARSM4500 | 89% | 3d |  |  | 42d | 0d | 2013-04-29 |  |  | 1BDWARAP20 | DUKHENG1BDWARAP4500 | DUKHENGP1BDWARAP4500 | DH | ENG | 1B | DRWG | ARDW | APP | RES-1B |
| DUKHENGP1BDWARAP4510 |  | Porcelain Floor Drawings-App | 27d | 2013-03-30 A | 2013-04-29 | DUKHENGP1BDWARSM4510 | 89% | 3d |  |  | 51d | 0d | 2013-04-29 |  |  | 1BDWARAP25 | DUKHENG1BDWARAP4510 | DUKHENGP1BDWARAP4510 | DH | ENG | 1B | DRWG | ARDW | APP | RES-1B |
| DUKHENGP1BDWARAP4520 |  | Cobble & Slate Flooring Drawings-App | 27d | 2013-03-30 A | 2013-04-29 | DUKHENGP1BDWARSM4520 | 89% | 3d |  |  | 82d | 0d | 2013-04-29 |  |  | 1BDWARAP30 | DUKHENG1BDWARAP4520 | DUKHENGP1BDWARAP4520 | DH | ENG | 1B | DRWG | ARDW | APP | RES-1B |
| DUKHENGP1BDWARAP4530 |  | Doors & Window Drawings-App | 30d | 2013-04-21 A | 2013-05-25 | DUKHENGP1BDWARAP4460, DUKHENGP1BDWARAP4470, DUKHENGP1BDWARSM4530 | 17% | 25d |  |  | 49d | 0d | 2013-05-25 |  |  | 1BDWARAP45 | DUKHENG1BDWARAP4530 | DUKHENGP1BDWARAP4530 | DH | ENG | 1B | DRWG | ARDW | APP | RES-1B |
| DUKHENGP1BDWARAP4540 |  | Carpentry & Joinery Drawings-App | 27d | 2013-04-27 | 2013-05-27 | DUKHENGP1BDWARSM4540 |  |  |  |  | 84d | 0d | 2013-05-27 |  |  | 1BDWARAP50 | DUKHENG1BDWARAP4540 | DUKHENGP1BDWARAP4540 | DH | ENG | 1B | DRWG | ARDW | APP | RES-1B |

Notes:
- DUKHENGP1BDWARSM4450: Expenses: P1B-Block work 175240; P1B-Finishes 59762
- DUKHENGP1BDWARSM4460: Expenses: P1B-Block work 143690; P1B-Finishes 39832
- DUKHENGP1BDWARSM4470: Expenses: P1B-Block work 14430; P1B-Finishes 19928
- DUKHENGP1BDWARSM4500: Expenses: P1B-Finishes 102688
- DUKHENGP1BDWARSM4510: Expenses: P1B-Finishes 155442
- DUKHENGP1BDWARSM4520: Expenses: P1B-Finishes 190184
- DUKHENGP1BDWARSM4480: Expenses: P1B-Finishes 115544
- DUKHENGP1BDWARSM4490: Expenses: P1B-Finishes 7190
- DUKHENGP1BDWARSM4530: Expenses: P1B-Carpentry and Joinery 496638; P1B-Metal work 164236
- DUKHENGP1BDWARSM4540: Expenses: P1B-Carpentry and Joinery 373892

| ID | WBS | Activity | Duration | Start | Finish | Predecessors | Complete | Remaining | Planned start | Planned finish | Total float | Free float | Expected finish | Resources | Cost | P3 ACTID | P6 ID (old) | NP61D | PROJECT | PHASES | PACKAGE | PART | ELEMENTS | STEP | RES PACK |
| --- | --- | --- | --- | --- | --- | --- | --- | --- | --- | --- | --- | --- | --- | --- | --- | --- | --- | --- | --- | --- | --- | --- | --- | --- | --- |
|  | H20 | **ELECTRICAL DRAWINGS** |  | 2013-02-17 | 2013-05-30 |  |  |  |  |  |  |  |  |  |  |  |  |  |  |  |  |  |  |  |  |
|  | G10 | **SUBMISSION OF DRAWINGS** |  | 2013-02-17 | 2013-04-26 |  |  |  |  |  |  |  |  |  |  |  |  |  |  |  |  |  |  |  |  |
| DUKHENGP1BDWELSM4550 |  | Single Line Diagram-Sub | 15d | 2013-02-17 A | 2013-03-01 A | DUKHPROGEN00PQAP2040, DUKHPROGEN00PQAP1040 | 100% |  | 2013-02-17 | 2013-03-05 |  |  |  | DRAFTMAN SK [20 h] | 85,018 | 1BDWELSB05 | DUKHENG1BDWELSM4550 | DUKHENGP1BDWELSM4550 | DH | ENG | 1B | DRWG | ELDW | SUB | RES-1B |
| DUKHENGP1BDWELSM4560 |  | Lighting Layout Drawings-Sub | 15d | 2013-03-02 A | 2013-03-18 A | DUKHENGP1BDWELSM4550 | 100% |  |  |  |  |  |  | DRAFTMAN SK [20 h] | 381,662 | 1BDWELSB10 | DUKHENG1BDWELSM4560 | DUKHENGP1BDWELSM4560 | DH | ENG | 1B | DRWG | ELDW | SUB | RES-1B |
| DUKHENGP1BDWELSM4570 |  | Power Layout Drawings-Sub | 15d | 2013-03-06 A | 2013-03-23 A | DUKHENGP1BDWELSM4550, DUKHENGP1BDWELSM4560 SS+4d | 100% |  |  |  |  |  |  | DRAFTMAN SK [20 h] | 169,180 | 1BDWELSB15 | DUKHENG1BDWELSM4570 | DUKHENGP1BDWELSM4570 | DH | ENG | 1B | DRWG | ELDW | SUB | RES-1B |
| DUKHENGP1BDWELSM4580 |  | Central Alarm Monitoring System Drawings-Sub | 15d | 2013-03-14 A | 2013-03-31 A | DUKHENGP1BDWELSM4570 SS+7d | 100% |  |  |  |  |  |  | DRAFTMAN SK [20 h] | 82,042 | 1BDWELSB20 | DUKHENG1BDWELSM4580 | DUKHENGP1BDWELSM4580 | DH | ENG | 1B | DRWG | ELDW | SUB | RES-1B |
| DUKHENGP1BDWELSM4590 |  | Audio Video Intercom System Drawings-Sub | 15d | 2013-03-30 A | 2013-04-15 A | DUKHENGP1BDWELSM4580 | 100% |  |  |  |  |  |  | DRAFTMAN SK [30 h] | 38,996 | 1BDWELSB25 | DUKHENG1BDWELSM4590 | DUKHENGP1BDWELSM4590 | DH | ENG | 1B | DRWG | ELDW | SUB | RES-1B |
| DUKHENGP1BDWELSM4600 |  | Telephone & TV System Drawings-Sub | 15d | 2013-04-16 A | 2013-04-26 A | DUKHENGP1BDWELSM4590 | 100% |  | 2013-04-16 | 2013-05-02 |  |  |  | DRAFTMAN SK [30 h] | 70,636 | 1BDWELSB30 | DUKHENG1BDWELSM4600 | DUKHENGP1BDWELSM4600 | DH | ENG | 1B | DRWG | ELDW | SUB | RES-1B |
|  | G20 | **APPROVAL OF DRAWINGS** |  | 2013-03-02 | 2013-05-30 |  |  |  |  |  |  |  |  |  |  |  |  |  |  |  |  |  |  |  |  |
| DUKHENGP1BDWELAP4550 |  | Single Line Diagram-App | 30d | 2013-03-02 A | 2013-04-04 A | DUKHENGP1BDWELSM4550 | 100% |  |  |  |  |  |  |  |  | 1BDWELAP05 | DUKHENG1BDWELAP4550 | DUKHENGP1BDWELAP4550 | DH | ENG | 1B | DRWG | ELDW | APP | RES-1B |
| DUKHENGP1BDWELAP4560 |  | Lighting Layout Drawings-App | 30d | 2013-03-19 A | 2013-04-22 A | DUKHENGP1BDWELSM4560 | 100% |  |  |  |  |  |  |  |  | 1BDWELAP10 | DUKHENG1BDWELAP4560 | DUKHENGP1BDWELAP4560 | DH | ENG | 1B | DRWG | ELDW | APP | RES-1B |
| DUKHENGP1BDWELAP4570 |  | Power Layout Drawings-App | 30d | 2013-03-24 A | 2013-04-27 | DUKHENGP1BDWELSM4570 | 97% | 1d |  |  | 104d | 0d | 2013-04-27 |  |  | 1BDWELAP15 | DUKHENG1BDWELAP4570 | DUKHENGP1BDWELAP4570 | DH | ENG | 1B | DRWG | ELDW | APP | RES-1B |
| DUKHENGP1BDWELAP4580 |  | Central Alarm Monitoring System Drawings-App | 30d | 2013-03-30 A | 2013-04-26 A | DUKHENGP1BDWELSM4580 | 100% |  | 2013-03-30 | 2013-05-02 |  |  |  |  |  | 1BDWELAP20 | DUKHENG1BDWELAP4580 | DUKHENGP1BDWELAP4580 | DH | ENG | 1B | DRWG | ELDW | APP | RES-1B |
| DUKHENGP1BDWELAP4590 |  | Audio Video Intercom System Drawings-App | 30d | 2013-04-16 A | 2013-05-13 | DUKHENGP1BDWELSM4590 | 50% | 15d | 2013-04-16 | 2013-05-20 | 100d | 0d | 2013-05-13 |  |  | 1BDWELAP25 | DUKHENG1BDWELAP4590 | DUKHENGP1BDWELAP4590 | DH | ENG | 1B | DRWG | ELDW | APP | RES-1B |
| DUKHENGP1BDWELAP4600 |  | Telephone & TV System Drawings-App | 30d | 2013-04-27 | 2013-05-30 | DUKHENGP1BDWELSM4600 |  |  |  |  | 85d | 64d |  |  |  | 1BDWELAP30 | DUKHENG1BDWELAP4600 | DUKHENGP1BDWELAP4600 | DH | ENG | 1B | DRWG | ELDW | APP | RES-1B |
|  | H30 | **PLUMBING,DRAINAGE,FIREFIGHTING & AC DRAWINGS** |  | 2013-02-17 | 2013-05-09 |  |  |  |  |  |  |  |  |  |  |  |  |  |  |  |  |  |  |  |  |
|  | G10 | **SUBMISSION OF DRAWINGS** |  | 2013-02-17 | 2013-04-04 |  |  |  |  |  |  |  |  |  |  |  |  |  |  |  |  |  |  |  |  |
| DUKHENGP1BDWMESM4610 |  | Plumbing Layout & Details Drawings-Sub | 15d | 2013-02-17 A | 2013-03-01 A | DUKHPROGEN00PQAP1040, DUKHPROGEN00PQAP2040 | 100% |  | 2013-02-17 | 2013-03-05 |  |  |  | DRAFTMAN SK [20 h] | 156,766 | 1BDWPLSB05 | DUKHENG1BDWMESM4610 | DUKHENGP1BDWMESM4610 | DH | ENG | 1B | DRWG | PLDW | SUB | RES-1B |
| DUKHENGP1BDWMESM4620 |  | Drainage Layout & Details Drawings-Sub | 15d | 2013-02-17 A | 2013-03-01 A | DUKHPROGEN00PQAP2040, DUKHPROGEN00PQAP1040 | 100% |  | 2013-02-17 | 2013-03-05 |  |  |  | DRAFTMAN SK [20 h] | 28,092 | 1BDWPLSB10 | DUKHENG1BDWMESM4620 | DUKHENGP1BDWMESM4620 | DH | ENG | 1B | DRWG | PLDW | SUB | RES-1B |
| DUKHENGP1BDWMESM4630 |  | Fire Fighting Layout & Details Drawings-Sub | 15d | 2013-03-02 A | 2013-03-18 A | DUKHPROGEN00PQAP1040, DUKHPROGEN00PQAP2040, DUKHENGP1BDWMESM4620 | 100% |  |  |  |  |  |  | DRAFTMAN SK [20 h] | 82,042 | 1BDWPLSB15 | DUKHENG1BDWMESM4630 | DUKHENGP1BDWMESM4630 | DH | ENG | 1B | DRWG | PLDW | SUB | RES-1B |
| DUKHENGP1BDWMESM4640 |  | AC Layout & Details Drawings-Sub | 15d | 2013-03-19 A | 2013-04-04 A | DUKHENGP1BDWMESM4630, DUKHPROGEN00PQAP1040, DUKHPROGEN00PQAP2040 | 100% |  |  |  |  |  |  | DRAFTMAN SK [30 h] | 135,658 | 1BDWPLSB20 | DUKHENG1BDWMESM4640 | DUKHENGP1BDWMESM4640 | DH | ENG | 1B | DRWG | PLDW | SUB | RES-1B |
|  | G20 | **APPROVAL OF DRAWINGS** |  | 2013-03-02 | 2013-05-09 |  |  |  |  |  |  |  |  |  |  |  |  |  |  |  |  |  |  |  |  |
| DUKHENGP1BDWMEAP4610 |  | Plumbing Layout & Details Drawings-App | 30d | 2013-03-02 A | 2013-04-04 A | DUKHENGP1BDWMESM4610 | 100% |  |  |  |  |  |  |  |  | 1BDWPLAP05 | DUKHENG1BDWMEAP4610 | DUKHENGP1BDWMEAP4610 | DH | ENG | 1B | DRWG | PLDW | APP | RES-1B |
| DUKHENGP1BDWMEAP4620 |  | Drainage Layout & Details Drawings-App | 30d | 2013-03-02 A | 2013-04-04 A | DUKHENGP1BDWMESM4610, DUKHENGP1BDWMESM4620 | 100% |  |  |  |  |  |  |  |  | 1BDWPLAP10 | DUKHENG1BDWMEAP4620 | DUKHENGP1BDWMEAP4620 | DH | ENG | 1B | DRWG | PLDW | APP | RES-1B |
| DUKHENGP1BDWMEAP4630 |  | Fire Fighting Layout & Details Drawings-App | 30d | 2013-03-19 A | 2013-04-22 A | DUKHENGP1BDWMESM4630 | 100% |  |  |  |  |  |  |  |  | 1BDWPLAP15 | DUKHENG1BDWMEAP4630 | DUKHENGP1BDWMEAP4630 | DH | ENG | 1B | DRWG | PLDW | APP | RES-1B |
| DUKHENGP1BDWMEAP4640 |  | AC Layout & Details Drawings-App | 30d | 2013-04-06 A | 2013-05-09 | DUKHENGP1BDWMESM4640 | 60% | 12d |  |  | 72d | 0d | 2013-05-09 |  |  | 1BDWPLAP20 | DUKHENG1BDWMEAP4640 | DUKHENGP1BDWMEAP4640 | DH | ENG | 1B | DRWG | PLDW | APP | RES-1B |

Notes:
- DUKHENGP1BDWELSM4550: Expenses: P1B-Electrical Installations 85018
- DUKHENGP1BDWELSM4560: Expenses: P1B-Electrical Installations 381662
- DUKHENGP1BDWELSM4570: Expenses: P1B-Electrical Installations 169180
- DUKHENGP1BDWELSM4580: Expenses: P1B-Electrical Installations 82042
- DUKHENGP1BDWELSM4590: Expenses: P1B-Electrical Installations 37890; P1B-External works within the Plot Curtilage 1106
- DUKHENGP1BDWELSM4600: Expenses: P1B-Electrical Installations 70636
- DUKHENGP1BDWMESM4610: Expenses: P1B-Plumbing and Drainage works 156766
- DUKHENGP1BDWMESM4620: Expenses: I1B-Surface Water drainage and Sewerage system 28092
- DUKHENGP1BDWMESM4630: Expenses: P1B-Electrical Installations 82042
- DUKHENGP1BDWMESM4640: Expenses: P1B-Air-conditioning and Ventilation works 135658

| ID | WBS | Activity | Duration | Start | Finish | Predecessors | Complete | Remaining | Total float | Free float | Expected finish | Resources | Cost | P3 ACTID | P6 ID (old) | NP61D | PROJECT | PHASES | PACKAGE | PART | ELEMENTS | STEP | RES PACK |
| --- | --- | --- | --- | --- | --- | --- | --- | --- | --- | --- | --- | --- | --- | --- | --- | --- | --- | --- | --- | --- | --- | --- | --- |
|  | H40 | **INFRA DRAWINGS** |  | 2013-04-06 | 2013-08-26 |  |  |  |  |  |  |  |  |  |  |  |  |  |  |  |  |  |  |
|  | G10 | **SUBMISSION OF DRAWINGS** |  | 2013-04-06 | 2013-06-22 |  |  |  |  |  |  |  |  |  |  |  |  |  |  |  |  |  |  |
| DUKHENGI1BDWDRSM4650 |  | Drainage Line Layout & Details-Sub | 15d | 2013-04-06 A | 2013-04-22 A | DUKHENGP1BDWMESM4640, DUKHMOBI1BPS00001400, DUKHPROGEN00PQAP2040, DUKHPROGEN00PQAP1040 | 100% |  |  |  |  | DRAFTMAN SK [30 h] | 28,092 | 1BDWINSB15 | DUKHENG1BDWINSM4650 | DUKHENGI1BDWDRSM4650 | DH | ENG | 1B | DRWG | IFDW | SUB | RES-1B |
| DUKHENGI1BDWFFSM4660 |  | Fire Fighting Line Layout & Details-Sub | 15d | 2013-04-06 A | 2013-04-22 A | DUKHENGI1BDWWSSM4670 SS | 100% |  |  |  |  | DRAFTMAN SK [30 h] | 25,396 | 1BDWINSB20 | DUKHENG1BDWINSM4660 | DUKHENGI1BDWFFSM4660 | DH | ENG | 1B | DRWG | IFDW | SUB | RES-1B |
| DUKHENGI1BDWWSSM4670 |  | Water Supply Line Layout & Details-Sub | 15d | 2013-04-06 A | 2013-04-22 A | DUKHENGI1BDWDRSM4650 SS | 100% |  |  |  |  | DRAFTMAN SK [30 h] | 33,284 | 1BDWINSB25 | DUKHENG1BDWINSM4670 | DUKHENGI1BDWWSSM4670 | DH | ENG | 1B | DRWG | IFDW | SUB | RES-1B |
| DUKHENGI1BDWELSM4680 |  | Electrical Line Layout & Details-Sub | 15d | 2013-04-23 A | 2013-05-09 | DUKHPROGEN00PQAP1040, DUKHENGI1BDWFFSM4660, DUKHPROGEN00PQAP2040 | 20% | 12d | 57d | 0d | 2013-05-09 | DRAFTMAN SK [30 h] | 343,304 | 1BDWINSB05 | DUKHENG1BDWINSM4680 | DUKHENGI1BDWELSM4680 | DH | ENG | 1B | DRWG | IFDW | SUB | RES-1B |
| DUKHENGI1BDWSTSM4690 |  | Street Lighting Layout & details -Sub | 15d | 2013-04-23 A | 2013-05-09 | DUKHENGI1BDWELSM4680 SS | 20% | 12d | 57d | 0d | 2013-05-09 | DRAFTMAN SK [30 h] | 57,480 | 1BDWINSB10 | DUKHENG1BDWINSM4690 | DUKHENGI1BDWSTSM4690 | DH | ENG | 1B | DRWG | IFDW | SUB | RES-1B |
| DUKHENGI1BDWTCSM4700 |  | Telecommunication Line Layout & Details-Sub | 15d | 2013-04-23 A | 2013-05-09 | DUKHENGI1BDWSTSM4690 SS | 20% | 12d | 57d | 0d | 2013-05-09 | DRAFTMAN SK [30 h] | 34,640 | 1BDWINSB35 | DUKHENG1BDWINSM4700 | DUKHENGI1BDWTCSM4700 | DH | ENG | 1B | DRWG | IFDW | SUB | RES-1B |
| DUKHENGI1BDWBWSM4730 |  | Boundary Wall Layout & Details-Sub | 15d | 2013-05-11 | 2013-05-27 | DUKHENGI1BDWSLSM4720 SS |  |  | 57d | 0d |  | DRAFTMAN SK [30 h] | 203,420 | 1BDWINSB50 | DUKHENG1BDWINSM4730 | DUKHENGI1BDWBWSM4730 | DH | ENG | 1B | DRWG | IFDW | SUB | RES-1B |
| DUKHENGI1BDWIRSM4710 |  | Irrigation Layout & Details-Sub | 15d | 2013-05-11 | 2013-05-27 | DUKHENGI1BDWTCSM4700, DUKHENGI1BDWWSSM4670 |  |  | 57d | 0d |  | DRAFTMAN SK [30 h] | 39,732 | 1BDWINSB30 | DUKHENG1BDWINSM4710 | DUKHENGI1BDWIRSM4710 | DH | ENG | 1B | DRWG | IFDW | SUB | RES-1B |
| DUKHENGI1BDWSLSM4720 |  | Soft & HardLandscaping Layout & Detail-Sub | 15d | 2013-05-11 | 2013-05-27 | DUKHENGI1BDWIRSM4710 SS |  |  | 57d | 0d |  | DRAFTMAN SK [30 h] | 367,961 | 1BDWINSB45 | DUKHENG1BDWINSM4720 | DUKHENGI1BDWSLSM4720 | DH | ENG | 1B | DRWG | IFDW | SUB | RES-1B |
| DUKHENGI1BDWIWSM4760 |  | Irrigation Water Tank & Pump Room Details- Sub | 15d | 2013-05-19 | 2013-06-04 | DUKHENGI1BDWRWSM4750 SS |  |  | 57d | 0d |  | DRAFTMAN SK [30 h] | 39,732 | 1BDWINSB60 | DUKHENG1BDWINSM4760 | DUKHENGI1BDWIWSM4760 | DH | ENG | 1B | DRWG | IFDW | SUB | RES-1B |
| DUKHENGI1BDWPSSM4740 |  | Parking Shed Layout & Details Drawings-Sub | 15d | 2013-05-19 | 2013-06-04 | DUKHENGI1BDWBWSM4730 SS+7d |  |  | 57d | 0d |  | DRAFTMAN SK [30 h] | 118,012 | 1BDWINSB40 | DUKHENG1BDWINSM4740 | DUKHENGI1BDWPSSM4740 | DH | ENG | 1B | DRWG | IFDW | SUB | RES-1B |
| DUKHENGI1BDWRWSM4750 |  | Road Layout & Details-Sub | 15d | 2013-05-19 | 2013-06-04 | DUKHENGI1BDWPSSM4740 SS |  |  | 57d | 0d |  | DRAFTMAN SK [30 h] | 265,404 | 1BDWINSB55 | DUKHENG1BDWINSM4750 | DUKHENGI1BDWRWSM4750 | DH | ENG | 1B | DRWG | IFDW | SUB | RES-1B |
| DUKHENGI1BDWTRSM4770 |  | Telephone Room Details-Sub | 15d | 2013-05-19 | 2013-06-04 | DUKHENGI1BDWIWSM4760 SS |  |  | 83d | 0d |  | DRAFTMAN SK [30 h] | 6,093 | 1BDWINSB65 | DUKHENG1BDWINSM4770 | DUKHENGI1BDWTRSM4770 | DH | ENG | 1B | DRWG | IFDW | SUB | RES-1B |
| DUKHENGI1BDWGHSM4790 |  | Guard House Plan & Details-Sub | 15d | 2013-06-05 | 2013-06-22 | DUKHENGI1BDWTRSM4770 |  |  | 310d | 15d |  | DRAFTMAN SK [30 h] | 2,607 | 1BDWINSB75 | DUKHENG1BDWINSM4790 | DUKHENGI1BDWGHSM4790 | DH | ENG | 1B | DRWG | IFDW | SUB | RES-1B |
| DUKHENGI1BDWGZSM4780 |  | Gazebo Plan & Details-Sub | 15d | 2013-06-05 | 2013-06-22 | DUKHENGI1BDWTRSM4770 |  |  | 98d | 15d |  | DRAFTMAN SK [30 h] | 13,301 | 1BDWINSB70 | DUKHENG1BDWINSM4780 | DUKHENGI1BDWGZSM4780 | DH | ENG | 1B | DRWG | IFDW | SUB | RES-1B |
|  | G20 | **APPROVAL OF DRAWINGS** |  | 2013-04-27 | 2013-08-26 |  |  |  |  |  |  |  |  |  |  |  |  |  |  |  |  |  |  |
| DUKHENGI1BDWDRAP4650 |  | Drainage Line Layout & Details-App | 27d | 2013-04-27 | 2013-05-27 | DUKHENGI1BDWDRSM4650 |  |  | 94d | 0d | 2013-05-27 |  |  | 1BDWINAP15 | DUKHENG1BDWINAP4650 | DUKHENGI1BDWDRAP4650 | DH | ENG | 1B | DRWG | IFDW | APP | RES-1B |
| DUKHENGI1BDWFFAP4660 |  | Fire Fighting Line Layout & Details-App | 27d | 2013-04-27 | 2013-05-27 | DUKHENGI1BDWFFSM4660 |  |  | 53d | 0d | 2013-05-27 |  |  | 1BDWINAP20 | DUKHENG1BDWINAP4660 | DUKHENGI1BDWFFAP4660 | DH | ENG | 1B | DRWG | IFDW | APP | RES-1B |
| DUKHENGI1BDWWSAP4670 |  | Water Supply Line Layout & Details-App | 27d | 2013-04-27 | 2013-05-27 | DUKHENGI1BDWWSSM4670 |  |  | 94d | 0d | 2013-05-27 |  |  | 1BDWINAP25 | DUKHENG1BDWINAP4670 | DUKHENGI1BDWWSAP4670 | DH | ENG | 1B | DRWG | IFDW | APP | RES-1B |
| DUKHENGI1BDWELAP4680 |  | Electrical Line Layout & Details-App | 30d | 2013-05-11 | 2013-06-13 | DUKHENGI1BDWELSM4680 |  |  | 68d | 0d |  |  |  | 1BDWINAP05 | DUKHENG1BDWINAP4680 | DUKHENGI1BDWELAP4680 | DH | ENG | 1B | DRWG | IFDW | APP | RES-1B |
| DUKHENGI1BDWBWAP4730 |  | Boundary Wall Layout & Details-App | 30d | 2013-05-28 | 2013-07-01 | DUKHENGI1BDWBWSM4730 |  |  | 93d | 53d |  |  |  | 1BDWINAP50 | DUKHENG1BDWINAP4730 | DUKHENGI1BDWBWAP4730 | DH | ENG | 1B | DRWG | IFDW | APP | RES-1B |
| DUKHENGI1BDWIRAP4710 |  | Irrigation Layout & Details-App | 30d | 2013-05-28 | 2013-07-01 | DUKHENGI1BDWIRSM4710 |  |  | 99d | 23d |  |  |  | 1BDWINAP30 | DUKHENG1BDWINAP4710 | DUKHENGI1BDWIRAP4710 | DH | ENG | 1B | DRWG | IFDW | APP | RES-1B |
| DUKHENGI1BDWSLAP4720 |  | Soft & HardLandscaping Layout & Detail-App | 30d | 2013-05-28 | 2013-07-01 | DUKHENGI1BDWSLSM4720 |  |  | 75d | 49d |  |  |  | 1BDWINAP45 | DUKHENG1BDWINAP4720 | DUKHENGI1BDWSLAP4720 | DH | ENG | 1B | DRWG | IFDW | APP | RES-1B |
| DUKHENGI1BDWIWAP4760 |  | Irrigation Water Tank & Pump Room Details-App | 30d | 2013-06-05 | 2013-07-09 | DUKHENGI1BDWIWSM4760 |  |  | 57d | 16d |  |  |  | 1BDWINAP60 | DUKHENG1BDWINAP4760 | DUKHENGI1BDWIWAP4760 | DH | ENG | 1B | DRWG | IFDW | APP | RES-1B |
| DUKHENGI1BDWPSAP4740 |  | Parking Shed Layout & Details Drawings-App | 30d | 2013-06-05 | 2013-07-09 | DUKHENGI1BDWPSSM4740 |  |  | 158d | 31d |  |  |  | 1BDWINAP40 | DUKHENG1BDWINAP4740 | DUKHENGI1BDWPSAP4740 | DH | ENG | 1B | DRWG | IFDW | APP | RES-1B |
| DUKHENGI1BDWRWAP4750 |  | Road Layout & Details-App | 30d | 2013-06-05 | 2013-07-09 | DUKHENGI1BDWRWSM4750 |  |  | 157d | 27d |  |  |  | 1BDWINAP55 | DUKHENG1BDWINAP4750 | DUKHENGI1BDWRWAP4750 | DH | ENG | 1B | DRWG | IFDW | APP | RES-1B |
| DUKHENGI1BDWTRAP4770 |  | Telephone Room Details-App | 30d | 2013-06-05 | 2013-07-09 | DUKHENGI1BDWTRSM4770 |  |  | 83d | 0d |  |  |  | 1BDWINAP65 | DUKHENG1BDWINAP4770 | DUKHENGI1BDWTRAP4770 | DH | ENG | 1B | DRWG | IFDW | APP | RES-1B |
| DUKHENGI1BDWSTAP4690 |  | Street Lighting Layout & details -App | 30d | 2013-06-15 | 2013-07-18 | DUKHENGI1BDWSTSM4690, DUKHENGI1BDWELAP4680 |  |  | 68d | 0d |  |  |  | 1BDWINAP10 | DUKHENG1BDWINAP4690 | DUKHENGI1BDWSTAP4690 | DH | ENG | 1B | DRWG | IFDW | APP | RES-1B |
| DUKHENGI1BDWGHAP4790 |  | Guard House Plan & Details-App | 30d | 2013-07-10 | 2013-08-17 | DUKHENGI1BDWTRAP4770, DUKHENGI1BDWGHSM4790 |  |  | 295d | 293d |  |  |  | 1BDWINAP75 | DUKHENG1BDWINAP4790 | DUKHENGI1BDWGHAP4790 | DH | ENG | 1B | DRWG | IFDW | APP | RES-1B |
| DUKHENGI1BDWGZAP4780 |  | Gazebo Plan & Details-App | 30d | 2013-07-10 | 2013-08-17 | DUKHENGI1BDWGZSM4780, DUKHENGI1BDWTRAP4770 |  |  | 83d | 18d |  |  |  | 1BDWINAP70 | DUKHENG1BDWINAP4780 | DUKHENGI1BDWGZAP4780 | DH | ENG | 1B | DRWG | IFDW | APP | RES-1B |
| DUKHENGI1BDWTCAP4700 |  | Telecommunication Line Layout & Details-App | 30d | 2013-07-20 | 2013-08-26 | DUKHENGI1BDWTCSM4700, DUKHENGI1BDWSTAP4690 |  |  | 68d | 3d |  |  |  | 1BDWINAP35 | DUKHENG1BDWINAP4700 | DUKHENGI1BDWTCAP4700 | DH | ENG | 1B | DRWG | IFDW | APP | RES-1B |

Notes:
- DUKHENGI1BDWDRSM4650: Expenses: I1B-Surface Water drainage and Sewerage system 28092
- DUKHENGI1BDWFFSM4660: Expenses: I1B-Water supply system 25396
- DUKHENGI1BDWWSSM4670: Expenses: I1B-Water supply system 33284
- DUKHENGI1BDWELSM4680: Expenses: I1B-Electrical power supply and distribution 343304
- DUKHENGI1BDWSTSM4690: Expenses: I1B-Street lighting 57480
- DUKHENGI1BDWTCSM4700: Expenses: I1B-Telecommunication 34640
- DUKHENGI1BDWBWSM4730: Expenses: I1B-Hard and soft landscaping 203420
- DUKHENGI1BDWIRSM4710: Expenses: I1B-Water supply system 39732
- DUKHENGI1BDWSLSM4720: Expenses: I1B-Hard and soft landscaping 367961
- DUKHENGI1BDWIWSM4760: Expenses: I1B-Water supply system 39732
- DUKHENGI1BDWPSSM4740: Expenses: I1B-Road work 118012
- DUKHENGI1BDWRWSM4750: Expenses: I1B-Road work 265404
- DUKHENGI1BDWTRSM4770: Expenses: I1B-Telecommunication 6093
- DUKHENGI1BDWGHSM4790: Expenses: I1B-Hard and soft landscaping 2607
- DUKHENGI1BDWGZSM4780: Expenses: I1B-Hard and soft landscaping 13301

| ID | WBS | Activity | Duration | Start | Finish | Predecessors | Complete | Remaining | Planned start | Planned finish | Total float | Free float | Expected finish | Resources | Cost | P3 ACTID | P6 ID (old) | NP61D | PROJECT | PHASES | PACKAGE | PART | ELEMENTS | STEP | RES PACK |
| --- | --- | --- | --- | --- | --- | --- | --- | --- | --- | --- | --- | --- | --- | --- | --- | --- | --- | --- | --- | --- | --- | --- | --- | --- | --- |
|  | L40 | **PACKAGE-2A** |  | 2012-11-26 | 2013-07-27 |  |  |  |  |  |  |  |  |  |  |  |  |  |  |  |  |  |  |  |  |
|  | E05 | **SHOP DRAWINGS SUBMISSION & APPROVAL** |  | 2012-11-26 | 2013-07-27 |  |  |  |  |  |  |  |  |  |  |  |  |  |  |  |  |  |  |  |  |
|  | H05 | **STRUCTURAL DRAWINGS** |  | 2012-11-26 | 2013-02-01 |  |  |  |  |  |  |  |  |  |  |  |  |  |  |  |  |  |  |  |  |
|  | G10 | **SUBMISSION OF DRAWINGS** |  | 2012-11-26 | 2013-01-06 |  |  |  |  |  |  |  |  |  |  |  |  |  |  |  |  |  |  |  |  |
| DUKHENGP2ADWSTSM4800 |  | Footing Drawings-Sub | 10d | 2012-11-26 A | 2012-12-05 A | DUKHMOBP020000004020 SS+5d | 100% |  | 2012-11-26 | 2012-12-06 |  |  |  | DRAFTMAN SK [20 h] | 32,256 | 2ADWSTSB05 | DUKHENG2ADWSTSM4800 | DUKHENGP2ADWSTSM4800 | DH | ENG | 2A | DRWG | STDW | SUB | RSE-2A |
| DUKHENGP2ADWSTSM4810 |  | Grade Beam & Slab Drawings-Sub | 15d | 2012-12-02 A | 2012-12-19 A | DUKHENGP2ADWSTSM4800 SS+5d | 100% |  |  |  |  |  |  | DRAFTMAN SK [30 h] | 51,452 | 2ADWSTSB10 | DUKHENG2ADWSTSM4810 | DUKHENGP2ADWSTSM4810 | DH | ENG | 2A | DRWG | STDW | SUB | RSE-2A |
| DUKHENGP2ADWSTSM4820 |  | Column Drawings-Sub | 15d | 2012-12-08 A | 2012-12-25 A | DUKHENGP2ADWSTSM4810 SS+5d | 100% |  |  |  |  |  |  | DRAFTMAN SK [30 h] | 7,802 | 2ADWSTSB15 | DUKHENG2ADWSTSM4820 | DUKHENGP2ADWSTSM4820 | DH | ENG | 2A | DRWG | STDW | SUB | RSE-2A |
| DUKHENGP2ADWSTSM4830 |  | GF Beams & Slabs Drawings-Sub | 8d | 2012-12-29 A | 2013-01-06 A | DUKHENGP2ADWSTSM4820 SS+10d | 100% |  |  |  |  |  |  | DRAFTMAN SK [30 h] | 60,310 | 2ADWSTSB20 | DUKHENG2ADWSTSM4830 | DUKHENGP2ADWSTSM4830 | DH | ENG | 2A | DRWG | STDW | SUB | RSE-2A |
|  | G20 | **APPROVAL OF DRAWINGS** |  | 2012-12-06 | 2013-02-01 |  |  |  |  |  |  |  |  |  |  |  |  |  |  |  |  |  |  |  |  |
| DUKHENGP2ADWSTAP4800 |  | Footing Drawings-App | 25d | 2012-12-06 A | 2012-12-31 A | DUKHENGP2ADWSTSM4800 | 100% |  | 2012-12-06 | 2013-01-05 |  |  |  |  |  | 2ADWSTAP30 | DUKHENG2ADWSTAP4800 | DUKHENGP2ADWSTAP4800 | DH | ENG | 2A | DRWG | STDW | APP | RSE-2A |
| DUKHENGP2ADWSTAP4810 |  | Grade Beam & Slab Drawings-App | 30d | 2012-12-20 A | 2013-01-23 A | DUKHENGP2ADWSTSM4810 | 100% |  |  |  |  |  |  |  |  | 2ADWSTAP35 | DUKHENG2ADWSTAP4810 | DUKHENGP2ADWSTAP4810 | DH | ENG | 2A | DRWG | STDW | APP | RSE-2A |
| DUKHENGP2ADWSTAP4820 |  | Column Drawings-App | 30d | 2012-12-26 A | 2013-01-29 A | DUKHENGP2ADWSTSM4820 | 100% |  |  |  |  |  |  |  |  | 2ADWSTAP40 | DUKHENG2ADWSTAP4820 | DUKHENGP2ADWSTAP4820 | DH | ENG | 2A | DRWG | STDW | APP | RSE-2A |
| DUKHENGP2ADWSTAP4830 |  | GF Beams & Slabs Drawings-App | 30d | 2013-01-07 A | 2013-02-01 A | DUKHENGP2ADWSTSM4830 | 100% |  | 2013-01-07 | 2013-02-10 |  |  |  |  |  | 2ADWSTAP45 | DUKHENG2ADWSTAP4830 | DUKHENGP2ADWSTAP4830 | DH | ENG | 2A | DRWG | STDW | APP | RSE-2A |
|  | H10 | **ARCHITECTURAL DRAWINGS** |  | 2013-01-07 | 2013-05-27 |  |  |  |  |  |  |  |  |  |  |  |  |  |  |  |  |  |  |  |  |
|  | G10 | **SUBMISSION OF DRAWINGS** |  | 2013-01-07 | 2013-04-22 |  |  |  |  |  |  |  |  |  |  |  |  |  |  |  |  |  |  |  |  |
| DUKHENGP2ADWARSM4850 |  | Ground Floor Plan-Sub | 15d | 2013-01-07 A | 2013-01-23 A | DUKHENGP2ADWSTSM4830 | 100% |  |  |  |  |  |  | DRAFTMAN SK [30 h] | 44,587 | 2ADWARSB05 | DUKHENG2ADWARSM4850 | DUKHENGP2ADWARSM4850 | DH | ENG | 2A | DRWG | ARDW | SUB | RSE-2A |
| DUKHENGP2ADWARSM4870 |  | Roof Floor Plan-Sub | 15d | 2013-01-15 A | 2013-01-31 A | DUKHENGP2ADWARSM4850 SS+7d | 100% |  |  |  |  |  |  | DRAFTMAN SK [30 h] | 18,468 | 2ADWARSB15 | DUKHENG2ADWARSM4870 | DUKHENGP2ADWARSM4870 | DH | ENG | 2A | DRWG | ARDW | SUB | RSE-2A |
| DUKHENGP2ADWARSM4880 |  | Ceramic Flooring & Wall Drawings-Sub | 15d | 2013-01-24 A | 2013-02-10 A | DUKHENGP2ADWARSM4850, DUKHENGP2ADWARSM4870 SS+3d | 100% |  |  |  |  |  |  | DRAFTMAN SK [30 h] | 11,712 | 2ADWARSB20 | DUKHENG2ADWARSM4880 | DUKHENGP2ADWARSM4880 | DH | ENG | 2A | DRWG | ARDW | SUB | RSE-2A |
| DUKHENGP2ADWARSM4890 |  | Porcelain Floor Drawings-Sub | 15d | 2013-01-24 A | 2013-02-10 A | DUKHENGP2ADWARSM4880 SS | 100% |  |  |  |  |  |  | DRAFTMAN SK [30 h] | 17,779 | 2ADWARSB25 | DUKHENG2ADWARSM4890 | DUKHENGP2ADWARSM4890 | DH | ENG | 2A | DRWG | ARDW | SUB | RSE-2A |
| DUKHENGP2ADWARSM4900 |  | Cobble & Slate Flooring Drawings-Sub | 15d | 2013-02-02 A | 2013-02-19 A | DUKHENGP2ADWARSM4890 SS | 100% |  |  |  |  |  |  | DRAFTMAN SK [30 h] | 39,247 | 2ADWARSB30 | DUKHENG2ADWARSM4900 | DUKHENGP2ADWARSM4900 | DH | ENG | 2A | DRWG | ARDW | SUB | RSE-2A |
| DUKHENGP2ADWARSM4910 |  | Gypsum False Ceiling Drawings-Sub | 15d | 2013-03-10 A | 2013-03-26 A | DUKHPROGEN00PQAP2050, DUKHPROGEN00PQAP1050 | 100% |  |  |  |  |  |  | DRAFTMAN SK [20 h] | 10,008 | 2ADWARSB35 | DUKHENG2ADWARSM4910 | DUKHENGP2ADWARSM4910 | DH | ENG | 2A | DRWG | ARDW | SUB | RSE-2A |
| DUKHENGP2ADWARSM4930 |  | Doors & window Drawings-Sub | 15d | 2013-03-20 A | 2013-04-06 A | DUKHENGP2ADWARSM4850, DUKHPROGEN00PQAP2080, DUKHPROGEN00PQAP1080 | 100% |  |  |  |  |  |  | DRAFTMAN SK [20 h] | 46,600 | 2ADWARSB45 | DUKHENG2ADWARSM4930 | DUKHENGP2ADWARSM4930 | DH | ENG | 2A | DRWG | ARDW | SUB | RSE-2A |
| DUKHENGP2ADWARSM4940 |  | Carpentry & Joinery Drawings-Sub | 15d | 2013-04-06 A | 2013-04-22 A | DUKHPROGEN00PQAP1150, DUKHPROGEN00PQAP2150, DUKHENGP2ADWARSM4850 | 100% |  |  |  |  |  |  | DRAFTMAN SK [30 h] | 29,524 | 2ADWARSB50 | DUKHENG2ADWARSM4940 | DUKHENGP2ADWARSM4940 | DH | ENG | 2A | DRWG | ARDW | SUB | RSE-2A |
|  | G20 | **APPROVAL OF DRAWINGS** |  | 2013-01-24 | 2013-05-27 |  |  |  |  |  |  |  |  |  |  |  |  |  |  |  |  |  |  |  |  |
| DUKHENGP2ADWARAP4850 |  | Ground Floor Plan-App | 30d | 2013-01-24 A | 2013-02-28 A | DUKHENGP2ADWARSM4850 | 100% |  |  |  |  |  |  |  |  | 2ADWARAP05 | DUKHENG2ADWARAP4850 | DUKHENGP2ADWARAP4850 | DH | ENG | 2A | DRWG | ARDW | APP | RSE-2A |
| DUKHENGP2ADWARAP4870 |  | Roof Floor Plan-App | 7d | 2013-03-02 A | 2013-03-09 A | DUKHENGP2ADWARSM4870 | 100% |  |  |  |  |  |  |  |  | 2ADWARAP15 | DUKHENG2ADWARAP4870 | DUKHENGP2ADWARAP4870 | DH | ENG | 2A | DRWG | ARDW | APP | RSE-2A |
| DUKHENGP2ADWARAP4880 |  | Ceramic Flooring & Wall Drawings-App | 7d | 2013-03-02 A | 2013-03-09 A | DUKHENGP2ADWARSM4880 | 100% |  |  |  |  |  |  |  |  | 2ADWARAP20 | DUKHENG2ADWARAP4880 | DUKHENGP2ADWARAP4880 | DH | ENG | 2A | DRWG | ARDW | APP | RSE-2A |
| DUKHENGP2ADWARAP4890 |  | Porcelain Floor Drawings-App | 7d | 2013-03-02 A | 2013-03-09 A | DUKHENGP2ADWARSM4890 | 100% |  |  |  |  |  |  |  |  | 2ADWARAP25 | DUKHENG2ADWARAP4890 | DUKHENGP2ADWARAP4890 | DH | ENG | 2A | DRWG | ARDW | APP | RSE-2A |
| DUKHENGP2ADWARAP4900 |  | Cobble & Slate Flooring Drawings-App | 7d | 2013-03-02 A | 2013-03-09 A | DUKHENGP2ADWARSM4900 FF | 100% |  |  |  |  |  |  |  |  | 2ADWARAP30 | DUKHENG2ADWARAP4900 | DUKHENGP2ADWARAP4900 | DH | ENG | 2A | DRWG | ARDW | APP | RSE-2A |
| DUKHENGP2ADWARAP4910 |  | Gypsum False Ceiling Drawings-App | 30d | 2013-03-27 A | 2013-04-30 | DUKHENGP2ADWARSM4910 | 87% | 4d |  |  | 71d | 0d | 2013-04-30 |  |  | 2ADWARAP35 | DUKHENG2ADWARAP4910 | DUKHENGP2ADWARAP4910 | DH | ENG | 2A | DRWG | ARDW | APP | RSE-2A |
| DUKHENGP2ADWARAP4930 |  | Doors & Window Drawings-App | 30d | 2013-04-07 A | 2013-05-11 | DUKHENGP2ADWARSM4930, DUKHENGP2ADWARAP4870 | 57% | 13d |  |  | 61d | 0d | 2013-05-11 |  |  | 2ADWARAP45 | DUKHENG2ADWARAP4930 | DUKHENGP2ADWARAP4930 | DH | ENG | 2A | DRWG | ARDW | APP | RSE-2A |
| DUKHENGP2ADWARAP4940 |  | Carpentry & Joinery Drawings-App | 30d | 2013-04-23 A | 2013-05-27 | DUKHENGP2ADWARSM4940 | 10% | 27d |  |  | 84d | 0d | 2013-05-27 |  |  | 2ADWARAP50 | DUKHENG2ADWARAP4940 | DUKHENGP2ADWARAP4940 | DH | ENG | 2A | DRWG | ARDW | APP | RSE-2A |

Notes:
- DUKHENGP2ADWSTSM4800: Expenses: P2A-Concrete Works 21798; P2A-Excavation and Earth Works 10458
- DUKHENGP2ADWSTSM4810: Expenses: P2A-Concrete Works 47152; P2A-Excavation and Earth Works 4300
- DUKHENGP2ADWSTSM4820: Expenses: P2A-Concrete Works 7802
- DUKHENGP2ADWSTSM4830: Expenses: P2A-Concrete Works 60310
- DUKHENGP2ADWARSM4850: Expenses: P2A-Block work 40027; P2A-Finishes 4560
- DUKHENGP2ADWARSM4870: Expenses: P2A-Roofing 18468
- DUKHENGP2ADWARSM4880: Expenses: P2A-Finishes 11712
- DUKHENGP2ADWARSM4890: Expenses: P2A-Finishes 17779
- DUKHENGP2ADWARSM4900: Expenses: P2A-Finishes 39247
- DUKHENGP2ADWARSM4910: Expenses: P2A-Finishes 10008
- DUKHENGP2ADWARSM4930: Expenses: P2A-Carpentry and Joinery 37466; P2A-Metal work 9134
- DUKHENGP2ADWARSM4940: Expenses: P2A-Carpentry and Joinery 29524

| ID | WBS | Activity | Duration | Start | Finish | Predecessors | Complete | Remaining | Planned start | Planned finish | Total float | Free float | Expected finish | Resources | Cost | P3 ACTID | P6 ID (old) | NP61D | PROJECT | PHASES | PACKAGE | PART | ELEMENTS | STEP | RES PACK |
| --- | --- | --- | --- | --- | --- | --- | --- | --- | --- | --- | --- | --- | --- | --- | --- | --- | --- | --- | --- | --- | --- | --- | --- | --- | --- |
|  | H20 | **ELECTRICAL DRAWINGS** |  | 2013-02-17 | 2013-06-04 |  |  |  |  |  |  |  |  |  |  |  |  |  |  |  |  |  |  |  |  |
|  | G10 | **SUBMISSION OF DRAWINGS** |  | 2013-02-17 | 2013-04-30 |  |  |  |  |  |  |  |  |  |  |  |  |  |  |  |  |  |  |  |  |
| DUKHENGP2ADWELSM4950 |  | Single Line Diagram-Sub | 15d | 2013-02-17 A | 2013-03-01 A | DUKHPROGEN00PQAP2040, DUKHPROGEN00PQAP1040 | 100% |  | 2013-02-17 | 2013-03-05 |  |  |  | DRAFTMAN SK [20 h] | 18,160 | 2ADWELSB05 | DUKHENG2ADWELSM4950 | DUKHENGP2ADWELSM4950 | DH | ENG | 2A | DRWG | ELDW | SUB | RSE-2A |
| DUKHENGP2ADWELSM4960 |  | Lighting Layout Drawings-Sub | 7d | 2013-03-02 A | 2013-03-09 A | DUKHENGP2ADWELSM4950 SS+5d | 100% |  |  |  |  |  |  | DRAFTMAN SK [20 h] | 33,096 | 2ADWELSB10 | DUKHENG2ADWELSM4960 | DUKHENGP2ADWELSM4960 | DH | ENG | 2A | DRWG | ELDW | SUB | RSE-2A |
| DUKHENGP2ADWELSM4970 |  | Power Layout Drawings-Sub | 7d | 2013-03-02 A | 2013-03-09 A | DUKHENGP2ADWELSM4960 SS, DUKHENGP2ADWELSM4950 SS+5d | 100% |  |  |  |  |  |  | DRAFTMAN SK [20 h] | 15,876 | 2ADWELSB15 | DUKHENG2ADWELSM4970 | DUKHENGP2ADWELSM4970 | DH | ENG | 2A | DRWG | ELDW | SUB | RSE-2A |
| DUKHENGP2ADWELSM4980 |  | Central Alarm Monitoring System Drawings-Sub | 15d | 2013-03-10 A | 2013-03-26 A | DUKHENGP2ADWELSM4970 | 100% |  |  |  |  |  |  | DRAFTMAN SK [20 h] | 7,893 | 2ADWELSB20 | DUKHENG2ADWELSM4980 | DUKHENGP2ADWELSM4980 | DH | ENG | 2A | DRWG | ELDW | SUB | RSE-2A |
| DUKHENGP2ADWELSM4990 |  | Audio Video Intercom System Drawings-Sub | 15d | 2013-03-27 A | 2013-04-13 A | DUKHENGP2ADWELSM4980 | 100% |  |  |  |  |  |  | DRAFTMAN SK [30 h] | 6,751 | 2ADWELSB25 | DUKHENG2ADWELSM4990 | DUKHENGP2ADWELSM4990 | DH | ENG | 2A | DRWG | ELDW | SUB | RSE-2A |
| DUKHENGP2ADWELSM5000 |  | Telephone & TV System Drawings-Sub | 15d | 2013-04-14 A | 2013-04-30 | DUKHENGP2ADWELSM4990 | 73% | 4d |  |  | 81d | 0d | 2013-04-30 | DRAFTMAN SK [30 h] | 13,945 | 2ADWELSB30 | DUKHENG2ADWELSM5000 | DUKHENGP2ADWELSM5000 | DH | ENG | 2A | DRWG | ELDW | SUB | RSE-2A |
|  | G20 | **APPROVAL OF DRAWINGS** |  | 2013-03-02 | 2013-06-04 |  |  |  |  |  |  |  |  |  |  |  |  |  |  |  |  |  |  |  |  |
| DUKHENGP2ADWELAP4950 |  | Single Line Diagram-App | 30d | 2013-03-02 A | 2013-04-04 A | DUKHENGP2ADWELSM4950 | 100% |  |  |  |  |  |  |  |  | 2ADWELAP05 | DUKHENG2ADWELAP4950 | DUKHENGP2ADWELAP4950 | DH | ENG | 2A | DRWG | ELDW | APP | RSE-2A |
| DUKHENGP2ADWELAP4960 |  | Lighting Layout Drawings-App | 30d | 2013-03-10 A | 2013-04-13 A | DUKHENGP2ADWELSM4960 | 100% |  |  |  |  |  |  |  |  | 2ADWELAP10 | DUKHENG2ADWELAP4960 | DUKHENGP2ADWELAP4960 | DH | ENG | 2A | DRWG | ELDW | APP | RSE-2A |
| DUKHENGP2ADWELAP4970 |  | Power Layout Drawings-App | 30d | 2013-03-10 A | 2013-04-13 A | DUKHENGP2ADWELSM4970 | 100% |  |  |  |  |  |  |  |  | 2ADWELAP15 | DUKHENG2ADWELAP4970 | DUKHENGP2ADWELAP4970 | DH | ENG | 2A | DRWG | ELDW | APP | RSE-2A |
| DUKHENGP2ADWELAP4980 |  | Central Alarm Monitoring System Drawings-App | 28d | 2013-03-30 A | 2013-04-30 | DUKHENGP2ADWELSM4980 | 86% | 4d |  |  | 105d | 0d | 2013-04-30 |  |  | 2ADWELAP20 | DUKHENG2ADWELAP4980 | DUKHENGP2ADWELAP4980 | DH | ENG | 2A | DRWG | ELDW | APP | RSE-2A |
| DUKHENGP2ADWELAP4990 |  | Audio Video Intercom System Drawings-App | 30d | 2013-04-14 A | 2013-05-18 | DUKHENGP2ADWELSM4990 | 37% | 19d |  |  | 96d | 0d | 2013-05-18 |  |  | 2ADWELAP25 | DUKHENG2ADWELAP4990 | DUKHENGP2ADWELAP4990 | DH | ENG | 2A | DRWG | ELDW | APP | RSE-2A |
| DUKHENGP2ADWELAP5000 |  | Telephone & TV System Drawings-App | 30d | 2013-05-01 | 2013-06-04 | DUKHENGP2ADWELSM5000 |  |  |  |  | 81d | 60d |  |  |  | 2ADWELAP30 | DUKHENG2ADWELAP5000 | DUKHENGP2ADWELAP5000 | DH | ENG | 2A | DRWG | ELDW | APP | RSE-2A |
|  | H30 | **PLUMBING,DRAINAGE,FIREFIGHTING & AC DRAWINGS** |  | 2013-02-17 | 2013-05-09 |  |  |  |  |  |  |  |  |  |  |  |  |  |  |  |  |  |  |  |  |
|  | G10 | **SUBMISSION OF DRAWINGS** |  | 2013-02-17 | 2013-04-04 |  |  |  |  |  |  |  |  |  |  |  |  |  |  |  |  |  |  |  |  |
| DUKHENGP2ADWMESM5010 |  | Plumbing Layout & Details Drawings-Sub | 15d | 2013-02-17 A | 2013-03-01 A | DUKHPROGEN00PQAP2040, DUKHPROGEN00PQAP1040 | 100% |  | 2013-02-17 | 2013-03-05 |  |  |  | DRAFTMAN SK [20 h] | 21,624 | 2ADWPLSB05 | DUKHENG2ADWMESM5010 | DUKHENGP2ADWMESM5010 | DH | ENG | 2A | DRWG | PLDW | SUB | RSE-2A |
| DUKHENGP2ADWMESM5020 |  | Drainage Layout & Details Drawings-Sub | 15d | 2013-02-17 A | 2013-03-01 A | DUKHPROGEN00PQAP2040, DUKHPROGEN00PQAP1040 | 100% |  | 2013-02-17 | 2013-03-05 |  |  |  | DRAFTMAN SK [20 h] | 12,896 | 2ADWPLSB10 | DUKHENG2ADWMESM5020 | DUKHENGP2ADWMESM5020 | DH | ENG | 2A | DRWG | PLDW | SUB | RSE-2A |
| DUKHENGP2ADWMESM5030 |  | Fire Fighting Layout & Details Drawings-Sub | 15d | 2013-03-02 A | 2013-03-18 A | DUKHPROGEN00PQAP2040, DUKHENGP2ADWMESM5020, DUKHPROGEN00PQAP1040 | 100% |  |  |  |  |  |  | DRAFTMAN SK [20 h] | 7,893 | 2ADWPLSB15 | DUKHENG2ADWMESM5030 | DUKHENGP2ADWMESM5030 | DH | ENG | 2A | DRWG | PLDW | SUB | RSE-2A |
| DUKHENGP2ADWMESM5040 |  | AC Layout & Details Drawings-Sub | 15d | 2013-03-19 A | 2013-04-04 A | DUKHPROGEN00PQAP1040, DUKHPROGEN00PQAP2040, DUKHENGP2ADWMESM5030 | 100% |  |  |  |  |  |  | DRAFTMAN SK [30 h] | 10,595 | 2ADWPLSB20 | DUKHENG2ADWMESM5040 | DUKHENGP2ADWMESM5040 | DH | ENG | 2A | DRWG | PLDW | SUB | RSE-2A |
|  | G20 | **APPROVAL OF DRAWINGS** |  | 2013-03-02 | 2013-05-09 |  |  |  |  |  |  |  |  |  |  |  |  |  |  |  |  |  |  |  |  |
| DUKHENGP2ADWMEAP5010 |  | Plumbing Layout & Details Drawings-App | 30d | 2013-03-02 A | 2013-04-04 A | DUKHENGP2ADWMESM5010 | 100% |  |  |  |  |  |  |  |  | 2ADWPLAP05 | DUKHENG2ADWMEAP5010 | DUKHENGP2ADWMEAP5010 | DH | ENG | 2A | DRWG | PLDW | APP | RSE-2A |
| DUKHENGP2ADWMEAP5020 |  | Drainage Layout & Details Drawings-App | 30d | 2013-03-02 A | 2013-04-04 A | DUKHENGP2ADWMESM5010, DUKHENGP2ADWMESM5020 | 100% |  |  |  |  |  |  |  |  | 2ADWPLAP10 | DUKHENG2ADWMEAP5020 | DUKHENGP2ADWMEAP5020 | DH | ENG | 2A | DRWG | PLDW | APP | RSE-2A |
| DUKHENGP2ADWMEAP5030 |  | Fire Fighting Layout & Details Drawings-App | 30d | 2013-03-19 A | 2013-04-22 A | DUKHENGP2ADWMESM5030 | 100% |  |  |  |  |  |  |  |  | 2ADWPLAP15 | DUKHENG2ADWMEAP5030 | DUKHENGP2ADWMEAP5030 | DH | ENG | 2A | DRWG | PLDW | APP | RSE-2A |
| DUKHENGP2ADWMEAP5040 |  | AC Layout & Details Drawings-App | 30d | 2013-04-06 A | 2013-05-09 | DUKHENGP2ADWMESM5040 | 60% | 12d |  |  | 72d | 0d | 2013-05-09 |  |  | 2ADWPLAP20 | DUKHENG2ADWMEAP5040 | DUKHENGP2ADWMEAP5040 | DH | ENG | 2A | DRWG | PLDW | APP | RSE-2A |

Notes:
- DUKHENGP2ADWELSM4950: Expenses: P2A-Electrical Installations 18160
- DUKHENGP2ADWELSM4960: Expenses: P2A-Electrical Installations 33096
- DUKHENGP2ADWELSM4970: Expenses: P2A-Electrical Installations 15876
- DUKHENGP2ADWELSM4980: Expenses: P2A-Electrical Installations 7893
- DUKHENGP2ADWELSM4990: Expenses: P2A-Electrical Installations 6647; P2A-External works within the Plot Curtilage 104
- DUKHENGP2ADWELSM5000: Expenses: P2A-Electrical Installations 13945
- DUKHENGP2ADWMESM5010: Expenses: P2A-Plumbing and Drainage works 21624
- DUKHENGP2ADWMESM5020: Expenses: P2A-Plumbing and Drainage works 12896
- DUKHENGP2ADWMESM5030: Expenses: P2A-Electrical Installations 7893
- DUKHENGP2ADWMESM5040: Expenses: P2A-Air-conditioning and Ventilation works 10595

| ID | WBS | Activity | Duration | Start | Finish | Predecessors | Complete | Remaining | Total float | Free float | Expected finish | Resources | Cost | P3 ACTID | P6 ID (old) | NP61D | PROJECT | PHASES | PACKAGE | PART | ELEMENTS | STEP | RES PACK |
| --- | --- | --- | --- | --- | --- | --- | --- | --- | --- | --- | --- | --- | --- | --- | --- | --- | --- | --- | --- | --- | --- | --- | --- |
|  | H40 | **INFRA DRAWINGS** |  | 2013-04-06 | 2013-07-27 |  |  |  |  |  |  |  |  |  |  |  |  |  |  |  |  |  |  |
|  | G10 | **SUBMISSION OF DRAWINGS** |  | 2013-04-06 | 2013-06-22 |  |  |  |  |  |  |  |  |  |  |  |  |  |  |  |  |  |  |
| DUKHENGI2ADWDRSM5050 |  | Drainage Line Layout & Details-Sub | 15d | 2013-04-06 A | 2013-04-22 A | DUKHENGP2ADWMESM5040, DUKHPROGEN00PQAP1040, DUKHPROGEN00PQAP2040 | 100% |  |  |  |  | DRAFTMAN SK [30 h] | 6,042 | 2ADWINSB15 | DUKHENG2ADWINSM5050 | DUKHENGI2ADWDRSM5050 | DH | ENG | 2A | DRWG | IFDW | SUB | RSE-2A |
| DUKHENGI2ADWFFSM5060 |  | Fire Fighting Line Layout & Details-Sub | 15d | 2013-04-06 A | 2013-04-22 A | DUKHENGI2ADWWSSM5070 SS | 100% |  |  |  |  | DRAFTMAN SK [30 h] | 4,638 | 2ADWINSB20 | DUKHENG2ADWINSM5060 | DUKHENGI2ADWFFSM5060 | DH | ENG | 2A | DRWG | IFDW | SUB | RSE-2A |
| DUKHENGI2ADWWSSM5070 |  | Water Supply Line Layout & Details-Sub | 15d | 2013-04-06 A | 2013-04-22 A | DUKHENGI2ADWDRSM5050 SS | 100% |  |  |  |  | DRAFTMAN SK [30 h] | 14,310 | 2ADWINSB25 | DUKHENG2ADWINSM5070 | DUKHENGI2ADWWSSM5070 | DH | ENG | 2A | DRWG | IFDW | SUB | RSE-2A |
| DUKHENGI2ADWELSM5080 |  | Electrical Line Layout & Details-Sub | 15d | 2013-04-23 A | 2013-05-09 | DUKHENGI2ADWFFSM5060, DUKHPROGEN00PQAP1040, DUKHPROGEN00PQAP2040 | 20% | 12d | 57d | 0d | 2013-05-09 | DRAFTMAN SK [30 h] | 153,184 | 2ADWINSB05 | DUKHENG2ADWINSM5080 | DUKHENGI2ADWELSM5080 | DH | ENG | 2A | DRWG | IFDW | SUB | RSE-2A |
| DUKHENGI2ADWSTSM5090 |  | Street Lighting Layout & details -Sub | 15d | 2013-04-23 A | 2013-05-09 | DUKHENGI2ADWELSM5080 SS | 20% | 12d | 57d | 0d | 2013-05-09 | DRAFTMAN SK [30 h] | 18,726 | 2ADWINSB10 | DUKHENG2ADWINSM5090 | DUKHENGI2ADWSTSM5090 | DH | ENG | 2A | DRWG | IFDW | SUB | RSE-2A |
| DUKHENGI2ADWTCSM5100 |  | Telecommunication Line Layout & Details-Sub | 15d | 2013-04-23 A | 2013-05-09 | DUKHENGI2ADWSTSM5090 SS | 20% | 12d | 57d | 0d | 2013-05-09 | DRAFTMAN SK [30 h] | 9,698 | 2ADWINSB35 | DUKHENG2ADWINSM5100 | DUKHENGI2ADWTCSM5100 | DH | ENG | 2A | DRWG | IFDW | SUB | RSE-2A |
| DUKHENGI2ADWBWSM5130 |  | Boundary Wall Layout & Details-Sub | 15d | 2013-05-11 | 2013-05-27 | DUKHENGI2ADWSLSM5120 SS |  |  | 57d | 0d |  | DRAFTMAN SK [30 h] | 59,390 | 2ADWINSB50 | DUKHENG2ADWINSM5130 | DUKHENGI2ADWBWSM5130 | DH | ENG | 2A | DRWG | IFDW | SUB | RSE-2A |
| DUKHENGI2ADWIRSM5110 |  | Irrigation Layout & Details-Sub | 15d | 2013-05-11 | 2013-05-27 | DUKHENGI2ADWTCSM5100, DUKHENGI2ADWWSSM5070 |  |  | 57d | 0d |  | DRAFTMAN SK [30 h] | 14,862 | 2ADWINSB30 | DUKHENG2ADWINSM5110 | DUKHENGI2ADWIRSM5110 | DH | ENG | 2A | DRWG | IFDW | SUB | RSE-2A |
| DUKHENGI2ADWSLSM5120 |  | Soft & HardLandscaping Layout & Detail-Sub | 15d | 2013-05-11 | 2013-05-27 | DUKHENGI2ADWIRSM5110 SS |  |  | 57d | 0d |  | DRAFTMAN SK [30 h] | 69,557 | 2ADWINSB45 | DUKHENG2ADWINSM5120 | DUKHENGI2ADWSLSM5120 | DH | ENG | 2A | DRWG | IFDW | SUB | RSE-2A |
| DUKHENGI2ADWIWSM5160 |  | Irrigation Water Tank & Pump Room Details- Sub | 15d | 2013-05-19 | 2013-06-04 | DUKHENGI2ADWRWSM5150 SS |  |  | 57d | 0d |  | DRAFTMAN SK [30 h] | 10,185 | 2ADWINSB60 | DUKHENG2ADWINSM5160 | DUKHENGI2ADWIWSM5160 | DH | ENG | 2A | DRWG | IFDW | SUB | RSE-2A |
| DUKHENGI2ADWPSSM5140 |  | Parking Shed Layout & Details Drawings-Sub | 15d | 2013-05-19 | 2013-06-04 | DUKHENGI2ADWBWSM5130 SS+7d |  |  | 57d | 0d |  | DRAFTMAN SK [30 h] | 33,166 | 2ADWINSB40 | DUKHENG2ADWINSM5140 | DUKHENGI2ADWPSSM5140 | DH | ENG | 2A | DRWG | IFDW | SUB | RSE-2A |
| DUKHENGI2ADWRWSM5150 |  | Road Layout & Details-Sub | 15d | 2013-05-19 | 2013-06-04 | DUKHENGI2ADWPSSM5140 SS |  |  | 57d | 0d |  | DRAFTMAN SK [30 h] | 112,190 | 2ADWINSB55 | DUKHENG2ADWINSM5150 | DUKHENGI2ADWRWSM5150 | DH | ENG | 2A | DRWG | IFDW | SUB | RSE-2A |
| DUKHENGI2ADWGZSM5170 |  | Gazebo Plan & Details-Sub | 15d | 2013-06-05 | 2013-06-22 | DUKHENGI2ADWIWSM5160 |  |  | 98d | 0d |  | DRAFTMAN SK [30 h] | 14,252 | 2ADWINSB70 | DUKHENG2ADWINSM5170 | DUKHENGI2ADWGZSM5170 | DH | ENG | 2A | DRWG | IFDW | SUB | RSE-2A |
|  | G20 | **APPROVAL OF DRAWINGS** |  | 2013-04-27 | 2013-07-27 |  |  |  |  |  |  |  |  |  |  |  |  |  |  |  |  |  |  |
| DUKHENGI2ADWDRAP5050 |  | Drainage Line Layout & Details-App | 27d | 2013-04-27 | 2013-05-27 | DUKHENGI2ADWDRSM5050 |  |  | 76d | 0d | 2013-05-27 |  |  | 2ADWINAP15 | DUKHENG2ADWINAP5050 | DUKHENGI2ADWDRAP5050 | DH | ENG | 2A | DRWG | IFDW | APP | RSE-2A |
| DUKHENGI2ADWFFAP5060 |  | Fire Fighting Line Layout & Details-App | 27d | 2013-04-27 | 2013-05-27 | DUKHENGI2ADWFFSM5060 |  |  | 53d | 0d | 2013-05-27 |  |  | 2ADWINAP20 | DUKHENG2ADWINAP5060 | DUKHENGI2ADWFFAP5060 | DH | ENG | 2A | DRWG | IFDW | APP | RSE-2A |
| DUKHENGI2ADWWSAP5070 |  | Water Supply Line Layout & Details-App | 27d | 2013-04-27 | 2013-05-27 | DUKHENGI2ADWWSSM5070 |  |  | 94d | 0d | 2013-05-27 |  |  | 2ADWINAP25 | DUKHENG2ADWINAP5070 | DUKHENGI2ADWWSAP5070 | DH | ENG | 2A | DRWG | IFDW | APP | RSE-2A |
| DUKHENGI2ADWELAP5080 |  | Electrical Line Layout & Details-App | 30d | 2013-05-11 | 2013-06-13 | DUKHENGI2ADWELSM5080 |  |  | 128d | 52d |  |  |  | 2ADWINAP05 | DUKHENG2ADWINAP5080 | DUKHENGI2ADWELAP5080 | DH | ENG | 2A | DRWG | IFDW | APP | RSE-2A |
| DUKHENGI2ADWSTAP5090 |  | Street Lighting Layout & details -App | 30d | 2013-05-11 | 2013-06-13 | DUKHENGI2ADWSTSM5090 |  |  | 128d | 52d |  |  |  | 2ADWINAP10 | DUKHENG2ADWINAP5090 | DUKHENGI2ADWSTAP5090 | DH | ENG | 2A | DRWG | IFDW | APP | RSE-2A |
| DUKHENGI2ADWTCAP5100 |  | Telecommunication Line Layout & Details-App | 30d | 2013-05-11 | 2013-06-13 | DUKHENGI2ADWTCSM5100 |  |  | 128d | 63d |  |  |  | 2ADWINAP35 | DUKHENG2ADWINAP5100 | DUKHENGI2ADWTCAP5100 | DH | ENG | 2A | DRWG | IFDW | APP | RSE-2A |
| DUKHENGI2ADWBWAP5130 |  | Boundary Wall Layout & Details-App | 30d | 2013-05-28 | 2013-07-01 | DUKHENGI2ADWBWSM5130 |  |  | 93d | 53d |  |  |  | 2ADWINAP50 | DUKHENG2ADWINAP5130 | DUKHENGI2ADWBWAP5130 | DH | ENG | 2A | DRWG | IFDW | APP | RSE-2A |
| DUKHENGI2ADWIRAP5110 |  | Irrigation Layout & Details-App | 30d | 2013-05-28 | 2013-07-01 | DUKHENGI2ADWIRSM5110 |  |  | 99d | 23d |  |  |  | 2ADWINAP30 | DUKHENG2ADWINAP5110 | DUKHENGI2ADWIRAP5110 | DH | ENG | 2A | DRWG | IFDW | APP | RSE-2A |
| DUKHENGI2ADWSLAP5120 |  | Soft & HardLandscaping Layout & Detail-App | 30d | 2013-05-28 | 2013-07-01 | DUKHENGI2ADWSLSM5120 |  |  | 75d | 49d |  |  |  | 2ADWINAP45 | DUKHENG2ADWINAP5120 | DUKHENGI2ADWSLAP5120 | DH | ENG | 2A | DRWG | IFDW | APP | RSE-2A |
| DUKHENGI2ADWIWAP5160 |  | Irrigation Water Tank & Pump Room Details-App | 30d | 2013-06-05 | 2013-07-09 | DUKHENGI2ADWIWSM5160 |  |  | 57d | 16d |  |  |  | 2ADWINAP60 | DUKHENG2ADWINAP5160 | DUKHENGI2ADWIWAP5160 | DH | ENG | 2A | DRWG | IFDW | APP | RSE-2A |
| DUKHENGI2ADWPSAP5140 |  | Parking Shed Layout & Details Drawings-App | 30d | 2013-06-05 | 2013-07-09 | DUKHENGI2ADWPSSM5140 |  |  | 158d | 31d |  |  |  | 2ADWINAP40 | DUKHENG2ADWINAP5140 | DUKHENGI2ADWPSAP5140 | DH | ENG | 2A | DRWG | IFDW | APP | RSE-2A |
| DUKHENGI2ADWRWAP5150 |  | Road Layout & Details-App | 30d | 2013-06-05 | 2013-07-09 | DUKHENGI2ADWRWSM5150 |  |  | 157d | 27d |  |  |  | 2ADWINAP55 | DUKHENG2ADWINAP5150 | DUKHENGI2ADWRWAP5150 | DH | ENG | 2A | DRWG | IFDW | APP | RSE-2A |
| DUKHENGI2ADWGZAP5170 |  | Gazebo Plan & Details-App | 30d | 2013-06-23 | 2013-07-27 | DUKHENGI2ADWGZSM5170 |  |  | 98d | 33d |  |  |  | 2ADWINAP70 | DUKHENG2ADWINAP5170 | DUKHENGI2ADWGZAP5170 | DH | ENG | 2A | DRWG | IFDW | APP | RSE-2A |

Notes:
- DUKHENGI2ADWDRSM5050: Expenses: I2A-Surface Water drainage and Sewerage system 6042
- DUKHENGI2ADWFFSM5060: Expenses: I2A-Water supply system 4638
- DUKHENGI2ADWWSSM5070: Expenses: I2A-Water supply system 14310
- DUKHENGI2ADWELSM5080: Expenses: I2A-Electrical power supply and distribution 153184
- DUKHENGI2ADWSTSM5090: Expenses: I2A-Street lighting 18726
- DUKHENGI2ADWTCSM5100: Expenses: I2A-Telecommunication 9698
- DUKHENGI2ADWBWSM5130: Expenses: I2A-Hard and soft landscaping 59390
- DUKHENGI2ADWIRSM5110: Expenses: I2A-Water supply system 14862
- DUKHENGI2ADWSLSM5120: Expenses: I2A-Hard and soft landscaping 69557
- DUKHENGI2ADWIWSM5160: Expenses: I2A-Water supply system 10185
- DUKHENGI2ADWPSSM5140: Expenses: I2A-Road work 33166
- DUKHENGI2ADWRWSM5150: Expenses: I2A-Road work 112190
- DUKHENGI2ADWGZSM5170: Expenses: I2A-Hard and soft landscaping 14252

| ID | WBS | Activity | Duration | Start | Finish | Predecessors | Complete | Remaining | Planned start | Planned finish | Total float | Free float | Expected finish | Resources | Cost | P3 ACTID | P6 ID (old) | NP61D | PROJECT | PHASES | PACKAGE | PART | ELEMENTS | STEP | RES PACK |
| --- | --- | --- | --- | --- | --- | --- | --- | --- | --- | --- | --- | --- | --- | --- | --- | --- | --- | --- | --- | --- | --- | --- | --- | --- | --- |
|  | L50 | **PACKAGE-2B** |  | 2012-11-26 | 2013-07-27 |  |  |  |  |  |  |  |  |  |  |  |  |  |  |  |  |  |  |  |  |
|  | E05 | **SHOP DRAWINGS SUBMISSION & APPROVAL** |  | 2012-11-26 | 2013-07-27 |  |  |  |  |  |  |  |  |  |  |  |  |  |  |  |  |  |  |  |  |
|  | H05 | **STRUCTURAL DRAWINGS** |  | 2012-11-26 | 2013-02-10 |  |  |  |  |  |  |  |  |  |  |  |  |  |  |  |  |  |  |  |  |
|  | G10 | **SUBMISSION OF DRAWINGS** |  | 2012-11-26 | 2013-01-06 |  |  |  |  |  |  |  |  |  |  |  |  |  |  |  |  |  |  |  |  |
| DUKHENGP2BDWSTSM5180 |  | Footing Drawings-Sub | 10d | 2012-11-26 A | 2012-12-05 A | DUKHMOBP020000004020 SS+5d | 100% |  | 2012-11-26 | 2012-12-06 |  |  |  | DRAFTMAN SK [20 h] | 45,900 | 2BDWSTSB05 | DUKHENG2BDWSTSM5180 | DUKHENGP2BDWSTSM5180 | DH | ENG | 2B | DRWG | STDW | SUB | RES-2B |
| DUKHENGP2BDWSTSM5190 |  | Grade Beam & Slab Drawings-Sub | 15d | 2012-12-02 A | 2012-12-19 A | DUKHENGP2BDWSTSM5180 SS+5d | 100% |  |  |  |  |  |  | DRAFTMAN SK [30 h] | 65,565 | 2BDWSTSB10 | DUKHENG2BDWSTSM5190 | DUKHENGP2BDWSTSM5190 | DH | ENG | 2B | DRWG | STDW | SUB | RES-2B |
| DUKHENGP2BDWSTSM5200 |  | Column Drawings-Sub | 15d | 2012-12-08 A | 2012-12-25 A | DUKHENGP2BDWSTSM5190 SS+5d | 100% |  |  |  |  |  |  | DRAFTMAN SK [30 h] | 11,703 | 2BDWSTSB15 | DUKHENG2BDWSTSM5200 | DUKHENGP2BDWSTSM5200 | DH | ENG | 2B | DRWG | STDW | SUB | RES-2B |
| DUKHENGP2BDWSTSM5210 |  | GF Beams & Slabs Drawings-Sub | 15d | 2012-12-20 A | 2013-01-06 A | DUKHENGP2BDWSTSM5200 SS+10d | 100% |  |  |  |  |  |  | DRAFTMAN SK [30 h] | 90,465 | 2BDWSTSB20 | DUKHENG2BDWSTSM5210 | DUKHENGP2BDWSTSM5210 | DH | ENG | 2B | DRWG | STDW | SUB | RES-2B |
|  | G20 | **APPROVAL OF DRAWINGS** |  | 2012-12-06 | 2013-02-10 |  |  |  |  |  |  |  |  |  |  |  |  |  |  |  |  |  |  |  |  |
| DUKHENGP2BDWSTAP5180 |  | Footing Drawings-App | 25d | 2012-12-06 A | 2012-12-31 A | DUKHENGP2BDWSTSM5180 | 100% |  | 2012-12-06 | 2013-01-05 |  |  |  |  |  | 2BDWSTAP30 | DUKHENG2BDWSTAP5180 | DUKHENGP2BDWSTAP5180 | DH | ENG | 2B | DRWG | STDW | APP | RES-2B |
| DUKHENGP2BDWSTAP5190 |  | Grade Beam & Slab Drawings-App | 30d | 2012-12-20 A | 2013-01-23 A | DUKHENGP2BDWSTSM5190 | 100% |  |  |  |  |  |  |  |  | 2BDWSTAP35 | DUKHENG2BDWSTAP5190 | DUKHENGP2BDWSTAP5190 | DH | ENG | 2B | DRWG | STDW | APP | RES-2B |
| DUKHENGP2BDWSTAP5200 |  | Column Drawings-App | 30d | 2012-12-26 A | 2013-01-29 A | DUKHENGP2BDWSTSM5200 | 100% |  |  |  |  |  |  |  |  | 2BDWSTAP40 | DUKHENG2BDWSTAP5200 | DUKHENGP2BDWSTAP5200 | DH | ENG | 2B | DRWG | STDW | APP | RES-2B |
| DUKHENGP2BDWSTAP5210 |  | GF Beams & Slabs Drawings-App | 30d | 2013-01-07 A | 2013-02-10 A | DUKHENGP2BDWSTSM5210 | 100% |  |  |  |  |  |  |  |  | 2BDWSTAP45 | DUKHENG2BDWSTAP5210 | DUKHENGP2BDWSTAP5210 | DH | ENG | 2B | DRWG | STDW | APP | RES-2B |
|  | H10 | **ARCHITECTURAL DRAWINGS** |  | 2013-01-07 | 2013-05-27 |  |  |  |  |  |  |  |  |  |  |  |  |  |  |  |  |  |  |  |  |
|  | G10 | **SUBMISSION OF DRAWINGS** |  | 2013-01-07 | 2013-04-22 |  |  |  |  |  |  |  |  |  |  |  |  |  |  |  |  |  |  |  |  |
| DUKHENGP2BDWARSM5230 |  | Ground Floor Plan-Sub | 15d | 2013-01-07 A | 2013-01-23 A | DUKHENGP2BDWSTSM5210 | 100% |  |  |  |  |  |  | DRAFTMAN SK [30 h] | 66,879 | 2BDWARSB05 | DUKHENG2BDWARSM5230 | DUKHENGP2BDWARSM5230 | DH | ENG | 2B | DRWG | ARDW | SUB | RES-2B |
| DUKHENGP2BDWARSM5250 |  | Roof Floor Plan-Sub | 8d | 2013-02-02 A | 2013-02-10 A | DUKHENGP2BDWARSM5230 | 100% |  |  |  |  |  |  | DRAFTMAN SK [30 h] | 27,702 | 2BDWARSB15 | DUKHENG2BDWARSM5250 | DUKHENGP2BDWARSM5250 | DH | ENG | 2B | DRWG | ARDW | SUB | RES-2B |
| DUKHENGP2BDWARSM5260 |  | Ceramic Flooring & Wall Drawings-Sub | 8d | 2013-02-05 A | 2013-02-14 A | DUKHENGP2BDWARSM5250 SS+3d, DUKHENGP2BDWARSM5230 | 100% |  |  |  |  |  |  | DRAFTMAN SK [30 h] | 16,188 | 2BDWARSB20 | DUKHENG2BDWARSM5260 | DUKHENGP2BDWARSM5260 | DH | ENG | 2B | DRWG | ARDW | SUB | RES-2B |
| DUKHENGP2BDWARSM5270 |  | Porcelain Floor Drawings-Sub | 8d | 2013-02-05 A | 2013-02-14 A | DUKHENGP2BDWARSM5260 SS | 100% |  |  |  |  |  |  | DRAFTMAN SK [30 h] | 25,809 | 2BDWARSB25 | DUKHENG2BDWARSM5270 | DUKHENGP2BDWARSM5270 | DH | ENG | 2B | DRWG | ARDW | SUB | RES-2B |
| DUKHENGP2BDWARSM5280 |  | Cobble & Slate Flooring Drawings-Sub | 8d | 2013-02-05 A | 2013-02-14 A | DUKHENGP2BDWARSM5270 SS | 100% |  |  |  |  |  |  | DRAFTMAN SK [30 h] | 58,869 | 2BDWARSB30 | DUKHENG2BDWARSM5280 | DUKHENGP2BDWARSM5280 | DH | ENG | 2B | DRWG | ARDW | SUB | RES-2B |
| DUKHENGP2BDWARSM5290 |  | Gypsum False Ceiling Drawings-Sub | 15d | 2013-03-10 A | 2013-03-26 A | DUKHPROGEN00PQAP2050, DUKHPROGEN00PQAP1050 | 100% |  |  |  |  |  |  | DRAFTMAN SK [20 h] | 15,012 | 2BDWARSB35 | DUKHENG2BDWARSM5290 | DUKHENGP2BDWARSM5290 | DH | ENG | 2B | DRWG | ARDW | SUB | RES-2B |
| DUKHENGP2BDWARSM5310 |  | Doors & window Drawings-Sub | 15d | 2013-03-20 A | 2013-04-06 A | DUKHPROGEN00PQAP1080, DUKHENGP2BDWARSM5230, DUKHPROGEN00PQAP2080 | 100% |  |  |  |  |  |  | DRAFTMAN SK [20 h] | 70,230 | 2BDWARSB45 | DUKHENG2BDWARSM5310 | DUKHENGP2BDWARSM5310 | DH | ENG | 2B | DRWG | ARDW | SUB | RES-2B |
| DUKHENGP2BDWARSM5320 |  | Carpentry & Joinery Drawings-Sub | 15d | 2013-04-06 A | 2013-04-22 A | DUKHENGP2BDWARSM5230, DUKHPROGEN00PQAP2150, DUKHPROGEN00PQAP1150 | 100% |  |  |  |  |  |  | DRAFTMAN SK [30 h] | 44,286 | 2BDWARSB50 | DUKHENG2BDWARSM5320 | DUKHENGP2BDWARSM5320 | DH | ENG | 2B | DRWG | ARDW | SUB | RES-2B |
|  | G20 | **APPROVAL OF DRAWINGS** |  | 2013-01-24 | 2013-05-27 |  |  |  |  |  |  |  |  |  |  |  |  |  |  |  |  |  |  |  |  |
| DUKHENGP2BDWARAP5230 |  | Ground Floor Plan-App | 30d | 2013-01-24 A | 2013-02-28 A | DUKHENGP2BDWARSM5230 | 100% |  |  |  |  |  |  |  |  | 2BDWARAP05 | DUKHENG2BDWARAP5230 | DUKHENGP2BDWARAP5230 | DH | ENG | 2B | DRWG | ARDW | APP | RES-2B |
| DUKHENGP2BDWARAP5250 |  | Roof Floor Plan-App | 30d | 2013-02-11 A | 2013-03-18 A | DUKHENGP2BDWARSM5250 | 100% |  |  |  |  |  |  |  |  | 2BDWARAP15 | DUKHENG2BDWARAP5250 | DUKHENGP2BDWARAP5250 | DH | ENG | 2B | DRWG | ARDW | APP | RES-2B |
| DUKHENGP2BDWARAP5260 |  | Ceramic Flooring & Wall Drawings-App | 30d | 2013-02-16 A | 2013-03-21 A | DUKHENGP2BDWARSM5260 | 100% |  |  |  |  |  |  |  |  | 2BDWARAP20 | DUKHENG2BDWARAP5260 | DUKHENGP2BDWARAP5260 | DH | ENG | 2B | DRWG | ARDW | APP | RES-2B |
| DUKHENGP2BDWARAP5270 |  | Porcelain Floor Drawings-App | 30d | 2013-02-16 A | 2013-03-21 A | DUKHENGP2BDWARSM5270 | 100% |  |  |  |  |  |  |  |  | 2BDWARAP25 | DUKHENG2BDWARAP5270 | DUKHENGP2BDWARAP5270 | DH | ENG | 2B | DRWG | ARDW | APP | RES-2B |
| DUKHENGP2BDWARAP5280 |  | Cobble & Slate Flooring Drawings-App | 30d | 2013-02-16 A | 2013-03-21 A | DUKHENGP2BDWARSM5280 | 100% |  |  |  |  |  |  |  |  | 2BDWARAP30 | DUKHENG2BDWARAP5280 | DUKHENGP2BDWARAP5280 | DH | ENG | 2B | DRWG | ARDW | APP | RES-2B |
| DUKHENGP2BDWARAP5290 |  | Gypsum False Ceiling Drawings-App | 30d | 2013-03-27 A | 2013-04-30 | DUKHENGP2BDWARSM5290 | 87% | 4d |  |  | 71d | 0d | 2013-04-30 |  |  | 2BDWARAP35 | DUKHENG2BDWARAP5290 | DUKHENGP2BDWARAP5290 | DH | ENG | 2B | DRWG | ARDW | APP | RES-2B |
| DUKHENGP2BDWARAP5310 |  | Doors & Window Drawings-App | 30d | 2013-04-07 A | 2013-05-11 | DUKHENGP2BDWARAP5250, DUKHENGP2BDWARSM5310 | 57% | 13d |  |  | 61d | 0d | 2013-05-11 |  |  | 2BDWARAP45 | DUKHENG2BDWARAP5310 | DUKHENGP2BDWARAP5310 | DH | ENG | 2B | DRWG | ARDW | APP | RES-2B |
| DUKHENGP2BDWARAP5320 |  | Carpentry & Joinery Drawings-App | 30d | 2013-04-23 A | 2013-05-27 | DUKHENGP2BDWARSM5320 | 10% | 27d |  |  | 84d | 0d | 2013-05-27 |  |  | 2BDWARAP50 | DUKHENG2BDWARAP5320 | DUKHENGP2BDWARAP5320 | DH | ENG | 2B | DRWG | ARDW | APP | RES-2B |

Notes:
- DUKHENGP2BDWSTSM5180: Expenses: P2B-Concrete Works 30213; P2B-Excavation and Earth Works 15687
- DUKHENGP2BDWSTSM5190: Expenses: P2B-Concrete Works 59115; P2B-Excavation and Earth Works 6450
- DUKHENGP2BDWSTSM5200: Expenses: P2B-Concrete Works 11703
- DUKHENGP2BDWSTSM5210: Expenses: P2B-Concrete Works 90465
- DUKHENGP2BDWARSM5230: Expenses: P2B-Block work 60039; P2B-Finishes 6840
- DUKHENGP2BDWARSM5250: Expenses: P2B-Roofing 27702
- DUKHENGP2BDWARSM5260: Expenses: P2B-Finishes 16188
- DUKHENGP2BDWARSM5270: Expenses: P2B-Finishes 25809
- DUKHENGP2BDWARSM5280: Expenses: P2B-Finishes 58869
- DUKHENGP2BDWARSM5290: Expenses: P2B-Finishes 15012
- DUKHENGP2BDWARSM5310: Expenses: P2B-Carpentry and Joinery 56529; P2B-Metal work 13701
- DUKHENGP2BDWARSM5320: Expenses: P2B-Carpentry and Joinery 44286

| ID | WBS | Activity | Duration | Start | Finish | Predecessors | Complete | Remaining | Planned start | Planned finish | Total float | Free float | Expected finish | Resources | Cost | P3 ACTID | P6 ID (old) | NP61D | PROJECT | PHASES | PACKAGE | PART | ELEMENTS | STEP | RES PACK |
| --- | --- | --- | --- | --- | --- | --- | --- | --- | --- | --- | --- | --- | --- | --- | --- | --- | --- | --- | --- | --- | --- | --- | --- | --- | --- |
|  | H20 | **ELECTRICAL DRAWINGS** |  | 2013-02-17 | 2013-06-06 |  |  |  |  |  |  |  |  |  |  |  |  |  |  |  |  |  |  |  |  |
|  | G10 | **SUBMISSION OF DRAWINGS** |  | 2013-02-17 | 2013-05-02 |  |  |  |  |  |  |  |  |  |  |  |  |  |  |  |  |  |  |  |  |
| DUKHENGP2BDWELSM5330 |  | Single Line Diagram-Sub | 15d | 2013-02-17 A | 2013-03-01 A | DUKHPROGEN00PQAP1040, DUKHPROGEN00PQAP2040 | 100% |  | 2013-02-17 | 2013-03-05 |  |  |  | DRAFTMAN SK [20 h] | 19,830 | 2BDWELSB05 | DUKHENG2BDWELSM5330 | DUKHENGP2BDWELSM5330 | DH | ENG | 2B | DRWG | ELDW | SUB | RES-2B |
| DUKHENGP2BDWELSM5340 |  | Lighting Layout Drawings-Sub | 15d | 2013-02-23 A | 2013-03-11 A | DUKHENGP2BDWELSM5330 SS+5d | 100% |  |  |  |  |  |  | DRAFTMAN SK [20 h] | 49,644 | 2BDWELSB10 | DUKHENG2BDWELSM5340 | DUKHENGP2BDWELSM5340 | DH | ENG | 2B | DRWG | ELDW | SUB | RES-2B |
| DUKHENGP2BDWELSM5350 |  | Power Layout Drawings-Sub | 15d | 2013-02-23 A | 2013-03-11 A | DUKHENGP2BDWELSM5330 SS+5d, DUKHENGP2BDWELSM5340 SS | 100% |  |  |  |  |  |  | DRAFTMAN SK [20 h] | 23,814 | 2BDWELSB15 | DUKHENG2BDWELSM5350 | DUKHENGP2BDWELSM5350 | DH | ENG | 2B | DRWG | ELDW | SUB | RES-2B |
| DUKHENGP2BDWELSM5360 |  | Central Alarm Monitoring System Drawings-Sub | 15d | 2013-03-12 A | 2013-03-28 A | DUKHENGP2BDWELSM5350 | 100% |  |  |  |  |  |  | DRAFTMAN SK [20 h] | 11,838 | 2BDWELSB20 | DUKHENG2BDWELSM5360 | DUKHENGP2BDWELSM5360 | DH | ENG | 2B | DRWG | ELDW | SUB | RES-2B |
| DUKHENGP2BDWELSM5370 |  | Audio Video Intercom System Drawings-Sub | 15d | 2013-03-30 A | 2013-04-15 A | DUKHENGP2BDWELSM5360 | 100% |  |  |  |  |  |  | DRAFTMAN SK [30 h] | 10,125 | 2BDWELSB25 | DUKHENG2BDWELSM5370 | DUKHENGP2BDWELSM5370 | DH | ENG | 2B | DRWG | ELDW | SUB | RES-2B |
| DUKHENGP2BDWELSM5380 |  | Telephone & TV System Drawings-Sub | 15d | 2013-04-16 A | 2013-05-02 | DUKHENGP2BDWELSM5370 | 60% | 6d |  |  | 79d | 0d | 2013-05-02 | DRAFTMAN SK [30 h] | 20,916 | 2BDWELSB30 | DUKHENG2BDWELSM5380 | DUKHENGP2BDWELSM5380 | DH | ENG | 2B | DRWG | ELDW | SUB | RES-2B |
|  | G20 | **APPROVAL OF DRAWINGS** |  | 2013-03-02 | 2013-06-06 |  |  |  |  |  |  |  |  |  |  |  |  |  |  |  |  |  |  |  |  |
| DUKHENGP2BDWELAP5330 |  | Single Line Diagram-App | 30d | 2013-03-02 A | 2013-04-04 A | DUKHENGP2BDWELSM5330 | 100% |  |  |  |  |  |  |  |  | 2BDWELAP05 | DUKHENG2BDWELAP5330 | DUKHENGP2BDWELAP5330 | DH | ENG | 2B | DRWG | ELDW | APP | RES-2B |
| DUKHENGP2BDWELAP5340 |  | Lighting Layout Drawings-App | 30d | 2013-03-12 A | 2013-04-15 A | DUKHENGP2BDWELSM5340 | 100% |  |  |  |  |  |  |  |  | 2BDWELAP10 | DUKHENG2BDWELAP5340 | DUKHENGP2BDWELAP5340 | DH | ENG | 2B | DRWG | ELDW | APP | RES-2B |
| DUKHENGP2BDWELAP5350 |  | Power Layout Drawings-App | 30d | 2013-03-12 A | 2013-04-15 A | DUKHENGP2BDWELSM5350 | 100% |  |  |  |  |  |  |  |  | 2BDWELAP15 | DUKHENG2BDWELAP5350 | DUKHENGP2BDWELAP5350 | DH | ENG | 2B | DRWG | ELDW | APP | RES-2B |
| DUKHENGP2BDWELAP5360 |  | Central Alarm Monitoring System Drawings-App | 30d | 2013-03-30 A | 2013-05-02 | DUKHENGP2BDWELSM5360 | 80% | 6d |  |  | 103d | 0d | 2013-05-02 |  |  | 2BDWELAP20 | DUKHENG2BDWELAP5360 | DUKHENGP2BDWELAP5360 | DH | ENG | 2B | DRWG | ELDW | APP | RES-2B |
| DUKHENGP2BDWELAP5370 |  | Audio Video Intercom System Drawings-App | 30d | 2013-04-16 A | 2013-05-20 | DUKHENGP2BDWELSM5370 | 30% | 21d |  |  | 94d | 0d | 2013-05-20 |  |  | 2BDWELAP25 | DUKHENG2BDWELAP5370 | DUKHENGP2BDWELAP5370 | DH | ENG | 2B | DRWG | ELDW | APP | RES-2B |
| DUKHENGP2BDWELAP5380 |  | Telephone & TV System Drawings-App | 30d | 2013-05-04 | 2013-06-06 | DUKHENGP2BDWELSM5380 |  |  |  |  | 79d | 58d |  |  |  | 2BDWELAP30 | DUKHENG2BDWELAP5380 | DUKHENGP2BDWELAP5380 | DH | ENG | 2B | DRWG | ELDW | APP | RES-2B |
|  | H30 | **PLUMBING,DRAINAGE,FIREFIGHTING & AC DRAWINGS** |  | 2013-02-17 | 2013-05-09 |  |  |  |  |  |  |  |  |  |  |  |  |  |  |  |  |  |  |  |  |
|  | G10 | **SUBMISSION OF DRAWINGS** |  | 2013-02-17 | 2013-04-04 |  |  |  |  |  |  |  |  |  |  |  |  |  |  |  |  |  |  |  |  |
| DUKHENGP2BDWMESM5390 |  | Plumbing Layout & Details Drawings-Sub | 15d | 2013-02-17 A | 2013-03-01 A | DUKHPROGEN00PQAP1040, DUKHPROGEN00PQAP2040 | 100% |  | 2013-02-17 | 2013-03-05 |  |  |  | DRAFTMAN SK [20 h] | 32,436 | 2BDWPLSB05 | DUKHENG2BDWMESM5390 | DUKHENGP2BDWMESM5390 | DH | ENG | 2B | DRWG | PLDW | SUB | RES-2B |
| DUKHENGP2BDWMESM5400 |  | Drainage Layout & Details Drawings-Sub | 15d | 2013-02-17 A | 2013-03-01 A | DUKHPROGEN00PQAP2040, DUKHPROGEN00PQAP1040 | 100% |  | 2013-02-17 | 2013-03-05 |  |  |  | DRAFTMAN SK [20 h] | 16,953 | 2BDWPLSB10 | DUKHENG2BDWMESM5400 | DUKHENGP2BDWMESM5400 | DH | ENG | 2B | DRWG | PLDW | SUB | RES-2B |
| DUKHENGP2BDWMESM5410 |  | Fire Fighting Layout & Details Drawings-Sub | 15d | 2013-03-02 A | 2013-03-18 A | DUKHPROGEN00PQAP1040, DUKHPROGEN00PQAP2040, DUKHENGP2BDWMESM5400 | 100% |  |  |  |  |  |  | DRAFTMAN SK [20 h] | 11,838 | 2BDWPLSB15 | DUKHENG2BDWMESM5410 | DUKHENGP2BDWMESM5410 | DH | ENG | 2B | DRWG | PLDW | SUB | RES-2B |
| DUKHENGP2BDWMESM5420 |  | AC Layout & Details Drawings-Sub | 15d | 2013-03-19 A | 2013-04-04 A | DUKHENGP2BDWMESM5410, DUKHPROGEN00PQAP1040, DUKHPROGEN00PQAP2040 | 100% |  |  |  |  |  |  | DRAFTMAN SK [30 h] | 15,537 | 2BDWPLSB20 | DUKHENG2BDWMESM5420 | DUKHENGP2BDWMESM5420 | DH | ENG | 2B | DRWG | PLDW | SUB | RES-2B |
|  | G20 | **APPROVAL OF DRAWINGS** |  | 2013-03-02 | 2013-05-09 |  |  |  |  |  |  |  |  |  |  |  |  |  |  |  |  |  |  |  |  |
| DUKHENGP2BDWMEAP5390 |  | Plumbing Layout & Details Drawings-App | 30d | 2013-03-02 A | 2013-04-04 A | DUKHENGP2BDWMESM5390 | 100% |  |  |  |  |  |  |  |  | 2BDWPLAP05 | DUKHENG2BDWMEAP5390 | DUKHENGP2BDWMEAP5390 | DH | ENG | 2B | DRWG | PLDW | APP | RES-2B |
| DUKHENGP2BDWMEAP5400 |  | Drainage Layout & Details Drawings-App | 30d | 2013-03-02 A | 2013-04-04 A | DUKHENGP2BDWMESM5390, DUKHENGP2BDWMESM5400 | 100% |  |  |  |  |  |  |  |  | 2BDWPLAP10 | DUKHENG2BDWMEAP5400 | DUKHENGP2BDWMEAP5400 | DH | ENG | 2B | DRWG | PLDW | APP | RES-2B |
| DUKHENGP2BDWMEAP5410 |  | Fire Fighting Layout & Details Drawings-App | 30d | 2013-03-19 A | 2013-04-22 A | DUKHENGP2BDWMESM5410 | 100% |  |  |  |  |  |  |  |  | 2BDWPLAP15 | DUKHENG2BDWMEAP5410 | DUKHENGP2BDWMEAP5410 | DH | ENG | 2B | DRWG | PLDW | APP | RES-2B |
| DUKHENGP2BDWMEAP5420 |  | AC Layout & Details Drawings-App | 30d | 2013-04-06 A | 2013-05-09 | DUKHENGP2BDWMESM5420 | 60% | 12d |  |  | 72d | 0d | 2013-05-09 |  |  | 2BDWPLAP20 | DUKHENG2BDWMEAP5420 | DUKHENGP2BDWMEAP5420 | DH | ENG | 2B | DRWG | PLDW | APP | RES-2B |

Notes:
- DUKHENGP2BDWELSM5330: Expenses: P2B-Electrical Installations 19830
- DUKHENGP2BDWELSM5340: Expenses: P2B-Electrical Installations 49644
- DUKHENGP2BDWELSM5350: Expenses: P2B-Electrical Installations 23814
- DUKHENGP2BDWELSM5360: Expenses: P2B-Electrical Installations 11838
- DUKHENGP2BDWELSM5370: Expenses: P2B-Electrical Installations 9969; P2B-External works within the Plot Curtilage 156
- DUKHENGP2BDWELSM5380: Expenses: P2B-Electrical Installations 20916
- DUKHENGP2BDWMESM5390: Expenses: P2B-Plumbing and Drainage works 32436
- DUKHENGP2BDWMESM5400: Expenses: P2B-Plumbing and Drainage works 16953
- DUKHENGP2BDWMESM5410: Expenses: P2B-Electrical Installations 11838
- DUKHENGP2BDWMESM5420: Expenses: P2B-Air-conditioning and Ventilation works 15537

| ID | WBS | Activity | Duration | Start | Finish | Predecessors | Complete | Remaining | Total float | Free float | Expected finish | Resources | Cost | P3 ACTID | P6 ID (old) | NP61D | PROJECT | PHASES | PACKAGE | PART | ELEMENTS | STEP | RES PACK |
| --- | --- | --- | --- | --- | --- | --- | --- | --- | --- | --- | --- | --- | --- | --- | --- | --- | --- | --- | --- | --- | --- | --- | --- |
|  | H40 | **INFRA DRAWINGS** |  | 2013-04-06 | 2013-07-27 |  |  |  |  |  |  |  |  |  |  |  |  |  |  |  |  |  |  |
|  | G10 | **SUBMISSION OF DRAWINGS** |  | 2013-04-06 | 2013-06-22 |  |  |  |  |  |  |  |  |  |  |  |  |  |  |  |  |  |  |
| DUKHENGI2BDWDRSM5430 |  | Drainage Line Layout & Details-Sub | 15d | 2013-04-06 A | 2013-04-22 A | DUKHENGP2BDWMESM5420, DUKHPROGEN00PQAP2040, DUKHPROGEN00PQAP1040 | 100% |  |  |  |  | DRAFTMAN SK [30 h] | 9,774 | 2BDWINSB15 | DUKHENG2BDWINSM5430 | DUKHENGI2BDWDRSM5430 | DH | ENG | 2B | DRWG | IFDW | SUB | RES-2B |
| DUKHENGI2BDWFFSM5440 |  | Fire Fighting Line Layout & Details-Sub | 15d | 2013-04-06 A | 2013-04-22 A | DUKHENGI2BDWWSSM5450 SS | 100% |  |  |  |  | DRAFTMAN SK [30 h] | 9,156 | 2BDWINSB20 | DUKHENG2BDWINSM5440 | DUKHENGI2BDWFFSM5440 | DH | ENG | 2B | DRWG | IFDW | SUB | RES-2B |
| DUKHENGI2BDWWSSM5450 |  | Water Supply Line Layout & Details-Sub | 15d | 2013-04-06 A | 2013-04-22 A | DUKHENGI2BDWDRSM5430 SS | 100% |  |  |  |  | DRAFTMAN SK [30 h] | 17,464 | 2BDWINSB25 | DUKHENG2BDWINSM5450 | DUKHENGI2BDWWSSM5450 | DH | ENG | 2B | DRWG | IFDW | SUB | RES-2B |
| DUKHENGI2BDWELSM5460 |  | Electrical Line Layout & Details-Sub | 15d | 2013-04-23 A | 2013-05-09 | DUKHENGI2BDWFFSM5440, DUKHPROGEN00PQAP2040, DUKHPROGEN00PQAP1040 | 20% | 12d | 57d | 0d | 2013-05-09 | DRAFTMAN SK [30 h] | 73,828 | 2BDWINSB05 | DUKHENG2BDWINSM5460 | DUKHENGI2BDWELSM5460 | DH | ENG | 2B | DRWG | IFDW | SUB | RES-2B |
| DUKHENGI2BDWSTSM5470 |  | Street Lighting Layout & details -Sub | 15d | 2013-04-23 A | 2013-05-09 | DUKHENGI2BDWELSM5460 SS | 20% | 12d | 57d | 0d | 2013-05-09 | DRAFTMAN SK [30 h] | 22,674 | 2BDWINSB10 | DUKHENG2BDWINSM5470 | DUKHENGI2BDWSTSM5470 | DH | ENG | 2B | DRWG | IFDW | SUB | RES-2B |
| DUKHENGI2BDWTCSM5480 |  | Telecommunication Line Layout & Details-Sub | 15d | 2013-04-23 A | 2013-05-09 | DUKHENGI2BDWSTSM5470 SS | 20% | 12d | 57d | 0d | 2013-05-09 | DRAFTMAN SK [30 h] | 15,016 | 2BDWINSB35 | DUKHENG2BDWINSM5480 | DUKHENGI2BDWTCSM5480 | DH | ENG | 2B | DRWG | IFDW | SUB | RES-2B |
| DUKHENGI2BDWBWSM5510 |  | Boundary Wall Layout & Details-Sub | 15d | 2013-05-11 | 2013-05-27 | DUKHENGI2BDWSLSM5500 SS |  |  | 57d | 0d |  | DRAFTMAN SK [30 h] | 90,320 | 2BDWINSB50 | DUKHENG2BDWINSM5510 | DUKHENGI2BDWBWSM5510 | DH | ENG | 2B | DRWG | IFDW | SUB | RES-2B |
| DUKHENGI2BDWIRSM5490 |  | Irrigation Layout & Details-Sub | 15d | 2013-05-11 | 2013-05-27 | DUKHENGI2BDWTCSM5480, DUKHENGI2BDWWSSM5450 |  |  | 57d | 0d |  | DRAFTMAN SK [30 h] | 18,566 | 2BDWINSB30 | DUKHENG2BDWINSM5490 | DUKHENGI2BDWIRSM5490 | DH | ENG | 2B | DRWG | IFDW | SUB | RES-2B |
| DUKHENGI2BDWSLSM5500 |  | Soft & HardLandscaping Layout & Detail-Sub | 15d | 2013-05-11 | 2013-05-27 | DUKHENGI2BDWIRSM5490 SS |  |  | 57d | 0d |  | DRAFTMAN SK [30 h] | 162,015 | 2BDWINSB45 | DUKHENG2BDWINSM5500 | DUKHENGI2BDWSLSM5500 | DH | ENG | 2B | DRWG | IFDW | SUB | RES-2B |
| DUKHENGI2BDWIWSM5540 |  | Irrigation Water Tank & Pump Room Details- Sub | 15d | 2013-05-19 | 2013-06-04 | DUKHENGI2BDWRWSM5530 SS |  |  | 57d | 0d |  | DRAFTMAN SK [30 h] | 10,185 | 2BDWINSB60 | DUKHENG2BDWINSM5540 | DUKHENGI2BDWIWSM5540 | DH | ENG | 2B | DRWG | IFDW | SUB | RES-2B |
| DUKHENGI2BDWPSSM5520 |  | Parking Shed Layout & Details Drawings-Sub | 15d | 2013-05-19 | 2013-06-04 | DUKHENGI2BDWBWSM5510 SS+7d |  |  | 57d | 0d |  | DRAFTMAN SK [30 h] | 79,504 | 2BDWINSB40 | DUKHENG2BDWINSM5520 | DUKHENGI2BDWPSSM5520 | DH | ENG | 2B | DRWG | IFDW | SUB | RES-2B |
| DUKHENGI2BDWRWSM5530 |  | Road Layout & Details-Sub | 15d | 2013-05-19 | 2013-06-04 | DUKHENGI2BDWPSSM5520 SS |  |  | 57d | 0d |  | DRAFTMAN SK [30 h] | 128,884 | 2BDWINSB55 | DUKHENG2BDWINSM5530 | DUKHENGI2BDWRWSM5530 | DH | ENG | 2B | DRWG | IFDW | SUB | RES-2B |
| DUKHENGI2BDWGZSM5550 |  | Gazebo Plan & Details-Sub | 15d | 2013-06-05 | 2013-06-22 | DUKHENGI2BDWIWSM5540 |  |  | 98d | 0d |  | DRAFTMAN SK [30 h] | 14,252 | 2BDWINSB70 | DUKHENG2BDWINSM5550 | DUKHENGI2BDWGZSM5550 | DH | ENG | 2B | DRWG | IFDW | SUB | RES-2B |
|  | G20 | **APPROVAL OF DRAWINGS** |  | 2013-04-27 | 2013-07-27 |  |  |  |  |  |  |  |  |  |  |  |  |  |  |  |  |  |  |
| DUKHENGI2BDWDRAP5430 |  | Drainage Line Layout & Details-App | 27d | 2013-04-27 | 2013-05-27 | DUKHENGI2BDWDRSM5430 |  |  | 72d | 0d | 2013-05-27 |  |  | 2BDWINAP15 | DUKHENG2BDWINAP5430 | DUKHENGI2BDWDRAP5430 | DH | ENG | 2B | DRWG | IFDW | APP | RES-2B |
| DUKHENGI2BDWFFAP5440 |  | Fire Fighting Line Layout & Details-App | 27d | 2013-04-27 | 2013-05-27 | DUKHENGI2BDWFFSM5440 |  |  | 53d | 0d | 2013-05-27 |  |  | 2BDWINAP20 | DUKHENG2BDWINAP5440 | DUKHENGI2BDWFFAP5440 | DH | ENG | 2B | DRWG | IFDW | APP | RES-2B |
| DUKHENGI2BDWWSAP5450 |  | Water Supply Line Layout & Details-App | 27d | 2013-04-27 | 2013-05-27 | DUKHENGI2BDWWSSM5450 |  |  | 94d | 0d | 2013-05-27 |  |  | 2BDWINAP25 | DUKHENG2BDWINAP5450 | DUKHENGI2BDWWSAP5450 | DH | ENG | 2B | DRWG | IFDW | APP | RES-2B |
| DUKHENGI2BDWELAP5460 |  | Electrical Line Layout & Details-App | 30d | 2013-05-11 | 2013-06-13 | DUKHENGI2BDWELSM5460 |  |  | 128d | 52d |  |  |  | 2BDWINAP05 | DUKHENG2BDWINAP5460 | DUKHENGI2BDWELAP5460 | DH | ENG | 2B | DRWG | IFDW | APP | RES-2B |
| DUKHENGI2BDWSTAP5470 |  | Street Lighting Layout & details -App | 30d | 2013-05-11 | 2013-06-13 | DUKHENGI2BDWSTSM5470 |  |  | 128d | 52d |  |  |  | 2BDWINAP10 | DUKHENG2BDWINAP5470 | DUKHENGI2BDWSTAP5470 | DH | ENG | 2B | DRWG | IFDW | APP | RES-2B |
| DUKHENGI2BDWTCAP5480 |  | Telecommunication Line Layout & Details-App | 30d | 2013-05-11 | 2013-06-13 | DUKHENGI2BDWTCSM5480 |  |  | 128d | 63d |  |  |  | 2BDWINAP35 | DUKHENG2BDWINAP5480 | DUKHENGI2BDWTCAP5480 | DH | ENG | 2B | DRWG | IFDW | APP | RES-2B |
| DUKHENGI2BDWBWAP5510 |  | Boundary Wall Layout & Details-App | 30d | 2013-05-28 | 2013-07-01 | DUKHENGI2BDWBWSM5510 |  |  | 93d | 53d |  |  |  | 2BDWINAP50 | DUKHENG2BDWINAP5510 | DUKHENGI2BDWBWAP5510 | DH | ENG | 2B | DRWG | IFDW | APP | RES-2B |
| DUKHENGI2BDWIRAP5490 |  | Irrigation Layout & Details-App | 30d | 2013-05-28 | 2013-07-01 | DUKHENGI2BDWIRSM5490 |  |  | 99d | 23d |  |  |  | 2BDWINAP30 | DUKHENG2BDWINAP5490 | DUKHENGI2BDWIRAP5490 | DH | ENG | 2B | DRWG | IFDW | APP | RES-2B |
| DUKHENGI2BDWSLAP5500 |  | Soft & HardLandscaping Layout & Detail-App | 30d | 2013-05-28 | 2013-07-01 | DUKHENGI2BDWSLSM5500 |  |  | 75d | 49d |  |  |  | 2BDWINAP45 | DUKHENG2BDWINAP5500 | DUKHENGI2BDWSLAP5500 | DH | ENG | 2B | DRWG | IFDW | APP | RES-2B |
| DUKHENGI2BDWIWAP5540 |  | Irrigation Water Tank & Pump Room Details-App | 30d | 2013-06-05 | 2013-07-09 | DUKHENGI2BDWIWSM5540 |  |  | 57d | 16d |  |  |  | 2BDWINAP60 | DUKHENG2BDWINAP5540 | DUKHENGI2BDWIWAP5540 | DH | ENG | 2B | DRWG | IFDW | APP | RES-2B |
| DUKHENGI2BDWPSAP5520 |  | Parking Shed Layout & Details Drawings-App | 30d | 2013-06-05 | 2013-07-09 | DUKHENGI2BDWPSSM5520 |  |  | 158d | 31d |  |  |  | 2BDWINAP40 | DUKHENG2BDWINAP5520 | DUKHENGI2BDWPSAP5520 | DH | ENG | 2B | DRWG | IFDW | APP | RES-2B |
| DUKHENGI2BDWRWAP5530 |  | Road Layout & Details-App | 30d | 2013-06-05 | 2013-07-09 | DUKHENGI2BDWRWSM5530 |  |  | 157d | 27d |  |  |  | 2BDWINAP55 | DUKHENG2BDWINAP5530 | DUKHENGI2BDWRWAP5530 | DH | ENG | 2B | DRWG | IFDW | APP | RES-2B |
| DUKHENGI2BDWGZAP5550 |  | Gazebo Plan & Details-App | 30d | 2013-06-23 | 2013-07-27 | DUKHENGI2BDWGZSM5550 |  |  | 98d | 33d |  |  |  | 2BDWINAP70 | DUKHENG2BDWINAP5550 | DUKHENGI2BDWGZAP5550 | DH | ENG | 2B | DRWG | IFDW | APP | RES-2B |

Notes:
- DUKHENGI2BDWDRSM5430: Expenses: I2B-Surface Water drainage and Sewerage system 9774
- DUKHENGI2BDWFFSM5440: Expenses: I2B-Water supply system 9156
- DUKHENGI2BDWWSSM5450: Expenses: I2B-Water supply system 17464
- DUKHENGI2BDWELSM5460: Expenses: I2B-Electrical power supply and distribution 73828
- DUKHENGI2BDWSTSM5470: Expenses: I2B-Street lighting 22674
- DUKHENGI2BDWTCSM5480: Expenses: I2B-Telecommunication 15016
- DUKHENGI2BDWBWSM5510: Expenses: I2B-Hard and soft landscaping 90320
- DUKHENGI2BDWIRSM5490: Expenses: I2B-Water supply system 18566
- DUKHENGI2BDWSLSM5500: Expenses: I2B-Hard and soft landscaping 162015
- DUKHENGI2BDWIWSM5540: Expenses: I2B-Water supply system 10185
- DUKHENGI2BDWPSSM5520: Expenses: I2B-Road work 79504
- DUKHENGI2BDWRWSM5530: Expenses: I2B-Road work 128884
- DUKHENGI2BDWGZSM5550: Expenses: I2B-Hard and soft landscaping 14252

| ID | WBS | Activity | Duration | Start | Finish | Predecessors | Complete | Planned start | Planned finish | Resources | Cost | P3 ACTID | P6 ID (old) | NP61D | PROJECT | PHASES | PACKAGE | PART | ELEMENTS | STEP | RES PACK |
| --- | --- | --- | --- | --- | --- | --- | --- | --- | --- | --- | --- | --- | --- | --- | --- | --- | --- | --- | --- | --- | --- |
|  | L60 | **PACKAGE-3** |  | 2012-12-01 | 2013-09-07 |  |  |  |  |  |  |  |  |  |  |  |  |  |  |  |  |
|  | E05 | **SHOP DRAWINGS SUBMISSION & APPROVAL** |  | 2012-12-01 | 2013-09-07 |  |  |  |  |  |  |  |  |  |  |  |  |  |  |  |  |
|  | H05 | **STRUCTURAL DRAWINGS** |  | 2012-12-01 | 2013-03-07 |  |  |  |  |  |  |  |  |  |  |  |  |  |  |  |  |
|  | G10 | **SUBMISSION OF DRAWINGS** |  | 2012-12-01 | 2013-02-02 |  |  |  |  |  |  |  |  |  |  |  |  |  |  |  |  |
| DUKHENGP03DWSTSM5560 |  | Footing Drawings-Sub | 10d | 2012-12-01 A | 2012-12-11 A | DUKHMOBP030000004000 | 100% |  |  | DRAFTMAN SK [20 h] | 176,810 | P3DWSTSB05 | DUKHENG3PDWSTSM5560 | DUKHENGP03DWSTSM5560 | DH | ENG | P3 | DRWG | STDW | SUB | RES-3 |
| DUKHENGP03DWSTSM5570 |  | Grade Beam & Slab Drawings-Sub | 15d | 2012-12-08 A | 2012-12-25 A | DUKHENGP03DWSTSM5560 SS+6d | 100% |  |  | DRAFTMAN SK [30 h] | 225,915 | P3DWSTSB10 | DUKHENG3PDWSTSM5570 | DUKHENGP03DWSTSM5570 | DH | ENG | P3 | DRWG | STDW | SUB | RES-3 |
| DUKHENGP03DWSTSM5580 |  | Column Drawings-Sub | 15d | 2012-12-15 A | 2012-12-31 A | DUKHENGP03DWSTSM5570 SS+6d | 100% | 2012-12-15 | 2013-01-01 | DRAFTMAN SK [30 h] | 47,555 | P3DWSTSB15 | DUKHENG3PDWSTSM5580 | DUKHENGP03DWSTSM5580 | DH | ENG | P3 | DRWG | STDW | SUB | RES-3 |
| DUKHENGP03DWSTSM5590 |  | GF Beams & Slabs Drawings-Sub | 15d | 2012-12-27 A | 2013-02-02 A | DUKHENGP03DWSTSM5580 SS+10d | 100% | 2012-12-27 | 2013-01-13 | DRAFTMAN SK [30 h] | 161,285 | P3DWSTSB20 | DUKHENG3PDWSTSM5590 | DUKHENGP03DWSTSM5590 | DH | ENG | P3 | DRWG | STDW | SUB | RES-3 |
| DUKHENGP03DWSTSM5600 |  | FF Beams & Slabs Drawings-Sub | 15d | 2013-01-14 A | 2013-01-30 A | DUKHENGP03DWSTSM5590 | 100% |  |  | DRAFTMAN SK [30 h] | 161,285 | P3DWSTSB25 | DUKHENG3PDWSTSM5600 | DUKHENGP03DWSTSM5600 | DH | ENG | P3 | DRWG | STDW | SUB | RES-3 |
|  | G20 | **APPROVAL OF DRAWINGS** |  | 2012-12-12 | 2013-03-07 |  |  |  |  |  |  |  |  |  |  |  |  |  |  |  |  |
| DUKHENGP03DWSTAP5560 |  | Footing Drawings-App | 25d | 2012-12-12 A | 2012-12-29 A | DUKHENGP03DWSTSM5560 | 100% | 2012-12-12 | 2013-01-10 |  |  | P3DWSTAP30 | DUKHENG3PDWSTAP5560 | DUKHENGP03DWSTAP5560 | DH | ENG | P3 | DRWG | STDW | APP | RES-3 |
| DUKHENGP03DWSTAP5570 |  | Grade Beam & Slab Drawings-App | 30d | 2012-12-26 A | 2013-01-29 A | DUKHENGP03DWSTSM5570 | 100% |  |  |  |  | P3DWSTAP35 | DUKHENG3PDWSTAP5570 | DUKHENGP03DWSTAP5570 | DH | ENG | P3 | DRWG | STDW | APP | RES-3 |
| DUKHENGP03DWSTAP5580 |  | Column Drawings-App | 30d | 2012-12-29 A | 2013-01-31 A | DUKHENGP03DWSTSM5580 | 100% |  |  |  |  | P3DWSTAP40 | DUKHENG3PDWSTAP5580 | DUKHENGP03DWSTAP5580 | DH | ENG | P3 | DRWG | STDW | APP | RES-3 |
| DUKHENGP03DWSTAP5590 |  | GF Beams & Slabs Drawings-App | 30d | 2013-01-14 A | 2013-02-18 A | DUKHENGP03DWSTSM5590 | 100% |  |  |  |  | P3DWSTAP45 | DUKHENG3PDWSTAP5590 | DUKHENGP03DWSTAP5590 | DH | ENG | P3 | DRWG | STDW | APP | RES-3 |
| DUKHENGP03DWSTAP5600 |  | FF Beams & Slabs Drawings-App | 29d | 2013-02-02 A | 2013-03-07 A | DUKHENGP03DWSTSM5600 | 100% |  |  |  |  | P3DWSTAP50 | DUKHENG3PDWSTAP5600 | DUKHENGP03DWSTAP5600 | DH | ENG | P3 | DRWG | STDW | APP | RES-3 |
|  | H10 | **ARCHITECTURAL DRAWINGS** |  | 2013-02-02 | 2013-05-27 |  |  |  |  |  |  |  |  |  |  |  |  |  |  |  |  |
|  | G10 | **SUBMISSION OF DRAWINGS** |  | 2013-02-02 | 2013-04-22 |  |  |  |  |  |  |  |  |  |  |  |  |  |  |  |  |
| DUKHENGP03DWARSM5610 |  | Ground Floor Plan-Sub | 14d | 2013-02-02 A | 2013-02-18 A | DUKHENGP03DWSTSM5600 | 100% |  |  | DRAFTMAN SK [30 h] | 136,470 | P3DWARSB05 | DUKHENG3PDWARSM5610 | DUKHENGP03DWARSM5610 | DH | ENG | P3 | DRWG | ARDW | SUB | RES-3 |
| DUKHENGP03DWARSM5620 |  | First Floor Plan-Sub | 15d | 2013-02-13 A | 2013-03-01 A | DUKHENGP03DWARSM5610 SS+9d | 100% | 2013-02-13 | 2013-03-02 | DRAFTMAN SK [30 h] | 148,465 | P3DWARSB10 | DUKHENG3PDWARSM5620 | DUKHENGP03DWARSM5620 | DH | ENG | P3 | DRWG | ARDW | SUB | RES-3 |
| DUKHENGP03DWARSM5630 |  | Roof Floor Plan-Sub | 15d | 2013-02-21 A | 2013-03-10 A | DUKHENGP03DWARSM5620 SS+7d | 100% |  |  | DRAFTMAN SK [30 h] | 16,710 | P3DWARSB15 | DUKHENG3PDWARSM5630 | DUKHENGP03DWARSM5630 | DH | ENG | P3 | DRWG | ARDW | SUB | RES-3 |
| DUKHENGP03DWARSM5640 |  | Ceramic Flooring & Wall Drawings-Sub | 15d | 2013-03-02 A | 2013-03-18 A | DUKHENGP03DWARSM5630 SS+3d, DUKHENGP03DWARSM5620, DUKHENGP03DWARSM5610 | 100% |  |  | DRAFTMAN SK [20 h] | 80,812 | P3DWARSB20 | DUKHENG3PDWARSM5640 | DUKHENGP03DWARSM5640 | DH | ENG | P3 | DRWG | ARDW | SUB | RES-3 |
| DUKHENGP03DWARSM5650 |  | Porcelain Floor Drawings-Sub | 15d | 2013-03-02 A | 2013-03-18 A | DUKHENGP03DWARSM5640 SS | 100% |  |  | DRAFTMAN SK [20 h] | 130,710 | P3DWARSB25 | DUKHENG3PDWARSM5650 | DUKHENGP03DWARSM5650 | DH | ENG | P3 | DRWG | ARDW | SUB | RES-3 |
| DUKHENGP03DWARSM5660 |  | Cobble & Slate Flooring Drawings-Sub | 15d | 2013-03-02 A | 2013-03-18 A | DUKHENGP03DWARSM5650 SS | 100% |  |  | DRAFTMAN SK [20 h] | 8,875 | P3DWARSB30 | DUKHENG3PDWARSM5660 | DUKHENGP03DWARSM5660 | DH | ENG | P3 | DRWG | ARDW | SUB | RES-3 |
| DUKHENGP03DWARSM5670 |  | Gypsum False Ceiling Drawings-Sub | 15d | 2013-03-10 A | 2013-03-26 A | DUKHPROGEN00PQAP2050, DUKHPROGEN00PQAP1050 | 100% |  |  | DRAFTMAN SK [20 h] | 95,678 | P3DWARSB35 | DUKHENG3PDWARSM5670 | DUKHENGP03DWARSM5670 | DH | ENG | P3 | DRWG | ARDW | SUB | RES-3 |
| DUKHENGP03DWARSM5680 |  | Aluminum False Ceiling Drawings-Sub | 15d | 2013-03-10 A | 2013-03-26 A | DUKHPROGEN00PQAP1050, DUKHPROGEN00PQAP2050 | 100% |  |  | DRAFTMAN SK [20 h] | 14,310 | P3DWARSB40 | DUKHENG3PDWARSM5680 | DUKHENGP03DWARSM5680 | DH | ENG | P3 | DRWG | ARDW | SUB | RES-3 |
| DUKHENGP03DWARSM5690 |  | Doors & window Drawings-Sub | 15d | 2013-03-20 A | 2013-04-06 A | DUKHENGP03DWARSM5610, DUKHPROGEN00PQAP2080, DUKHPROGEN00PQAP1080 | 100% |  |  | DRAFTMAN SK [20 h] | 465,908 | P3DWARSB45 | DUKHENG3PDWARSM5690 | DUKHENGP03DWARSM5690 | DH | ENG | P3 | DRWG | ARDW | SUB | RES-3 |
| DUKHENGP03DWARSM5700 |  | Carpentry & Joinery Drawings-Sub | 15d | 2013-04-06 A | 2013-04-22 A | DUKHENGP03DWARSM5610, DUKHPROGEN00PQAP1150, DUKHPROGEN00PQAP2150 | 100% |  |  | DRAFTMAN SK [30 h] | 214,470 | P3DWARSB50 | DUKHENG3PDWARSM5700 | DUKHENGP03DWARSM5700 | DH | ENG | P3 | DRWG | ARDW | SUB | RES-3 |

Notes:
- DUKHENGP03DWSTSM5560: Expenses: P03-Concrete Works 136130; P03-Excavation and Earth Works 40680
- DUKHENGP03DWSTSM5570: Expenses: P03-Concrete Works 211845; P03-Excavation and Earth Works 14070
- DUKHENGP03DWSTSM5580: Expenses: P03-Concrete Works 47555
- DUKHENGP03DWSTSM5590: Expenses: P03-Concrete Works 161285
- DUKHENGP03DWSTSM5600: Expenses: P03-Concrete Works 161285
- DUKHENGP03DWARSM5610: Expenses: P03-Block work 111335; P03-Finishes 25135
- DUKHENGP03DWARSM5620: Expenses: P03-Concrete Works 148465
- DUKHENGP03DWARSM5630: Expenses: P03-Block work 8910; P03-Finishes 7800
- DUKHENGP03DWARSM5640: Expenses: P03-Finishes 80812
- DUKHENGP03DWARSM5650: Expenses: P03-Finishes 130710
- DUKHENGP03DWARSM5660: Expenses: P03-Finishes 8875
- DUKHENGP03DWARSM5670: Expenses: P03-Finishes 95678
- DUKHENGP03DWARSM5680: Expenses: P03-Finishes 14310
- DUKHENGP03DWARSM5690: Expenses: P03-Carpentry and Joinery 336803; P03-Metal work 129105
- DUKHENGP03DWARSM5700: Expenses: P03-Carpentry and Joinery 214470

| ID | WBS | Activity | Duration | Start | Finish | Predecessors | Complete | Remaining | Planned start | Planned finish | Total float | Free float | Expected finish | Resources | Cost | P3 ACTID | P6 ID (old) | NP61D | PROJECT | PHASES | PACKAGE | PART | ELEMENTS | STEP | RES PACK |
| --- | --- | --- | --- | --- | --- | --- | --- | --- | --- | --- | --- | --- | --- | --- | --- | --- | --- | --- | --- | --- | --- | --- | --- | --- | --- |
|  | G20 | **APPROVAL OF DRAWINGS** |  | 2013-02-19 | 2013-05-27 |  |  |  |  |  |  |  |  |  |  |  |  |  |  |  |  |  |  |  |  |
| DUKHENGP03DWARAP5610 |  | Ground Floor Plan-App | 30d | 2013-02-19 A | 2013-03-25 A | DUKHENGP03DWARSM5610 | 100% |  |  |  |  |  |  |  |  | P3DWARAP05 | DUKHENG3PDWARAP5610 | DUKHENGP03DWARAP5610 | DH | ENG | P3 | DRWG | ARDW | APP | RES-3 |
| DUKHENGP03DWARAP5620 |  | First Floor Plan-App | 30d | 2013-03-02 A | 2013-04-04 A | DUKHENGP03DWARSM5620 | 100% |  |  |  |  |  |  |  |  | P3DWARAP10 | DUKHENG3PDWARAP5620 | DUKHENGP03DWARAP5620 | DH | ENG | P3 | DRWG | ARDW | APP | RES-3 |
| DUKHENGP03DWARAP5630 |  | Roof Floor Plan-App | 30d | 2013-03-11 A | 2013-04-14 A | DUKHENGP03DWARSM5630 | 100% |  |  |  |  |  |  |  |  | P3DWARAP15 | DUKHENG3PDWARAP5630 | DUKHENGP03DWARAP5630 | DH | ENG | P3 | DRWG | ARDW | APP | RES-3 |
| DUKHENGP03DWARAP5640 |  | Ceramic Flooring & Wall Drawings-App | 30d | 2013-03-19 A | 2013-04-22 A | DUKHENGP03DWARSM5640 | 100% |  |  |  |  |  |  |  |  | P3DWARAP20 | DUKHENG3PDWARAP5640 | DUKHENGP03DWARAP5640 | DH | ENG | P3 | DRWG | ARDW | APP | RES-3 |
| DUKHENGP03DWARAP5650 |  | Porcelain Floor Drawings-App | 30d | 2013-03-19 A | 2013-04-22 A | DUKHENGP03DWARSM5650 | 100% |  |  |  |  |  |  |  |  | P3DWARAP25 | DUKHENG3PDWARAP5650 | DUKHENGP03DWARAP5650 | DH | ENG | P3 | DRWG | ARDW | APP | RES-3 |
| DUKHENGP03DWARAP5660 |  | Cobble & Slate Flooring Drawings-App | 30d | 2013-03-19 A | 2013-04-22 A | DUKHENGP03DWARSM5660 | 100% |  |  |  |  |  |  |  |  | P3DWARAP30 | DUKHENG3PDWARAP5660 | DUKHENGP03DWARAP5660 | DH | ENG | P3 | DRWG | ARDW | APP | RES-3 |
| DUKHENGP03DWARAP5670 |  | Gypsum False Ceiling Drawings-App | 30d | 2013-03-27 A | 2013-04-30 | DUKHENGP03DWARSM5670 | 87% | 4d |  |  | 71d | 0d | 2013-04-30 |  |  | P3DWARAP35 | DUKHENG3PDWARAP5670 | DUKHENGP03DWARAP5670 | DH | ENG | P3 | DRWG | ARDW | APP | RES-3 |
| DUKHENGP03DWARAP5680 |  | Aluminum False Ceiling Drawings-App | 30d | 2013-03-27 A | 2013-04-30 | DUKHENGP03DWARSM5680 | 87% | 4d |  |  | 86d | 0d | 2013-04-30 |  |  | P3DWARAP40 | DUKHENG3PDWARAP5680 | DUKHENGP03DWARAP5680 | DH | ENG | P3 | DRWG | ARDW | APP | RES-3 |
| DUKHENGP03DWARAP5690 |  | Doors & Window Drawings-App | 30d | 2013-04-15 A | 2013-05-19 | DUKHENGP03DWARSM5690, DUKHENGP03DWARAP5630, DUKHENGP03DWARAP5620 | 33% | 20d |  |  | 54d | 0d | 2013-05-19 |  |  | P3DWARAP45 | DUKHENG3PDWARAP5690 | DUKHENGP03DWARAP5690 | DH | ENG | P3 | DRWG | ARDW | APP | RES-3 |
| DUKHENGP03DWARAP5700 |  | Carpentry & Joinery Drawings-App | 30d | 2013-04-23 A | 2013-05-27 | DUKHENGP03DWARSM5700 | 10% | 27d |  |  | 84d | 0d | 2013-05-27 |  |  | P3DWARAP50 | DUKHENG3PDWARAP5700 | DUKHENGP03DWARAP5700 | DH | ENG | P3 | DRWG | ARDW | APP | RES-3 |
|  | H20 | **ELECTRICAL DRAWINGS** |  | 2013-02-17 | 2013-05-30 |  |  |  |  |  |  |  |  |  |  |  |  |  |  |  |  |  |  |  |  |
|  | G10 | **SUBMISSION OF DRAWINGS** |  | 2013-02-17 | 2013-04-26 |  |  |  |  |  |  |  |  |  |  |  |  |  |  |  |  |  |  |  |  |
| DUKHENGP03DWELSM5710 |  | Single Line Diagram-Sub | 15d | 2013-02-17 A | 2013-03-05 A | DUKHPROGEN00PQAP2040, DUKHPROGEN00PQAP1040 | 100% |  |  |  |  |  |  | DRAFTMAN SK [20 h] | 107,839 | P3DWELSB05 | DUKHENG3PDWELSM5710 | DUKHENGP03DWELSM5710 | DH | ENG | P3 | DRWG | ELDW | SUB | RES-3 |
| DUKHENGP03DWELSM5720 |  | Lighting Layout Drawings-Sub | 15d | 2013-02-23 A | 2013-03-11 A | DUKHENGP03DWELSM5710 SS+5d | 100% |  |  |  |  |  |  | DRAFTMAN SK [20 h] | 197,985 | P3DWELSB10 | DUKHENG3PDWELSM5720 | DUKHENGP03DWELSM5720 | DH | ENG | P3 | DRWG | ELDW | SUB | RES-3 |
| DUKHENGP03DWELSM5730 |  | Power Layout Drawings-Sub | 15d | 2013-02-23 A | 2013-03-11 A | DUKHENGP03DWELSM5710 SS+5d, DUKHENGP03DWELSM5720 SS | 100% |  |  |  |  |  |  | DRAFTMAN SK [20 h] | 115,565 | P3DWELSB15 | DUKHENG3PDWELSM5730 | DUKHENGP03DWELSM5730 | DH | ENG | P3 | DRWG | ELDW | SUB | RES-3 |
| DUKHENGP03DWELSM5740 |  | Central Alarm Monitoring System Drawings-Sub | 15d | 2013-03-12 A | 2013-03-28 A | DUKHENGP03DWELSM5730 | 100% |  |  |  |  |  |  | DRAFTMAN SK [20 h] | 47,450 | P3DWELSB20 | DUKHENG3PDWELSM5740 | DUKHENGP03DWELSM5740 | DH | ENG | P3 | DRWG | ELDW | SUB | RES-3 |
| DUKHENGP03DWELSM5750 |  | Audio Video Intercom System Drawings-Sub | 15d | 2013-03-30 A | 2013-04-15 A | DUKHENGP03DWELSM5740 | 100% |  |  |  |  |  |  | DRAFTMAN SK [30 h] | 19,570 | P3DWELSB25 | DUKHENG3PDWELSM5750 | DUKHENGP03DWELSM5750 | DH | ENG | P3 | DRWG | ELDW | SUB | RES-3 |
| DUKHENGP03DWELSM5760 |  | Telephone & TV System Drawings-Sub | 15d | 2013-04-16 A | 2013-04-26 A | DUKHENGP03DWELSM5750 | 100% |  | 2013-04-16 | 2013-05-02 |  |  |  | DRAFTMAN SK [30 h] | 42,615 | P3DWELSB30 | DUKHENG3PDWELSM5760 | DUKHENGP03DWELSM5760 | DH | ENG | P3 | DRWG | ELDW | SUB | RES-3 |
|  | G20 | **APPROVAL OF DRAWINGS** |  | 2013-03-06 | 2013-05-30 |  |  |  |  |  |  |  |  |  |  |  |  |  |  |  |  |  |  |  |  |
| DUKHENGP03DWELAP5710 |  | Single Line Diagram-App | 30d | 2013-03-06 A | 2013-04-09 A | DUKHENGP03DWELSM5710 | 100% |  |  |  |  |  |  |  |  | P3DWELAP05 | DUKHENG3PDWELAP5710 | DUKHENGP03DWELAP5710 | DH | ENG | P3 | DRWG | ELDW | APP | RES-3 |
| DUKHENGP03DWELAP5720 |  | Lighting Layout Drawings-App | 30d | 2013-03-12 A | 2013-04-30 | DUKHENGP03DWELSM5720 | 87% | 4d | 2013-03-12 | 2013-04-15 | 50d | 0d | 2013-04-30 |  |  | P3DWELAP10 | DUKHENG3PDWELAP5720 | DUKHENGP03DWELAP5720 | DH | ENG | P3 | DRWG | ELDW | APP | RES-3 |
| DUKHENGP03DWELAP5730 |  | Power Layout Drawings-App | 30d | 2013-03-12 A | 2013-04-30 | DUKHENGP03DWELSM5730 | 87% | 4d | 2013-03-12 | 2013-04-15 | 101d | 0d | 2013-04-30 |  |  | P3DWELAP15 | DUKHENG3PDWELAP5730 | DUKHENGP03DWELAP5730 | DH | ENG | P3 | DRWG | ELDW | APP | RES-3 |
| DUKHENGP03DWELAP5740 |  | Central Alarm Monitoring System Drawings-App | 30d | 2013-03-30 A | 2013-05-02 | DUKHENGP03DWELSM5740 | 80% | 6d |  |  | 103d | 0d | 2013-05-02 |  |  | P3DWELAP20 | DUKHENG3PDWELAP5740 | DUKHENGP03DWELAP5740 | DH | ENG | P3 | DRWG | ELDW | APP | RES-3 |
| DUKHENGP03DWELAP5750 |  | Audio Video Intercom System Drawings-App | 30d | 2013-04-16 A | 2013-05-20 | DUKHENGP03DWELSM5750 | 30% | 21d |  |  | 94d | 0d | 2013-05-20 |  |  | P3DWELAP25 | DUKHENG3PDWELAP5750 | DUKHENGP03DWELAP5750 | DH | ENG | P3 | DRWG | ELDW | APP | RES-3 |
| DUKHENGP03DWELAP5760 |  | Telephone & TV System Drawings-App | 30d | 2013-04-27 | 2013-05-30 | DUKHENGP03DWELSM5760 |  |  |  |  | 85d | 64d |  |  |  | P3DWELAP30 | DUKHENG3PDWELAP5760 | DUKHENGP03DWELAP5760 | DH | ENG | P3 | DRWG | ELDW | APP | RES-3 |

Notes:
- DUKHENGP03DWELSM5710: Expenses: P03-Electrical Installations 107839
- DUKHENGP03DWELSM5720: Expenses: P03-Electrical Installations 197985
- DUKHENGP03DWELSM5730: Expenses: P03-Electrical Installations 115565
- DUKHENGP03DWELSM5740: Expenses: P03-Electrical Installations 47450
- DUKHENGP03DWELSM5750: Expenses: P03-Electrical Installations 19275; P03-External works within the Plot Curtilage 295
- DUKHENGP03DWELSM5760: Expenses: P03-Electrical Installations 42615

| ID | WBS | Activity | Duration | Start | Finish | Predecessors | Complete | Remaining | Planned start | Planned finish | Total float | Free float | Expected finish | Resources | Cost | P3 ACTID | P6 ID (old) | NP61D | PROJECT | PHASES | PACKAGE | PART | ELEMENTS | STEP | RES PACK |
| --- | --- | --- | --- | --- | --- | --- | --- | --- | --- | --- | --- | --- | --- | --- | --- | --- | --- | --- | --- | --- | --- | --- | --- | --- | --- |
|  | H30 | **PLUMBING,DRAINAGE,FIREFIGHTING & AC DRAWINGS** |  | 2013-02-17 | 2013-05-14 |  |  |  |  |  |  |  |  |  |  |  |  |  |  |  |  |  |  |  |  |
|  | G10 | **SUBMISSION OF DRAWINGS** |  | 2013-02-17 | 2013-04-09 |  |  |  |  |  |  |  |  |  |  |  |  |  |  |  |  |  |  |  |  |
| DUKHENGP03DWMESM5770 |  | Plumbing Layout & Details Drawings-Sub | 15d | 2013-02-17 A | 2013-03-05 A | DUKHPROGEN00PQAP1040, DUKHPROGEN00PQAP2040 | 100% |  |  |  |  |  |  | DRAFTMAN SK [20 h] | 142,905 | P3DWPLSB05 | DUKHENG3PDWMESM5770 | DUKHENGP03DWMESM5770 | DH | ENG | P3 | DRWG | PLDW | SUB | RES-3 |
| DUKHENGP03DWMESM5780 |  | Drainage Layout & Details Drawings-Sub | 15d | 2013-02-17 A | 2013-03-05 A | DUKHPROGEN00PQAP1040, DUKHPROGEN00PQAP2040 | 100% |  |  |  |  |  |  | DRAFTMAN SK [20 h] | 51,196 | P3DWPLSB10 | DUKHENG3PDWMESM5780 | DUKHENGP03DWMESM5780 | DH | ENG | P3 | DRWG | PLDW | SUB | RES-3 |
| DUKHENGP03DWMESM5790 |  | Fire Fighting Layout & Details Drawings-Sub | 15d | 2013-03-06 A | 2013-03-23 A | DUKHPROGEN00PQAP2040, DUKHPROGEN00PQAP1040, DUKHENGP03DWMESM5780 | 100% |  |  |  |  |  |  | DRAFTMAN SK [20 h] | 47,450 | P3DWPLSB15 | DUKHENG3PDWMESM5790 | DUKHENGP03DWMESM5790 | DH | ENG | P3 | DRWG | PLDW | SUB | RES-3 |
| DUKHENGP03DWMESM5800 |  | AC Layout & Details Drawings-Sub | 15d | 2013-03-24 A | 2013-04-09 A | DUKHENGP03DWMESM5790, DUKHPROGEN00PQAP1040, DUKHPROGEN00PQAP2040 | 100% |  |  |  |  |  |  | DRAFTMAN SK [30 h] | 102,489 | P3DWPLSB20 | DUKHENG3PDWMESM5800 | DUKHENGP03DWMESM5800 | DH | ENG | P3 | DRWG | PLDW | SUB | RES-3 |
|  | G20 | **APPROVAL OF DRAWINGS** |  | 2013-03-06 | 2013-05-14 |  |  |  |  |  |  |  |  |  |  |  |  |  |  |  |  |  |  |  |  |
| DUKHENGP03DWMEAP5780 |  | Drainage Layout & Details Drawings-App | 30d | 2013-03-06 A | 2013-04-09 A | DUKHENGP03DWMESM5770, DUKHENGP03DWMESM5780 | 100% |  |  |  |  |  |  |  |  | P3DWPLAP10 | DUKHENG3PDWMEAP5780 | DUKHENGP03DWMEAP5780 | DH | ENG | P3 | DRWG | PLDW | APP | RES-3 |
| DUKHENGP03DWMEAP5770 |  | Plumbing Layout & Details Drawings-App | 10d | 2013-03-30 A | 2013-04-09 A | DUKHENGP03DWMESM5770 | 100% |  |  |  |  |  |  |  |  | P3DWPLAP05 | DUKHENG3PDWMEAP5770 | DUKHENGP03DWMEAP5770 | DH | ENG | P3 | DRWG | PLDW | APP | RES-3 |
| DUKHENGP03DWMEAP5790 |  | Fire Fighting Layout & Details Drawings-App | 25d | 2013-03-30 A | 2013-04-27 A | DUKHENGP03DWMESM5790 | 100% |  |  |  |  |  |  |  |  | P3DWPLAP15 | DUKHENG3PDWMEAP5790 | DUKHENGP03DWMEAP5790 | DH | ENG | P3 | DRWG | PLDW | APP | RES-3 |
| DUKHENGP03DWMEAP5800 |  | AC Layout & Details Drawings-App | 30d | 2013-04-10 A | 2013-05-14 | DUKHENGP03DWMESM5800 | 47% | 16d |  |  | 68d | 0d | 2013-05-14 |  |  | P3DWPLAP20 | DUKHENG3PDWMEAP5800 | DUKHENGP03DWMEAP5800 | DH | ENG | P3 | DRWG | PLDW | APP | RES-3 |
|  | H40 | **INFRA DRAWINGS** |  | 2013-04-10 | 2013-09-07 |  |  |  |  |  |  |  |  |  |  |  |  |  |  |  |  |  |  |  |  |
|  | G10 | **SUBMISSION OF DRAWINGS** |  | 2013-04-10 | 2013-07-13 |  |  |  |  |  |  |  |  |  |  |  |  |  |  |  |  |  |  |  |  |
| DUKHENGI03DWDRSM5810 |  | Drainage Line Layout & Details-Sub | 15d | 2013-04-10 A | 2013-04-28 A | DUKHPROGEN00PQAP1040, DUKHENGP03DWMESM5800, DUKHPROGEN00PQAP2040 | 100% |  | 2013-04-10 | 2013-04-27 |  |  |  | DRAFTMAN SK [30 h] | 40,572 | P3DWINSB15 | DUKHENG3PDWINSM5810 | DUKHENGI03DWDRSM5810 | DH | ENG | P3 | DRWG | IFDW | SUB | RES-3 |
| DUKHENGI03DWFFSM5820 |  | Fire Fighting Line Layout & Details-Sub | 15d | 2013-04-10 A | 2013-04-27 A | DUKHENGI03DWWSSM5830 SS | 100% |  |  |  |  |  |  | DRAFTMAN SK [30 h] | 23,525 | P3DWINSB20 | DUKHENG3PDWINSM5820 | DUKHENGI03DWFFSM5820 | DH | ENG | P3 | DRWG | IFDW | SUB | RES-3 |
| DUKHENGI03DWWSSM5830 |  | Water Supply Line Layout & Details-Sub | 15d | 2013-04-10 A | 2013-04-27 A | DUKHENGI03DWDRSM5810 SS | 100% |  |  |  |  |  |  | DRAFTMAN SK [30 h] | 36,575 | P3DWINSB25 | DUKHENG3PDWINSM5830 | DUKHENGI03DWWSSM5830 | DH | ENG | P3 | DRWG | IFDW | SUB | RES-3 |
| DUKHENGI03DWELSM5840 |  | Electrical Line Layout & Details-Sub | 15d | 2013-04-27 | 2013-05-13 | DUKHPROGEN00PQAP1040, DUKHENGI03DWFFSM5820, DUKHPROGEN00PQAP2040 |  |  |  |  | 54d | 0d |  | DRAFTMAN SK [30 h] | 185,662 | P3DWINSB05 | DUKHENG3PDWINSM5840 | DUKHENGI03DWELSM5840 | DH | ENG | P3 | DRWG | IFDW | SUB | RES-3 |
| DUKHENGI03DWSTSM5850 |  | Street Lighting Layout & details -Sub | 15d | 2013-04-27 | 2013-05-13 | DUKHENGI03DWELSM5840 SS |  |  |  |  | 54d | 0d |  | DRAFTMAN SK [30 h] | 41,992 | P3DWINSB10 | DUKHENG3PDWINSM5850 | DUKHENGI03DWSTSM5850 | DH | ENG | P3 | DRWG | IFDW | SUB | RES-3 |
| DUKHENGI03DWTCSM5860 |  | Telecommunication Line Layout & Details-Sub | 15d | 2013-04-27 | 2013-05-13 | DUKHENGI03DWSTSM5850 SS |  |  |  |  | 54d | 0d |  | DRAFTMAN SK [30 h] | 27,817 | P3DWINSB35 | DUKHENG3PDWINSM5860 | DUKHENGI03DWTCSM5860 | DH | ENG | P3 | DRWG | IFDW | SUB | RES-3 |
| DUKHENGI03DWBWSM5890 |  | Boundary Wall Layout & Details-Sub | 15d | 2013-05-14 | 2013-05-30 | DUKHENGI03DWSLSM5880 SS |  |  |  |  | 54d | 0d |  | DRAFTMAN SK [30 h] | 75,443 | P3DWINSB50 | DUKHENG3PDWINSM5890 | DUKHENGI03DWBWSM5890 | DH | ENG | P3 | DRWG | IFDW | SUB | RES-3 |
| DUKHENGI03DWIRSM5870 |  | Irrigation Layout & Details-Sub | 15d | 2013-05-14 | 2013-05-30 | DUKHENGI03DWWSSM5830, DUKHENGI03DWTCSM5860 |  |  |  |  | 54d | 0d |  | DRAFTMAN SK [30 h] | 45,127 | P3DWINSB30 | DUKHENG3PDWINSM5870 | DUKHENGI03DWIRSM5870 | DH | ENG | P3 | DRWG | IFDW | SUB | RES-3 |
| DUKHENGI03DWSLSM5880 |  | Soft & HardLandscaping Layout & Detail-Sub | 15d | 2013-05-14 | 2013-05-30 | DUKHENGI03DWIRSM5870 SS |  |  |  |  | 54d | 0d |  | DRAFTMAN SK [30 h] | 506,979 | P3DWINSB45 | DUKHENG3PDWINSM5880 | DUKHENGI03DWSLSM5880 | DH | ENG | P3 | DRWG | IFDW | SUB | RES-3 |
| DUKHENGI03DWIWSM5920 |  | Irrigation Water Tank & Pump Room Details- Sub | 15d | 2013-05-22 | 2013-06-08 | DUKHENGI03DWRWSM5910 SS |  |  |  |  | 54d | 0d |  | DRAFTMAN SK [30 h] | 11,131 | P3DWINSB60 | DUKHENG3PDWINSM5920 | DUKHENGI03DWIWSM5920 | DH | ENG | P3 | DRWG | IFDW | SUB | RES-3 |
| DUKHENGI03DWPSSM5900 |  | Parking Shed Layout & Details Drawings-Sub | 15d | 2013-05-22 | 2013-06-08 | DUKHENGI03DWBWSM5890 SS+7d |  |  |  |  | 54d | 0d |  | DRAFTMAN SK [30 h] | 147,789 | P3DWINSB40 | DUKHENG3PDWINSM5900 | DUKHENGI03DWPSSM5900 | DH | ENG | P3 | DRWG | IFDW | SUB | RES-3 |
| DUKHENGI03DWRWSM5910 |  | Road Layout & Details-Sub | 15d | 2013-05-22 | 2013-06-08 | DUKHENGI03DWPSSM5900 SS |  |  |  |  | 54d | 0d |  | DRAFTMAN SK [30 h] | 215,404 | P3DWINSB55 | DUKHENG3PDWINSM5910 | DUKHENGI03DWRWSM5910 | DH | ENG | P3 | DRWG | IFDW | SUB | RES-3 |
| DUKHENGI03DWTRSM5930 |  | Telephone Room Details-Sub | 15d | 2013-06-09 | 2013-06-25 | DUKHENGI03DWIWSM5920 |  |  |  |  | 65d | 0d |  | DRAFTMAN SK [30 h] | 6,093 | P3DWINSB65 | DUKHENG3PDWINSM5930 | DUKHENGI03DWTRSM5930 | DH | ENG | P3 | DRWG | IFDW | SUB | RES-3 |
| DUKHENGI03DWGHSM5950 |  | Guard House Plan & Details-Sub | 15d | 2013-06-26 | 2013-07-13 | DUKHENGI03DWTRSM5930 |  |  |  |  | 190d | 15d |  | DRAFTMAN SK [30 h] | 5,214 | P3DWINSB75 | DUKHENG3PDWINSM5950 | DUKHENGI03DWGHSM5950 | DH | ENG | P3 | DRWG | IFDW | SUB | RES-3 |
| DUKHENGI03DWGZSM5940 |  | Gazebo Plan & Details-Sub | 15d | 2013-06-26 | 2013-07-13 | DUKHENGI03DWTRSM5930 |  |  |  |  | 80d | 15d |  | DRAFTMAN SK [30 h] | 18,052 | P3DWINSB70 | DUKHENG3PDWINSM5940 | DUKHENGI03DWGZSM5940 | DH | ENG | P3 | DRWG | IFDW | SUB | RES-3 |

Notes:
- DUKHENGP03DWMESM5770: Expenses: P03-Plumbing and Drainage works 142905
- DUKHENGP03DWMESM5780: Expenses: P03-Plumbing and Drainage works 51196
- DUKHENGP03DWMESM5790: Expenses: P03-Electrical Installations 47450
- DUKHENGP03DWMESM5800: Expenses: P03-Air-conditioning and Ventilation works 102489
- DUKHENGI03DWDRSM5810: Expenses: I03-Surface Water drainage and Sewerage system 40572
- DUKHENGI03DWFFSM5820: Expenses: I03-Water supply system 23525
- DUKHENGI03DWWSSM5830: Expenses: I03-Water supply system 36575
- DUKHENGI03DWELSM5840: Expenses: I03-Electrical power supply and distribution 185662
- DUKHENGI03DWSTSM5850: Expenses: I03-Street lighting 41992
- DUKHENGI03DWTCSM5860: Expenses: I03-Telecommunication 27817
- DUKHENGI03DWBWSM5890: Expenses: I03-Hard and soft landscaping 75443
- DUKHENGI03DWIRSM5870: Expenses: I03-Water supply system 45127
- DUKHENGI03DWSLSM5880: Expenses: I03-Hard and soft landscaping 506979
- DUKHENGI03DWIWSM5920: Expenses: I03-Water supply system 11131
- DUKHENGI03DWPSSM5900: Expenses: I03-Road work 147789
- DUKHENGI03DWRWSM5910: Expenses: I03-Road work 215404
- DUKHENGI03DWTRSM5930: Expenses: I03-Telecommunication 6093
- DUKHENGI03DWGHSM5950: Expenses: I03-Hard and soft landscaping 5214
- DUKHENGI03DWGZSM5940: Expenses: I03-Hard and soft landscaping 18052

| ID | WBS | Activity | Duration | Start | Finish | Predecessors | Complete | Planned start | Planned finish | Total float | Free float | Resources | Cost | P3 ACTID | P6 ID (old) | NP61D | PROJECT | PHASES | PACKAGE | PART | ELEMENTS | STEP | RES PACK |
| --- | --- | --- | --- | --- | --- | --- | --- | --- | --- | --- | --- | --- | --- | --- | --- | --- | --- | --- | --- | --- | --- | --- | --- |
|  | G20 | **APPROVAL OF DRAWINGS** |  | 2013-04-27 | 2013-09-07 |  |  |  |  |  |  |  |  |  |  |  |  |  |  |  |  |  |  |
| DUKHENGI03DWDRAP5810 |  | Drainage Line Layout & Details-App | 30d | 2013-04-27 | 2013-05-30 | DUKHENGI03DWDRSM5810 |  |  |  | 68d | 64d |  |  | P3DWINAP15 | DUKHENG3PDWINAP5810 | DUKHENGI03DWDRAP5810 | DH | ENG | P3 | DRWG | IFDW | APP | RES-3 |
| DUKHENGI03DWFFAP5820 |  | Fire Fighting Line Layout & Details-App | 30d | 2013-04-27 | 2013-05-30 | DUKHENGI03DWFFSM5820 |  |  |  | 50d | 40d |  |  | P3DWINAP20 | DUKHENG3PDWINAP5820 | DUKHENGI03DWFFAP5820 | DH | ENG | P3 | DRWG | IFDW | APP | RES-3 |
| DUKHENGI03DWWSAP5830 |  | Water Supply Line Layout & Details-App | 30d | 2013-04-27 | 2013-05-30 | DUKHENGI03DWWSSM5830 |  |  |  | 91d | 64d |  |  | P3DWINAP25 | DUKHENG3PDWINAP5830 | DUKHENGI03DWWSAP5830 | DH | ENG | P3 | DRWG | IFDW | APP | RES-3 |
| DUKHENGI03DWELAP5840 |  | Electrical Line Layout & Details-App | 30d | 2013-05-14 | 2013-06-17 | DUKHENGI03DWELSM5840 |  |  |  | 65d | 0d |  |  | P3DWINAP05 | DUKHENG3PDWINAP5840 | DUKHENGI03DWELAP5840 | DH | ENG | P3 | DRWG | IFDW | APP | RES-3 |
| DUKHENGI03DWBWAP5890 |  | Boundary Wall Layout & Details-App | 30d | 2013-06-01 | 2013-07-04 | DUKHENGI03DWBWSM5890 |  |  |  | 90d | 50d |  |  | P3DWINAP50 | DUKHENG3PDWINAP5890 | DUKHENGI03DWBWAP5890 | DH | ENG | P3 | DRWG | IFDW | APP | RES-3 |
| DUKHENGI03DWIRAP5870 |  | Irrigation Layout & Details-App | 30d | 2013-06-01 | 2013-07-04 | DUKHENGI03DWIRSM5870 |  |  |  | 96d | 20d |  |  | P3DWINAP30 | DUKHENG3PDWINAP5870 | DUKHENGI03DWIRAP5870 | DH | ENG | P3 | DRWG | IFDW | APP | RES-3 |
| DUKHENGI03DWSLAP5880 |  | Soft & HardLandscaping Layout & Detail-App | 30d | 2013-06-01 | 2013-07-04 | DUKHENGI03DWSLSM5880 |  |  |  | 72d | 46d |  |  | P3DWINAP45 | DUKHENG3PDWINAP5880 | DUKHENGI03DWSLAP5880 | DH | ENG | P3 | DRWG | IFDW | APP | RES-3 |
| DUKHENGI03DWIWAP5920 |  | Irrigation Water Tank & Pump Room Details-App | 30d | 2013-06-09 | 2013-07-13 | DUKHENGI03DWIWSM5920 |  |  |  | 54d | 13d |  |  | P3DWINAP60 | DUKHENG3PDWINAP5920 | DUKHENGI03DWIWAP5920 | DH | ENG | P3 | DRWG | IFDW | APP | RES-3 |
| DUKHENGI03DWPSAP5900 |  | Parking Shed Layout & Details Drawings-App | 30d | 2013-06-09 | 2013-07-13 | DUKHENGI03DWPSSM5900 |  |  |  | 155d | 28d |  |  | P3DWINAP40 | DUKHENG3PDWINAP5900 | DUKHENGI03DWPSAP5900 | DH | ENG | P3 | DRWG | IFDW | APP | RES-3 |
| DUKHENGI03DWRWAP5910 |  | Road Layout & Details-App | 30d | 2013-06-09 | 2013-07-13 | DUKHENGI03DWRWSM5910 |  |  |  | 154d | 24d |  |  | P3DWINAP55 | DUKHENG3PDWINAP5910 | DUKHENGI03DWRWAP5910 | DH | ENG | P3 | DRWG | IFDW | APP | RES-3 |
| DUKHENGI03DWSTAP5850 |  | Street Lighting Layout & details -App | 30d | 2013-06-18 | 2013-07-22 | DUKHENGI03DWSTSM5850, DUKHENGI03DWELAP5840 |  |  |  | 65d | 0d |  |  | P3DWINAP10 | DUKHENG3PDWINAP5850 | DUKHENGI03DWSTAP5850 | DH | ENG | P3 | DRWG | IFDW | APP | RES-3 |
| DUKHENGI03DWTRAP5930 |  | Telephone Room Details-App | 30d | 2013-06-26 | 2013-07-30 | DUKHENGI03DWTRSM5930 |  |  |  | 65d | 0d |  |  | P3DWINAP65 | DUKHENG3PDWINAP5930 | DUKHENGI03DWTRAP5930 | DH | ENG | P3 | DRWG | IFDW | APP | RES-3 |
| DUKHENGI03DWTCAP5860 |  | Telecommunication Line Layout & Details-App | 30d | 2013-07-23 | 2013-08-29 | DUKHENGI03DWSTAP5850, DUKHENGI03DWTCSM5860 |  |  |  | 65d | 0d |  |  | P3DWINAP35 | DUKHENG3PDWINAP5860 | DUKHENGI03DWTCAP5860 | DH | ENG | P3 | DRWG | IFDW | APP | RES-3 |
| DUKHENGI03DWGHAP5950 |  | Guard House Plan & Details-App | 30d | 2013-07-31 | 2013-09-07 | DUKHENGI03DWTRAP5930, DUKHENGI03DWGHSM5950 |  |  |  | 175d | 177d |  |  | P3DWINAP75 | DUKHENG3PDWINAP5950 | DUKHENGI03DWGHAP5950 | DH | ENG | P3 | DRWG | IFDW | APP | RES-3 |
| DUKHENGI03DWGZAP5940 |  | Gazebo Plan & Details-App | 30d | 2013-07-31 | 2013-09-07 | DUKHENGI03DWGZSM5940, DUKHENGI03DWTRAP5930 |  |  |  | 65d | 0d |  |  | P3DWINAP70 | DUKHENG3PDWINAP5940 | DUKHENGI03DWGZAP5940 | DH | ENG | P3 | DRWG | IFDW | APP | RES-3 |
|  | K25 | **PROCUREMENT** |  | 2012-11-01 | 2014-02-14 |  |  |  |  |  |  |  |  |  |  |  |  |  |  |  |  |  |  |
|  | L15 | **PREQUALIFICATION, SUBMITTAL AND APPROVAL** |  | 2012-11-01 | 2013-05-02 |  |  |  |  |  |  |  |  |  |  |  |  |  |  |  |  |  |  |
|  | 10 | **1ST SUBMISSION OF PREQUALIFICATION** |  | 2012-11-01 | 2013-02-14 |  |  |  |  |  |  |  |  |  |  |  |  |  |  |  |  |  |  |
| DUKHPROGEN00PQSM1000 |  | Anti Termite Treatment_Prequa. 1st Sub. | 7d | 2012-11-01 A | 2012-11-08 A | DUKHKYDGEN0000001000 | 100% |  |  |  |  | MATERIAL ENGG [14 h] | 15,650 | PRQSUM1000 | DUKHPROGN00PQSM1000 | DUKHPROGEN00PQSM1000 | DH | PRO | OA | PRQ | SPRQ | TS |  |
| DUKHPROGEN00PQSM1010 |  | Concrete_Prequa. 1st Sub. | 8d | 2012-11-01 A | 2012-11-10 A | DUKHPROGEN00PQSM1000 SS | 100% |  |  |  |  | MATERIAL ENGG [16 h] | 123,004 | PRQSUM1010 | DUKHPROGN00PQSM1010 | DUKHPROGEN00PQSM1010 | DH | PRO | OA | PRQ | SPRQ | TS |  |
| DUKHPROGEN00PQSM1020 |  | Waterproofing -Wet Area _Prequa. 1st Sub. | 14d | 2012-11-11 A | 2012-12-10 A | DUKHPROGEN00PQSM1010 | 100% | 2012-11-11 | 2012-11-26 |  |  | MATERIAL ENGG [28 h] | 109,230 | PRQSUM1030 | DUKHPROGN00PQSM1020 | DUKHPROGEN00PQSM1020 | DH | PRO | OA | PRQ | SPRQ | TS |  |
| DUKHPROGEN00PQSM1030 |  | Waterproofing -Roof_Prequa. 1st Sub. | 14d | 2012-11-11 A | 2012-11-26 A | DUKHPROGEN00PQSM1020 SS | 100% |  |  |  |  | MATERIAL ENGG [28 h] | 76,450 | PRQSUM1040 | DUKHPROGN00PQSM1030 | DUKHPROGEN00PQSM1030 | DH | PRO | OA | PRQ | SPRQ | TS |  |
| DUKHPROGEN00PQSM1040 |  | MEPD_Prequa. 1st Sub. | 14d | 2012-11-11 A | 2012-11-26 A | DUKHPROGEN00PQSM1010 | 100% |  |  |  |  | MATERIAL ENGG [28 h] | 975,074 | PRQSUM1190 | DUKHPROGN00PQSM1040 | DUKHPROGEN00PQSM1040 | DH | PRO | OA | PRQ | SPRQ | MP |  |
| DUKHPROGEN00PQSM1050 |  | Ceiling Works_Prequa. 1st Sub. | 16d | 2012-11-27 A | 2012-12-13 A | DUKHPROGEN00PQSM1030 SS+14d | 100% | 2012-11-27 | 2012-12-15 |  |  | MATERIAL ENGG [32 h] | 114,275 | PRQSUM1090 | DUKHPROGN00PQSM1050 | DUKHPROGEN00PQSM1050 | DH | PRO | OA | PRQ | SPRQ | FI |  |
| DUKHPROGEN00PQSM1060 |  | GRC Panels_Prequa. 1st Sub. | 15d | 2012-11-27 A | 2012-12-12 A | DUKHPROGEN00PQSM1040 | 100% | 2012-11-27 | 2012-12-13 |  |  | MATERIAL ENGG [30 h] | 3,581 | PRQSUM1100 | DUKHPROGN00PQSM1060 | DUKHPROGEN00PQSM1060 | DH | PRO | OA | PRQ | SPRQ | XW |  |
| DUKHPROGEN00PQSM1100 |  | Roller Shutter_Prequa. 1st Sub. | 15d | 2012-12-05 A | 2012-12-23 A | DUKHPROGEN00PQSM1060 SS+7d | 100% |  |  |  |  | MATERIAL ENGG [30 h] | 37,494 | PRQSUM1110 | DUKHPROGN00PQSM1100 | DUKHPROGEN00PQSM1100 | DH | PRO | OA | PRQ | SPRQ | XW |  |
| DUKHPROGEN00PQSM1070 |  | Wooden Doors_Prequa. 1st Sub. | 15d | 2012-12-09 A | 2012-12-26 A | DUKHPROGEN00PQSM1080 SS | 100% |  |  |  |  | MATERIAL ENGG [30 h] | 196,481 | PRQSUM1050 | DUKHPROGN00PQSM1070 | DUKHPROGEN00PQSM1070 | DH | PRO | OA | PRQ | SPRQ | FI |  |
| DUKHPROGEN00PQSM1080 |  | Aluminum Doors & Windows_Prequa. 1st Sub. | 15d | 2012-12-09 A | 2012-12-26 A | DUKHPROGEN00PQSM1050 SS+10d | 100% |  |  |  |  | MATERIAL ENGG [30 h] | 129,619 | PRQSUM1070 | DUKHPROGN00PQSM1080 | DUKHPROGEN00PQSM1080 | DH | PRO | OA | PRQ | SPRQ | FI |  |
| DUKHPROGEN00PQSM1090 |  | Granite_Prequa. 1st Sub. | 15d | 2012-12-09 A | 2012-12-26 A | DUKHPROGEN00PQSM1080 SS | 100% |  |  |  |  | MATERIAL ENGG [30 h] | 151,971 | PRQSUM1080 | DUKHPROGN00PQSM1090 | DUKHPROGEN00PQSM1090 | DH | PRO | OA | PRQ | SPRQ | FI |  |
| DUKHPROGEN00PQSM1110 |  | Structural Steel works_Prequa. 1st Sub. | 11d | 2012-12-29 A | 2013-01-09 A | DUKHPROGEN00PQSM1100 | 100% |  |  |  |  | MATERIAL ENGG [30 h] | 3,421 | PRQSUM1130 | DUKHPROGN00PQSM1110 | DUKHPROGEN00PQSM1110 | DH | PRO | OA | PRQ | SPRQ | XW |  |
| DUKHPROGEN00PQSM1120 |  | Car Parking Shed_Prequa. 1st Sub. | 11d | 2012-12-29 A | 2013-01-09 A | DUKHPROGEN00PQSM1110 SS | 100% |  |  |  |  | MATERIAL ENGG [30 h] | 105,433 | PRQSUM1140 | DUKHPROGN00PQSM1120 | DUKHPROGEN00PQSM1120 | DH | PRO | OA | PRQ | SPRQ | XW |  |
| DUKHPROGEN00PQSM1130 |  | Steel Door_Prequa. 1st Sub. | 11d | 2012-12-29 A | 2013-01-09 A | DUKHPROGEN00PQSM1110 SS, DUKHPROGEN00PQSM1100 SS | 100% |  |  |  |  | MATERIAL ENGG [30 h] | 4,125 | PRQSUM1170 | DUKHPROGN00PQSM1130 | DUKHPROGEN00PQSM1130 | DH | PRO | OA | PRQ | SPRQ | XW |  |
| DUKHPROGEN00PQSM1140 |  | PVC Tent_Prequa. 1st Sub. | 11d | 2012-12-29 A | 2013-01-09 A | DUKHPROGEN00PQSM1110 SS | 100% |  |  |  |  | MATERIAL ENGG [30 h] | 23,014 | PRQSUM1180 | DUKHPROGN00PQSM1140 | DUKHPROGEN00PQSM1140 | DH | PRO | OA | PRQ | SPRQ | XW |  |
| DUKHPROGEN00PQSM1150 |  | Carpentry & Joinery Works_Prequa. 1st Sub. | 14d | 2012-12-29 A | 2013-01-13 A | DUKHPROGEN00PQSM1080 | 100% |  |  |  |  | MATERIAL ENGG [30 h] | 298,898 | PRQSUM1060 | DUKHPROGN00PQSM1150 | DUKHPROGEN00PQSM1150 | DH | PRO | OA | PRQ | SPRQ | FI |  |
| DUKHPROGEN00PQSM1160 |  | Soft landscaping /Irrigation _Prequa. 1st Sub. | 15d | 2013-01-10 A | 2013-01-27 A | DUKHPROGEN00PQSM1120 | 100% |  |  |  |  | MATERIAL ENGG [30 h] | 19,637 | PRQSUM1150 | DUKHPROGN00PQSM1160 | DUKHPROGEN00PQSM1160 | DH | PRO | OA | PRQ | SPRQ | XW |  |
| DUKHPROGEN00PQSM1170 |  | Pre-cast Boundary Wall _Prequa. 1st Sub. | 15d | 2013-01-10 A | 2013-01-27 A | DUKHPROGEN00PQSM1160 SS | 100% |  |  |  |  | MATERIAL ENGG [30 h] | 364,067 | PRQSUM1160 | DUKHPROGN00PQSM1170 | DUKHPROGEN00PQSM1170 | DH | PRO | OA | PRQ | SPRQ | XW |  |
| DUKHPROGEN00PQSM1180 |  | Road Works _Prequa. 1st Sub. | 11d | 2013-02-02 A | 2013-02-14 A | DUKHPROGEN00PQSM1160 | 100% |  |  |  |  | MATERIAL ENGG [30 h] | 98,085 | PRQSUM1120 | DUKHPROGN00PQSM1180 | DUKHPROGEN00PQSM1180 | DH | PRO | OA | PRQ | SPRQ | XW |  |

Notes:
- DUKHPROGEN00PQSM1000: Expenses: P03-Excavation and Earth Works 1440; P1A-Excavation and Earth Works 6660; P1B-Excavation and Earth Works 5500; P2A-Excavation and Earth Works 820; P2B-Excavation and Earth Works 1230
- DUKHPROGEN00PQSM1010: Expenses: P03-Concrete Works 17905; P1A-Concrete Works 59764; P1B-Concrete Works 41360; P2A-Concrete Works 1590; P2B-Concrete Works 2385
- DUKHPROGEN00PQSM1020: Expenses: P03-Concrete Works 14945; P1A-Concrete Works 49376; P1B-Concrete Works 38170; P2A-Concrete Works 3118; P2B-Concrete Works 3621
- DUKHPROGEN00PQSM1030: Expenses: P03-Roofing 21965; P1A-Roofing 29065; P1B-Roofing 16380; P2A-Roofing 3616; P2B-Roofing 5424
- DUKHPROGEN00PQSM1040: Expenses: I03-Electrical power supply and distribution 178780; I1A-Electrical power supply and distribution 246240; I1B-Electrical power supply and distribution 333212; I2A-Electrical power supply and distribution 149708; I2B-Electrical power supply and distribution 67134
- DUKHPROGEN00PQSM1050: Expenses: P03-Finishes 27499; P1A-Finishes 49832; P1B-Finishes 30688; P2A-Finishes 2503; P2B-Finishes 3753
- DUKHPROGEN00PQSM1060: Expenses: P03-Finishes 3581
- DUKHPROGEN00PQSM1100: Expenses: P1A-External works within the Plot Curtilage 19666; P1B-External works within the Plot Curtilage 13318; P2A-External works within the Plot Curtilage 1804; P2B-External works within the Plot Curtilage 2706
- DUKHPROGEN00PQSM1070: Expenses: P03-Carpentry and Joinery 84200; P1A-Carpentry and Joinery 58737; P1B-Carpentry and Joinery 30044; P2A-Carpentry and Joinery 9367; P2B-Carpentry and Joinery 14133
- DUKHPROGEN00PQSM1080: Expenses: P03-Metal work 26096; P1A-Metal work 67978; P1B-Metal work 29836; P2A-Metal work 2283; P2B-Metal work 3426
- DUKHPROGEN00PQSM1090: Expenses: P03-Finishes 17465; P1A-Finishes 75861; P1B-Finishes 54830; P2A-Finishes 1526; P2B-Finishes 2289
- DUKHPROGEN00PQSM1110: Expenses: P03-External works within the Plot Curtilage 308; P1A-External works within the Plot Curtilage 1499; P1B-External works within the Plot Curtilage 1054; P2A-External works within the Plot Curtilage 224; P2B-External works within the Plot Curtilage 336
- DUKHPROGEN00PQSM1120: Expenses: I03-Road work 27709; I1A-Road work 34470; I1B-Road work 22128; I2A-Road work 6220; I2B-Road work 14906
- DUKHPROGEN00PQSM1130: Expenses: P2A-Metal work 1650; P2B-Metal work 2475
- DUKHPROGEN00PQSM1140: Expenses: P1A-External works within the Plot Curtilage 13516; P1B-External works within the Plot Curtilage 9498
- DUKHPROGEN00PQSM1150: Expenses: P03-Carpentry and Joinery 53619; P1A-Carpentry and Joinery 133357; P1B-Carpentry and Joinery 93472; P2A-Carpentry and Joinery 7380; P2B-Carpentry and Joinery 11070
- DUKHPROGEN00PQSM1160: Expenses: I03-Water supply system 5554; I1A-Water supply system 4345; I1B-Water supply system 4048; I2A-Water supply system 2586; I2B-Water supply system 3104
- DUKHPROGEN00PQSM1170: Expenses: I03-Hard and soft landscaping 41912; I1A-Hard and soft landscaping 154955; I1B-Hard and soft landscaping 87896; I2A-Hard and soft landscaping 31350; I2B-Hard and soft landscaping 47954
- DUKHPROGEN00PQSM1180: Expenses: I03-Road work 23720; I1A-Road work 30735; I1B-Road work 23908; I2A-Road work 7866; I2B-Road work 11856

| ID | WBS | Activity | Duration | Start | Finish | Predecessors | Complete | Planned start | Planned finish | Resources | Cost | P3 ACTID | P6 ID (old) | NP61D | PROJECT | PHASES | PACKAGE | PART | ELEMENTS | STEP |
| --- | --- | --- | --- | --- | --- | --- | --- | --- | --- | --- | --- | --- | --- | --- | --- | --- | --- | --- | --- | --- |
|  | 15 | **1ST APPROVAL OF PREQUALIFICATION** |  | 2012-11-10 | 2013-03-21 |  |  |  |  |  |  |  |  |  |  |  |  |  |  |  |
| DUKHPROGEN00PQAP1000 |  | Anti Termite Treatment_Prequa. 1st App. | 15d | 2012-11-10 A | 2012-11-26 A | DUKHPROGEN00PQSM1000 | 100% |  |  |  |  | PRQAPP1000 | DUKHPROGN00PQAP1000 | DUKHPROGEN00PQAP1000 | DH | PRO | OA | PRQ | APRQ | TS |
| DUKHPROGEN00PQAP1010 |  | Concrete_Prequa. 1st App. | 15d | 2012-11-11 A | 2012-11-27 A | DUKHPROGEN00PQSM1010 | 100% |  |  |  |  | PRQAPP1010 | DUKHPROGN00PQAP1010 | DUKHPROGEN00PQAP1010 | DH | PRO | OA | PRQ | APRQ | TS |
| DUKHPROGEN00PQAP1030 |  | Waterproofing -Roof_Prequa. 1st App. | 15d | 2012-11-27 A | 2012-12-12 A | DUKHPROGEN00PQSM1030 | 100% | 2012-11-27 | 2012-12-13 |  |  | PRQAPP1040 | DUKHPROGN00PQAP1030 | DUKHPROGEN00PQAP1030 | DH | PRO | OA | PRQ | APRQ | TS |
| DUKHPROGEN00PQAP1040 |  | MEPD_Prequa. 1st App. | 30d | 2012-11-27 A | 2012-12-31 A | DUKHPROGEN00PQSM1040 | 100% | 2012-11-27 | 2013-01-01 |  |  | PRQAPP1190 | DUKHPROGN00PQAP1040 | DUKHPROGEN00PQAP1040 | DH | PRO | OA | PRQ | APRQ | MP |
| DUKHPROGEN00PQAP1020 |  | Waterproofing -Wet Area _Prequa. 1st App. | 15d | 2012-12-11 A | 2012-12-29 A | DUKHPROGEN00PQSM1020 | 100% |  |  |  |  | PRQAPP1030 | DUKHPROGN00PQAP1020 | DUKHPROGEN00PQAP1020 | DH | PRO | OA | PRQ | APRQ | TS |
| DUKHPROGEN00PQAP1050 |  | Ceiling Works_Prequa. 1st App. | 19d | 2012-12-29 A | 2013-01-19 A | DUKHPROGEN00PQSM1050 | 100% |  |  |  |  | PRQAPP1090 | DUKHPROGN00PQAP1050 | DUKHPROGEN00PQAP1050 | DH | PRO | OA | PRQ | APRQ | FI |
| DUKHPROGEN00PQAP1060 |  | GRC Panels_Prequa. 1st App. | 18d | 2012-12-29 A | 2013-01-17 A | DUKHPROGEN00PQSM1060 | 100% |  |  |  |  | PRQAPP1100 | DUKHPROGN00PQAP1060 | DUKHPROGEN00PQAP1060 | DH | PRO | OA | PRQ | APRQ | XW |
| DUKHPROGEN00PQAP1070 |  | Wooden Doors_Prequa. 1st App. | 29d | 2012-12-29 A | 2013-01-30 A | DUKHPROGEN00PQSM1070, DUKHPROGEN00PQSM1050 | 100% |  |  |  |  | PRQAPP1050 | DUKHPROGN00PQAP1070 | DUKHPROGEN00PQAP1070 | DH | PRO | OA | PRQ | APRQ | FI |
| DUKHPROGEN00PQAP1080 |  | Aluminum Doors & Windows_Prequa. 1st App. | 29d | 2012-12-29 A | 2013-01-30 A | DUKHPROGEN00PQSM1050, DUKHPROGEN00PQSM1080 | 100% |  |  |  |  | PRQAPP1070 | DUKHPROGN00PQAP1080 | DUKHPROGEN00PQAP1080 | DH | PRO | OA | PRQ | APRQ | FI |
| DUKHPROGEN00PQAP1090 |  | Granite_Prequa. 1st App. | 29d | 2012-12-29 A | 2013-01-30 A | DUKHPROGEN00PQSM1090 | 100% |  |  |  |  | PRQAPP1080 | DUKHPROGN00PQAP1090 | DUKHPROGEN00PQAP1090 | DH | PRO | OA | PRQ | APRQ | FI |
| DUKHPROGEN00PQAP1100 |  | Roller Shutter_Prequa. 1st App. | 26d | 2012-12-29 A | 2013-01-27 A | DUKHPROGEN00PQSM1100 | 100% |  |  |  |  | PRQAPP1110 | DUKHPROGN00PQAP1100 | DUKHPROGEN00PQAP1100 | DH | PRO | OA | PRQ | APRQ | XW |
| DUKHPROGEN00PQAP1110 |  | Structural Steel works_Prequa. 1st App. | 30d | 2013-01-10 A | 2013-02-14 A | DUKHPROGEN00PQSM1110 | 100% |  |  |  |  | PRQAPP1130 | DUKHPROGN00PQAP1110 | DUKHPROGEN00PQAP1110 | DH | PRO | OA | PRQ | APRQ | XW |
| DUKHPROGEN00PQAP1120 |  | Car Parking Shed_Prequa. 1st App. | 30d | 2013-01-10 A | 2013-02-14 A | DUKHPROGEN00PQSM1120 | 100% |  |  |  |  | PRQAPP1140 | DUKHPROGN00PQAP1120 | DUKHPROGEN00PQAP1120 | DH | PRO | OA | PRQ | APRQ | XW |
| DUKHPROGEN00PQAP1130 |  | Steel Door_Prequa. 1st App. | 30d | 2013-01-10 A | 2013-02-14 A | DUKHPROGEN00PQSM1130 | 100% |  |  |  |  | PRQAPP1170 | DUKHPROGN00PQAP1130 | DUKHPROGEN00PQAP1130 | DH | PRO | OA | PRQ | APRQ | XW |
| DUKHPROGEN00PQAP1140 |  | PVC Tent_Prequa. 1st App. | 30d | 2013-01-10 A | 2013-02-14 A | DUKHPROGEN00PQSM1140 | 100% |  |  |  |  | PRQAPP1180 | DUKHPROGN00PQAP1140 | DUKHPROGEN00PQAP1140 | DH | PRO | OA | PRQ | APRQ | XW |
| DUKHPROGEN00PQAP1150 |  | Carpentry & Joinery Works_Prequa. 1st App. | 30d | 2013-01-14 A | 2013-02-18 A | DUKHPROGEN00PQSM1150 | 100% |  |  |  |  | PRQAPP1060 | DUKHPROGN00PQAP1150 | DUKHPROGEN00PQAP1150 | DH | PRO | OA | PRQ | APRQ | FI |
| DUKHPROGEN00PQAP1160 |  | Soft landscaping /Irrigation _Prequa. 1st App. | 26d | 2013-02-02 A | 2013-03-04 A | DUKHPROGEN00PQSM1160 | 100% |  |  |  |  | PRQAPP1150 | DUKHPROGN00PQAP1160 | DUKHPROGEN00PQAP1160 | DH | PRO | OA | PRQ | APRQ | XW |
| DUKHPROGEN00PQAP1170 |  | Pre-cast Boundary Wall _Prequa. 1st App. | 26d | 2013-02-02 A | 2013-03-04 A | DUKHPROGEN00PQSM1170 | 100% |  |  |  |  | PRQAPP1160 | DUKHPROGN00PQAP1170 | DUKHPROGEN00PQAP1170 | DH | PRO | OA | PRQ | APRQ | XW |
| DUKHPROGEN00PQAP1180 |  | Road Works _Prequa. 1st App. | 30d | 2013-02-16 A | 2013-03-21 A | DUKHPROGEN00PQSM1180 | 100% |  |  |  |  | PRQAPP1120 | DUKHPROGN00PQAP1180 | DUKHPROGEN00PQAP1180 | DH | PRO | OA | PRQ | APRQ | XW |
|  | 20 | **2ND SUBMISSION OF PREQUALIFICATION** |  | 2012-12-29 | 2013-03-30 |  |  |  |  |  |  |  |  |  |  |  |  |  |  |  |
| DUKHPROGEN00PQSM2040 |  | MEPD_Prequa. 2nd Sub. | 12d | 2012-12-29 A | 2013-01-10 A | DUKHPROGEN00PQAP1040 | 100% |  |  | MATERIAL ENGG [18 h] | 975,074 | PRQSUM2190 | DUKHPROGN00PQSM2040 | DUKHPROGEN00PQSM2040 | DH | PRO | OA | PRQ | 2SPQ | MP |
| DUKHPROGEN00PQSM2060 |  | GRC Panels_Prequa. 2nd Sub. | 10d | 2013-01-19 A | 2013-01-29 A | DUKHPROGEN00PQAP1060 | 100% |  |  | MATERIAL ENGG [15 h] | 3,581 | PRQSUM2100 | DUKHPROGN00PQSM2060 | DUKHPROGEN00PQSM2060 | DH | PRO | OA | PRQ | 2SPQ | XW |
| DUKHPROGEN00PQSM2050 |  | Ceiling Works_Prequa. 2nd Sub. | 14d | 2013-01-20 A | 2013-02-01 A | DUKHPROGEN00PQAP1050 | 100% | 2013-01-20 | 2013-02-04 | MATERIAL ENGG [21 h] | 114,275 | PRQSUM2090 | DUKHPROGN00PQSM2050 | DUKHPROGEN00PQSM2050 | DH | PRO | OA | PRQ | 2SPQ | FI |
| DUKHPROGEN00PQSM2100 |  | Roller Shutter_Prequa. 2nd Sub. | 10d | 2013-01-28 A | 2013-02-07 A | DUKHPROGEN00PQAP1100 | 100% |  |  | MATERIAL ENGG [15 h] | 37,494 | PRQSUM2110 | DUKHPROGN00PQSM2100 | DUKHPROGEN00PQSM2100 | DH | PRO | OA | PRQ | 2SPQ | XW |
| DUKHPROGEN00PQSM2070 |  | Wooden Doors_Prequa. 2nd Sub. | 9d | 2013-02-02 A | 2013-02-11 A | DUKHPROGEN00PQAP1070 | 100% |  |  | MATERIAL ENGG [15 h] | 196,481 | PRQSUM2050 | DUKHPROGN00PQSM2070 | DUKHPROGEN00PQSM2070 | DH | PRO | OA | PRQ | 2SPQ | FI |
| DUKHPROGEN00PQSM2080 |  | Aluminum Doors & Windows_Prequa. 2nd Sub. | 9d | 2013-02-02 A | 2013-02-11 A | DUKHPROGEN00PQAP1080 | 100% |  |  | MATERIAL ENGG [15 h] | 129,619 | PRQSUM2070 | DUKHPROGN00PQSM2080 | DUKHPROGEN00PQSM2080 | DH | PRO | OA | PRQ | 2SPQ | FI |
| DUKHPROGEN00PQSM2090 |  | Granite_Prequa. 2nd Sub. | 9d | 2013-02-02 A | 2013-02-11 A | DUKHPROGEN00PQAP1090 | 100% |  |  | MATERIAL ENGG [15 h] | 151,971 | PRQSUM2080 | DUKHPROGN00PQSM2090 | DUKHPROGEN00PQSM2090 | DH | PRO | OA | PRQ | 2SPQ | FI |
| DUKHPROGEN00PQSM2110 |  | Structural Steel works_Prequa. 2nd Sub. | 10d | 2013-02-16 A | 2013-02-26 A | DUKHPROGEN00PQAP1110 | 100% |  |  | MATERIAL ENGG [15 h] | 3,421 | PRQSUM2130 | DUKHPROGN00PQSM2110 | DUKHPROGEN00PQSM2110 | DH | PRO | OA | PRQ | 2SPQ | XW |
| DUKHPROGEN00PQSM2120 |  | Car Parking Shed_Prequa. 2nd Sub. | 10d | 2013-02-16 A | 2013-02-26 A | DUKHPROGEN00PQAP1120 | 100% |  |  | MATERIAL ENGG [15 h] | 105,433 | PRQSUM2140 | DUKHPROGN00PQSM2120 | DUKHPROGEN00PQSM2120 | DH | PRO | OA | PRQ | 2SPQ | XW |
| DUKHPROGEN00PQSM2130 |  | Steel Door_Prequa. 2nd Sub. | 10d | 2013-02-16 A | 2013-02-26 A | DUKHPROGEN00PQAP1130 | 100% |  |  | MATERIAL ENGG [15 h] | 4,125 | PRQSUM2170 | DUKHPROGN00PQSM2130 | DUKHPROGEN00PQSM2130 | DH | PRO | OA | PRQ | 2SPQ | XW |
| DUKHPROGEN00PQSM2140 |  | PVC Tent_Prequa. 2nd Sub. | 10d | 2013-02-16 A | 2013-02-26 A | DUKHPROGEN00PQAP1140 | 100% |  |  | MATERIAL ENGG [15 h] | 23,014 | PRQSUM2180 | DUKHPROGN00PQSM2140 | DUKHPROGEN00PQSM2140 | DH | PRO | OA | PRQ | 2SPQ | XW |
| DUKHPROGEN00PQSM2150 |  | Carpentry & Joinery Works_Prequa. 2nd Sub. | 10d | 2013-02-19 A | 2013-03-01 A | DUKHPROGEN00PQAP1150 | 100% | 2013-02-19 | 2013-03-02 | MATERIAL ENGG [15 h] | 298,898 | PRQSUM2060 | DUKHPROGN00PQSM2150 | DUKHPROGEN00PQSM2150 | DH | PRO | OA | PRQ | 2SPQ | FI |
| DUKHPROGEN00PQSM2160 |  | Soft landscaping /Irrigation _Prequa. 2nd Sub. | 10d | 2013-03-05 A | 2013-03-16 A | DUKHPROGEN00PQAP1160 | 100% |  |  | MATERIAL ENGG [12 h] | 19,637 | PRQSUM2150 | DUKHPROGN00PQSM2160 | DUKHPROGEN00PQSM2160 | DH | PRO | OA | PRQ | 2SPQ | XW |
| DUKHPROGEN00PQSM2170 |  | Pre-cast Boundary Wall _Prequa. 2nd Sub. | 10d | 2013-03-05 A | 2013-03-16 A | DUKHPROGEN00PQAP1170 | 100% |  |  | MATERIAL ENGG [12 h] | 364,067 | PRQSUM2160 | DUKHPROGN00PQSM2170 | DUKHPROGEN00PQSM2170 | DH | PRO | OA | PRQ | 2SPQ | XW |
| DUKHPROGEN00PQSM2180 |  | Road Works _Prequa. 2nd Sub. | 10d | 2013-03-23 A | 2013-03-30 A | DUKHPROGEN00PQAP1180 | 100% | 2013-03-23 | 2013-04-02 | MATERIAL ENGG [15 h] | 98,085 | PRQSUM2120 | DUKHPROGN00PQSM2180 | DUKHPROGEN00PQSM2180 | DH | PRO | OA | PRQ | 2SPQ | XW |

Notes:
- DUKHPROGEN00PQSM2040: Expenses: I03-Electrical power supply and distribution 178780; I1A-Electrical power supply and distribution 246240; I1B-Electrical power supply and distribution 333212; I2A-Electrical power supply and distribution 149708; I2B-Electrical power supply and distribution 67134
- DUKHPROGEN00PQSM2060: Expenses: P03-Finishes 3581
- DUKHPROGEN00PQSM2050: Expenses: P03-Finishes 27499; P1A-Finishes 49832; P1B-Finishes 30688; P2A-Finishes 2503; P2B-Finishes 3753
- DUKHPROGEN00PQSM2100: Expenses: P1A-External works within the Plot Curtilage 19666; P1B-External works within the Plot Curtilage 13318; P2A-External works within the Plot Curtilage 1804; P2B-External works within the Plot Curtilage 2706
- DUKHPROGEN00PQSM2070: Expenses: P03-Carpentry and Joinery 84200; P1A-Carpentry and Joinery 58737; P1B-Carpentry and Joinery 30044; P2A-Carpentry and Joinery 9367; P2B-Carpentry and Joinery 14133
- DUKHPROGEN00PQSM2080: Expenses: P03-Metal work 26096; P1A-Metal work 67978; P1B-Metal work 29836; P2A-Metal work 2283; P2B-Metal work 3426
- DUKHPROGEN00PQSM2090: Expenses: P03-Finishes 17465; P1A-Finishes 75861; P1B-Finishes 54830; P2A-Finishes 1526; P2B-Finishes 2289
- DUKHPROGEN00PQSM2110: Expenses: P03-External works within the Plot Curtilage 308; P1A-External works within the Plot Curtilage 1499; P1B-External works within the Plot Curtilage 1054; P2A-External works within the Plot Curtilage 224; P2B-External works within the Plot Curtilage 336
- DUKHPROGEN00PQSM2120: Expenses: I03-Road work 27709; I1A-Road work 34470; I1B-Road work 22128; I2A-Road work 6220; I2B-Road work 14906
- DUKHPROGEN00PQSM2130: Expenses: P2A-Metal work 1650; P2B-Metal work 2475
- DUKHPROGEN00PQSM2140: Expenses: P1A-External works within the Plot Curtilage 13516; P1B-External works within the Plot Curtilage 9498
- DUKHPROGEN00PQSM2150: Expenses: P03-Carpentry and Joinery 53619; P1A-Carpentry and Joinery 133357; P1B-Carpentry and Joinery 93472; P2A-Carpentry and Joinery 7380; P2B-Carpentry and Joinery 11070
- DUKHPROGEN00PQSM2160: Expenses: I03-Water supply system 5554; I1A-Water supply system 4345; I1B-Water supply system 4048; I2A-Water supply system 2586; I2B-Water supply system 3104
- DUKHPROGEN00PQSM2170: Expenses: I03-Hard and soft landscaping 41912; I1A-Hard and soft landscaping 154955; I1B-Hard and soft landscaping 87896; I2A-Hard and soft landscaping 31350; I2B-Hard and soft landscaping 47954
- DUKHPROGEN00PQSM2180: Expenses: I03-Road work 23720; I1A-Road work 30735; I1B-Road work 23908; I2A-Road work 7866; I2B-Road work 11856

| ID | WBS | Activity | Duration | Start | Finish | Predecessors | Complete | Remaining | Planned start | Planned finish | Total float | Free float | Expected finish | Resources | Cost | P3 ACTID | P6 ID (old) | NP61D | PROJECT | PHASES | PACKAGE | PART | ELEMENTS | STEP | FLOORS |
| --- | --- | --- | --- | --- | --- | --- | --- | --- | --- | --- | --- | --- | --- | --- | --- | --- | --- | --- | --- | --- | --- | --- | --- | --- | --- |
|  | 25 | **2ND APPROVAL OF PREQUALIFICATION** |  | 2013-01-12 | 2013-05-02 |  |  |  |  |  |  |  |  |  |  |  |  |  |  |  |  |  |  |  |  |
| DUKHPROGEN00PQAP2040 |  | MEPD_Prequa. 2nd App. | 30d | 2013-01-12 A | 2013-02-16 A | DUKHPROGEN00PQSM2040 | 100% |  |  |  |  |  |  |  |  | PRQAPP2190 | DUKHPROGN00PQAP2040 | DUKHPROGEN00PQAP2040 | DH | PRO | OA | PRQ | 2APQ | MP |  |
| DUKHPROGEN00PQAP2050 |  | Ceiling Works_Prequa. 2nd App. | 30d | 2013-02-02 A | 2013-03-09 A | DUKHPROGEN00PQSM2050 | 100% |  |  |  |  |  |  |  |  | PRQAPP2090 | DUKHPROGN00PQAP2050 | DUKHPROGEN00PQAP2050 | DH | PRO | OA | PRQ | 2APQ | FI |  |
| DUKHPROGEN00PQAP2060 |  | GRC Panels_Prequa. 2nd App. | 28d | 2013-02-02 A | 2013-03-01 A | DUKHPROGEN00PQSM2060 | 100% |  | 2013-02-02 | 2013-03-06 |  |  |  |  |  | PRQAPP2100 | DUKHPROGN00PQAP2060 | DUKHPROGEN00PQAP2060 | DH | PRO | OA | PRQ | 2APQ | XW |  |
| DUKHPROGEN00PQAP2100 |  | Roller Shutter_Prequa. 2nd App. | 30d | 2013-02-09 A | 2013-03-16 A | DUKHPROGEN00PQSM2100 | 100% |  |  |  |  |  |  |  |  | PRQAPP2110 | DUKHPROGN00PQAP2100 | DUKHPROGEN00PQAP2100 | DH | PRO | OA | PRQ | 2APQ | XW |  |
| DUKHPROGEN00PQAP2070 |  | Wooden Doors_Prequa. 2nd App. | 30d | 2013-02-13 A | 2013-03-19 A | DUKHPROGEN00PQSM2070 | 100% |  |  |  |  |  |  |  |  | PRQAPP2050 | DUKHPROGN00PQAP2070 | DUKHPROGEN00PQAP2070 | DH | PRO | OA | PRQ | 2APQ | FI |  |
| DUKHPROGEN00PQAP2080 |  | Aluminum Doors & Windows_Prequa. 2nd App. | 30d | 2013-02-13 A | 2013-03-19 A | DUKHPROGEN00PQSM2080 | 100% |  |  |  |  |  |  |  |  | PRQAPP2070 | DUKHPROGN00PQAP2080 | DUKHPROGEN00PQAP2080 | DH | PRO | OA | PRQ | 2APQ | FI |  |
| DUKHPROGEN00PQAP2090 |  | Granite_Prequa. 2nd App. | 30d | 2013-02-13 A | 2013-03-19 A | DUKHPROGEN00PQSM2090 | 100% |  |  |  |  |  |  |  |  | PRQAPP2080 | DUKHPROGN00PQAP2090 | DUKHPROGEN00PQAP2090 | DH | PRO | OA | PRQ | 2APQ | FI |  |
| DUKHPROGEN00PQAP2110 |  | Structural Steel works_Prequa. 2nd App. | 30d | 2013-02-27 A | 2013-04-02 A | DUKHPROGEN00PQSM2110 | 100% |  |  |  |  |  |  |  |  | PRQAPP2130 | DUKHPROGN00PQAP2110 | DUKHPROGEN00PQAP2110 | DH | PRO | OA | PRQ | 2APQ | XW |  |
| DUKHPROGEN00PQAP2120 |  | Car Parking Shed_Prequa. 2nd App. | 30d | 2013-02-27 A | 2013-04-02 A | DUKHPROGEN00PQSM2120 | 100% |  |  |  |  |  |  |  |  | PRQAPP2140 | DUKHPROGN00PQAP2120 | DUKHPROGEN00PQAP2120 | DH | PRO | OA | PRQ | 2APQ | XW |  |
| DUKHPROGEN00PQAP2130 |  | Steel Door_Prequa. 2nd App. | 30d | 2013-02-27 A | 2013-04-02 A | DUKHPROGEN00PQSM2130 | 100% |  |  |  |  |  |  |  |  | PRQAPP2170 | DUKHPROGN00PQAP2130 | DUKHPROGEN00PQAP2130 | DH | PRO | OA | PRQ | 2APQ | XW |  |
| DUKHPROGEN00PQAP2140 |  | PVC Tent_Prequa. 2nd App. | 30d | 2013-02-27 A | 2013-04-02 A | DUKHPROGEN00PQSM2140 | 100% |  |  |  |  |  |  |  |  | PRQAPP2180 | DUKHPROGN00PQAP2140 | DUKHPROGEN00PQAP2140 | DH | PRO | OA | PRQ | 2APQ | XW |  |
| DUKHPROGEN00PQAP2150 |  | Carpentry & Joinery Works_Prequa. 2nd App. | 30d | 2013-03-02 A | 2013-04-04 A | DUKHPROGEN00PQSM2150 | 100% |  |  |  |  |  |  |  |  | PRQAPP2060 | DUKHPROGN00PQAP2150 | DUKHPROGEN00PQAP2150 | DH | PRO | OA | PRQ | 2APQ | FI |  |
| DUKHPROGEN00PQAP2160 |  | Soft landscaping /Irrigation _Prequa. 2nd App. | 30d | 2013-03-17 A | 2013-04-20 A | DUKHPROGEN00PQSM2160 | 100% |  |  |  |  |  |  |  |  | PRQAPP2150 | DUKHPROGN00PQAP2160 | DUKHPROGEN00PQAP2160 | DH | PRO | OA | PRQ | 2APQ | XW |  |
| DUKHPROGEN00PQAP2170 |  | Pre-cast Boundary Wall _Prequa. 2nd App. | 30d | 2013-03-17 A | 2013-04-20 A | DUKHPROGEN00PQSM2170 | 100% |  |  |  |  |  |  |  |  | PRQAPP2160 | DUKHPROGN00PQAP2170 | DUKHPROGEN00PQAP2170 | DH | PRO | OA | PRQ | 2APQ | XW |  |
| DUKHPROGEN00PQAP2180 |  | Road Works _Prequa. 2nd App. | 30d | 2013-03-30 A | 2013-05-02 | DUKHPROGEN00PQSM2180 | 80% | 6d |  |  | 26d | 0d | 2013-05-02 |  |  | PRQAPP2120 | DUKHPROGN00PQAP2180 | DUKHPROGEN00PQAP2180 | DH | PRO | OA | PRQ | 2APQ | XW |  |
|  | L20 | **MATERIAL SUBMITTAL AND APPROVAL** |  | 2012-11-27 | 2013-11-16 |  |  |  |  |  |  |  |  |  |  |  |  |  |  |  |  |  |  |  |  |
|  | 10 | **1ST SUBMISSION OF MATERIAL** |  | 2012-11-27 | 2013-08-24 |  |  |  |  |  |  |  |  |  |  |  |  |  |  |  |  |  |  |  |  |
| DUKHPROGEN00MTSM1000 |  | Anti Termite _1st_Sub | 10d | 2012-11-27 A | 2012-12-06 A | DUKHPROGEN00PQAP1000 | 100% |  | 2012-11-27 | 2012-12-08 |  |  |  | MATERIAL ENGG [20 h] | 15,650 | MATSUB1000 | DUKHPROGN00MTSM1000 | DUKHPROGEN00MTSM1000 | DH | PRO | OA | MAT | SMAT | TS |  |
| DUKHPROGEN00MTSM1020 |  | Concrete_1st_Sub | 10d | 2012-11-28 A | 2012-12-08 A | DUKHPROGEN00PQAP1010 | 100% |  | 2012-11-28 | 2012-12-09 |  |  |  | MATERIAL ENGG [20 h] | 123,004 | MATSUB1005 | DUKHPROGN00MTSM1020 | DUKHPROGEN00MTSM1020 | DH | PRO | OA | MAT | SMAT | TS |  |
| DUKHPROGEN00MTSM1010 |  | Block Work_1st_Sub | 10d | 2012-12-08 A | 2012-12-19 A | DUKHPROGEN00MTSM1000 | 100% |  |  |  |  |  |  | MATERIAL ENGG [20 h] | 294,460 | MATSUB1030 | DUKHPROGN00MTSM1010 | DUKHPROGEN00MTSM1010 | DH | PRO | OA | MAT | SMAT | FI | GL |
| DUKHPROGEN00MTSM1040 |  | Plastering & Accessories_1st_Sub | 10d | 2012-12-12 A | 2012-12-24 A | DUKHPROGEN00MTSM1010 SS+4d | 100% |  |  |  |  |  |  | MATERIAL ENGG [20 h] | 175,403 | MATSUB1035 | DUKHPROGN00MTSM1040 | DUKHPROGEN00MTSM1040 | DH | PRO | OA | MAT | SMAT | FI | GL |
| DUKHPROGEN00MTSM1090 |  | Cobble stone finish _1st_Sub | 15d | 2012-12-25 A | 2013-01-10 A | DUKHPROGEN00MTSM1040 | 100% |  |  |  |  |  |  | MATERIAL ENGG [30 h] | 36,788 | MATSUB1100 | DUKHPROGN00MTSM1090 | DUKHPROGEN00MTSM1090 | DH | PRO | OA | MAT | SMAT | FI | FR |
| DUKHPROGEN00MTSM1100 |  | Slate Tile_1st_Sub | 15d | 2012-12-25 A | 2013-01-10 A | DUKHPROGEN00MTSM1090 SS | 100% |  |  |  |  |  |  | MATERIAL ENGG [30 h] | 197,345 | MATSUB1105 | DUKHPROGN00MTSM1100 | DUKHPROGEN00MTSM1100 | DH | PRO | OA | MAT | SMAT | FI | FR |
| DUKHPROGEN00MTSM1110 |  | Stone Cladding_1st_Sub | 15d | 2012-12-25 A | 2013-01-10 A | DUKHPROGEN00MTSM1100 SS | 100% |  |  |  |  |  |  | MATERIAL ENGG [30 h] | 49,925 | MATSUB1110 | DUKHPROGN00MTSM1110 | DUKHPROGEN00MTSM1110 | DH | PRO | OA | MAT | SMAT | FI | FR |
| DUKHPROGEN00MTSM1120 |  | Ceramic Tile_1st_Sub | 15d | 2012-12-25 A | 2013-01-10 A | DUKHPROGEN00MTSM1110 SS | 100% |  |  |  |  |  |  | MATERIAL ENGG [30 h] | 210,182 | MATSUB1225 | DUKHPROGN00MTSM1120 | DUKHPROGEN00MTSM1120 | DH | PRO | OA | MAT | SMAT | FI | FR |
| DUKHPROGEN00MTSM1130 |  | Porcelain Tile_1st_Sub | 15d | 2012-12-25 A | 2013-01-10 A | DUKHPROGEN00MTSM1120 SS | 100% |  |  |  |  |  |  | MATERIAL ENGG [30 h] | 280,386 | MATSUB1230 | DUKHPROGN00MTSM1130 | DUKHPROGEN00MTSM1130 | DH | PRO | OA | MAT | SMAT | FI | FR |
| DUKHPROGEN00MTSM1060 |  | UPVC Pipes_1st_Sub | 15d | 2012-12-29 A | 2013-01-14 A | DUKHPROGEN00PQAP1040 | 100% |  |  |  |  |  |  | LABOR- SUBCONTRACTOR [30 h] | 91,513 | MATSUB1290 | DUKHPROGN00MTSM1060 | DUKHPROGEN00MTSM1060 | DH | PRO | OA | MAT | SMAT | MP | PB |
| DUKHPROGEN00MTSM1070 |  | Floor drains & Cleanouts_1st_Sub | 15d | 2012-12-29 A | 2013-01-14 A | DUKHPROGEN00MTSM1060 SS, DUKHPROGEN00PQAP1040 | 100% |  |  |  |  |  |  | LABOR- SUBCONTRACTOR [30 h] | 76,184 | MATSUB1295 | DUKHPROGN00MTSM1070 | DUKHPROGEN00MTSM1070 | DH | PRO | OA | MAT | SMAT | MP | PB |
| DUKHPROGEN00MTSM1080 |  | Polyethylene Pipes_1st_Sub | 15d | 2012-12-29 A | 2013-01-14 A | DUKHPROGEN00PQAP1040, DUKHPROGEN00MTSM1070 SS | 100% |  |  |  |  |  |  | LABOR- SUBCONTRACTOR [30 h] | 300,090 | MATSUB1310 | DUKHPROGN00MTSM1080 | DUKHPROGEN00MTSM1080 | DH | PRO | OA | MAT | SMAT | MP | PB |
| DUKHPROGEN00MTSM1030 |  | Waterproofing_1st_Sub | 10d | 2012-12-30 A | 2013-01-09 A | DUKHPROGEN00PQAP1030, DUKHPROGEN00PQAP1020 | 100% |  |  |  |  |  |  | MATERIAL ENGG [20 h] | 109,230 | MATSUB1015 | DUKHPROGN00MTSM1030 | DUKHPROGEN00MTSM1030 | DH | PRO | OA | MAT | SMAT | TS |  |
| DUKHPROGEN00MTSM1050 |  | Thermal Insulation_1st_Sub | 15d | 2013-01-10 A | 2013-01-27 A | DUKHPROGEN00MTSM1030 | 100% |  |  |  |  |  |  | LABOR- SUBCONTRACTOR [30 h] | 38,227 | MATSUB1040 | DUKHPROGN00MTSM1050 | DUKHPROGEN00MTSM1050 | DH | PRO | OA | MAT | SMAT | TS |  |
| DUKHPROGEN00MTSM1140 |  | Pitch roofing_1st_Sub | 15d | 2013-01-28 A | 2013-02-14 A | DUKHPROGEN00MTSM1050 | 100% |  |  |  |  |  |  | LABOR- SUBCONTRACTOR [30 h] | 46,170 | MATSUB1045 | DUKHPROGN00MTSM1140 | DUKHPROGEN00MTSM1140 | DH | PRO | OA | MAT | SMAT | TS |  |
| DUKHPROGEN00MTSM1150 |  | Sanitary Fittings_1st_Sub | 15d | 2013-02-17 A | 2013-03-05 A | DUKHPROGEN00PQAP2040 | 100% |  |  |  |  |  |  | MATERIAL ENGG [30 h] | 250,982 | MATSUB1300 | DUKHPROGN00MTSM1150 | DUKHPROGEN00MTSM1150 | DH | PRO | OA | MAT | SMAT | MP | PB |
| DUKHPROGEN00MTSM1160 |  | Copper Pipes_1st_Sub | 15d | 2013-02-17 A | 2013-03-05 A | DUKHPROGEN00MTSM1080 SS, DUKHPROGEN00PQAP2040 | 100% |  |  |  |  |  |  | MATERIAL ENGG [30 h] | 25,339 | MATSUB1325 | DUKHPROGN00MTSM1160 | DUKHPROGEN00MTSM1160 | DH | PRO | OA | MAT | SMAT | MP | AC |
| DUKHPROGEN00MTSM1170 |  | SMDB_1st_Sub | 15d | 2013-02-17 A | 2013-03-05 A | DUKHPROGEN00PQAP2040 | 100% |  |  |  |  |  |  | MATERIAL ENGG [30 h] | 104,891 | MATSUB1350 | DUKHPROGN00MTSM1170 | DUKHPROGEN00MTSM1170 | DH | PRO | OA | MAT | SMAT | MP | EC |
| DUKHPROGEN00MTSM1180 |  | Cables & Wires_1st_Sub | 15d | 2013-02-17 A | 2013-03-05 A | DUKHPROGEN00PQAP2040 | 100% |  |  |  |  |  |  | MATERIAL ENGG [30 h] | 981,425 | MATSUB1355 | DUKHPROGN00MTSM1180 | DUKHPROGEN00MTSM1180 | DH | PRO | OA | MAT | SMAT | MP | EC |
| DUKHPROGEN00MTSM1190 |  | Lights & Fixtures_1st_Sub | 15d | 2013-02-17 A | 2013-03-05 A | DUKHPROGEN00PQAP2040 | 100% |  |  |  |  |  |  | MATERIAL ENGG [30 h] | 569,086 | MATSUB1360 | DUKHPROGN00MTSM1190 | DUKHPROGEN00MTSM1190 | DH | PRO | OA | MAT | SMAT | MP | EC |
| DUKHPROGEN00MTSM1200 |  | Isolators_1st_Sub | 15d | 2013-02-17 A | 2013-03-05 A | DUKHPROGEN00PQAP2040 | 100% |  |  |  |  |  |  | MATERIAL ENGG [30 h] | 80,384 | MATSUB1365 | DUKHPROGN00MTSM1200 | DUKHPROGEN00MTSM1200 | DH | PRO | OA | MAT | SMAT | MP | EC |
| DUKHPROGEN00MTSM1210 |  | Fire Resistant Cables_1st_Sub | 15d | 2013-02-17 A | 2013-03-05 A | DUKHPROGEN00PQAP2040, DUKHPROGEN00MTSM1180 SS | 100% |  |  |  |  |  |  | MATERIAL ENGG [30 h] | 24,155 | MATSUB1385 | DUKHPROGN00MTSM1210 | DUKHPROGEN00MTSM1210 | DH | PRO | OA | MAT | SMAT | MP | CM |
| DUKHPROGEN00MTSM1390 |  | GRC Panels_1st_Sub | 15d | 2013-03-02 A | 2013-03-18 A | DUKHPROGEN00PQAP2060 | 100% |  |  |  |  |  |  | MATERIAL ENGG [30 h] | 3,581 | MATSUB1125 | DUKHPROGN00MTSM1390 | DUKHPROGEN00MTSM1390 | DH | PRO | OA | MAT | SMAT | XW | WI |
| DUKHPROGEN00MTSM1400 |  | Access Ladder_1st_Sub | 15d | 2013-03-02 A | 2013-03-18 A | DUKHPROGEN00MTSM1390 SS | 100% |  |  |  |  |  |  | MATERIAL ENGG [30 h] | 63,054 | MATSUB1210 | DUKHPROGN00MTSM1400 | DUKHPROGEN00MTSM1400 | DH | PRO | OA | MAT | SMAT | XW | WI |
| DUKHPROGEN00MTSM1410 |  | Aluminum Slat Screen_1st_Sub | 15d | 2013-03-02 A | 2013-03-18 A | DUKHPROGEN00MTSM1390 SS | 100% |  |  |  |  |  |  | MATERIAL ENGG [30 h] | 85,106 | MATSUB1235 | DUKHPROGN00MTSM1410 | DUKHPROGEN00MTSM1410 | DH | PRO | OA | MAT | SMAT | XW | WI |
| DUKHPROGEN00MTSM1220 |  | Water Chiller_1st_Sub | 15d | 2013-03-06 A | 2013-03-23 A | DUKHPROGEN00MTSM1150, DUKHPROGEN00PQAP2040 | 100% |  |  |  |  |  |  | MATERIAL ENGG [30 h] | 12,227 | MATSUB1255 | DUKHPROGN00MTSM1220 | DUKHPROGEN00MTSM1220 | DH | PRO | OA | MAT | SMAT | MP | PB |
| DUKHPROGEN00MTSM1230 |  | Water Heater_1st_Sub | 15d | 2013-03-06 A | 2013-03-23 A | DUKHPROGEN00MTSM1150, DUKHPROGEN00PQAP2040 | 100% |  |  |  |  |  |  | MATERIAL ENGG [30 h] | 22,205 | MATSUB1305 | DUKHPROGN00MTSM1230 | DUKHPROGEN00MTSM1230 | DH | PRO | OA | MAT | SMAT | MP | PB |
| DUKHPROGEN00MTSM1240 |  | Split AC_1st_Sub | 15d | 2013-03-06 A | 2013-03-23 A | DUKHPROGEN00PQAP2040, DUKHPROGEN00MTSM1160 | 100% |  |  |  |  |  |  | MATERIAL ENGG [30 h] | 151,314 | MATSUB1330 | DUKHPROGN00MTSM1240 | DUKHPROGEN00MTSM1240 | DH | PRO | OA | MAT | SMAT | MP | AC |
| DUKHPROGEN00MTSM1250 |  | Street Light Post Set_1st_Sub | 15d | 2013-03-06 A | 2013-03-23 A | DUKHPROGEN00PQAP2040, DUKHPROGEN00MTSM1180 | 100% |  |  |  |  |  |  | MATERIAL ENGG [30 h] | 362,650 | MATSUB1370 | DUKHPROGN00MTSM1250 | DUKHPROGEN00MTSM1250 | DH | PRO | OA | MAT | SMAT | MP | IN |
| DUKHPROGEN00MTSM1260 |  | Smoke Detector_1st_Sub | 15d | 2013-03-06 A | 2013-03-23 A | DUKHPROGEN00PQAP2040, DUKHPROGEN00MTSM1210 | 100% |  |  |  |  |  |  | MATERIAL ENGG [30 h] | 60,400 | MATSUB1390 | DUKHPROGN00MTSM1260 | DUKHPROGEN00MTSM1260 | DH | PRO | OA | MAT | SMAT | MP | CM |
| DUKHPROGEN00MTSM1270 |  | Video Com System_1st_Sub | 15d | 2013-03-06 A | 2013-03-23 A | DUKHPROGEN00MTSM1210, DUKHPROGEN00PQAP2040 | 100% |  |  |  |  |  |  | MATERIAL ENGG [30 h] | 53,941 | MATSUB1435 | DUKHPROGN00MTSM1270 | DUKHPROGEN00MTSM1270 | DH | PRO | OA | MAT | SMAT | MP | TP |
| DUKHPROGEN00MTSM1280 |  | Telephone Fittings & Accessories_1st_Sub | 15d | 2013-03-06 A | 2013-03-23 A | DUKHPROGEN00MTSM1270 SS, DUKHPROGEN00PQAP2040 | 100% |  |  |  |  |  |  | MATERIAL ENGG [30 h] | 9,518 | MATSUB1440 | DUKHPROGN00MTSM1280 | DUKHPROGEN00MTSM1280 | DH | PRO | OA | MAT | SMAT | MP | TP |
| DUKHPROGEN00MTSM1290 |  | Television devices,Fittings & Access._1st_Sub | 15d | 2013-03-06 A | 2013-03-23 A | DUKHPROGEN00PQAP2040, DUKHPROGEN00MTSM1280 SS | 100% |  |  |  |  |  |  | MATERIAL ENGG [30 h] | 33,019 | MATSUB1450 | DUKHPROGN00MTSM1290 | DUKHPROGEN00MTSM1290 | DH | PRO | OA | MAT | SMAT | MP | TP |
| DUKHPROGEN00MTSM1300 |  | Gypsum Board false ceiling_1st_Sub | 10d | 2013-03-10 A | 2013-03-20 A | DUKHPROGEN00PQAP2050 | 100% |  |  |  |  |  |  | MATERIAL ENGG [20 h] | 105,945 | MATSUB1115 | DUKHPROGN00MTSM1300 | DUKHPROGEN00MTSM1300 | DH | PRO | OA | MAT | SMAT | FI | FS |
| DUKHPROGEN00MTSM1310 |  | Aluminum Tile false ceiling_1st_Sub | 15d | 2013-03-10 A | 2013-03-26 A | DUKHPROGEN00PQAP2050 | 100% |  |  |  |  |  |  | MATERIAL ENGG [30 h] | 8,330 | MATSUB1120 | DUKHPROGN00MTSM1310 | DUKHPROGEN00MTSM1310 | DH | PRO | OA | MAT | SMAT | FI | FS |
| DUKHPROGEN00MTSM1320 |  | Paints_1st_Sub | 15d | 2013-03-16 A | 2013-04-01 A | DUKHPROGEN00MTSM1300 SS+5d | 100% |  |  |  |  |  |  | MATERIAL ENGG [30 h] | 173,601 | MATSUB1130 | DUKHPROGN00MTSM1320 | DUKHPROGEN00MTSM1320 | DH | PRO | OA | MAT | SMAT | FI | PI |
| DUKHPROGEN00MTSM1430 |  | Roller Shutter_1st_Sub | 10d | 2013-03-17 A | 2013-03-27 A | DUKHPROGEN00PQAP2100 | 100% |  |  |  |  |  |  | MATERIAL ENGG [20 h] | 37,494 | MATSUB1140 | DUKHPROGN00MTSM1430 | DUKHPROGEN00MTSM1430 | DH | PRO | OA | MAT | SMAT | XW | WI |
| DUKHPROGEN00MTSM1590 |  | Manhole Covers and Frames_1st_Sub | 15d | 2013-03-19 A | 2013-04-04 A | DUKHPROGEN00MTSM1400 | 100% |  |  |  |  |  |  | MATERIAL ENGG [30 h] | 46,175 | MATSUB1205 | DUKHPROGN00MTSM1590 | DUKHPROGEN00MTSM1590 | DH | PRO | OA | MAT | SMAT | XW | WI |
| DUKHPROGEN00MTSM1440 |  | PVC Doors_1st_Sub | 10d | 2013-03-20 A | 2013-03-30 A | DUKHPROGEN00PQAP2080 | 100% |  | 2013-03-20 | 2013-03-31 |  |  |  | MATERIAL ENGG [20 h] | 14,011 | MATSUB1055 | DUKHPROGN00MTSM1440 | DUKHPROGEN00MTSM1440 | DH | PRO | OA | MAT | SMAT | FI | DR |
| DUKHPROGEN00MTSM1450 |  | Ironmongeries_1st_Sub | 10d | 2013-03-20 A | 2013-03-30 A | DUKHPROGEN00PQAP2080 | 100% |  | 2013-03-20 | 2013-03-31 |  |  |  | MATERIAL ENGG [20 h] | 39,294 | MATSUB1080 | DUKHPROGN00MTSM1450 | DUKHPROGEN00MTSM1450 | DH | PRO | OA | MAT | SMAT | FI | DR |
| DUKHPROGEN00MTSM1460 |  | Aluminum Doors _1st_Sub | 10d | 2013-03-20 A | 2013-03-30 A | DUKHPROGEN00PQAP2080 | 100% |  | 2013-03-20 | 2013-03-31 |  |  |  | MATERIAL ENGG [20 h] | 48,424 | MATSUB1085 | DUKHPROGN00MTSM1460 | DUKHPROGEN00MTSM1460 | DH | PRO | OA | MAT | SMAT | FI | DR |
| DUKHPROGEN00MTSM1470 |  | Aluminum Windows_1st_Sub | 10d | 2013-03-20 A | 2013-03-30 A | DUKHPROGEN00PQAP2080 | 100% |  | 2013-03-20 | 2013-03-31 |  |  |  | MATERIAL ENGG [20 h] | 81,195 | MATSUB1090 | DUKHPROGN00MTSM1470 | DUKHPROGEN00MTSM1470 | DH | PRO | OA | MAT | SMAT | FI | DR |
| DUKHPROGEN00MTSM1480 |  | Granite_1st_Sub | 10d | 2013-03-20 A | 2013-03-30 A | DUKHPROGEN00MTSM1130, DUKHPROGEN00PQAP2090 | 100% |  | 2013-03-20 | 2013-03-31 |  |  |  | MATERIAL ENGG [20 h] | 151,971 | MATSUB1095 | DUKHPROGN00MTSM1480 | DUKHPROGEN00MTSM1480 | DH | PRO | OA | MAT | SMAT | FI | FR |
| DUKHPROGEN00MTSM1490 |  | Wooden Doors_1st_Sub | 10d | 2013-03-20 A | 2013-03-30 A | DUKHPROGEN00PQAP2070 | 100% |  | 2013-03-20 | 2013-03-31 |  |  |  | MATERIAL ENGG [20 h] | 157,191 | MATSUB1050 | DUKHPROGN00MTSM1490 | DUKHPROGEN00MTSM1490 | DH | PRO | OA | MAT | SMAT | FI | DR |
| DUKHPROGEN00MTSM1330 |  | Booster Pump_1st_Sub | 15d | 2013-03-24 A | 2013-04-09 A | DUKHPROGEN00PQAP2040, DUKHPROGEN00MTSM1150, DUKHPROGEN00MTSM1220 | 100% |  |  |  |  |  |  | MATERIAL ENGG [30 h] | 119,268 | MATSUB1260 | DUKHPROGN00MTSM1330 | DUKHPROGEN00MTSM1330 | DH | PRO | OA | MAT | SMAT | MP | PB |
| DUKHPROGEN00MTSM1340 |  | Exhaust Air louver_1st_Sub | 15d | 2013-03-24 A | 2013-04-09 A | DUKHPROGEN00PQAP2040, DUKHPROGEN00MTSM1240, DUKHPROGEN00MTSM1160 | 100% |  |  |  |  |  |  | MATERIAL ENGG [30 h] | 1,638 | MATSUB1335 | DUKHPROGN00MTSM1340 | DUKHPROGEN00MTSM1340 | DH | PRO | OA | MAT | SMAT | MP | AC |
| DUKHPROGEN00MTSM1350 |  | Bollard Lamp_1st_Sub | 15d | 2013-03-24 A | 2013-04-09 A | DUKHPROGEN00MTSM1250, DUKHPROGEN00PQAP2040 | 100% |  |  |  |  |  |  | MATERIAL ENGG [30 h] | 19,087 | MATSUB1375 | DUKHPROGN00MTSM1350 | DUKHPROGEN00MTSM1350 | DH | PRO | OA | MAT | SMAT | MP | IN |
| DUKHPROGEN00MTSM1360 |  | Digital Alarm Communicator Panel_1st_Sub | 15d | 2013-03-24 A | 2013-04-09 A | DUKHPROGEN00PQAP2040, DUKHPROGEN00MTSM1260 | 100% |  |  |  |  |  |  | MATERIAL ENGG [30 h] | 36,243 | MATSUB1395 | DUKHPROGN00MTSM1360 | DUKHPROGEN00MTSM1360 | DH | PRO | OA | MAT | SMAT | MP | CM |
| DUKHPROGEN00MTSM1370 |  | Fire Blanket_1st_Sub | 15d | 2013-03-24 A | 2013-04-09 A | DUKHPROGEN00MTSM1230, DUKHPROGEN00PQAP2040 | 100% |  |  |  |  |  |  | MATERIAL ENGG [30 h] | 2,569 | MATSUB1405 | DUKHPROGN00MTSM1370 | DUKHPROGEN00MTSM1370 | DH | PRO | OA | MAT | SMAT | MP | FG |
| DUKHPROGEN00MTSM1380 |  | Fire Extinguisher_1st_Sub | 15d | 2013-03-24 A | 2013-04-09 A | DUKHPROGEN00PQAP2040, DUKHPROGEN00MTSM1370 SS | 100% |  |  |  |  |  |  | MATERIAL ENGG [30 h] | 60,400 | MATSUB1410 | DUKHPROGN00MTSM1380 | DUKHPROGEN00MTSM1380 | DH | PRO | OA | MAT | SMAT | MP | FG |
| DUKHPROGEN00MTSM1500 |  | Steel Door_1st_Sub | 10d | 2013-03-28 A | 2013-04-08 A | DUKHPROGEN00MTSM1430 | 100% |  |  |  |  |  |  | MATERIAL ENGG [20 h] | 4,125 | MATSUB1215 | DUKHPROGN00MTSM1500 | DUKHPROGEN00MTSM1500 | DH | PRO | OA | MAT | SMAT | XW | WI |
| DUKHPROGEN00MTSM1510 |  | Stainless Steel Cover_1st_Sub | 10d | 2013-03-28 A | 2013-04-08 A | DUKHPROGEN00MTSM1500 SS | 100% |  |  |  |  |  |  | MATERIAL ENGG [20 h] | 7,802 | MATSUB1240 | DUKHPROGN00MTSM1510 | DUKHPROGEN00MTSM1510 | DH | PRO | OA | MAT | SMAT | XW | WI |

Notes:
- DUKHPROGEN00MTSM1000: Expenses: P03-Excavation and Earth Works 1440; P1A-Excavation and Earth Works 6660; P1B-Excavation and Earth Works 5500; P2A-Excavation and Earth Works 820; P2B-Excavation and Earth Works 1230
- DUKHPROGEN00MTSM1020: Expenses: P03-Concrete Works 17905; P1A-Concrete Works 59764; P1B-Concrete Works 41360; P2A-Concrete Works 1590; P2B-Concrete Works 2385
- DUKHPROGEN00MTSM1010: Expenses: P03-Block work 51285; P03-External works within the Plot Curtilage 7030; P1A-Block work 118347; P1A-External works within the Plot Curtilage 3810; P1B-Block work 83342; P1B-External works within the Plot Curtilage 3886; P2A-Block work 10006; P2A-External works within the Plot Curtilage 698; P2B-Block work 15009; P2B-External works within the Plot Curtilage 1047
- DUKHPROGEN00MTSM1040: Expenses: P03-Finishes 25715; P1A-Finishes 79057; P1B-Finishes 62646; P2A-Finishes 3194; P2B-Finishes 4791
- DUKHPROGEN00MTSM1090: Expenses: P03-Finishes 940; P1A-Finishes 19028; P1B-Finishes 12650; P2A-Finishes 1668; P2B-Finishes 2502
- DUKHPROGEN00MTSM1100: Expenses: P03-Finishes 3500; P1A-Finishes 66510; P1B-Finishes 82446; P2A-Finishes 17955; P2B-Finishes 26934
- DUKHPROGEN00MTSM1110: Expenses: P1A-Finishes 47453; P1B-Finishes 2472
- DUKHPROGEN00MTSM1120: Expenses: P03-Finishes 40410; P1A-Finishes 104472; P1B-Finishes 51350; P2A-Finishes 5856; P2B-Finishes 8094
- DUKHPROGEN00MTSM1130: Expenses: P03-Finishes 65360; P1A-Finishes 115504; P1B-Finishes 77726; P2A-Finishes 8890; P2B-Finishes 12906
- DUKHPROGEN00MTSM1060: Expenses: P03-Plumbing and Drainage works 10300; P1A-Plumbing and Drainage works 46861; P1B-Plumbing and Drainage works 27132; P2A-Plumbing and Drainage works 2888; P2B-Plumbing and Drainage works 4332
- DUKHPROGEN00MTSM1070: Expenses: P03-External works within the Plot Curtilage 7165; P03-Plumbing and Drainage works 13942; P1A-Plumbing and Drainage works 30470; P1B-Plumbing and Drainage works 20116; P2A-Plumbing and Drainage works 1797; P2B-Plumbing and Drainage works 2694
- DUKHPROGEN00MTSM1080: Expenses: P03-Plumbing and Drainage works 68016; P1A-Plumbing and Drainage works 130824; P1B-Plumbing and Drainage works 74220; P2A-Plumbing and Drainage works 10812; P2B-Plumbing and Drainage works 16218
- DUKHPROGEN00MTSM1030: Expenses: P03-Concrete Works 14945; P1A-Concrete Works 49376; P1B-Concrete Works 38170; P2A-Concrete Works 3118; P2B-Concrete Works 3621
- DUKHPROGEN00MTSM1050: Expenses: P03-Roofing 10984; P1A-Roofing 14532; P1B-Roofing 8190; P2A-Roofing 1809; P2B-Roofing 2712
- DUKHPROGEN00MTSM1140: Expenses: P2A-Roofing 18468; P2B-Roofing 27702
- DUKHPROGEN00MTSM1150: Expenses: P03-Plumbing and Drainage works 50700; P1A-Plumbing and Drainage works 110806; P1B-Plumbing and Drainage works 73146; P2A-Plumbing and Drainage works 6532; P2B-Plumbing and Drainage works 9798
- DUKHPROGEN00MTSM1160: Expenses: P03-Air-conditioning and Ventilation works 5353; P1A-Air-conditioning and Ventilation works 11881; P1B-Air-conditioning and Ventilation works 6546; P2A-Air-conditioning and Ventilation works 659; P2B-Air-conditioning and Ventilation works 900
- DUKHPROGEN00MTSM1170: Expenses: P03-Electrical Installations 35565; P1A-Electrical Installations 39612; P1B-Electrical Installations 17870; P2A-Electrical Installations 5898; P2B-Electrical Installations 5946
- DUKHPROGEN00MTSM1180: Expenses: I03-Electrical power supply and distribution 178780; I03-Telecommunication 1212; I1A-Electrical power supply and distribution 246240; I1A-Telecommunication 2605; I1B-Electrical power supply and distribution 333212; I1B-Telecommunication 1428; I2A-Electrical power supply and distribution 149708; I2A-Telecommunication 364; I2B-Electrical power supply and distribution 67134; I2B-Telecommunication 742
- DUKHPROGEN00MTSM1190: Expenses: P03-Electrical Installations 98991; P1A-Electrical Installations 237891; P1B-Electrical Installations 190834; P2A-Electrical Installations 16548; P2B-Electrical Installations 24822
- DUKHPROGEN00MTSM1200: Expenses: P03-Electrical Installations 14785; P1A-Electrical Installations 36131; P1B-Electrical Installations 21478; P2A-Electrical Installations 3196; P2B-Electrical Installations 4794
- DUKHPROGEN00MTSM1210: Expenses: P03-Electrical Installations 4424; P1A-Electrical Installations 9618; P1B-Electrical Installations 8204; P2A-Electrical Installations 724; P2B-Electrical Installations 1185
- DUKHPROGEN00MTSM1390: Expenses: P03-Finishes 3581
- DUKHPROGEN00MTSM1400: Expenses: P03-Metal work 6855; P1A-Metal work 35151; P1B-Metal work 16302; P2A-Metal work 2052; P2B-Metal work 2694
- DUKHPROGEN00MTSM1410: Expenses: P03-Metal work 19090; P1A-Metal work 41856; P1B-Metal work 24160
- DUKHPROGEN00MTSM1220: Expenses: P03-Plumbing and Drainage works 1535; P1A-Plumbing and Drainage works 5568; P1B-Plumbing and Drainage works 3908; P2A-Plumbing and Drainage works 487; P2B-Plumbing and Drainage works 729
- DUKHPROGEN00MTSM1230: Expenses: P03-Plumbing and Drainage works 750; P1A-Plumbing and Drainage works 10529; P1B-Plumbing and Drainage works 8606; P2A-Plumbing and Drainage works 928; P2B-Plumbing and Drainage works 1392
- DUKHPROGEN00MTSM1240: Expenses: P03-Air-conditioning and Ventilation works 29530; P1A-Air-conditioning and Ventilation works 68045; P1B-Air-conditioning and Ventilation works 46998; P2A-Air-conditioning and Ventilation works 2697; P2B-Air-conditioning and Ventilation works 4044
- DUKHPROGEN00MTSM1250: Expenses: I03-Street lighting 73215; I1A-Street lighting 128725; I1B-Street lighting 100196; I2A-Street lighting 26514; I2B-Street lighting 34000
- DUKHPROGEN00MTSM1260: Expenses: P03-Electrical Installations 11070; P1A-Electrical Installations 24052; P1B-Electrical Installations 20508; P2A-Electrical Installations 1809; P2B-Electrical Installations 2961
- DUKHPROGEN00MTSM1270: Expenses: P03-Electrical Installations 8190; P1A-Electrical Installations 22589; P1B-Electrical Installations 16102; P2A-Electrical Installations 2824; P2B-Electrical Installations 4236
- DUKHPROGEN00MTSM1280: Expenses: P03-Electrical Installations 1446; P1A-Electrical Installations 3986; P1B-Electrical Installations 2840; P2A-Electrical Installations 499; P2B-Electrical Installations 747
- DUKHPROGEN00MTSM1290: Expenses: P03-Electrical Installations 5835; P1A-Electrical Installations 14440; P1B-Electrical Installations 8184; P2A-Electrical Installations 1824; P2B-Electrical Installations 2736
- DUKHPROGEN00MTSM1300: Expenses: P03-Finishes 23920; P1A-Finishes 46881; P1B-Finishes 28888; P2A-Finishes 2503; P2B-Finishes 3753
- DUKHPROGEN00MTSM1310: Expenses: P03-Finishes 3579; P1A-Finishes 2951; P1B-Finishes 1800
- DUKHPROGEN00MTSM1320: Expenses: I03-Hard and soft landscaping 93; I03-Telecommunication 169; I1A-Hard and soft landscaping 47; I1A-Telecommunication 169; I1B-Hard and soft landscaping 47; I1B-Telecommunication 169; P03-Painting and Decorating 35611; P1A-Painting and Decorating 70686; P1B-Painting and Decorating 57932; P2A-Painting and Decorating 3464; P2B-Painting and Decorating 5214
- DUKHPROGEN00MTSM1430: Expenses: P1A-External works within the Plot Curtilage 19666; P1B-External works within the Plot Curtilage 13318; P2A-External works within the Plot Curtilage 1804; P2B-External works within the Plot Curtilage 2706
- DUKHPROGEN00MTSM1590: Expenses: I03-Surface Water drainage and Sewerage system 7177; I1A-Surface Water drainage and Sewerage system 6490; I1B-Surface Water drainage and Sewerage system 4256; I2A-Surface Water drainage and Sewerage system 768; I2B-Surface Water drainage and Sewerage system 710; P03-External works within the Plot Curtilage 1135; P1A-External works within the Plot Curtilage 17317; P1B-External works within the Plot Curtilage 6024; P2A-External works within the Plot Curtilage 936; P2B-External works within the Plot Curtilage 1362
- DUKHPROGEN00MTSM1440: Expenses: P1A-Carpentry and Joinery 5541; P1B-Carpentry and Joinery 8470
- DUKHPROGEN00MTSM1450: Expenses: P03-Carpentry and Joinery 16839; P1A-Carpentry and Joinery 11747; P1B-Carpentry and Joinery 6008; P2A-Carpentry and Joinery 1874; P2B-Carpentry and Joinery 2826
- DUKHPROGEN00MTSM1460: Expenses: P03-Metal work 5036; P1A-Metal work 32494; P1B-Metal work 10894
- DUKHPROGEN00MTSM1470: Expenses: P03-Metal work 21060; P1A-Metal work 35484; P1B-Metal work 18942; P2A-Metal work 2283; P2B-Metal work 3426
- DUKHPROGEN00MTSM1480: Expenses: P03-Finishes 17465; P1A-Finishes 75861; P1B-Finishes 54830; P2A-Finishes 1526; P2B-Finishes 2289
- DUKHPROGEN00MTSM1490: Expenses: P03-Carpentry and Joinery 67365; P1A-Carpentry and Joinery 46990; P1B-Carpentry and Joinery 24036; P2A-Carpentry and Joinery 7493; P2B-Carpentry and Joinery 11307
- DUKHPROGEN00MTSM1330: Expenses: P03-Plumbing and Drainage works 39941; P1A-Plumbing and Drainage works 37269; P1B-Plumbing and Drainage works 26248; P2A-Plumbing and Drainage works 6324; P2B-Plumbing and Drainage works 9486
- DUKHPROGEN00MTSM1340: Expenses: P03-Air-conditioning and Ventilation works 480; P1A-Air-conditioning and Ventilation works 592; P1B-Air-conditioning and Ventilation works 426; P2A-Air-conditioning and Ventilation works 56; P2B-Air-conditioning and Ventilation works 84
- DUKHPROGEN00MTSM1350: Expenses: I03-Street lighting 3854; I1A-Street lighting 6775; I1B-Street lighting 5272; I2A-Street lighting 1396; I2B-Street lighting 1790
- DUKHPROGEN00MTSM1360: Expenses: P03-Electrical Installations 6644; P1A-Electrical Installations 14434; P1B-Electrical Installations 12304; P2A-Electrical Installations 1085; P2B-Electrical Installations 1776
- DUKHPROGEN00MTSM1370: Expenses: P03-Electrical Installations 1582; P1A-Electrical Installations 658; P2A-Electrical Installations 329
- DUKHPROGEN00MTSM1380: Expenses: P03-Electrical Installations 11070; P1A-Electrical Installations 24052; P1B-Electrical Installations 20508; P2A-Electrical Installations 1809; P2B-Electrical Installations 2961
- DUKHPROGEN00MTSM1500: Expenses: P2A-Metal work 1650; P2B-Metal work 2475
- DUKHPROGEN00MTSM1510: Expenses: P03-External works within the Plot Curtilage 2772; P2A-External works within the Plot Curtilage 2012; P2B-External works within the Plot Curtilage 3018

| ID | Activity | Duration | Start | Finish | Predecessors | Complete | Remaining | Total float | Free float | Expected finish | Resources | Cost | P3 ACTID | P6 ID (old) | NP61D | PROJECT | PHASES | PACKAGE | PART | ELEMENTS | STEP | FLOORS |
| --- | --- | --- | --- | --- | --- | --- | --- | --- | --- | --- | --- | --- | --- | --- | --- | --- | --- | --- | --- | --- | --- | --- |
| DUKHPROGEN00MTSM1420 | Epoxy_1st_Sub | 15d | 2013-04-02 A | 2013-04-18 A | DUKHPROGEN00MTSM1320 | 100% |  |  |  |  | MATERIAL ENGG [30 h] | 3,403 | MATSUB1135 | DUKHPROGN00MTSM1420 | DUKHPROGEN00MTSM1420 | DH | PRO | OA | MAT | SMAT | FI | PI |
| DUKHPROGEN00MTSM1600 | kerb works_1st_Sub | 15d | 2013-04-03 A | 2013-04-20 A | DUKHPROGEN00PQAP2110 | 100% |  |  |  |  | MATERIAL ENGG [30 h] | 9,813 | MATSUB1160 | DUKHPROGN00MTSM1600 | DUKHPROGEN00MTSM1600 | DH | PRO | OA | MAT | SMAT | XW | IN |
| DUKHPROGEN00MTSM1610 | PVC Tent_1st_Sub | 10d | 2013-04-03 A | 2013-04-14 A | DUKHPROGEN00PQAP2140 | 100% |  |  |  |  | MATERIAL ENGG [20 h] | 23,014 | MATSUB1245 | DUKHPROGN00MTSM1610 | DUKHPROGEN00MTSM1610 | DH | PRO | OA | MAT | SMAT | XW | WI |
| DUKHPROGEN00MTSM1620 | Structural Steel_1st_Sub | 10d | 2013-04-03 A | 2013-04-14 A | DUKHPROGEN00MTSM1610 SS | 100% |  |  |  |  | MATERIAL ENGG [20 h] | 3,421 | MATSUB1250 | DUKHPROGN00MTSM1620 | DUKHPROGEN00MTSM1620 | DH | PRO | OA | MAT | SMAT | XW | WI |
| DUKHPROGEN00MTSM1550 | Closets /wardrobe& Pelmets_1st_Sub | 15d | 2013-04-06 A | 2013-04-22 A | DUKHPROGEN00PQAP2150 | 100% |  |  |  |  | MATERIAL ENGG [30 h] | 95,649 | MATSUB1060 | DUKHPROGN00MTSM1550 | DUKHPROGEN00MTSM1550 | DH | PRO | OA | MAT | SMAT | FI | SP |
| DUKHPROGEN00MTSM1560 | Counters, Cabinets & Shelves_1st_Sub | 15d | 2013-04-06 A | 2013-04-22 A | DUKHPROGEN00PQAP2150 | 100% |  |  |  |  | MATERIAL ENGG [30 h] | 155,423 | MATSUB1065 | DUKHPROGN00MTSM1560 | DUKHPROGEN00MTSM1560 | DH | PRO | OA | MAT | SMAT | FI | SP |
| DUKHPROGEN00MTSM1570 | Wooden Hand Rails _1st_Sub | 15d | 2013-04-06 A | 2013-04-22 A | DUKHPROGEN00PQAP2150 | 100% |  |  |  |  | MATERIAL ENGG [30 h] | 47,818 | MATSUB1070 | DUKHPROGN00MTSM1570 | DUKHPROGEN00MTSM1570 | DH | PRO | OA | MAT | SMAT | FI | SP |
| DUKHPROGEN00MTSM1580 | Stainless Steel Handrail_1st_Sub | 15d | 2013-04-06 A | 2013-04-22 A | DUKHPROGEN00MTSM1570 SS | 100% |  |  |  |  | MATERIAL ENGG [30 h] | 176,631 | MATSUB1220 | DUKHPROGN00MTSM1580 | DUKHPROGEN00MTSM1580 | DH | PRO | OA | MAT | SMAT | FI | SP |
| DUKHPROGEN00MTSM1520 | Lift Pump_1st_Sub | 15d | 2013-04-10 A | 2013-04-27 A | DUKHPROGEN00MTSM1150, DUKHPROGEN00PQAP2040, DUKHPROGEN00MTSM1330 | 100% |  |  |  |  | MATERIAL ENGG [60 h] | 416,071 | MATSUB1265 | DUKHPROGN00MTSM1520 | DUKHPROGEN00MTSM1520 | DH | PRO | OA | MAT | SMAT | MP | PB |
| DUKHPROGEN00MTSM1530 | Exhaust Fan_1st_Sub | 15d | 2013-04-10 A | 2013-04-27 A | DUKHPROGEN00MTSM1340, DUKHPROGEN00PQAP2040, DUKHPROGEN00MTSM1160 | 100% |  |  |  |  | MATERIAL ENGG [30 h] | 16,339 | MATSUB1340 | DUKHPROGN00MTSM1530 | DUKHPROGEN00MTSM1530 | DH | PRO | OA | MAT | SMAT | MP | AC |
| DUKHPROGEN00MTSM1540 | Ductile Iron Pipes_1st_Sub | 15d | 2013-04-10 A | 2013-04-27 A | DUKHPROGEN00MTSM1380, DUKHPROGEN00PQAP2040 | 100% |  |  |  |  | MATERIAL ENGG [60 h] | 15,838 | MATSUB1415 | DUKHPROGN00MTSM1540 | DUKHPROGEN00MTSM1540 | DH | PRO | OA | MAT | SMAT | MP | FG |
| DUKHPROGEN00MTSM1630 | Steel Ladder_1st_Sub | 15d | 2013-04-15 A | 2013-05-01 | DUKHPROGEN00MTSM1610 | 67% | 5d | 36d | 0d | 2013-05-01 | MATERIAL ENGG [60 h] | 1,420 | MATSUB1200 | DUKHPROGN00MTSM1630 | DUKHPROGEN00MTSM1630 | DH | PRO | OA | MAT | SMAT | XW | WI |
| DUKHPROGEN00MTSM1660 | Interlock works_1st_Sub | 15d | 2013-04-21 A | 2013-05-07 | DUKHPROGEN00MTSM1600, DUKHPROGEN00MTSM1600 SS | 33% | 10d | 40d | 0d | 2013-05-07 | MATERIAL ENGG [60 h] | 17,888 | MATSUB1165 | DUKHPROGN00MTSM1660 | DUKHPROGEN00MTSM1660 | DH | PRO | OA | MAT | SMAT | XW | IN |
| DUKHPROGEN00MTSM1670 | Irrigation Pipes_1st_Sub | 15d | 2013-04-21 A | 2013-05-07 | DUKHPROGEN00PQAP2160 | 33% | 10d | 37d | 0d | 2013-05-07 | MATERIAL ENGG [60 h] | 6,266 | MATSUB1460 | DUKHPROGN00MTSM1670 | DUKHPROGEN00MTSM1670 | DH | PRO | OA | MAT | SMAT | MP | IR |
| DUKHPROGEN00MTSM1640 | Water meter_1st_Sub | 15d | 2013-04-27 | 2013-05-13 | DUKHPROGEN00PQAP2040, DUKHPROGEN00MTSM1520, DUKHPROGEN00MTSM1150 |  |  | 14d | 0d |  | MATERIAL ENGG [20 h] | 16,724 | MATSUB1270 | DUKHPROGN00MTSM1640 | DUKHPROGEN00MTSM1640 | DH | PRO | OA | MAT | SMAT | MP | PB |
| DUKHPROGEN00MTSM1650 | Isolating Values_1st_Sub | 15d | 2013-04-27 | 2013-05-13 | DUKHPROGEN00MTSM1540, DUKHPROGEN00PQAP2040 |  |  | 9d | 0d |  | MATERIAL ENGG [20 h] | 4,271 | MATSUB1420 | DUKHPROGN00MTSM1650 | DUKHPROGEN00MTSM1650 | DH | PRO | OA | MAT | SMAT | MP | FG |
| DUKHPROGEN00MTSM1700 | Road Works Materials _1st_Sub | 15d | 2013-05-04 | 2013-05-20 | DUKHPROGEN00PQAP2180 |  |  | 26d | 0d |  | MATERIAL ENGG [20 h] | 98,085 | MATSUB1145 | DUKHPROGN00MTSM1700 | DUKHPROGEN00MTSM1700 | DH | PRO | OA | MAT | SMAT | XW | IN |
| DUKHPROGEN00MTSM1710 | External signage _1st_Sub | 15d | 2013-05-04 | 2013-05-20 | DUKHPROGEN00MTSM1700 SS |  |  | 176d | 0d |  | MATERIAL ENGG [20 h] | 103,473 | MATSUB1150 | DUKHPROGN00MTSM1710 | DUKHPROGEN00MTSM1710 | DH | PRO | OA | MAT | SMAT | XW | IN |
| DUKHPROGEN00MTSM1720 | Road Marking_1st_Sub | 15d | 2013-05-04 | 2013-05-20 | DUKHPROGEN00MTSM1700 SS |  |  | 176d | 0d |  | MATERIAL ENGG [20 h] | 5,778 | MATSUB1155 | DUKHPROGN00MTSM1720 | DUKHPROGEN00MTSM1720 | DH | PRO | OA | MAT | SMAT | XW | IN |
| DUKHPROGEN00MTSM1740 | Stone Boulders_1st_Sub | 15d | 2013-05-04 | 2013-05-20 | DUKHPROGEN00MTSM1750 SS |  |  | 26d | 0d |  | MATERIAL ENGG [20 h] | 33,538 | MATSUB1175 | DUKHPROGN00MTSM1740 | DUKHPROGEN00MTSM1740 | DH | PRO | OA | MAT | SMAT | XW | IN |
| DUKHPROGEN00MTSM1750 | Speed Humps _1st_Sub | 15d | 2013-05-04 | 2013-05-20 | DUKHPROGEN00MTSM1700 SS |  |  | 26d | 0d |  | MATERIAL ENGG [20 h] | 1,427 | MATSUB1180 | DUKHPROGN00MTSM1750 | DUKHPROGEN00MTSM1750 | DH | PRO | OA | MAT | SMAT | XW | IN |
| DUKHPROGEN00MTSM1730 | Car Parking Shed_1st_Sub | 15d | 2013-05-08 | 2013-05-25 | DUKHPROGEN00PQAP2120, DUKHPROGEN00MTSM1660 |  |  | 40d | 0d |  | MATERIAL ENGG [20 h] | 105,433 | MATSUB1170 | DUKHPROGN00MTSM1730 | DUKHPROGEN00MTSM1730 | DH | PRO | OA | MAT | SMAT | XW | IN |
| DUKHPROGEN00MTSM1760 | Sprinklers_1st_Sub | 15d | 2013-05-08 | 2013-05-25 | DUKHPROGEN00PQAP2160, DUKHPROGEN00MTSM1670 |  |  | 37d | 0d |  | MATERIAL ENGG [20 h] | 5,808 | MATSUB1465 | DUKHPROGN00MTSM1760 | DUKHPROGEN00MTSM1760 | DH | PRO | OA | MAT | SMAT | MP | IR |
| DUKHPROGEN00MTSM1680 | Water Tank_1st_Sub | 15d | 2013-05-14 | 2013-05-30 | DUKHPROGEN00PQAP2040, DUKHPROGEN00MTSM1640, DUKHPROGEN00MTSM1150 |  |  | 14d | 0d |  | MATERIAL ENGG [30 h] | 12,227 | MATSUB1275 | DUKHPROGN00MTSM1680 | DUKHPROGEN00MTSM1680 | DH | PRO | OA | MAT | SMAT | MP | PB |
| DUKHPROGEN00MTSM1690 | Fire Hydrant_1st_Sub | 15d | 2013-05-14 | 2013-05-30 | DUKHPROGEN00MTSM1650, DUKHPROGEN00PQAP2040 |  |  | 20d | 0d |  | MATERIAL ENGG [30 h] | 3,483 | MATSUB1425 | DUKHPROGN00MTSM1690 | DUKHPROGEN00MTSM1690 | DH | PRO | OA | MAT | SMAT | MP | FG |
| DUKHPROGEN00MTSM1780 | Gazebo Structure_1st_Sub | 15d | 2013-05-21 | 2013-06-06 | DUKHPROGEN00MTSM1700 |  |  | 71d | 0d |  | MATERIAL ENGG [30 h] | 21,378 | MATSUB1075 | DUKHPROGN00MTSM1780 | DUKHPROGEN00MTSM1780 | DH | PRO | OA | MAT | SMAT | XW | IN |
| DUKHPROGEN00MTSM1790 | Plantation(Grass,Trees)_1st_Sub | 15d | 2013-05-21 | 2013-06-06 | DUKHPROGEN00PQAP2160, DUKHPROGEN00MTSM1740 |  |  | 26d | 0d |  | MATERIAL ENGG [30 h] | 249,398 | MATSUB1185 | DUKHPROGN00MTSM1790 | DUKHPROGEN00MTSM1790 | DH | PRO | OA | MAT | SMAT | XW | IN |
| DUKHPROGEN00MTSM1800 | Steel Gate & Barrier gates_1st_Sub | 15d | 2013-05-26 | 2013-06-11 | DUKHPROGEN00PQAP2130, DUKHPROGEN00MTSM1730 |  |  | 40d | 0d |  | MATERIAL ENGG [30 h] | 5,704 | MATSUB1195 | DUKHPROGN00MTSM1800 | DUKHPROGEN00MTSM1800 | DH | PRO | OA | MAT | SMAT | XW | IN |
| DUKHPROGEN00MTSM1810 | Nozzle Jet_1st_Sub | 15d | 2013-05-26 | 2013-06-11 | DUKHPROGEN00MTSM1760, DUKHPROGEN00PQAP2160 |  |  | 37d | 0d |  | MATERIAL ENGG [30 h] | 2,101 | MATSUB1470 | DUKHPROGN00MTSM1810 | DUKHPROGEN00MTSM1810 | DH | PRO | OA | MAT | SMAT | MP | IR |
| DUKHPROGEN00MTSM1820 | Pre-cast Boundary Wall _1st_Sub | 15d | 2013-05-26 | 2013-06-11 | DUKHPROGEN00MTSM1800 SS, DUKHPROGEN00PQAP2170 |  |  | 40d | 0d |  | MATERIAL ENGG [30 h] | 364,067 | MATSUB1190 | DUKHPROGN00MTSM1820 | DUKHPROGEN00MTSM1820 | DH | PRO | OA | MAT | SMAT | XW | IN |
| DUKHPROGEN00MTSM1770 | Kitchen Water Filter_1st_Sub | 15d | 2013-06-01 | 2013-06-17 | DUKHPROGEN00MTSM1680, DUKHPROGEN00MTSM1150, DUKHPROGEN00PQAP2040 |  |  | 14d | 0d |  | MATERIAL ENGG [30 h] | 1,880 | MATSUB1280 | DUKHPROGN00MTSM1770 | DUKHPROGEN00MTSM1770 | DH | PRO | OA | MAT | SMAT | MP | PB |
| DUKHPROGEN00MTSM1830 | Solenoid Values_1st_Sub | 15d | 2013-06-12 | 2013-06-29 | DUKHPROGEN00PQAP2160, DUKHPROGEN00MTSM1810 |  |  | 37d | 0d |  | MATERIAL ENGG [30 h] | 3,975 | MATSUB1475 | DUKHPROGN00MTSM1830 | DUKHPROGEN00MTSM1830 | DH | PRO | OA | MAT | SMAT | MP | IR |
| DUKHPROGEN00MTSM1850 | Fences_1st_Sub | 15d | 2013-06-12 | 2013-06-29 | DUKHPROGEN00MTSM1820, DUKHPROGEN00MTSM1820 SS |  |  | 126d | 0d |  | MATERIAL ENGG [30 h] | 4,550 | MATSUB1495 | DUKHPROGN00MTSM1850 | DUKHPROGEN00MTSM1850 | DH | PRO | OA | MAT | SMAT | XW | IN |
| DUKHPROGEN00MTSM1840 | Gate Values_1st_Sub | 15d | 2013-06-30 | 2013-07-16 | DUKHPROGEN00PQAP2160, DUKHPROGEN00MTSM1830 |  |  | 37d | 0d |  | MATERIAL ENGG [30 h] | 698 | MATSUB1480 | DUKHPROGN00MTSM1840 | DUKHPROGEN00MTSM1840 | DH | PRO | OA | MAT | SMAT | MP | IR |
| DUKHPROGEN00MTSM1860 | Remote Control Value_1st_Sub | 15d | 2013-07-17 | 2013-08-03 | DUKHPROGEN00PQAP2160, DUKHPROGEN00MTSM1840 |  |  | 37d | 0d |  | MATERIAL ENGG [30 h] | 5,376 | MATSUB1485 | DUKHPROGN00MTSM1860 | DUKHPROGEN00MTSM1860 | DH | PRO | OA | MAT | SMAT | MP | IR |
| DUKHPROGEN00MTSM1870 | Irrigation Controller_1st_Sub | 15d | 2013-08-04 | 2013-08-24 | DUKHPROGEN00PQAP2160, DUKHPROGEN00MTSM1860 |  |  | 37d | 0d |  | MATERIAL ENGG [30 h] | 7,482 | MATSUB1490 | DUKHPROGN00MTSM1870 | DUKHPROGEN00MTSM1870 | DH | PRO | OA | MAT | SMAT | MP | IR |

Notes:
- DUKHPROGEN00MTSM1420: Expenses: I03-Water supply system 207; I1A-Water supply system 207; I1B-Water supply system 207; I2A-Water supply system 207; I2B-Water supply system 207; P03-Painting and Decorating 390; P1A-Painting and Decorating 990; P1B-Painting and Decorating 988
- DUKHPROGEN00MTSM1600: Expenses: P1A-External works within the Plot Curtilage 4097; P1B-External works within the Plot Curtilage 2718; P2A-External works within the Plot Curtilage 1144; P2B-External works within the Plot Curtilage 1854
- DUKHPROGEN00MTSM1610: Expenses: P1A-External works within the Plot Curtilage 13516; P1B-External works within the Plot Curtilage 9498
- DUKHPROGEN00MTSM1620: Expenses: P03-External works within the Plot Curtilage 308; P1A-External works within the Plot Curtilage 1499; P1B-External works within the Plot Curtilage 1054; P2A-External works within the Plot Curtilage 224; P2B-External works within the Plot Curtilage 336
- DUKHPROGEN00MTSM1550: Expenses: P03-Carpentry and Joinery 17160; P1A-Carpentry and Joinery 42672; P1B-Carpentry and Joinery 29912; P2A-Carpentry and Joinery 2362; P2B-Carpentry and Joinery 3543
- DUKHPROGEN00MTSM1560: Expenses: P03-Carpentry and Joinery 27880; P1A-Carpentry and Joinery 69346; P1B-Carpentry and Joinery 48602; P2A-Carpentry and Joinery 3838; P2B-Carpentry and Joinery 5757
- DUKHPROGEN00MTSM1570: Expenses: P03-Carpentry and Joinery 8580; P1A-Carpentry and Joinery 21332; P1B-Carpentry and Joinery 14956; P2A-Carpentry and Joinery 1180; P2B-Carpentry and Joinery 1770
- DUKHPROGEN00MTSM1580: Expenses: I03-Water supply system 615; I1A-Water supply system 615; I1B-Water supply system 615; I2A-Water supply system 615; I2B-Water supply system 615; P03-External works within the Plot Curtilage 5090; P03-Metal work 2892; P1A-External works within the Plot Curtilage 25105; P1A-Metal work 95487; P1B-External works within the Plot Curtilage 24700; P1B-Metal work 13158; P2A-External works within the Plot Curtilage 2849; P2B-External works within the Plot Curtilage 4275
- DUKHPROGEN00MTSM1520: Expenses: P03-External works within the Plot Curtilage 57750; P03-Plumbing and Drainage works 245800; P1A-Plumbing and Drainage works 66091; P1B-Plumbing and Drainage works 46430
- DUKHPROGEN00MTSM1530: Expenses: P03-Air-conditioning and Ventilation works 4775; P1A-Air-conditioning and Ventilation works 5956; P1B-Air-conditioning and Ventilation works 4228; P2A-Air-conditioning and Ventilation works 552; P2B-Air-conditioning and Ventilation works 828
- DUKHPROGEN00MTSM1540: Expenses: I03-Water supply system 3672; I1A-Water supply system 6340; I1B-Water supply system 3844; I2A-Water supply system 676; I2B-Water supply system 1306
- DUKHPROGEN00MTSM1630: Expenses: I03-Water supply system 284; I1A-Water supply system 284; I1B-Water supply system 284; I2A-Water supply system 284; I2B-Water supply system 284
- DUKHPROGEN00MTSM1660: Expenses: P1A-External works within the Plot Curtilage 4849; P1B-External works within the Plot Curtilage 9190; P2A-External works within the Plot Curtilage 1539; P2B-External works within the Plot Curtilage 2310
- DUKHPROGEN00MTSM1670: Expenses: I03-Water supply system 2194; I1A-Water supply system 2290; I1B-Water supply system 1220; I2A-Water supply system 224; I2B-Water supply system 338
- DUKHPROGEN00MTSM1640: Expenses: P03-External works within the Plot Curtilage 3610; P1A-Plumbing and Drainage works 4134; P1B-Plumbing and Drainage works 2900; P2A-Plumbing and Drainage works 2432; P2B-Plumbing and Drainage works 3648
- DUKHPROGEN00MTSM1650: Expenses: I03-Water supply system 991; I1A-Water supply system 1710; I1B-Water supply system 1036; I2A-Water supply system 182; I2B-Water supply system 352
- DUKHPROGEN00MTSM1700: Expenses: I03-Road work 23720; I1A-Road work 30735; I1B-Road work 23908; I2A-Road work 7866; I2B-Road work 11856
- DUKHPROGEN00MTSM1710: Expenses: I03-Road work 6686; I1A-Road work 31555; I1B-Road work 24300; I2A-Road work 28882; I2B-Road work 12050
- DUKHPROGEN00MTSM1720: Expenses: I03-Road work 352; I1A-Road work 1992; I1B-Road work 1280; I2A-Road work 1520; I2B-Road work 634
- DUKHPROGEN00MTSM1740: Expenses: I03-Hard and soft landscaping 2209; I1A-Hard and soft landscaping 7935; I1B-Hard and soft landscaping 7600; I2A-Hard and soft landscaping 4108; I2B-Hard and soft landscaping 11686
- DUKHPROGEN00MTSM1750: Expenses: I03-Hard and soft landscaping 191; I1A-Hard and soft landscaping 570; I1B-Hard and soft landscaping 428; I2A-Hard and soft landscaping 96; I2B-Hard and soft landscaping 142
- DUKHPROGEN00MTSM1730: Expenses: I03-Road work 27709; I1A-Road work 34470; I1B-Road work 22128; I2A-Road work 6220; I2B-Road work 14906
- DUKHPROGEN00MTSM1760: Expenses: I03-Water supply system 2194; I1A-Water supply system 1832; I1B-Water supply system 1220; I2A-Water supply system 224; I2B-Water supply system 338
- DUKHPROGEN00MTSM1680: Expenses: P03-Plumbing and Drainage works 1535; P1A-Plumbing and Drainage works 5568; P1B-Plumbing and Drainage works 3908; P2A-Plumbing and Drainage works 487; P2B-Plumbing and Drainage works 729
- DUKHPROGEN00MTSM1690: Expenses: I03-Water supply system 808; I1A-Water supply system 1395; I1B-Water supply system 844; I2A-Water supply system 148; I2B-Water supply system 288
- DUKHPROGEN00MTSM1780: Expenses: I03-Hard and soft landscaping 3563; I1A-Hard and soft landscaping 7126; I1B-Hard and soft landscaping 3563; I2A-Hard and soft landscaping 3563; I2B-Hard and soft landscaping 3563
- DUKHPROGEN00MTSM1790: Expenses: I03-Hard and soft landscaping 115009; I1A-Hard and soft landscaping 46995; I1B-Hard and soft landscaping 47176; I2A-Hard and soft landscaping 12794; I2B-Hard and soft landscaping 27424
- DUKHPROGEN00MTSM1800: Expenses: I03-Hard and soft landscaping 1426; I1A-Hard and soft landscaping 2140; I1B-Hard and soft landscaping 1628; I2A-Hard and soft landscaping 306; I2B-Hard and soft landscaping 204
- DUKHPROGEN00MTSM1810: Expenses: I03-Water supply system 594; I1A-Water supply system 465; I1B-Water supply system 432; I2A-Water supply system 278; I2B-Water supply system 332
- DUKHPROGEN00MTSM1820: Expenses: I03-Hard and soft landscaping 41912; I1A-Hard and soft landscaping 154955; I1B-Hard and soft landscaping 87896; I2A-Hard and soft landscaping 31350; I2B-Hard and soft landscaping 47954
- DUKHPROGEN00MTSM1770: Expenses: P03-Plumbing and Drainage works 380; P1A-Plumbing and Drainage works 832; P1B-Plumbing and Drainage works 548; P2A-Plumbing and Drainage works 48; P2B-Plumbing and Drainage works 72
- DUKHPROGEN00MTSM1830: Expenses: I03-Water supply system 1123; I1A-Water supply system 880; I1B-Water supply system 820; I2A-Water supply system 524; I2B-Water supply system 628
- DUKHPROGEN00MTSM1850: Expenses: I03-Water supply system 910; I1A-Water supply system 910; I1B-Water supply system 910; I2A-Water supply system 910; I2B-Water supply system 910
- DUKHPROGEN00MTSM1840: Expenses: I03-Water supply system 197; I1A-Water supply system 155; I1B-Water supply system 144; I2A-Water supply system 92; I2B-Water supply system 110
- DUKHPROGEN00MTSM1860: Expenses: I03-Water supply system 1520; I1A-Water supply system 1190; I1B-Water supply system 1108; I2A-Water supply system 708; I2B-Water supply system 850
- DUKHPROGEN00MTSM1870: Expenses: I03-Water supply system 2115; I1A-Water supply system 1655; I1B-Water supply system 1544; I2A-Water supply system 986; I2B-Water supply system 1182

| ID | WBS | Activity | Duration | Start | Finish | Predecessors | Complete | Total float | Free float | Expected finish | P3 ACTID | P6 ID (old) | NP61D | PROJECT | PHASES | PACKAGE | PART | ELEMENTS | STEP | FLOORS |
| --- | --- | --- | --- | --- | --- | --- | --- | --- | --- | --- | --- | --- | --- | --- | --- | --- | --- | --- | --- | --- |
|  | 15 | **1ST APPROVAL OF MATERIAL** |  | 2012-12-08 | 2013-09-28 |  |  |  |  |  |  |  |  |  |  |  |  |  |  |  |
| DUKHPROGEN00MTAP1000 |  | Anti Termite _1st_App | 15d | 2012-12-08 A | 2012-12-25 A | DUKHPROGEN00MTSM1000 | 100% |  |  |  | MATAPP1000 | DUKHPROGN00MTAP1000 | DUKHPROGEN00MTAP1000 | DH | PRO | OA | MAT | AMAT | TS |  |
| DUKHPROGEN00MTAP1020 |  | Concrete_1st_App | 15d | 2012-12-09 A | 2012-12-26 A | DUKHPROGEN00MTSM1020 | 100% |  |  |  | MATAPP1005 | DUKHPROGN00MTAP1020 | DUKHPROGEN00MTAP1020 | DH | PRO | OA | MAT | AMAT | TS |  |
| DUKHPROGEN00MTAP1010 |  | Block Work_1st_App | 25d | 2012-12-13 A | 2013-01-12 A | DUKHPROGEN00MTSM1010 SS+5d | 100% |  |  |  | MATAPP1030 | DUKHPROGN00MTAP1010 | DUKHPROGEN00MTAP1010 | DH | PRO | OA | MAT | AMAT | FI | GL |
| DUKHPROGEN00MTAP1040 |  | Plastering & Accessories_1st_App | 30d | 2012-12-25 A | 2013-01-28 A | DUKHPROGEN00MTSM1040 | 100% |  |  |  | MATAPP1035 | DUKHPROGN00MTAP1040 | DUKHPROGEN00MTAP1040 | DH | PRO | OA | MAT | AMAT | FI | GL |
| DUKHPROGEN00MTAP1030 |  | Waterproofing_1st_App | 15d | 2013-01-10 A | 2013-01-27 A | DUKHPROGEN00MTSM1030 | 100% |  |  |  | MATAPP1015 | DUKHPROGN00MTAP1030 | DUKHPROGEN00MTAP1030 | DH | PRO | OA | MAT | AMAT | TS |  |
| DUKHPROGEN00MTAP1090 |  | Cobble stone finish _1st_App | 30d | 2013-01-12 A | 2013-02-16 A | DUKHPROGEN00MTSM1090 | 100% |  |  |  | MATAPP1100 | DUKHPROGN00MTAP1090 | DUKHPROGEN00MTAP1090 | DH | PRO | OA | MAT | AMAT | FI | FR |
| DUKHPROGEN00MTAP1100 |  | Slate Tile_1st_App | 30d | 2013-01-12 A | 2013-02-16 A | DUKHPROGEN00MTSM1100 | 100% |  |  |  | MATAPP1105 | DUKHPROGN00MTAP1100 | DUKHPROGEN00MTAP1100 | DH | PRO | OA | MAT | AMAT | FI | FR |
| DUKHPROGEN00MTAP1110 |  | Stone Cladding_1st_App | 30d | 2013-01-12 A | 2013-02-16 A | DUKHPROGEN00MTSM1110 | 100% |  |  |  | MATAPP1110 | DUKHPROGN00MTAP1110 | DUKHPROGEN00MTAP1110 | DH | PRO | OA | MAT | AMAT | FI | FR |
| DUKHPROGEN00MTAP1120 |  | Ceramic Tile_1st_App | 30d | 2013-01-12 A | 2013-02-16 A | DUKHPROGEN00MTSM1120 | 100% |  |  |  | MATAPP1225 | DUKHPROGN00MTAP1120 | DUKHPROGEN00MTAP1120 | DH | PRO | OA | MAT | AMAT | FI | FR |
| DUKHPROGEN00MTAP1130 |  | Porcelain Tile_1st_App | 30d | 2013-01-12 A | 2013-02-16 A | DUKHPROGEN00MTSM1130 | 100% |  |  |  | MATAPP1230 | DUKHPROGN00MTAP1130 | DUKHPROGEN00MTAP1130 | DH | PRO | OA | MAT | AMAT | FI | FR |
| DUKHPROGEN00MTAP1060 |  | UPVC Pipes_1st_App | 30d | 2013-01-15 A | 2013-02-19 A | DUKHPROGEN00MTSM1060 | 100% |  |  |  | MATAPP1290 | DUKHPROGN00MTAP1060 | DUKHPROGEN00MTAP1060 | DH | PRO | OA | MAT | AMAT | MP | PB |
| DUKHPROGEN00MTAP1070 |  | Floor drains & Cleanouts_1st_App | 30d | 2013-01-15 A | 2013-02-19 A | DUKHPROGEN00MTSM1070 | 100% |  |  |  | MATAPP1295 | DUKHPROGN00MTAP1070 | DUKHPROGEN00MTAP1070 | DH | PRO | OA | MAT | AMAT | MP | PB |
| DUKHPROGEN00MTAP1080 |  | Polyethylene Pipes_1st_App | 30d | 2013-01-15 A | 2013-02-19 A | DUKHPROGEN00MTSM1080 | 100% |  |  |  | MATAPP1310 | DUKHPROGN00MTAP1080 | DUKHPROGEN00MTAP1080 | DH | PRO | OA | MAT | AMAT | MP | PB |
| DUKHPROGEN00MTAP1050 |  | Thermal Insulation_1st_App | 30d | 2013-01-28 A | 2013-03-04 A | DUKHPROGEN00MTSM1050 | 100% |  |  |  | MATAPP1040 | DUKHPROGN00MTAP1050 | DUKHPROGEN00MTAP1050 | DH | PRO | OA | MAT | AMAT | TS |  |
| DUKHPROGEN00MTAP1140 |  | Pitch roofing_1st_App | 30d | 2013-02-16 A | 2013-03-21 A | DUKHPROGEN00MTSM1140 | 100% |  |  |  | MATAPP1045 | DUKHPROGN00MTAP1140 | DUKHPROGEN00MTAP1140 | DH | PRO | OA | MAT | AMAT | TS |  |
| DUKHPROGEN00MTAP1150 |  | Sanitary Fittings_1st_App | 54d | 2013-04-27 | 2013-06-27 | DUKHPROGEN00MTSM1150 |  | -13d | 0d | 2013-06-27 | MATAPP1300 | DUKHPROGN00MTAP1150 | DUKHPROGEN00MTAP1150 | DH | PRO | OA | MAT | AMAT | MP | PB |
| DUKHPROGEN00MTAP1160 |  | Copper Pipes_1st_App | 54d | 2013-04-27 | 2013-06-27 | DUKHPROGEN00MTSM1160 |  | -10d | 0d | 2013-06-27 | MATAPP1325 | DUKHPROGN00MTAP1160 | DUKHPROGEN00MTAP1160 | DH | PRO | OA | MAT | AMAT | MP | AC |
| DUKHPROGEN00MTAP1170 |  | SMDB_1st_App | 54d | 2013-04-27 | 2013-06-27 | DUKHPROGEN00MTSM1170 |  | 11d | 0d | 2013-06-27 | MATAPP1350 | DUKHPROGN00MTAP1170 | DUKHPROGEN00MTAP1170 | DH | PRO | OA | MAT | AMAT | MP | EC |
| DUKHPROGEN00MTAP1180 |  | Cables & Wires_1st_App | 54d | 2013-04-27 | 2013-06-27 | DUKHPROGEN00MTSM1180 |  | 0d |  | 2013-06-27 | MATAPP1355 | DUKHPROGN00MTAP1180 | DUKHPROGEN00MTAP1180 | DH | PRO | OA | MAT | AMAT | MP | EC |
| DUKHPROGEN00MTAP1190 |  | Lights & Fixtures_1st_App | 54d | 2013-04-27 | 2013-06-27 | DUKHPROGEN00MTSM1190 |  | 23d | 0d | 2013-06-27 | MATAPP1360 | DUKHPROGN00MTAP1190 | DUKHPROGEN00MTAP1190 | DH | PRO | OA | MAT | AMAT | MP | EC |
| DUKHPROGEN00MTAP1200 |  | Isolators_1st_App | 54d | 2013-04-27 | 2013-06-27 | DUKHPROGEN00MTSM1200 |  | 44d | 0d | 2013-06-27 | MATAPP1365 | DUKHPROGN00MTAP1200 | DUKHPROGEN00MTAP1200 | DH | PRO | OA | MAT | AMAT | MP | EC |
| DUKHPROGEN00MTAP1210 |  | Fire Resistant Cables_1st_App | 54d | 2013-04-27 | 2013-06-27 | DUKHPROGEN00MTSM1210 |  | 41d | 0d | 2013-06-27 | MATAPP1385 | DUKHPROGN00MTAP1210 | DUKHPROGEN00MTAP1210 | DH | PRO | OA | MAT | AMAT | MP | CM |
| DUKHPROGEN00MTAP1220 |  | Water Chiller_1st_App | 54d | 2013-04-27 | 2013-06-27 | DUKHPROGEN00MTSM1220 |  | 1d | 0d | 2013-06-27 | MATAPP1255 | DUKHPROGN00MTAP1220 | DUKHPROGEN00MTAP1220 | DH | PRO | OA | MAT | AMAT | MP | PB |
| DUKHPROGEN00MTAP1230 |  | Water Heater_1st_App | 54d | 2013-04-27 | 2013-06-27 | DUKHPROGEN00MTSM1230 |  | 10d | 0d | 2013-06-27 | MATAPP1305 | DUKHPROGN00MTAP1230 | DUKHPROGEN00MTAP1230 | DH | PRO | OA | MAT | AMAT | MP | PB |
| DUKHPROGEN00MTAP1240 |  | Split AC_1st_App | 54d | 2013-04-27 | 2013-06-27 | DUKHPROGEN00MTSM1240 |  | 35d | 0d | 2013-06-27 | MATAPP1330 | DUKHPROGN00MTAP1240 | DUKHPROGEN00MTAP1240 | DH | PRO | OA | MAT | AMAT | MP | AC |
| DUKHPROGEN00MTAP1250 |  | Street Light Post Set_1st_App | 54d | 2013-04-27 | 2013-06-27 | DUKHPROGEN00MTSM1250 |  | 76d | 0d | 2013-06-27 | MATAPP1370 | DUKHPROGN00MTAP1250 | DUKHPROGEN00MTAP1250 | DH | PRO | OA | MAT | AMAT | MP | IN |
| DUKHPROGEN00MTAP1260 |  | Smoke Detector_1st_App | 54d | 2013-04-27 | 2013-06-27 | DUKHPROGEN00MTSM1260 |  | 41d | 0d | 2013-06-27 | MATAPP1390 | DUKHPROGN00MTAP1260 | DUKHPROGEN00MTAP1260 | DH | PRO | OA | MAT | AMAT | MP | CM |
| DUKHPROGEN00MTAP1270 |  | Video Com System_1st_App | 54d | 2013-04-27 | 2013-06-27 | DUKHPROGEN00MTSM1270 |  | 21d | 0d | 2013-06-27 | MATAPP1435 | DUKHPROGN00MTAP1270 | DUKHPROGEN00MTAP1270 | DH | PRO | OA | MAT | AMAT | MP | TP |
| DUKHPROGEN00MTAP1280 |  | Telephone Fittings & Accessories_1st_App | 54d | 2013-04-27 | 2013-06-27 | DUKHPROGEN00MTSM1280 |  | 21d | 0d | 2013-06-27 | MATAPP1440 | DUKHPROGN00MTAP1280 | DUKHPROGEN00MTAP1280 | DH | PRO | OA | MAT | AMAT | MP | TP |
| DUKHPROGEN00MTAP1290 |  | Television devices,Fittings & Access._1st_App | 54d | 2013-04-27 | 2013-06-27 | DUKHPROGEN00MTSM1290 |  | 50d | 0d | 2013-06-27 | MATAPP1450 | DUKHPROGN00MTAP1290 | DUKHPROGEN00MTAP1290 | DH | PRO | OA | MAT | AMAT | MP | TP |
| DUKHPROGEN00MTAP1300 |  | Gypsum Board false ceiling_1st_App | 54d | 2013-04-27 | 2013-06-27 | DUKHPROGEN00MTSM1300 |  | -19d | 0d | 2013-06-27 | MATAPP1115 | DUKHPROGN00MTAP1300 | DUKHPROGEN00MTAP1300 | DH | PRO | OA | MAT | AMAT | FI | FS |
| DUKHPROGEN00MTAP1310 |  | Aluminum Tile false ceiling_1st_App | 54d | 2013-04-27 | 2013-06-27 | DUKHPROGEN00MTSM1310 |  | -4d | 0d | 2013-06-27 | MATAPP1120 | DUKHPROGN00MTAP1310 | DUKHPROGEN00MTAP1310 | DH | PRO | OA | MAT | AMAT | FI | FS |
| DUKHPROGEN00MTAP1320 |  | Paints_1st_App | 54d | 2013-04-27 | 2013-06-27 | DUKHPROGEN00MTSM1320 |  | -31d | 0d | 2013-06-27 | MATAPP1130 | DUKHPROGN00MTAP1320 | DUKHPROGEN00MTAP1320 | DH | PRO | OA | MAT | AMAT | FI | PI |
| DUKHPROGEN00MTAP1330 |  | Booster Pump_1st_App | 54d | 2013-04-27 | 2013-06-27 | DUKHPROGEN00MTSM1330 |  | 1d | 0d | 2013-06-27 | MATAPP1260 | DUKHPROGN00MTAP1330 | DUKHPROGEN00MTAP1330 | DH | PRO | OA | MAT | AMAT | MP | PB |
| DUKHPROGEN00MTAP1340 |  | Exhaust Air louver_1st_App | 54d | 2013-04-27 | 2013-06-27 | DUKHPROGEN00MTSM1340 |  | 42d | 0d | 2013-06-27 | MATAPP1335 | DUKHPROGN00MTAP1340 | DUKHPROGEN00MTAP1340 | DH | PRO | OA | MAT | AMAT | MP | AC |
| DUKHPROGEN00MTAP1350 |  | Bollard Lamp_1st_App | 54d | 2013-04-27 | 2013-06-27 | DUKHPROGEN00MTSM1350 |  | 76d | 0d | 2013-06-27 | MATAPP1375 | DUKHPROGN00MTAP1350 | DUKHPROGEN00MTAP1350 | DH | PRO | OA | MAT | AMAT | MP | IN |
| DUKHPROGEN00MTAP1360 |  | Digital Alarm Communicator Panel_1st_App | 54d | 2013-04-27 | 2013-06-27 | DUKHPROGEN00MTSM1360 |  | 15d | 0d | 2013-06-27 | MATAPP1395 | DUKHPROGN00MTAP1360 | DUKHPROGEN00MTAP1360 | DH | PRO | OA | MAT | AMAT | MP | CM |
| DUKHPROGEN00MTAP1370 |  | Fire Blanket_1st_App | 54d | 2013-04-27 | 2013-06-27 | DUKHPROGEN00MTSM1370 |  | 64d | 0d | 2013-06-27 | MATAPP1405 | DUKHPROGN00MTAP1370 | DUKHPROGEN00MTAP1370 | DH | PRO | OA | MAT | AMAT | MP | FG |
| DUKHPROGEN00MTAP1380 |  | Fire Extinguisher_1st_App | 54d | 2013-04-27 | 2013-06-27 | DUKHPROGEN00MTSM1380 |  | 56d | 0d | 2013-06-27 | MATAPP1410 | DUKHPROGN00MTAP1380 | DUKHPROGEN00MTAP1380 | DH | PRO | OA | MAT | AMAT | MP | FG |
| DUKHPROGEN00MTAP1390 |  | GRC Panels_1st_App | 54d | 2013-04-27 | 2013-06-27 | DUKHPROGEN00MTSM1390 |  | 23d | 0d | 2013-06-27 | MATAPP1125 | DUKHPROGN00MTAP1390 | DUKHPROGEN00MTAP1390 | DH | PRO | OA | MAT | AMAT | XW | WI |
| DUKHPROGEN00MTAP1400 |  | Access Ladder_1st_App | 54d | 2013-04-27 | 2013-06-27 | DUKHPROGEN00MTSM1400 |  | 40d | 0d | 2013-06-27 | MATAPP1210 | DUKHPROGN00MTAP1400 | DUKHPROGEN00MTAP1400 | DH | PRO | OA | MAT | AMAT | XW | WI |
| DUKHPROGEN00MTAP1410 |  | Aluminum Slat Screen_1st_App | 54d | 2013-04-27 | 2013-06-27 | DUKHPROGEN00MTSM1410 |  | 30d | 0d | 2013-06-27 | MATAPP1235 | DUKHPROGN00MTAP1410 | DUKHPROGEN00MTAP1410 | DH | PRO | OA | MAT | AMAT | XW | WI |
| DUKHPROGEN00MTAP1420 |  | Epoxy_1st_App | 54d | 2013-04-27 | 2013-06-27 | DUKHPROGEN00MTSM1420 |  | 108d | 0d | 2013-06-27 | MATAPP1135 | DUKHPROGN00MTAP1420 | DUKHPROGEN00MTAP1420 | DH | PRO | OA | MAT | AMAT | FI | PI |
| DUKHPROGEN00MTAP1430 |  | Roller Shutter_1st_App | 54d | 2013-04-27 | 2013-06-27 | DUKHPROGEN00MTSM1430 |  | 169d | 0d | 2013-06-27 | MATAPP1140 | DUKHPROGN00MTAP1430 | DUKHPROGEN00MTAP1430 | DH | PRO | OA | MAT | AMAT | XW | WI |
| DUKHPROGEN00MTAP1440 |  | PVC Doors_1st_App | 54d | 2013-04-27 | 2013-06-27 | DUKHPROGEN00MTSM1440 |  | 46d | 0d | 2013-06-27 | MATAPP1055 | DUKHPROGN00MTAP1440 | DUKHPROGEN00MTAP1440 | DH | PRO | OA | MAT | AMAT | FI | DR |
| DUKHPROGEN00MTAP1450 |  | Ironmongeries_1st_App | 54d | 2013-04-27 | 2013-06-27 | DUKHPROGEN00MTSM1450 |  | -20d | 0d | 2013-06-27 | MATAPP1080 | DUKHPROGN00MTAP1450 | DUKHPROGEN00MTAP1450 | DH | PRO | OA | MAT | AMAT | FI | DR |
| DUKHPROGEN00MTAP1460 |  | Aluminum Doors_1st_App | 54d | 2013-04-27 | 2013-06-27 | DUKHPROGEN00MTSM1460 |  | 19d | 0d | 2013-06-27 | MATAPP1085 | DUKHPROGN00MTAP1460 | DUKHPROGEN00MTAP1460 | DH | PRO | OA | MAT | AMAT | FI | DR |
| DUKHPROGEN00MTAP1470 |  | Aluminum Windows_1st_App | 54d | 2013-04-27 | 2013-06-27 | DUKHPROGEN00MTSM1470 |  | 25d | 0d | 2013-06-27 | MATAPP1090 | DUKHPROGN00MTAP1470 | DUKHPROGEN00MTAP1470 | DH | PRO | OA | MAT | AMAT | FI | DR |
| DUKHPROGEN00MTAP1480 |  | Granite_1st_App | 54d | 2013-04-27 | 2013-06-27 | DUKHPROGEN00MTSM1480 |  | 0d |  | 2013-06-27 | MATAPP1095 | DUKHPROGN00MTAP1480 | DUKHPROGEN00MTAP1480 | DH | PRO | OA | MAT | AMAT | FI | FR |
| DUKHPROGEN00MTAP1490 |  | Wooden Doors_1st_App | 54d | 2013-04-27 | 2013-06-27 | DUKHPROGEN00MTSM1490 |  | -20d | 0d | 2013-06-27 | MATAPP1050 | DUKHPROGN00MTAP1490 | DUKHPROGEN00MTAP1490 | DH | PRO | OA | MAT | AMAT | FI | DR |
| DUKHPROGEN00MTAP1500 |  | Steel Door_1st_App | 54d | 2013-04-27 | 2013-06-27 | DUKHPROGEN00MTSM1500 |  | -10d | 0d | 2013-06-27 | MATAPP1215 | DUKHPROGN00MTAP1500 | DUKHPROGEN00MTAP1500 | DH | PRO | OA | MAT | AMAT | XW | WI |
| DUKHPROGEN00MTAP1510 |  | Stainless Steel Cover_1st_App | 54d | 2013-04-27 | 2013-06-27 | DUKHPROGEN00MTSM1510 |  | -10d | 0d | 2013-06-27 | MATAPP1240 | DUKHPROGN00MTAP1510 | DUKHPROGEN00MTAP1510 | DH | PRO | OA | MAT | AMAT | XW | WI |
| DUKHPROGEN00MTAP1520 |  | Lift Pump_1st_App | 30d | 2013-04-27 | 2013-05-30 | DUKHPROGEN00MTSM1520 |  | 25d | 0d |  | MATAPP1265 | DUKHPROGN00MTAP1520 | DUKHPROGEN00MTAP1520 | DH | PRO | OA | MAT | AMAT | MP | PB |
| DUKHPROGEN00MTAP1530 |  | Exhaust Fan_1st_App | 30d | 2013-04-27 | 2013-05-30 | DUKHPROGEN00MTSM1530 |  | 66d | 0d |  | MATAPP1340 | DUKHPROGN00MTAP1530 | DUKHPROGEN00MTAP1530 | DH | PRO | OA | MAT | AMAT | MP | AC |
| DUKHPROGEN00MTAP1540 |  | Ductile Iron Pipes_1st_App | 30d | 2013-04-27 | 2013-05-30 | DUKHPROGEN00MTSM1540 |  | 10d | 0d |  | MATAPP1415 | DUKHPROGN00MTAP1540 | DUKHPROGEN00MTAP1540 | DH | PRO | OA | MAT | AMAT | MP | FG |
| DUKHPROGEN00MTAP1550 |  | Closets /wardrobe& Pelmets_1st_App | 54d | 2013-04-27 | 2013-06-27 | DUKHPROGEN00MTSM1550 |  | 17d | 0d | 2013-06-27 | MATAPP1060 | DUKHPROGN00MTAP1550 | DUKHPROGEN00MTAP1550 | DH | PRO | OA | MAT | AMAT | FI | SP |
| DUKHPROGEN00MTAP1560 |  | Counters, Cabinets & Shelves_1st_App | 54d | 2013-04-27 | 2013-06-27 | DUKHPROGEN00MTSM1560 |  | 17d | 0d | 2013-06-27 | MATAPP1065 | DUKHPROGN00MTAP1560 | DUKHPROGEN00MTAP1560 | DH | PRO | OA | MAT | AMAT | FI | SP |
| DUKHPROGEN00MTAP1570 |  | Wooden Hand Rails _1st_App | 54d | 2013-04-27 | 2013-06-27 | DUKHPROGEN00MTSM1570 |  | 35d | 0d | 2013-06-27 | MATAPP1070 | DUKHPROGN00MTAP1570 | DUKHPROGEN00MTAP1570 | DH | PRO | OA | MAT | AMAT | FI | SP |
| DUKHPROGEN00MTAP1580 |  | Stainless Steel Handrail_1st_App | 54d | 2013-04-27 | 2013-06-27 | DUKHPROGEN00MTSM1580 |  | 35d | 0d | 2013-06-27 | MATAPP1220 | DUKHPROGN00MTAP1580 | DUKHPROGEN00MTAP1580 | DH | PRO | OA | MAT | AMAT | FI | SP |
| DUKHPROGEN00MTAP1590 |  | Manhole Covers and Frames_1st_App | 54d | 2013-04-27 | 2013-06-27 | DUKHPROGEN00MTSM1590 |  | 27d | 0d | 2013-06-27 | MATAPP1205 | DUKHPROGN00MTAP1590 | DUKHPROGEN00MTAP1590 | DH | PRO | OA | MAT | AMAT | XW | WI |
| DUKHPROGEN00MTAP1600 |  | kerb works_1st_App | 54d | 2013-04-27 | 2013-06-27 | DUKHPROGEN00MTSM1600 |  | 49d | 0d | 2013-06-27 | MATAPP1160 | DUKHPROGN00MTAP1600 | DUKHPROGEN00MTAP1600 | DH | PRO | OA | MAT | AMAT | XW | IN |
| DUKHPROGEN00MTAP1610 |  | PVC Tent_1st_App | 54d | 2013-04-27 | 2013-06-27 | DUKHPROGEN00MTSM1610 |  | -4d | 0d | 2013-06-27 | MATAPP1245 | DUKHPROGN00MTAP1610 | DUKHPROGEN00MTAP1610 | DH | PRO | OA | MAT | AMAT | XW | WI |
| DUKHPROGEN00MTAP1620 |  | Structural Steel_1st_App | 54d | 2013-04-27 | 2013-06-27 | DUKHPROGEN00MTSM1620 |  | -6d | 0d | 2013-06-27 | MATAPP1250 | DUKHPROGN00MTAP1620 | DUKHPROGEN00MTAP1620 | DH | PRO | OA | MAT | AMAT | XW | WI |
| DUKHPROGEN00MTAP1630 |  | Steel Ladder_1st_App | 30d | 2013-05-02 | 2013-06-05 | DUKHPROGEN00MTSM1630 |  | 36d | 0d |  | MATAPP1200 | DUKHPROGN00MTAP1630 | DUKHPROGEN00MTAP1630 | DH | PRO | OA | MAT | AMAT | XW | WI |
| DUKHPROGEN00MTAP1660 |  | Interlock works_1st_App | 30d | 2013-05-08 | 2013-06-11 | DUKHPROGEN00MTSM1660 |  | 85d | 0d |  | MATAPP1165 | DUKHPROGN00MTAP1660 | DUKHPROGEN00MTAP1660 | DH | PRO | OA | MAT | AMAT | XW | IN |
| DUKHPROGEN00MTAP1670 |  | Irrigation Pipes_1st_App | 30d | 2013-05-08 | 2013-06-11 | DUKHPROGEN00MTSM1670 |  | 76d | 0d |  | MATAPP1460 | DUKHPROGN00MTAP1670 | DUKHPROGEN00MTAP1670 | DH | PRO | OA | MAT | AMAT | MP | IR |
| DUKHPROGEN00MTAP1640 |  | Water meter_1st_App | 30d | 2013-05-14 | 2013-06-17 | DUKHPROGEN00MTSM1640 |  | 61d | 0d |  | MATAPP1270 | DUKHPROGN00MTAP1640 | DUKHPROGEN00MTAP1640 | DH | PRO | OA | MAT | AMAT | MP | PB |
| DUKHPROGEN00MTAP1650 |  | Isolating Values_1st_App | 30d | 2013-05-14 | 2013-06-17 | DUKHPROGEN00MTSM1650 |  | 9d | 0d |  | MATAPP1420 | DUKHPROGN00MTAP1650 | DUKHPROGEN00MTAP1650 | DH | PRO | OA | MAT | AMAT | MP | FG |
| DUKHPROGEN00MTAP1700 |  | Road Works Materials _1st_App | 30d | 2013-05-21 | 2013-06-24 | DUKHPROGEN00MTSM1700 |  | 193d | 0d |  | MATAPP1145 | DUKHPROGN00MTAP1700 | DUKHPROGEN00MTAP1700 | DH | PRO | OA | MAT | AMAT | XW | IN |

| ID | WBS | Activity | Duration | Start | Finish | Predecessors | Complete | Total float | Free float | Resources | Cost | P3 ACTID | P6 ID (old) | NP61D | PROJECT | PHASES | PACKAGE | PART | ELEMENTS | STEP | FLOORS |
| --- | --- | --- | --- | --- | --- | --- | --- | --- | --- | --- | --- | --- | --- | --- | --- | --- | --- | --- | --- | --- | --- |
| DUKHPROGEN00MTAP1710 |  | External signage _1st_App | 30d | 2013-05-21 | 2013-06-24 | DUKHPROGEN00MTSM1710 |  | 176d | 0d |  |  | MATAPP1150 | DUKHPROGN00MTAP1710 | DUKHPROGEN00MTAP1710 | DH | PRO | OA | MAT | AMAT | XW | IN |
| DUKHPROGEN00MTAP1720 |  | Road Marking_1st_App | 30d | 2013-05-21 | 2013-06-24 | DUKHPROGEN00MTSM1720 |  | 176d | 0d |  |  | MATAPP1155 | DUKHPROGN00MTAP1720 | DUKHPROGEN00MTAP1720 | DH | PRO | OA | MAT | AMAT | XW | IN |
| DUKHPROGEN00MTAP1740 |  | Stone Boulders_1st_App | 30d | 2013-05-21 | 2013-06-24 | DUKHPROGEN00MTSM1740 |  | 131d | 0d |  |  | MATAPP1175 | DUKHPROGN00MTAP1740 | DUKHPROGEN00MTAP1740 | DH | PRO | OA | MAT | AMAT | XW | IN |
| DUKHPROGEN00MTAP1750 |  | Speed Humps _1st_App | 30d | 2013-05-21 | 2013-06-24 | DUKHPROGEN00MTSM1750 |  | 130d | 0d |  |  | MATAPP1180 | DUKHPROGN00MTAP1750 | DUKHPROGEN00MTAP1750 | DH | PRO | OA | MAT | AMAT | XW | IN |
| DUKHPROGEN00MTAP1730 |  | Car Parking Shed_1st_App | 30d | 2013-05-26 | 2013-06-29 | DUKHPROGEN00MTSM1730 |  | 127d | 0d |  |  | MATAPP1170 | DUKHPROGN00MTAP1730 | DUKHPROGEN00MTAP1730 | DH | PRO | OA | MAT | AMAT | XW | IN |
| DUKHPROGEN00MTAP1760 |  | Sprinklers_1st_App | 30d | 2013-05-26 | 2013-06-29 | DUKHPROGEN00MTSM1760 |  | 138d | 0d |  |  | MATAPP1465 | DUKHPROGN00MTAP1760 | DUKHPROGEN00MTAP1760 | DH | PRO | OA | MAT | AMAT | MP | IR |
| DUKHPROGEN00MTAP1680 |  | Water Tank_1st_App | 30d | 2013-06-01 | 2013-07-04 | DUKHPROGEN00MTSM1680 |  | 46d | 0d |  |  | MATAPP1275 | DUKHPROGN00MTAP1680 | DUKHPROGEN00MTAP1680 | DH | PRO | OA | MAT | AMAT | MP | PB |
| DUKHPROGEN00MTAP1690 |  | Fire Hydrant_1st_App | 30d | 2013-06-01 | 2013-07-04 | DUKHPROGEN00MTSM1690 |  | 20d | 0d |  |  | MATAPP1425 | DUKHPROGN00MTAP1690 | DUKHPROGEN00MTAP1690 | DH | PRO | OA | MAT | AMAT | MP | FG |
| DUKHPROGEN00MTAP1780 |  | Gazebo Structure_1st_App | 30d | 2013-06-08 | 2013-07-11 | DUKHPROGEN00MTSM1780 |  | 71d | 0d |  |  | MATAPP1075 | DUKHPROGN00MTAP1780 | DUKHPROGEN00MTAP1780 | DH | PRO | OA | MAT | AMAT | XW | IN |
| DUKHPROGEN00MTAP1790 |  | Plantation(Grass,Trees)_1st_App | 30d | 2013-06-08 | 2013-07-11 | DUKHPROGEN00MTSM1790 |  | 26d | 0d |  |  | MATAPP1185 | DUKHPROGN00MTAP1790 | DUKHPROGEN00MTAP1790 | DH | PRO | OA | MAT | AMAT | XW | IN |
| DUKHPROGEN00MTAP1800 |  | Steel Gate & Barrier gates_1st_App | 30d | 2013-06-12 | 2013-07-16 | DUKHPROGEN00MTSM1800 |  | 63d | 0d |  |  | MATAPP1195 | DUKHPROGN00MTAP1800 | DUKHPROGEN00MTAP1800 | DH | PRO | OA | MAT | AMAT | XW | IN |
| DUKHPROGEN00MTAP1810 |  | Nozzle Jet_1st_App | 30d | 2013-06-12 | 2013-07-16 | DUKHPROGEN00MTSM1810 |  | 97d | 0d |  |  | MATAPP1470 | DUKHPROGN00MTAP1810 | DUKHPROGEN00MTAP1810 | DH | PRO | OA | MAT | AMAT | MP | IR |
| DUKHPROGEN00MTAP1820 |  | Pre-cast Boundary Wall _1st_App | 30d | 2013-06-12 | 2013-07-16 | DUKHPROGEN00MTSM1820 |  | 40d | 0d |  |  | MATAPP1190 | DUKHPROGN00MTAP1820 | DUKHPROGEN00MTAP1820 | DH | PRO | OA | MAT | AMAT | XW | IN |
| DUKHPROGEN00MTAP1770 |  | Kitchen Water Filter_1st_App | 30d | 2013-06-18 | 2013-07-22 | DUKHPROGEN00MTSM1770 |  | 14d | 0d |  |  | MATAPP1280 | DUKHPROGN00MTAP1770 | DUKHPROGEN00MTAP1770 | DH | PRO | OA | MAT | AMAT | MP | PB |
| DUKHPROGEN00MTAP1830 |  | Solenoid Values_1st_App | 30d | 2013-06-30 | 2013-08-03 | DUKHPROGEN00MTSM1830 |  | 82d | 0d |  |  | MATAPP1475 | DUKHPROGN00MTAP1830 | DUKHPROGEN00MTAP1830 | DH | PRO | OA | MAT | AMAT | MP | IR |
| DUKHPROGEN00MTAP1850 |  | Fences_1st_App | 30d | 2013-06-30 | 2013-08-03 | DUKHPROGEN00MTSM1850 |  | 126d | 0d |  |  | MATAPP1495 | DUKHPROGN00MTAP1850 | DUKHPROGEN00MTAP1850 | DH | PRO | OA | MAT | AMAT | XW | IN |
| DUKHPROGEN00MTAP1840 |  | Gate Values_1st_App | 30d | 2013-07-17 | 2013-08-24 | DUKHPROGEN00MTSM1840 |  | 67d | 0d |  |  | MATAPP1480 | DUKHPROGN00MTAP1840 | DUKHPROGEN00MTAP1840 | DH | PRO | OA | MAT | AMAT | MP | IR |
| DUKHPROGEN00MTAP1860 |  | Remote Control Value_1st_App | 30d | 2013-08-04 | 2013-09-10 | DUKHPROGEN00MTSM1860 |  | 52d | 0d |  |  | MATAPP1485 | DUKHPROGN00MTAP1860 | DUKHPROGEN00MTAP1860 | DH | PRO | OA | MAT | AMAT | MP | IR |
| DUKHPROGEN00MTAP1870 |  | Irrigation Controller_1st_App | 30d | 2013-08-25 | 2013-09-28 | DUKHPROGEN00MTSM1870 |  | 37d | 0d |  |  | MATAPP1490 | DUKHPROGN00MTAP1870 | DUKHPROGEN00MTAP1870 | DH | PRO | OA | MAT | AMAT | MP | IR |
|  | 20 | **2ND SUBMISSION OF MATERIAL** |  | 2013-01-29 | 2013-10-09 |  |  |  |  |  |  |  |  |  |  |  |  |  |  |  |  |
| DUKHPROGEN00MTSM2040 |  | Plastering & Accessories_2nd_Sub | 10d | 2013-01-29 A | 2013-02-09 A | DUKHPROGEN00MTAP1040 | 100% |  |  | MATERIAL ENGG [15 h] | 175,403 | MATSUB2035 | DUKHPROGN00MTSM2040 | DUKHPROGEN00MTSM2040 | DH | PRO | OA | MAT | 2SAT | FI | GL |
| DUKHPROGEN00MTSM2090 |  | Cobble stone finish _2nd_Sub | 10d | 2013-02-17 A | 2013-02-27 A | DUKHPROGEN00MTAP1090 | 100% |  |  | MATERIAL ENGG [15 h] | 36,788 | MATSUB2100 | DUKHPROGN00MTSM2090 | DUKHPROGEN00MTSM2090 | DH | PRO | OA | MAT | 2SAT | FI | FR |
| DUKHPROGEN00MTSM2100 |  | Slate Tile_2nd_Sub | 10d | 2013-02-17 A | 2013-02-27 A | DUKHPROGEN00MTAP1100 | 100% |  |  | MATERIAL ENGG [15 h] | 197,345 | MATSUB2105 | DUKHPROGN00MTSM2100 | DUKHPROGEN00MTSM2100 | DH | PRO | OA | MAT | 2SAT | FI | FR |
| DUKHPROGEN00MTSM2110 |  | Stone Cladding_2nd_Sub | 10d | 2013-02-17 A | 2013-02-27 A | DUKHPROGEN00MTAP1110 | 100% |  |  | MATERIAL ENGG [15 h] | 49,925 | MATSUB2110 | DUKHPROGN00MTSM2110 | DUKHPROGEN00MTSM2110 | DH | PRO | OA | MAT | 2SAT | FI | FR |
| DUKHPROGEN00MTSM2120 |  | Ceramic Tile_2nd_Sub | 10d | 2013-02-17 A | 2013-02-27 A | DUKHPROGEN00MTAP1120 | 100% |  |  | MATERIAL ENGG [15 h] | 210,182 | MATSUB2225 | DUKHPROGN00MTSM2120 | DUKHPROGEN00MTSM2120 | DH | PRO | OA | MAT | 2SAT | FI | FR |
| DUKHPROGEN00MTSM2130 |  | Porcelain Tile_2nd_Sub | 10d | 2013-02-17 A | 2013-02-27 A | DUKHPROGEN00MTAP1130 | 100% |  |  | MATERIAL ENGG [15 h] | 280,386 | MATSUB2230 | DUKHPROGN00MTSM2130 | DUKHPROGEN00MTSM2130 | DH | PRO | OA | MAT | 2SAT | FI | FR |
| DUKHPROGEN00MTSM2080 |  | Polyethylene Pipes_2nd_Sub | 10d | 2013-02-20 A | 2013-03-03 A | DUKHPROGEN00MTAP1080 | 100% |  |  | MATERIAL ENGG [15 h] | 300,090 | MATSUB2310 | DUKHPROGN00MTSM2080 | DUKHPROGEN00MTSM2080 | DH | PRO | OA | MAT | 2SAT | MP | PB |
| DUKHPROGEN00MTSM2050 |  | Thermal Insulation_2nd_Sub | 15d | 2013-03-05 A | 2013-03-21 A | DUKHPROGEN00MTAP1050 | 100% |  |  | MATERIAL ENGG [22.5 h] | 38,227 | MATSUB2040 | DUKHPROGN00MTSM2050 | DUKHPROGEN00MTSM2050 | DH | PRO | OA | MAT | 2SAT | TS |  |
| DUKHPROGEN00MTSM2140 |  | Pitch roofing_2nd_Sub | 15d | 2013-03-23 A | 2013-04-08 A | DUKHPROGEN00MTAP1140 | 100% |  |  | MATERIAL ENGG [22.5 h] | 46,170 | MATSUB2045 | DUKHPROGN00MTSM2140 | DUKHPROGEN00MTSM2140 | DH | PRO | OA | MAT | 2SAT | TS |  |
| DUKHPROGEN00MTSM2520 |  | Lift Pump_2nd_Sub | 10d | 2013-06-01 | 2013-06-11 | DUKHPROGEN00MTAP1520 |  | 25d | 0d | MATERIAL ENGG [15 h] | 416,071 | MATSUB2265 | DUKHPROGN00MTSM2520 | DUKHPROGEN00MTSM2520 | DH | PRO | OA | MAT | 2SAT | MP | PB |
| DUKHPROGEN00MTSM2530 |  | Exhaust Fan_2nd_Sub | 10d | 2013-06-01 | 2013-06-11 | DUKHPROGEN00MTAP1530 |  | 66d | 0d | MATERIAL ENGG [15 h] | 16,339 | MATSUB2340 | DUKHPROGN00MTSM2530 | DUKHPROGEN00MTSM2530 | DH | PRO | OA | MAT | 2SAT | MP | AC |
| DUKHPROGEN00MTSM2540 |  | Ductile Iron Pipes_2nd_Sub | 10d | 2013-06-01 | 2013-06-11 | DUKHPROGEN00MTAP1540 |  | 10d | 0d | MATERIAL ENGG [15 h] | 15,838 | MATSUB2415 | DUKHPROGN00MTSM2540 | DUKHPROGEN00MTSM2540 | DH | PRO | OA | MAT | 2SAT | MP | FG |
| DUKHPROGEN00MTSM2630 |  | Steel Ladder_2nd_Sub | 10d | 2013-06-06 | 2013-06-17 | DUKHPROGEN00MTAP1630 |  | 36d | 0d | MATERIAL ENGG [15 h] | 1,420 | MATSUB2200 | DUKHPROGN00MTSM2630 | DUKHPROGEN00MTSM2630 | DH | PRO | OA | MAT | 2SAT | XW | WI |
| DUKHPROGEN00MTSM2660 |  | Interlock works_2nd_Sub | 10d | 2013-06-12 | 2013-06-23 | DUKHPROGEN00MTAP1660 |  | 85d | 0d | MATERIAL ENGG [15 h] | 17,888 | MATSUB2165 | DUKHPROGN00MTSM2660 | DUKHPROGEN00MTSM2660 | DH | PRO | OA | MAT | 2SAT | XW | IN |
| DUKHPROGEN00MTSM2670 |  | Irrigation Pipes_2nd_Sub | 10d | 2013-06-12 | 2013-06-23 | DUKHPROGEN00MTAP1670 |  | 76d | 0d | MATERIAL ENGG [15 h] | 6,266 | MATSUB2460 | DUKHPROGN00MTSM2670 | DUKHPROGEN00MTSM2670 | DH | PRO | OA | MAT | 2SAT | MP | IR |
| DUKHPROGEN00MTSM2640 |  | Water meter_2nd_Sub | 10d | 2013-06-18 | 2013-06-29 | DUKHPROGEN00MTAP1640 |  | 61d | 0d | MATERIAL ENGG [15 h] | 16,724 | MATSUB2270 | DUKHPROGN00MTSM2640 | DUKHPROGEN00MTSM2640 | DH | PRO | OA | MAT | 2SAT | MP | PB |
| DUKHPROGEN00MTSM2650 |  | Isolating Values_2nd_Sub | 10d | 2013-06-18 | 2013-06-29 | DUKHPROGEN00MTAP1650 |  | 9d | 0d | MATERIAL ENGG [15 h] | 4,271 | MATSUB2420 | DUKHPROGN00MTSM2650 | DUKHPROGEN00MTSM2650 | DH | PRO | OA | MAT | 2SAT | MP | FG |
| DUKHPROGEN00MTSM2700 |  | Road Works Materials _2nd_Sub | 10d | 2013-06-25 | 2013-07-06 | DUKHPROGEN00MTAP1700 |  | 193d | 0d | MATERIAL ENGG [15 h] | 98,085 | MATSUB2145 | DUKHPROGN00MTSM2700 | DUKHPROGEN00MTSM2700 | DH | PRO | OA | MAT | 2SAT | XW | IN |
| DUKHPROGEN00MTSM2710 |  | External signage _2nd_Sub | 10d | 2013-06-25 | 2013-07-06 | DUKHPROGEN00MTAP1710 |  | 176d | 0d | MATERIAL ENGG [15 h] | 103,473 | MATSUB2150 | DUKHPROGN00MTSM2710 | DUKHPROGEN00MTSM2710 | DH | PRO | OA | MAT | 2SAT | XW | IN |
| DUKHPROGEN00MTSM2720 |  | Road Marking_2nd_Sub | 10d | 2013-06-25 | 2013-07-06 | DUKHPROGEN00MTAP1720 |  | 176d | 0d | MATERIAL ENGG [15 h] | 5,114 | MATSUB2155 | DUKHPROGN00MTSM2720 | DUKHPROGEN00MTSM2720 | DH | PRO | OA | MAT | 2SAT | XW | IN |
| DUKHPROGEN00MTSM2740 |  | Stone Boulders_2nd_Sub | 10d | 2013-06-25 | 2013-07-06 | DUKHPROGEN00MTAP1740 |  | 131d | 0d | MATERIAL ENGG [15 h] | 33,538 | MATSUB2175 | DUKHPROGN00MTSM2740 | DUKHPROGEN00MTSM2740 | DH | PRO | OA | MAT | 2SAT | XW | IN |
| DUKHPROGEN00MTSM2750 |  | Speed Humps _2nd_Sub | 10d | 2013-06-25 | 2013-07-06 | DUKHPROGEN00MTAP1750 |  | 130d | 0d | MATERIAL ENGG [15 h] | 1,427 | MATSUB2180 | DUKHPROGN00MTSM2750 | DUKHPROGEN00MTSM2750 | DH | PRO | OA | MAT | 2SAT | XW | IN |
| DUKHPROGEN00MTSM2150 |  | Sanitary Fittings_2nd_Sub | 10d | 2013-06-29 | 2013-07-09 | DUKHPROGEN00MTAP1150 |  | -13d | 0d | MATERIAL ENGG [15 h] | 250,982 | MATSUB2300 | DUKHPROGN00MTSM2150 | DUKHPROGEN00MTSM2150 | DH | PRO | OA | MAT | 2SAT | MP | PB |
| DUKHPROGEN00MTSM2160 |  | Copper Pipes_2nd_Sub | 10d | 2013-06-29 | 2013-07-09 | DUKHPROGEN00MTAP1160 |  | -10d | 0d | MATERIAL ENGG [15 h] | 25,339 | MATSUB2325 | DUKHPROGN00MTSM2160 | DUKHPROGEN00MTSM2160 | DH | PRO | OA | MAT | 2SAT | MP | AC |
| DUKHPROGEN00MTSM2170 |  | SMDB_2nd_Sub | 10d | 2013-06-29 | 2013-07-09 | DUKHPROGEN00MTAP1170 |  | 11d | 0d | MATERIAL ENGG [15 h] | 104,891 | MATSUB2350 | DUKHPROGN00MTSM2170 | DUKHPROGEN00MTSM2170 | DH | PRO | OA | MAT | 2SAT | MP | EC |
| DUKHPROGEN00MTSM2190 |  | Lights & Fixtures_2nd_Sub | 10d | 2013-06-29 | 2013-07-09 | DUKHPROGEN00MTAP1190 |  | 23d | 0d | MATERIAL ENGG [15 h] | 569,086 | MATSUB2360 | DUKHPROGN00MTSM2190 | DUKHPROGEN00MTSM2190 | DH | PRO | OA | MAT | 2SAT | MP | EC |
| DUKHPROGEN00MTSM2200 |  | Isolators_2nd_Sub | 10d | 2013-06-29 | 2013-07-09 | DUKHPROGEN00MTAP1200 |  | 44d | 0d | MATERIAL ENGG [15 h] | 80,384 | MATSUB2365 | DUKHPROGN00MTSM2200 | DUKHPROGEN00MTSM2200 | DH | PRO | OA | MAT | 2SAT | MP | EC |
| DUKHPROGEN00MTSM2210 |  | Fire Resistant Cables_2nd_Sub | 10d | 2013-06-29 | 2013-07-09 | DUKHPROGEN00MTAP1210 |  | 41d | 0d | MATERIAL ENGG [15 h] | 24,155 | MATSUB2385 | DUKHPROGN00MTSM2210 | DUKHPROGEN00MTSM2210 | DH | PRO | OA | MAT | 2SAT | MP | CM |
| DUKHPROGEN00MTSM2220 |  | Water Chiller_2nd_Sub | 10d | 2013-06-29 | 2013-07-09 | DUKHPROGEN00MTAP1220 |  | 1d | 0d | MATERIAL ENGG [15 h] | 12,227 | MATSUB2255 | DUKHPROGN00MTSM2220 | DUKHPROGEN00MTSM2220 | DH | PRO | OA | MAT | 2SAT | MP | PB |
| DUKHPROGEN00MTSM2230 |  | Water Heater_2nd_Sub | 10d | 2013-06-29 | 2013-07-09 | DUKHPROGEN00MTAP1230 |  | 10d | 0d | MATERIAL ENGG [15 h] | 22,205 | MATSUB2305 | DUKHPROGN00MTSM2230 | DUKHPROGEN00MTSM2230 | DH | PRO | OA | MAT | 2SAT | MP | PB |
| DUKHPROGEN00MTSM2240 |  | Split AC_2nd_Sub | 10d | 2013-06-29 | 2013-07-09 | DUKHPROGEN00MTAP1240 |  | 35d | 0d | MATERIAL ENGG [15 h] | 151,314 | MATSUB2330 | DUKHPROGN00MTSM2240 | DUKHPROGEN00MTSM2240 | DH | PRO | OA | MAT | 2SAT | MP | AC |
| DUKHPROGEN00MTSM2250 |  | Street Light Post Set_2nd_Sub | 10d | 2013-06-29 | 2013-07-09 | DUKHPROGEN00MTAP1250 |  | 76d | 0d | MATERIAL ENGG [15 h] | 362,650 | MATSUB2370 | DUKHPROGN00MTSM2250 | DUKHPROGEN00MTSM2250 | DH | PRO | OA | MAT | 2SAT | MP | IN |
| DUKHPROGEN00MTSM2260 |  | Smoke Detector_2nd_Sub | 10d | 2013-06-29 | 2013-07-09 | DUKHPROGEN00MTAP1260 |  | 41d | 0d | MATERIAL ENGG [15 h] | 60,400 | MATSUB2390 | DUKHPROGN00MTSM2260 | DUKHPROGEN00MTSM2260 | DH | PRO | OA | MAT | 2SAT | MP | CM |
| DUKHPROGEN00MTSM2270 |  | Video Com System_2nd_Sub | 10d | 2013-06-29 | 2013-07-09 | DUKHPROGEN00MTAP1270 |  | 21d | 0d | MATERIAL ENGG [15 h] | 53,941 | MATSUB2435 | DUKHPROGN00MTSM2270 | DUKHPROGEN00MTSM2270 | DH | PRO | OA | MAT | 2SAT | MP | TP |
| DUKHPROGEN00MTSM2280 |  | Telephone Fittings & Accessories_2nd_Sub | 10d | 2013-06-29 | 2013-07-09 | DUKHPROGEN00MTAP1280 |  | 21d | 0d | MATERIAL ENGG [15 h] | 9,518 | MATSUB2440 | DUKHPROGN00MTSM2280 | DUKHPROGEN00MTSM2280 | DH | PRO | OA | MAT | 2SAT | MP | TP |
| DUKHPROGEN00MTSM2290 |  | Television devices,Fittings & Access._2nd_Sub | 10d | 2013-06-29 | 2013-07-09 | DUKHPROGEN00MTAP1290 |  | 50d | 0d | MATERIAL ENGG [15 h] | 33,019 | MATSUB2450 | DUKHPROGN00MTSM2290 | DUKHPROGEN00MTSM2290 | DH | PRO | OA | MAT | 2SAT | MP | TP |
| DUKHPROGEN00MTSM2300 |  | Gypsum Board false ceiling_2nd_Sub | 10d | 2013-06-29 | 2013-07-09 | DUKHPROGEN00MTAP1300 |  | -19d | 0d | MATERIAL ENGG [15 h] | 105,945 | MATSUB2115 | DUKHPROGN00MTSM2300 | DUKHPROGEN00MTSM2300 | DH | PRO | OA | MAT | 2SAT | FI | FS |
| DUKHPROGEN00MTSM2310 |  | Aluminum Tile false ceiling_2nd_Sub | 10d | 2013-06-29 | 2013-07-09 | DUKHPROGEN00MTAP1310 |  | -4d | 0d | MATERIAL ENGG [15 h] | 8,330 | MATSUB2120 | DUKHPROGN00MTSM2310 | DUKHPROGEN00MTSM2310 | DH | PRO | OA | MAT | 2SAT | FI | FS |
| DUKHPROGEN00MTSM2320 |  | Paints_2nd_Sub | 10d | 2013-06-29 | 2013-07-09 | DUKHPROGEN00MTAP1320 |  | -31d | 0d | MATERIAL ENGG [15 h] | 173,601 | MATSUB2130 | DUKHPROGN00MTSM2320 | DUKHPROGEN00MTSM2320 | DH | PRO | OA | MAT | 2SAT | FI | PI |
| DUKHPROGEN00MTSM2330 |  | Booster Pump_2nd_Sub | 10d | 2013-06-29 | 2013-07-09 | DUKHPROGEN00MTAP1330 |  | 1d | 0d | MATERIAL ENGG [15 h] | 119,268 | MATSUB2260 | DUKHPROGN00MTSM2330 | DUKHPROGEN00MTSM2330 | DH | PRO | OA | MAT | 2SAT | MP | PB |
| DUKHPROGEN00MTSM2340 |  | Exhaust Air louver_2nd_Sub | 10d | 2013-06-29 | 2013-07-09 | DUKHPROGEN00MTAP1340 |  | 42d | 0d | MATERIAL ENGG [15 h] | 1,638 | MATSUB2335 | DUKHPROGN00MTSM2340 | DUKHPROGEN00MTSM2340 | DH | PRO | OA | MAT | 2SAT | MP | AC |
| DUKHPROGEN00MTSM2350 |  | Bollard Lamp_2nd_Sub | 10d | 2013-06-29 | 2013-07-09 | DUKHPROGEN00MTAP1350 |  | 76d | 0d | MATERIAL ENGG [15 h] | 19,087 | MATSUB2375 | DUKHPROGN00MTSM2350 | DUKHPROGEN00MTSM2350 | DH | PRO | OA | MAT | 2SAT | MP | IN |
| DUKHPROGEN00MTSM2360 |  | Digital Alarm Communicator Panel_2nd_Sub | 10d | 2013-06-29 | 2013-07-09 | DUKHPROGEN00MTAP1360 |  | 15d | 0d | MATERIAL ENGG [15 h] | 36,243 | MATSUB2395 | DUKHPROGN00MTSM2360 | DUKHPROGEN00MTSM2360 | DH | PRO | OA | MAT | 2SAT | MP | CM |
| DUKHPROGEN00MTSM2370 |  | Fire Blanket_2nd_Sub | 10d | 2013-06-29 | 2013-07-09 | DUKHPROGEN00MTAP1370 |  | 64d | 0d | MATERIAL ENGG [15 h] | 2,569 | MATSUB2405 | DUKHPROGN00MTSM2370 | DUKHPROGEN00MTSM2370 | DH | PRO | OA | MAT | 2SAT | MP | FG |
| DUKHPROGEN00MTSM2380 |  | Fire Extinguisher_2nd_Sub | 10d | 2013-06-29 | 2013-07-09 | DUKHPROGEN00MTAP1380 |  | 56d | 0d | MATERIAL ENGG [15 h] | 60,400 | MATSUB2410 | DUKHPROGN00MTSM2380 | DUKHPROGEN00MTSM2380 | DH | PRO | OA | MAT | 2SAT | MP | FG |
| DUKHPROGEN00MTSM2390 |  | GRC Panels_2nd_Sub | 10d | 2013-06-29 | 2013-07-09 | DUKHPROGEN00MTAP1390 |  | 23d | 0d | MATERIAL ENGG [15 h] | 3,581 | MATSUB2125 | DUKHPROGN00MTSM2390 | DUKHPROGEN00MTSM2390 | DH | PRO | OA | MAT | 2SAT | XW | WI |
| DUKHPROGEN00MTSM2400 |  | Access Ladder_2nd_Sub | 10d | 2013-06-29 | 2013-07-09 | DUKHPROGEN00MTAP1400 |  | 40d | 0d | MATERIAL ENGG [15 h] | 63,054 | MATSUB2210 | DUKHPROGN00MTSM2400 | DUKHPROGEN00MTSM2400 | DH | PRO | OA | MAT | 2SAT | XW | WI |
| DUKHPROGEN00MTSM2410 |  | Aluminum Slat Screen_2nd_Sub | 10d | 2013-06-29 | 2013-07-09 | DUKHPROGEN00MTAP1410 |  | 30d | 0d | MATERIAL ENGG [15 h] | 85,106 | MATSUB2235 | DUKHPROGN00MTSM2410 | DUKHPROGEN00MTSM2410 | DH | PRO | OA | MAT | 2SAT | XW | WI |
| DUKHPROGEN00MTSM2420 |  | Epoxy_2nd_Sub | 10d | 2013-06-29 | 2013-07-09 | DUKHPROGEN00MTAP1420 |  | 108d | 0d | MATERIAL ENGG [15 h] | 3,403 | MATSUB2135 | DUKHPROGN00MTSM2420 | DUKHPROGEN00MTSM2420 | DH | PRO | OA | MAT | 2SAT | FI | PI |
| DUKHPROGEN00MTSM2430 |  | Roller Shutter_2nd_Sub | 10d | 2013-06-29 | 2013-07-09 | DUKHPROGEN00MTAP1430 |  | 169d | 0d | MATERIAL ENGG [15 h] | 37,494 | MATSUB2140 | DUKHPROGN00MTSM2430 | DUKHPROGEN00MTSM2430 | DH | PRO | OA | MAT | 2SAT | XW | WI |

Notes:
- DUKHPROGEN00MTSM2040: Expenses: P03-Finishes 25715; P1A-Finishes 79057; P1B-Finishes 62646; P2A-Finishes 3194; P2B-Finishes 4791
- DUKHPROGEN00MTSM2090: Expenses: P03-Finishes 940; P1A-Finishes 19028; P1B-Finishes 12650; P2A-Finishes 1668; P2B-Finishes 2502
- DUKHPROGEN00MTSM2100: Expenses: P03-Finishes 3500; P1A-Finishes 66510; P1B-Finishes 82446; P2A-Finishes 17955; P2B-Finishes 26934
- DUKHPROGEN00MTSM2110: Expenses: P1A-Finishes 47453; P1B-Finishes 2472
- DUKHPROGEN00MTSM2120: Expenses: P03-Finishes 40410; P1A-Finishes 104472; P1B-Finishes 51350; P2A-Finishes 5856; P2B-Finishes 8094
- DUKHPROGEN00MTSM2130: Expenses: P03-Finishes 65360; P1A-Finishes 115504; P1B-Finishes 77726; P2A-Finishes 8890; P2B-Finishes 12906
- DUKHPROGEN00MTSM2080: Expenses: P03-Plumbing and Drainage works 68016; P1A-Plumbing and Drainage works 130824; P1B-Plumbing and Drainage works 74220; P2A-Plumbing and Drainage works 10812; P2B-Plumbing and Drainage works 16218
- DUKHPROGEN00MTSM2050: Expenses: P03-Roofing 10984; P1A-Roofing 14532; P1B-Roofing 8190; P2A-Roofing 1809; P2B-Roofing 2712
- DUKHPROGEN00MTSM2140: Expenses: P2A-Roofing 18468; P2B-Roofing 27702
- DUKHPROGEN00MTSM2520: Expenses: P03-External works within the Plot Curtilage 57750; P03-Plumbing and Drainage works 245800; P1A-Plumbing and Drainage works 66091; P1B-Plumbing and Drainage works 46430
- DUKHPROGEN00MTSM2530: Expenses: P03-Air-conditioning and Ventilation works 4775; P1A-Air-conditioning and Ventilation works 5956; P1B-Air-conditioning and Ventilation works 4228; P2A-Air-conditioning and Ventilation works 552; P2B-Air-conditioning and Ventilation works 828
- DUKHPROGEN00MTSM2540: Expenses: I03-Water supply system 3672; I1A-Water supply system 6340; I1B-Water supply system 3844; I2A-Water supply system 676; I2B-Water supply system 1306
- DUKHPROGEN00MTSM2630: Expenses: I03-Water supply system 284; I1A-Water supply system 284; I1B-Water supply system 284; I2A-Water supply system 284; I2B-Water supply system 284
- DUKHPROGEN00MTSM2660: Expenses: P1A-External works within the Plot Curtilage 4849; P1B-External works within the Plot Curtilage 9190; P2A-External works within the Plot Curtilage 1539; P2B-External works within the Plot Curtilage 2310
- DUKHPROGEN00MTSM2670: Expenses: I03-Water supply system 2194; I1A-Water supply system 2290; I1B-Water supply system 1220; I2A-Water supply system 224; I2B-Water supply system 338
- DUKHPROGEN00MTSM2640: Expenses: P03-External works within the Plot Curtilage 3610; P1A-Plumbing and Drainage works 4134; P1B-Plumbing and Drainage works 2900; P2A-Plumbing and Drainage works 2432; P2B-Plumbing and Drainage works 3648
- DUKHPROGEN00MTSM2650: Expenses: I03-Water supply system 991; I1A-Water supply system 1710; I1B-Water supply system 1036; I2A-Water supply system 182; I2B-Water supply system 352
- DUKHPROGEN00MTSM2700: Expenses: I03-Road work 23720; I1A-Road work 30735; I1B-Road work 23908; I2A-Road work 7866; I2B-Road work 11856
- DUKHPROGEN00MTSM2710: Expenses: I03-Road work 6686; I1A-Road work 31555; I1B-Road work 24300; I2A-Road work 28882; I2B-Road work 12050
- DUKHPROGEN00MTSM2720: Expenses: I03-Road work 352; I1A-Road work 1328; I1B-Road work 1280; I2A-Road work 1520; I2B-Road work 634
- DUKHPROGEN00MTSM2740: Expenses: I03-Hard and soft landscaping 2209; I1A-Hard and soft landscaping 7935; I1B-Hard and soft landscaping 7600; I2A-Hard and soft landscaping 4108; I2B-Hard and soft landscaping 11686
- DUKHPROGEN00MTSM2750: Expenses: I03-Hard and soft landscaping 191; I1A-Hard and soft landscaping 570; I1B-Hard and soft landscaping 428; I2A-Hard and soft landscaping 96; I2B-Hard and soft landscaping 142
- DUKHPROGEN00MTSM2150: Expenses: P03-Plumbing and Drainage works 50700; P1A-Plumbing and Drainage works 110806; P1B-Plumbing and Drainage works 73146; P2A-Plumbing and Drainage works 6532; P2B-Plumbing and Drainage works 9798
- DUKHPROGEN00MTSM2160: Expenses: P03-Air-conditioning and Ventilation works 5353; P1A-Air-conditioning and Ventilation works 11881; P1B-Air-conditioning and Ventilation works 6546; P2A-Air-conditioning and Ventilation works 659; P2B-Air-conditioning and Ventilation works 900
- DUKHPROGEN00MTSM2170: Expenses: P03-Electrical Installations 35565; P1A-Electrical Installations 39612; P1B-Electrical Installations 17870; P2A-Electrical Installations 5898; P2B-Electrical Installations 5946
- DUKHPROGEN00MTSM2190: Expenses: P03-Electrical Installations 98991; P1A-Electrical Installations 237891; P1B-Electrical Installations 190834; P2A-Electrical Installations 16548; P2B-Electrical Installations 24822
- DUKHPROGEN00MTSM2200: Expenses: P03-Electrical Installations 14785; P1A-Electrical Installations 36131; P1B-Electrical Installations 21478; P2A-Electrical Installations 3196; P2B-Electrical Installations 4794
- DUKHPROGEN00MTSM2210: Expenses: P03-Electrical Installations 4424; P1A-Electrical Installations 9618; P1B-Electrical Installations 8204; P2A-Electrical Installations 724; P2B-Electrical Installations 1185
- DUKHPROGEN00MTSM2220: Expenses: P03-Plumbing and Drainage works 1535; P1A-Plumbing and Drainage works 5568; P1B-Plumbing and Drainage works 3908; P2A-Plumbing and Drainage works 487; P2B-Plumbing and Drainage works 729
- DUKHPROGEN00MTSM2230: Expenses: P03-Plumbing and Drainage works 750; P1A-Plumbing and Drainage works 10529; P1B-Plumbing and Drainage works 8606; P2A-Plumbing and Drainage works 928; P2B-Plumbing and Drainage works 1392
- DUKHPROGEN00MTSM2240: Expenses: P03-Air-conditioning and Ventilation works 29530; P1A-Air-conditioning and Ventilation works 68045; P1B-Air-conditioning and Ventilation works 46998; P2A-Air-conditioning and Ventilation works 2697; P2B-Air-conditioning and Ventilation works 4044
- DUKHPROGEN00MTSM2250: Expenses: I03-Street lighting 73215; I1A-Street lighting 128725; I1B-Street lighting 100196; I2A-Street lighting 26514; I2B-Street lighting 34000
- DUKHPROGEN00MTSM2260: Expenses: P03-Electrical Installations 11070; P1A-Electrical Installations 24052; P1B-Electrical Installations 20508; P2A-Electrical Installations 1809; P2B-Electrical Installations 2961
- DUKHPROGEN00MTSM2270: Expenses: P03-Electrical Installations 8190; P1A-Electrical Installations 22589; P1B-Electrical Installations 16102; P2A-Electrical Installations 2824; P2B-Electrical Installations 4236
- DUKHPROGEN00MTSM2280: Expenses: P03-Electrical Installations 1446; P1A-Electrical Installations 3986; P1B-Electrical Installations 2840; P2A-Electrical Installations 499; P2B-Electrical Installations 747
- DUKHPROGEN00MTSM2290: Expenses: P03-Electrical Installations 5835; P1A-Electrical Installations 14440; P1B-Electrical Installations 8184; P2A-Electrical Installations 1824; P2B-Electrical Installations 2736
- DUKHPROGEN00MTSM2300: Expenses: P03-Finishes 23920; P1A-Finishes 46881; P1B-Finishes 28888; P2A-Finishes 2503; P2B-Finishes 3753
- DUKHPROGEN00MTSM2310: Expenses: P03-Finishes 3579; P1A-Finishes 2951; P1B-Finishes 1800
- DUKHPROGEN00MTSM2320: Expenses: I03-Hard and soft landscaping 93; I03-Telecommunication 169; I1A-Hard and soft landscaping 47; I1A-Telecommunication 169; I1B-Hard and soft landscaping 47; I1B-Telecommunication 169; P03-Painting and Decorating 35611; P1A-Painting and Decorating 70686; P1B-Painting and Decorating 57932; P2A-Painting and Decorating 3464; P2B-Painting and Decorating 5214
- DUKHPROGEN00MTSM2330: Expenses: P03-Plumbing and Drainage works 39941; P1A-Plumbing and Drainage works 37269; P1B-Plumbing and Drainage works 26248; P2A-Plumbing and Drainage works 6324; P2B-Plumbing and Drainage works 9486
- DUKHPROGEN00MTSM2340: Expenses: P03-Air-conditioning and Ventilation works 480; P1A-Air-conditioning and Ventilation works 592; P1B-Air-conditioning and Ventilation works 426; P2A-Air-conditioning and Ventilation works 56; P2B-Air-conditioning and Ventilation works 84
- DUKHPROGEN00MTSM2350: Expenses: I03-Street lighting 3854; I1A-Street lighting 6775; I1B-Street lighting 5272; I2A-Street lighting 1396; I2B-Street lighting 1790
- DUKHPROGEN00MTSM2360: Expenses: P03-Electrical Installations 6644; P1A-Electrical Installations 14434; P1B-Electrical Installations 12304; P2A-Electrical Installations 1085; P2B-Electrical Installations 1776
- DUKHPROGEN00MTSM2370: Expenses: P03-Electrical Installations 1582; P1A-Electrical Installations 658; P2A-Electrical Installations 329
- DUKHPROGEN00MTSM2380: Expenses: P03-Electrical Installations 11070; P1A-Electrical Installations 24052; P1B-Electrical Installations 20508; P2A-Electrical Installations 1809; P2B-Electrical Installations 2961
- DUKHPROGEN00MTSM2390: Expenses: P03-Finishes 3581
- DUKHPROGEN00MTSM2400: Expenses: P03-Metal work 6855; P1A-Metal work 35151; P1B-Metal work 16302; P2A-Metal work 2052; P2B-Metal work 2694
- DUKHPROGEN00MTSM2410: Expenses: P03-Metal work 19090; P1A-Metal work 41856; P1B-Metal work 24160
- DUKHPROGEN00MTSM2420: Expenses: I03-Water supply system 207; I1A-Water supply system 207; I1B-Water supply system 207; I2A-Water supply system 207; I2B-Water supply system 207; P03-Painting and Decorating 390; P1A-Painting and Decorating 990; P1B-Painting and Decorating 988
- DUKHPROGEN00MTSM2430: Expenses: P1A-External works within the Plot Curtilage 19666; P1B-External works within the Plot Curtilage 13318; P2A-External works within the Plot Curtilage 1804; P2B-External works within the Plot Curtilage 2706

| ID | Activity | Duration | Start | Finish | Predecessors | Total float | Free float | Resources | Cost | P3 ACTID | P6 ID (old) | NP61D | PROJECT | PHASES | PACKAGE | PART | ELEMENTS | STEP | FLOORS |
| --- | --- | --- | --- | --- | --- | --- | --- | --- | --- | --- | --- | --- | --- | --- | --- | --- | --- | --- | --- |
| DUKHPROGEN00MTSM2440 | PVC Doors_2nd_Sub | 10d | 2013-06-29 | 2013-07-09 | DUKHPROGEN00MTAP1440 | 46d | 0d | MATERIAL ENGG [15 h] | 14,011 | MATSUB2055 | DUKHPROGN00MTSM2440 | DUKHPROGEN00MTSM2440 | DH | PRO | OA | MAT | 2SAT | FI | DR |
| DUKHPROGEN00MTSM2450 | Ironmongeries_2nd_Sub | 10d | 2013-06-29 | 2013-07-09 | DUKHPROGEN00MTAP1450 | -20d | 0d | MATERIAL ENGG [15 h] | 39,294 | MATSUB2080 | DUKHPROGN00MTSM2450 | DUKHPROGEN00MTSM2450 | DH | PRO | OA | MAT | 2SAT | FI | DR |
| DUKHPROGEN00MTSM2460 | Aluminum Doors_2nd_Sub | 10d | 2013-06-29 | 2013-07-09 | DUKHPROGEN00MTAP1460 | 19d | 0d | MATERIAL ENGG [15 h] | 48,424 | MATSUB2085 | DUKHPROGN00MTSM2460 | DUKHPROGEN00MTSM2460 | DH | PRO | OA | MAT | 2SAT | FI | DR |
| DUKHPROGEN00MTSM2470 | Aluminum Windows_2nd_Sub | 10d | 2013-06-29 | 2013-07-09 | DUKHPROGEN00MTAP1470 | 25d | 0d | MATERIAL ENGG [15 h] | 81,195 | MATSUB2090 | DUKHPROGN00MTSM2470 | DUKHPROGEN00MTSM2470 | DH | PRO | OA | MAT | 2SAT | FI | DR |
| DUKHPROGEN00MTSM2480 | Granite_2nd_Sub | 10d | 2013-06-29 | 2013-07-09 | DUKHPROGEN00MTAP1480 | 0d |  | MATERIAL ENGG [15 h] | 151,971 | MATSUB2095 | DUKHPROGN00MTSM2480 | DUKHPROGEN00MTSM2480 | DH | PRO | OA | MAT | 2SAT | FI | FR |
| DUKHPROGEN00MTSM2490 | Wooden Doors_2nd_Sub | 10d | 2013-06-29 | 2013-07-09 | DUKHPROGEN00MTAP1490 | -20d | 0d | MATERIAL ENGG [15 h] | 157,191 | MATSUB2050 | DUKHPROGN00MTSM2490 | DUKHPROGEN00MTSM2490 | DH | PRO | OA | MAT | 2SAT | FI | DR |
| DUKHPROGEN00MTSM2500 | Steel Door_2nd_Sub | 10d | 2013-06-29 | 2013-07-09 | DUKHPROGEN00MTAP1500 | -10d | 0d | MATERIAL ENGG [15 h] | 4,125 | MATSUB2215 | DUKHPROGN00MTSM2500 | DUKHPROGEN00MTSM2500 | DH | PRO | OA | MAT | 2SAT | XW | WI |
| DUKHPROGEN00MTSM2510 | Stainless Steel Cover_2nd_Sub | 10d | 2013-06-29 | 2013-07-09 | DUKHPROGEN00MTAP1510 | -10d | 0d | MATERIAL ENGG [15 h] | 7,802 | MATSUB2240 | DUKHPROGN00MTSM2510 | DUKHPROGEN00MTSM2510 | DH | PRO | OA | MAT | 2SAT | XW | WI |
| DUKHPROGEN00MTSM2550 | Closets /wardrobe& Pelmets_2nd_Sub | 10d | 2013-06-29 | 2013-07-09 | DUKHPROGEN00MTAP1550 | 17d | 0d | MATERIAL ENGG [15 h] | 95,649 | MATSUB2060 | DUKHPROGN00MTSM2550 | DUKHPROGEN00MTSM2550 | DH | PRO | OA | MAT | 2SAT | FI | SP |
| DUKHPROGEN00MTSM2560 | Counters, Cabinets & Shelves_2nd_Sub | 10d | 2013-06-29 | 2013-07-09 | DUKHPROGEN00MTAP1560 | 17d | 0d | MATERIAL ENGG [15 h] | 155,423 | MATSUB2065 | DUKHPROGN00MTSM2560 | DUKHPROGEN00MTSM2560 | DH | PRO | OA | MAT | 2SAT | FI | SP |
| DUKHPROGEN00MTSM2570 | Wooden Hand Rails _2nd_Sub | 10d | 2013-06-29 | 2013-07-09 | DUKHPROGEN00MTAP1570 | 35d | 0d | MATERIAL ENGG [15 h] | 47,818 | MATSUB2070 | DUKHPROGN00MTSM2570 | DUKHPROGEN00MTSM2570 | DH | PRO | OA | MAT | 2SAT | FI | SP |
| DUKHPROGEN00MTSM2580 | Stainless Steel Handrail_2nd_Sub | 10d | 2013-06-29 | 2013-07-09 | DUKHPROGEN00MTSM2570 SS, DUKHPROGEN00MTAP1580 | 35d | 0d | MATERIAL ENGG [15 h] | 176,631 | MATSUB2220 | DUKHPROGN00MTSM2580 | DUKHPROGEN00MTSM2580 | DH | PRO | OA | MAT | 2SAT | FI | SP |
| DUKHPROGEN00MTSM2590 | Manhole Covers and Frames_2nd_Sub | 10d | 2013-06-29 | 2013-07-09 | DUKHPROGEN00MTAP1590 | 27d | 0d | MATERIAL ENGG [15 h] | 46,175 | MATSUB2205 | DUKHPROGN00MTSM2590 | DUKHPROGEN00MTSM2590 | DH | PRO | OA | MAT | 2SAT | XW | WI |
| DUKHPROGEN00MTSM2600 | kerb works_2nd_Sub | 10d | 2013-06-29 | 2013-07-09 | DUKHPROGEN00MTAP1600 | 49d | 0d | MATERIAL ENGG [15 h] | 9,813 | MATSUB2160 | DUKHPROGN00MTSM2600 | DUKHPROGEN00MTSM2600 | DH | PRO | OA | MAT | 2SAT | XW | IN |
| DUKHPROGEN00MTSM2610 | PVC Tent_2nd_Sub | 10d | 2013-06-29 | 2013-07-09 | DUKHPROGEN00MTAP1610 | -4d | 0d | MATERIAL ENGG [15 h] | 23,014 | MATSUB2245 | DUKHPROGN00MTSM2610 | DUKHPROGEN00MTSM2610 | DH | PRO | OA | MAT | 2SAT | XW | WI |
| DUKHPROGEN00MTSM2620 | Structural Steel_2nd_Sub | 10d | 2013-06-29 | 2013-07-09 | DUKHPROGEN00MTAP1620 | -6d | 0d | MATERIAL ENGG [15 h] | 3,421 | MATSUB2250 | DUKHPROGN00MTSM2620 | DUKHPROGEN00MTSM2620 | DH | PRO | OA | MAT | 2SAT | XW | WI |
| DUKHPROGEN00MTSM2730 | Car Parking Shed_2nd_Sub | 10d | 2013-06-30 | 2013-07-10 | DUKHPROGEN00MTAP1730 | 127d | 0d | MATERIAL ENGG [15 h] | 105,433 | MATSUB2170 | DUKHPROGN00MTSM2730 | DUKHPROGEN00MTSM2730 | DH | PRO | OA | MAT | 2SAT | XW | IN |
| DUKHPROGEN00MTSM2760 | Sprinklers_2nd_Sub | 10d | 2013-06-30 | 2013-07-10 | DUKHPROGEN00MTAP1760 | 138d | 0d | MATERIAL ENGG [15 h] | 6,266 | MATSUB2465 | DUKHPROGN00MTSM2760 | DUKHPROGEN00MTSM2760 | DH | PRO | OA | MAT | 2SAT | MP | IR |
| DUKHPROGEN00MTSM2680 | Water Tank_2nd_Sub | 10d | 2013-07-06 | 2013-07-16 | DUKHPROGEN00MTAP1680 | 46d | 0d | MATERIAL ENGG [15 h] | 12,227 | MATSUB2275 | DUKHPROGN00MTSM2680 | DUKHPROGEN00MTSM2680 | DH | PRO | OA | MAT | 2SAT | MP | PB |
| DUKHPROGEN00MTSM2690 | Fire Hydrant_2nd_Sub | 10d | 2013-07-06 | 2013-07-16 | DUKHPROGEN00MTAP1690 | 20d | 0d | MATERIAL ENGG [15 h] | 3,483 | MATSUB2425 | DUKHPROGN00MTSM2690 | DUKHPROGEN00MTSM2690 | DH | PRO | OA | MAT | 2SAT | MP | FG |
| DUKHPROGEN00MTSM2780 | Gazebo Structure_2nd_Sub | 10d | 2013-07-13 | 2013-07-23 | DUKHPROGEN00MTAP1780 | 71d | 0d | MATERIAL ENGG [15 h] | 21,378 | MATSUB2075 | DUKHPROGN00MTSM2780 | DUKHPROGEN00MTSM2780 | DH | PRO | OA | MAT | 2SAT | XW | IN |
| DUKHPROGEN00MTSM2790 | Plantation(Grass,Trees)_2nd_Sub | 10d | 2013-07-13 | 2013-07-23 | DUKHPROGEN00MTAP1790 | 26d | 0d | MATERIAL ENGG [15 h] | 249,398 | MATSUB2185 | DUKHPROGN00MTSM2790 | DUKHPROGEN00MTSM2790 | DH | PRO | OA | MAT | 2SAT | XW | IN |
| DUKHPROGEN00MTSM2800 | Steel Gate & Barrier gates_2nd_Sub | 10d | 2013-07-17 | 2013-07-28 | DUKHPROGEN00MTAP1800 | 63d | 0d | MATERIAL ENGG [15 h] | 5,704 | MATSUB2195 | DUKHPROGN00MTSM2800 | DUKHPROGEN00MTSM2800 | DH | PRO | OA | MAT | 2SAT | XW | IN |
| DUKHPROGEN00MTSM2810 | Nozzle Jet_2nd_Sub | 10d | 2013-07-17 | 2013-07-28 | DUKHPROGEN00MTAP1810 | 97d | 0d | MATERIAL ENGG [15 h] | 2,101 | MATSUB2470 | DUKHPROGN00MTSM2810 | DUKHPROGEN00MTSM2810 | DH | PRO | OA | MAT | 2SAT | MP | IR |
| DUKHPROGEN00MTSM2820 | Pre-cast Boundary Wall _2nd_Sub | 10d | 2013-07-17 | 2013-07-28 | DUKHPROGEN00MTAP1820 | 40d | 0d | MATERIAL ENGG [15 h] | 364,067 | MATSUB2190 | DUKHPROGN00MTSM2820 | DUKHPROGEN00MTSM2820 | DH | PRO | OA | MAT | 2SAT | XW | IN |
| DUKHPROGEN00MTSM2770 | Kitchen Water Filter_2nd_Sub | 10d | 2013-07-23 | 2013-08-03 | DUKHPROGEN00MTAP1770 | 14d | 0d | MATERIAL ENGG [15 h] | 1,880 | MATSUB2280 | DUKHPROGN00MTSM2770 | DUKHPROGEN00MTSM2770 | DH | PRO | OA | MAT | 2SAT | MP | PB |
| DUKHPROGEN00MTSM2830 | Solenoid Values_2nd_Sub | 10d | 2013-08-04 | 2013-08-18 | DUKHPROGEN00MTAP1830 | 82d | 0d | MATERIAL ENGG [15 h] | 3,975 | MATSUB2475 | DUKHPROGN00MTSM2830 | DUKHPROGEN00MTSM2830 | DH | PRO | OA | MAT | 2SAT | MP | IR |
| DUKHPROGEN00MTSM2850 | Fences_2nd_Sub | 10d | 2013-08-04 | 2013-08-18 | DUKHPROGEN00MTAP1850 | 126d | 0d | MATERIAL ENGG [15 h] | 4,550 | MATSUB2495 | DUKHPROGN00MTSM2850 | DUKHPROGEN00MTSM2850 | DH | PRO | OA | MAT | 2SAT | XW | IN |
| DUKHPROGEN00MTSM2840 | Gate Values_2nd_Sub | 10d | 2013-08-25 | 2013-09-04 | DUKHPROGEN00MTAP1840 | 67d | 0d | MATERIAL ENGG [15 h] | 698 | MATSUB2480 | DUKHPROGN00MTSM2840 | DUKHPROGEN00MTSM2840 | DH | PRO | OA | MAT | 2SAT | MP | IR |
| DUKHPROGEN00MTSM2860 | Remote Control Value_2nd_Sub | 10d | 2013-09-11 | 2013-09-22 | DUKHPROGEN00MTAP1860 | 52d | 0d | MATERIAL ENGG [15 h] | 5,376 | MATSUB2485 | DUKHPROGN00MTSM2860 | DUKHPROGEN00MTSM2860 | DH | PRO | OA | MAT | 2SAT | MP | IR |
| DUKHPROGEN00MTSM2870 | Irrigation Controller_2nd_Sub | 10d | 2013-09-29 | 2013-10-09 | DUKHPROGEN00MTAP1870 | 37d | 0d | MATERIAL ENGG [15 h] | 7,482 | MATSUB2490 | DUKHPROGN00MTSM2870 | DUKHPROGEN00MTSM2870 | DH | PRO | OA | MAT | 2SAT | MP | IR |

Notes:
- DUKHPROGEN00MTSM2440: Expenses: P1A-Carpentry and Joinery 5541; P1B-Carpentry and Joinery 8470
- DUKHPROGEN00MTSM2450: Expenses: P03-Carpentry and Joinery 16839; P1A-Carpentry and Joinery 11747; P1B-Carpentry and Joinery 6008; P2A-Carpentry and Joinery 1874; P2B-Carpentry and Joinery 2826
- DUKHPROGEN00MTSM2460: Expenses: P03-Metal work 5036; P1A-Metal work 32494; P1B-Metal work 10894
- DUKHPROGEN00MTSM2470: Expenses: P03-Metal work 21060; P1A-Metal work 35484; P1B-Metal work 18942; P2A-Metal work 2283; P2B-Metal work 3426
- DUKHPROGEN00MTSM2480: Expenses: P03-Finishes 17465; P1A-Finishes 75861; P1B-Finishes 54830; P2A-Finishes 1526; P2B-Finishes 2289
- DUKHPROGEN00MTSM2490: Expenses: P03-Carpentry and Joinery 67365; P1A-Carpentry and Joinery 46990; P1B-Carpentry and Joinery 24036; P2A-Carpentry and Joinery 7493; P2B-Carpentry and Joinery 11307
- DUKHPROGEN00MTSM2500: Expenses: P2A-Metal work 1650; P2B-Metal work 2475
- DUKHPROGEN00MTSM2510: Expenses: P03-External works within the Plot Curtilage 2772; P2A-External works within the Plot Curtilage 2012; P2B-External works within the Plot Curtilage 3018
- DUKHPROGEN00MTSM2550: Expenses: P03-Carpentry and Joinery 17160; P1A-Carpentry and Joinery 42672; P1B-Carpentry and Joinery 29912; P2A-Carpentry and Joinery 2362; P2B-Carpentry and Joinery 3543
- DUKHPROGEN00MTSM2560: Expenses: P03-Carpentry and Joinery 27880; P1A-Carpentry and Joinery 69346; P1B-Carpentry and Joinery 48602; P2A-Carpentry and Joinery 3838; P2B-Carpentry and Joinery 5757
- DUKHPROGEN00MTSM2570: Expenses: P03-Carpentry and Joinery 8580; P1A-Carpentry and Joinery 21332; P1B-Carpentry and Joinery 14956; P2A-Carpentry and Joinery 1180; P2B-Carpentry and Joinery 1770
- DUKHPROGEN00MTSM2580: Expenses: I03-Water supply system 615; I1A-Water supply system 615; I1B-Water supply system 615; I2A-Water supply system 615; I2B-Water supply system 615; P03-External works within the Plot Curtilage 5090; P03-Metal work 2892; P1A-External works within the Plot Curtilage 25105; P1A-Metal work 95487; P1B-External works within the Plot Curtilage 24700; P1B-Metal work 13158; P2A-External works within the Plot Curtilage 2849; P2B-External works within the Plot Curtilage 4275
- DUKHPROGEN00MTSM2590: Expenses: I03-Surface Water drainage and Sewerage system 7177; I1A-Surface Water drainage and Sewerage system 6490; I1B-Surface Water drainage and Sewerage system 4256; I2A-Surface Water drainage and Sewerage system 768; I2B-Surface Water drainage and Sewerage system 710; P03-External works within the Plot Curtilage 1135; P1A-External works within the Plot Curtilage 17317; P1B-External works within the Plot Curtilage 6024; P2A-External works within the Plot Curtilage 936; P2B-External works within the Plot Curtilage 1362
- DUKHPROGEN00MTSM2600: Expenses: P1A-External works within the Plot Curtilage 4097; P1B-External works within the Plot Curtilage 2718; P2A-External works within the Plot Curtilage 1144; P2B-External works within the Plot Curtilage 1854
- DUKHPROGEN00MTSM2610: Expenses: P1A-External works within the Plot Curtilage 13516; P1B-External works within the Plot Curtilage 9498
- DUKHPROGEN00MTSM2620: Expenses: P03-External works within the Plot Curtilage 308; P1A-External works within the Plot Curtilage 1499; P1B-External works within the Plot Curtilage 1054; P2A-External works within the Plot Curtilage 224; P2B-External works within the Plot Curtilage 336
- DUKHPROGEN00MTSM2730: Expenses: I03-Road work 27709; I1A-Road work 34470; I1B-Road work 22128; I2A-Road work 6220; I2B-Road work 14906
- DUKHPROGEN00MTSM2760: Expenses: I03-Water supply system 2194; I1A-Water supply system 2290; I1B-Water supply system 1220; I2A-Water supply system 224; I2B-Water supply system 338
- DUKHPROGEN00MTSM2680: Expenses: P03-Plumbing and Drainage works 1535; P1A-Plumbing and Drainage works 5568; P1B-Plumbing and Drainage works 3908; P2A-Plumbing and Drainage works 487; P2B-Plumbing and Drainage works 729
- DUKHPROGEN00MTSM2690: Expenses: I03-Water supply system 808; I1A-Water supply system 1395; I1B-Water supply system 844; I2A-Water supply system 148; I2B-Water supply system 288
- DUKHPROGEN00MTSM2780: Expenses: I03-Hard and soft landscaping 3563; I1A-Hard and soft landscaping 7126; I1B-Hard and soft landscaping 3563; I2A-Hard and soft landscaping 3563; I2B-Hard and soft landscaping 3563
- DUKHPROGEN00MTSM2790: Expenses: I03-Hard and soft landscaping 115009; I1A-Hard and soft landscaping 46995; I1B-Hard and soft landscaping 47176; I2A-Hard and soft landscaping 12794; I2B-Hard and soft landscaping 27424
- DUKHPROGEN00MTSM2800: Expenses: I03-Hard and soft landscaping 1426; I1A-Hard and soft landscaping 2140; I1B-Hard and soft landscaping 1628; I2A-Hard and soft landscaping 306; I2B-Hard and soft landscaping 204
- DUKHPROGEN00MTSM2810: Expenses: I03-Water supply system 594; I1A-Water supply system 465; I1B-Water supply system 432; I2A-Water supply system 278; I2B-Water supply system 332
- DUKHPROGEN00MTSM2820: Expenses: I03-Hard and soft landscaping 41912; I1A-Hard and soft landscaping 154955; I1B-Hard and soft landscaping 87896; I2A-Hard and soft landscaping 31350; I2B-Hard and soft landscaping 47954
- DUKHPROGEN00MTSM2770: Expenses: P03-Plumbing and Drainage works 380; P1A-Plumbing and Drainage works 832; P1B-Plumbing and Drainage works 548; P2A-Plumbing and Drainage works 48; P2B-Plumbing and Drainage works 72
- DUKHPROGEN00MTSM2830: Expenses: I03-Water supply system 1123; I1A-Water supply system 880; I1B-Water supply system 820; I2A-Water supply system 524; I2B-Water supply system 628
- DUKHPROGEN00MTSM2850: Expenses: I03-Water supply system 910; I1A-Water supply system 910; I1B-Water supply system 910; I2A-Water supply system 910; I2B-Water supply system 910
- DUKHPROGEN00MTSM2840: Expenses: I03-Water supply system 197; I1A-Water supply system 155; I1B-Water supply system 144; I2A-Water supply system 92; I2B-Water supply system 110
- DUKHPROGEN00MTSM2860: Expenses: I03-Water supply system 1520; I1A-Water supply system 1190; I1B-Water supply system 1108; I2A-Water supply system 708; I2B-Water supply system 850
- DUKHPROGEN00MTSM2870: Expenses: I03-Water supply system 2115; I1A-Water supply system 1655; I1B-Water supply system 1544; I2A-Water supply system 986; I2B-Water supply system 1182

| ID | WBS | Activity | Duration | Start | Finish | Predecessors | Complete | Remaining | Planned start | Planned finish | Total float | Free float | Expected finish | P3 ACTID | P6 ID (old) | NP61D | PROJECT | PHASES | PACKAGE | PART | ELEMENTS | STEP | FLOORS |
| --- | --- | --- | --- | --- | --- | --- | --- | --- | --- | --- | --- | --- | --- | --- | --- | --- | --- | --- | --- | --- | --- | --- | --- |
|  | 25 | **2ND APPROVAL OF MATERIAL** |  | 2013-02-10 | 2013-11-16 |  |  |  |  |  |  |  |  |  |  |  |  |  |  |  |  |  |  |
| DUKHPROGEN00MTAP2040 |  | Plastering & Accessories_2nd_App | 30d | 2013-02-10 A | 2013-03-17 A | DUKHPROGEN00MTSM2040 | 100% |  |  |  |  |  |  | MATAPP2035 | DUKHPROGN00MTAP2040 | DUKHPROGEN00MTAP2040 | DH | PRO | OA | MAT | 2MAT | FI | GL |
| DUKHPROGEN00MTAP2090 |  | Cobble stone finish _2nd_App | 24d | 2013-03-02 A | 2013-03-28 A | DUKHPROGEN00MTSM2090 | 100% |  |  |  |  |  |  | MATAPP2100 | DUKHPROGN00MTAP2090 | DUKHPROGEN00MTAP2090 | DH | PRO | OA | MAT | 2MAT | FI | FR |
| DUKHPROGEN00MTAP2100 |  | Slate Tile_2nd_App | 24d | 2013-03-02 A | 2013-03-28 A | DUKHPROGEN00MTSM2100 | 100% |  |  |  |  |  |  | MATAPP2105 | DUKHPROGN00MTAP2100 | DUKHPROGEN00MTAP2100 | DH | PRO | OA | MAT | 2MAT | FI | FR |
| DUKHPROGEN00MTAP2110 |  | Stone Cladding_2nd_App | 29d | 2013-03-02 A | 2013-03-29 A | DUKHPROGEN00MTSM2110 | 100% |  | 2013-03-02 | 2013-04-03 |  |  |  | MATAPP2110 | DUKHPROGN00MTAP2110 | DUKHPROGEN00MTAP2110 | DH | PRO | OA | MAT | 2MAT | FI | FR |
| DUKHPROGEN00MTAP2120 |  | Ceramic Tile_2nd_App | 24d | 2013-03-02 A | 2013-03-28 A | DUKHPROGEN00MTSM2120 | 100% |  |  |  |  |  |  | MATAPP2225 | DUKHPROGN00MTAP2120 | DUKHPROGEN00MTAP2120 | DH | PRO | OA | MAT | 2MAT | FI | FR |
| DUKHPROGEN00MTAP2130 |  | Porcelain Tile_2nd_App | 24d | 2013-03-02 A | 2013-03-28 A | DUKHPROGEN00MTSM2130 | 100% |  |  |  |  |  |  | MATAPP2230 | DUKHPROGN00MTAP2130 | DUKHPROGEN00MTAP2130 | DH | PRO | OA | MAT | 2MAT | FI | FR |
| DUKHPROGEN00MTAP2080 |  | Polyethylene Pipes_2nd_App | 30d | 2013-03-04 A | 2013-04-07 A | DUKHPROGEN00MTSM2080 | 100% |  |  |  |  |  |  | MATAPP2310 | DUKHPROGN00MTAP2080 | DUKHPROGEN00MTAP2080 | DH | PRO | OA | MAT | 2MAT | MP | PB |
| DUKHPROGEN00MTAP2050 |  | Thermal Insulation_2nd_App | 30d | 2013-03-23 A | 2013-04-25 A | DUKHPROGEN00MTSM2050 | 100% |  |  |  |  |  |  | MATAPP2040 | DUKHPROGN00MTAP2050 | DUKHPROGEN00MTAP2050 | DH | PRO | OA | MAT | 2MAT | TS |  |
| DUKHPROGEN00MTAP2140 |  | Pitch roofing_2nd_App | 30d | 2013-04-09 A | 2013-05-13 | DUKHPROGEN00MTSM2140 | 50% | 15d |  |  | 75d | 0d | 2013-05-13 | MATAPP2045 | DUKHPROGN00MTAP2140 | DUKHPROGEN00MTAP2140 | DH | PRO | OA | MAT | 2MAT | TS |  |
| DUKHPROGEN00MTAP2520 |  | Lift Pump_2nd_App | 30d | 2013-06-12 | 2013-07-16 | DUKHPROGEN00MTSM2520 |  |  |  |  | 25d | 0d |  | MATAPP2265 | DUKHPROGN00MTAP2520 | DUKHPROGEN00MTAP2520 | DH | PRO | OA | MAT | 2MAT | MP | PB |
| DUKHPROGEN00MTAP2530 |  | Exhaust Fan_2nd_App | 30d | 2013-06-12 | 2013-07-16 | DUKHPROGEN00MTSM2530 |  |  |  |  | 66d | 0d |  | MATAPP2340 | DUKHPROGN00MTAP2530 | DUKHPROGEN00MTAP2530 | DH | PRO | OA | MAT | 2MAT | MP | AC |
| DUKHPROGEN00MTAP2540 |  | Ductile Iron Pipes_2nd_App | 30d | 2013-06-12 | 2013-07-16 | DUKHPROGEN00MTSM2540 |  |  |  |  | 10d | 0d |  | MATAPP2415 | DUKHPROGN00MTAP2540 | DUKHPROGEN00MTAP2540 | DH | PRO | OA | MAT | 2MAT | MP | FG |
| DUKHPROGEN00MTAP2630 |  | Steel Ladder_2nd_App | 30d | 2013-06-18 | 2013-07-22 | DUKHPROGEN00MTSM2630 |  |  |  |  | 36d | 0d |  | MATAPP2200 | DUKHPROGN00MTAP2630 | DUKHPROGEN00MTAP2630 | DH | PRO | OA | MAT | 2MAT | XW | WI |
| DUKHPROGEN00MTAP2660 |  | Interlock works_2nd_App | 30d | 2013-06-24 | 2013-07-28 | DUKHPROGEN00MTSM2660 |  |  |  |  | 85d | 0d |  | MATAPP2165 | DUKHPROGN00MTAP2660 | DUKHPROGEN00MTAP2660 | DH | PRO | OA | MAT | 2MAT | XW | IN |
| DUKHPROGEN00MTAP2670 |  | Irrigation Pipes_2nd_App | 30d | 2013-06-24 | 2013-07-28 | DUKHPROGEN00MTSM2670 |  |  |  |  | 76d | 0d |  | MATAPP2460 | DUKHPROGN00MTAP2670 | DUKHPROGEN00MTAP2670 | DH | PRO | OA | MAT | 2MAT | MP | IR |
| DUKHPROGEN00MTAP2640 |  | Water meter_2nd_App | 30d | 2013-06-30 | 2013-08-03 | DUKHPROGEN00MTSM2640 |  |  |  |  | 61d | 0d |  | MATAPP2270 | DUKHPROGN00MTAP2640 | DUKHPROGEN00MTAP2640 | DH | PRO | OA | MAT | 2MAT | MP | PB |
| DUKHPROGEN00MTAP2650 |  | Isolating Values_2nd_App | 30d | 2013-06-30 | 2013-08-03 | DUKHPROGEN00MTSM2650 |  |  |  |  | 9d | 0d |  | MATAPP2420 | DUKHPROGN00MTAP2650 | DUKHPROGEN00MTAP2650 | DH | PRO | OA | MAT | 2MAT | MP | FG |
| DUKHPROGEN00MTAP2700 |  | Road Works Materials_2nd_App | 30d | 2013-07-07 | 2013-08-13 | DUKHPROGEN00MTSM2700 |  |  |  |  | 193d | 0d |  | MATAPP2145 | DUKHPROGN00MTAP2700 | DUKHPROGEN00MTAP2700 | DH | PRO | OA | MAT | 2MAT | XW | IN |
| DUKHPROGEN00MTAP2710 |  | External signage _2nd_App | 30d | 2013-07-07 | 2013-08-13 | DUKHPROGEN00MTSM2710 |  |  |  |  | 176d | 0d |  | MATAPP2150 | DUKHPROGN00MTAP2710 | DUKHPROGEN00MTAP2710 | DH | PRO | OA | MAT | 2MAT | XW | IN |
| DUKHPROGEN00MTAP2720 |  | Road Marking_2nd_App | 30d | 2013-07-07 | 2013-08-13 | DUKHPROGEN00MTSM2720 |  |  |  |  | 176d | 0d |  | MATAPP2155 | DUKHPROGN00MTAP2720 | DUKHPROGEN00MTAP2720 | DH | PRO | OA | MAT | 2MAT | XW | IN |
| DUKHPROGEN00MTAP2740 |  | Stone Boulders_2nd_App | 30d | 2013-07-07 | 2013-08-13 | DUKHPROGEN00MTSM2740 |  |  |  |  | 131d | 0d |  | MATAPP2175 | DUKHPROGN00MTAP2740 | DUKHPROGEN00MTAP2740 | DH | PRO | OA | MAT | 2MAT | XW | IN |
| DUKHPROGEN00MTAP2750 |  | Speed Humps _2nd_App | 30d | 2013-07-07 | 2013-08-13 | DUKHPROGEN00MTSM2750 |  |  |  |  | 130d | 0d |  | MATAPP2180 | DUKHPROGN00MTAP2750 | DUKHPROGEN00MTAP2750 | DH | PRO | OA | MAT | 2MAT | XW | IN |
| DUKHPROGEN00MTAP2150 |  | Sanitary Fittings_2nd_App | 30d | 2013-07-10 | 2013-08-17 | DUKHPROGEN00MTSM2150 |  |  |  |  | -13d | 0d |  | MATAPP2300 | DUKHPROGN00MTAP2150 | DUKHPROGEN00MTAP2150 | DH | PRO | OA | MAT | 2MAT | MP | PB |
| DUKHPROGEN00MTAP2160 |  | Copper Pipes_2nd_App | 30d | 2013-07-10 | 2013-08-17 | DUKHPROGEN00MTSM2160 |  |  |  |  | -10d | 0d |  | MATAPP2325 | DUKHPROGN00MTAP2160 | DUKHPROGEN00MTAP2160 | DH | PRO | OA | MAT | 2MAT | MP | AC |
| DUKHPROGEN00MTAP2170 |  | SMDB_2nd_App | 30d | 2013-07-10 | 2013-08-17 | DUKHPROGEN00MTSM2170 |  |  |  |  | 11d | 0d |  | MATAPP2350 | DUKHPROGN00MTAP2170 | DUKHPROGEN00MTAP2170 | DH | PRO | OA | MAT | 2MAT | MP | EC |
| DUKHPROGEN00MTAP2190 |  | Lights & Fixtures_2nd_App | 30d | 2013-07-10 | 2013-08-17 | DUKHPROGEN00MTSM2190 |  |  |  |  | 23d | 0d |  | MATAPP2360 | DUKHPROGN00MTAP2190 | DUKHPROGEN00MTAP2190 | DH | PRO | OA | MAT | 2MAT | MP | EC |
| DUKHPROGEN00MTAP2200 |  | Isolators_2nd_App | 30d | 2013-07-10 | 2013-08-17 | DUKHPROGEN00MTSM2200 |  |  |  |  | 44d | 0d |  | MATAPP2365 | DUKHPROGN00MTAP2200 | DUKHPROGEN00MTAP2200 | DH | PRO | OA | MAT | 2MAT | MP | EC |
| DUKHPROGEN00MTAP2210 |  | Fire Resistant Cables_2nd_App | 30d | 2013-07-10 | 2013-08-17 | DUKHPROGEN00MTSM2210 |  |  |  |  | 41d | 0d |  | MATAPP2385 | DUKHPROGN00MTAP2210 | DUKHPROGEN00MTAP2210 | DH | PRO | OA | MAT | 2MAT | MP | CM |
| DUKHPROGEN00MTAP2220 |  | Water Chiller_2nd_App | 30d | 2013-07-10 | 2013-08-17 | DUKHPROGEN00MTSM2220 |  |  |  |  | 1d | 0d |  | MATAPP2255 | DUKHPROGN00MTAP2220 | DUKHPROGEN00MTAP2220 | DH | PRO | OA | MAT | 2MAT | MP | PB |
| DUKHPROGEN00MTAP2230 |  | Water Heater_2nd_App | 30d | 2013-07-10 | 2013-08-17 | DUKHPROGEN00MTSM2230 |  |  |  |  | 10d | 0d |  | MATAPP2305 | DUKHPROGN00MTAP2230 | DUKHPROGEN00MTAP2230 | DH | PRO | OA | MAT | 2MAT | MP | PB |
| DUKHPROGEN00MTAP2240 |  | Split AC_2nd_App | 30d | 2013-07-10 | 2013-08-17 | DUKHPROGEN00MTSM2240 |  |  |  |  | 35d | 0d |  | MATAPP2330 | DUKHPROGN00MTAP2240 | DUKHPROGEN00MTAP2240 | DH | PRO | OA | MAT | 2MAT | MP | AC |
| DUKHPROGEN00MTAP2250 |  | Street Light Post Set_2nd_App | 30d | 2013-07-10 | 2013-08-17 | DUKHPROGEN00MTSM2250 |  |  |  |  | 76d | 11d |  | MATAPP2370 | DUKHPROGN00MTAP2250 | DUKHPROGEN00MTAP2250 | DH | PRO | OA | MAT | 2MAT | MP | IN |
| DUKHPROGEN00MTAP2260 |  | Smoke Detector_2nd_App | 30d | 2013-07-10 | 2013-08-17 | DUKHPROGEN00MTSM2260 |  |  |  |  | 41d | 0d |  | MATAPP2390 | DUKHPROGN00MTAP2260 | DUKHPROGEN00MTAP2260 | DH | PRO | OA | MAT | 2MAT | MP | CM |
| DUKHPROGEN00MTAP2270 |  | Video Com System_2nd_App | 30d | 2013-07-10 | 2013-08-17 | DUKHPROGEN00MTSM2270 |  |  |  |  | 21d | 0d |  | MATAPP2435 | DUKHPROGN00MTAP2270 | DUKHPROGEN00MTAP2270 | DH | PRO | OA | MAT | 2MAT | MP | TP |
| DUKHPROGEN00MTAP2280 |  | Telephone Fittings & Accessories_2nd_App | 30d | 2013-07-10 | 2013-08-17 | DUKHPROGEN00MTSM2280 |  |  |  |  | 21d | 0d |  | MATAPP2440 | DUKHPROGN00MTAP2280 | DUKHPROGEN00MTAP2280 | DH | PRO | OA | MAT | 2MAT | MP | TP |
| DUKHPROGEN00MTAP2290 |  | Television devices,Fittings & Access._2nd_App | 30d | 2013-07-10 | 2013-08-17 | DUKHPROGEN00MTSM2290 |  |  |  |  | 50d | 0d |  | MATAPP2450 | DUKHPROGN00MTAP2290 | DUKHPROGEN00MTAP2290 | DH | PRO | OA | MAT | 2MAT | MP | TP |
| DUKHPROGEN00MTAP2300 |  | Gypsum Board false ceiling_2nd_App | 30d | 2013-07-10 | 2013-08-17 | DUKHPROGEN00MTSM2300 |  |  |  |  | -19d | 0d |  | MATAPP2115 | DUKHPROGN00MTAP2300 | DUKHPROGEN00MTAP2300 | DH | PRO | OA | MAT | 2MAT | FI | FS |
| DUKHPROGEN00MTAP2310 |  | Aluminum Tile false ceiling_2nd_App | 30d | 2013-07-10 | 2013-08-17 | DUKHPROGEN00MTSM2310 |  |  |  |  | -4d | 0d |  | MATAPP2120 | DUKHPROGN00MTAP2310 | DUKHPROGEN00MTAP2310 | DH | PRO | OA | MAT | 2MAT | FI | FS |
| DUKHPROGEN00MTAP2320 |  | Paints_2nd_App | 30d | 2013-07-10 | 2013-08-17 | DUKHPROGEN00MTSM2320 |  |  |  |  | -31d | 0d |  | MATAPP2130 | DUKHPROGN00MTAP2320 | DUKHPROGEN00MTAP2320 | DH | PRO | OA | MAT | 2MAT | FI | PI |
| DUKHPROGEN00MTAP2330 |  | Booster Pump_2nd_App | 30d | 2013-07-10 | 2013-08-17 | DUKHPROGEN00MTSM2330 |  |  |  |  | 1d | 0d |  | MATAPP2260 | DUKHPROGN00MTAP2330 | DUKHPROGEN00MTAP2330 | DH | PRO | OA | MAT | 2MAT | MP | PB |
| DUKHPROGEN00MTAP2340 |  | Exhaust Air louver_2nd_App | 30d | 2013-07-10 | 2013-08-17 | DUKHPROGEN00MTSM2340 |  |  |  |  | 42d | 0d |  | MATAPP2335 | DUKHPROGN00MTAP2340 | DUKHPROGEN00MTAP2340 | DH | PRO | OA | MAT | 2MAT | MP | AC |
| DUKHPROGEN00MTAP2350 |  | Bollard Lamp_2nd_App | 30d | 2013-07-10 | 2013-08-17 | DUKHPROGEN00MTSM2350 |  |  |  |  | 76d | 0d |  | MATAPP2375 | DUKHPROGN00MTAP2350 | DUKHPROGEN00MTAP2350 | DH | PRO | OA | MAT | 2MAT | MP | IN |
| DUKHPROGEN00MTAP2360 |  | Digital Alarm Communicator Panel_2nd_App | 30d | 2013-07-10 | 2013-08-17 | DUKHPROGEN00MTSM2360 |  |  |  |  | 15d | 0d |  | MATAPP2395 | DUKHPROGN00MTAP2360 | DUKHPROGEN00MTAP2360 | DH | PRO | OA | MAT | 2MAT | MP | CM |
| DUKHPROGEN00MTAP2370 |  | Fire Blanket_2nd_App | 30d | 2013-07-10 | 2013-08-17 | DUKHPROGEN00MTSM2370 |  |  |  |  | 64d | 0d |  | MATAPP2405 | DUKHPROGN00MTAP2370 | DUKHPROGEN00MTAP2370 | DH | PRO | OA | MAT | 2MAT | MP | FG |
| DUKHPROGEN00MTAP2380 |  | Fire Extinguisher_2nd_App | 30d | 2013-07-10 | 2013-08-17 | DUKHPROGEN00MTSM2380 |  |  |  |  | 56d | 0d |  | MATAPP2410 | DUKHPROGN00MTAP2380 | DUKHPROGEN00MTAP2380 | DH | PRO | OA | MAT | 2MAT | MP | FG |
| DUKHPROGEN00MTAP2390 |  | GRC Panels_2nd_App | 30d | 2013-07-10 | 2013-08-17 | DUKHPROGEN00MTSM2390 |  |  |  |  | 23d | 0d |  | MATAPP2125 | DUKHPROGN00MTAP2390 | DUKHPROGEN00MTAP2390 | DH | PRO | OA | MAT | 2MAT | XW | WI |
| DUKHPROGEN00MTAP2400 |  | Access Ladder_2nd_App | 30d | 2013-07-10 | 2013-08-17 | DUKHPROGEN00MTSM2400 |  |  |  |  | 40d | 0d |  | MATAPP2210 | DUKHPROGN00MTAP2400 | DUKHPROGEN00MTAP2400 | DH | PRO | OA | MAT | 2MAT | XW | WI |
| DUKHPROGEN00MTAP2410 |  | Aluminum Slat Screen_2nd_App | 30d | 2013-07-10 | 2013-08-17 | DUKHPROGEN00MTSM2410 |  |  |  |  | 30d | 0d |  | MATAPP2235 | DUKHPROGN00MTAP2410 | DUKHPROGEN00MTAP2410 | DH | PRO | OA | MAT | 2MAT | XW | WI |
| DUKHPROGEN00MTAP2420 |  | Epoxy_2nd_App | 30d | 2013-07-10 | 2013-08-17 | DUKHPROGEN00MTSM2420 |  |  |  |  | 108d | 0d |  | MATAPP2135 | DUKHPROGN00MTAP2420 | DUKHPROGEN00MTAP2420 | DH | PRO | OA | MAT | 2MAT | FI | PI |
| DUKHPROGEN00MTAP2430 |  | Roller Shutter_2nd_App | 30d | 2013-07-10 | 2013-08-17 | DUKHPROGEN00MTSM2430 |  |  |  |  | 169d | 0d |  | MATAPP2140 | DUKHPROGN00MTAP2430 | DUKHPROGEN00MTAP2430 | DH | PRO | OA | MAT | 2MAT | XW | WI |
| DUKHPROGEN00MTAP2440 |  | PVC Doors_2nd_App | 30d | 2013-07-10 | 2013-08-17 | DUKHPROGEN00MTSM2440 |  |  |  |  | 46d | 0d |  | MATAPP2055 | DUKHPROGN00MTAP2440 | DUKHPROGEN00MTAP2440 | DH | PRO | OA | MAT | 2MAT | FI | DR |
| DUKHPROGEN00MTAP2450 |  | Ironmongeries_2nd_App | 30d | 2013-07-10 | 2013-08-17 | DUKHPROGEN00MTSM2450 |  |  |  |  | -20d | 0d |  | MATAPP2080 | DUKHPROGN00MTAP2450 | DUKHPROGEN00MTAP2450 | DH | PRO | OA | MAT | 2MAT | FI | DR |
| DUKHPROGEN00MTAP2460 |  | Aluminum Doors_2nd_App | 30d | 2013-07-10 | 2013-08-17 | DUKHPROGEN00MTSM2460 |  |  |  |  | 19d | 0d |  | MATAPP2085 | DUKHPROGN00MTAP2460 | DUKHPROGEN00MTAP2460 | DH | PRO | OA | MAT | 2MAT | FI | DR |
| DUKHPROGEN00MTAP2470 |  | Aluminum Windows_2nd_App | 30d | 2013-07-10 | 2013-08-17 | DUKHPROGEN00MTSM2470 |  |  |  |  | 25d | 0d |  | MATAPP2090 | DUKHPROGN00MTAP2470 | DUKHPROGEN00MTAP2470 | DH | PRO | OA | MAT | 2MAT | FI | DR |
| DUKHPROGEN00MTAP2480 |  | Granite_2nd_App | 30d | 2013-07-10 | 2013-08-17 | DUKHPROGEN00MTSM2480 |  |  |  |  | 0d |  |  | MATAPP2095 | DUKHPROGN00MTAP2480 | DUKHPROGEN00MTAP2480 | DH | PRO | OA | MAT | 2MAT | FI | FR |
| DUKHPROGEN00MTAP2490 |  | Wooden Doors_2nd_App | 30d | 2013-07-10 | 2013-08-17 | DUKHPROGEN00MTSM2490 |  |  |  |  | -20d | 0d |  | MATAPP2050 | DUKHPROGN00MTAP2490 | DUKHPROGEN00MTAP2490 | DH | PRO | OA | MAT | 2MAT | FI | DR |
| DUKHPROGEN00MTAP2500 |  | Steel Door_2nd_App | 30d | 2013-07-10 | 2013-08-17 | DUKHPROGEN00MTSM2500 |  |  |  |  | -10d | 0d |  | MATAPP2215 | DUKHPROGN00MTAP2500 | DUKHPROGEN00MTAP2500 | DH | PRO | OA | MAT | 2MAT | XW | WI |
| DUKHPROGEN00MTAP2510 |  | Stainless Steel Cover_2nd_App | 30d | 2013-07-10 | 2013-08-17 | DUKHPROGEN00MTSM2510 |  |  |  |  | -10d | 0d |  | MATAPP2240 | DUKHPROGN00MTAP2510 | DUKHPROGEN00MTAP2510 | DH | PRO | OA | MAT | 2MAT | XW | WI |
| DUKHPROGEN00MTAP2550 |  | Closets /wardrobe& Pelmets_2nd_App | 30d | 2013-07-10 | 2013-08-17 | DUKHPROGEN00MTSM2550 |  |  |  |  | 17d | 0d |  | MATAPP2060 | DUKHPROGN00MTAP2550 | DUKHPROGEN00MTAP2550 | DH | PRO | OA | MAT | 2MAT | FI | SP |
| DUKHPROGEN00MTAP2560 |  | Counters, Cabinets & Shelves_2nd_App | 30d | 2013-07-10 | 2013-08-17 | DUKHPROGEN00MTSM2560 |  |  |  |  | 17d | 0d |  | MATAPP2065 | DUKHPROGN00MTAP2560 | DUKHPROGEN00MTAP2560 | DH | PRO | OA | MAT | 2MAT | FI | SP |
| DUKHPROGEN00MTAP2570 |  | Wooden Hand Rails _2nd_App | 30d | 2013-07-10 | 2013-08-17 | DUKHPROGEN00MTSM2570 |  |  |  |  | 35d | 0d |  | MATAPP2070 | DUKHPROGN00MTAP2570 | DUKHPROGEN00MTAP2570 | DH | PRO | OA | MAT | 2MAT | FI | SP |
| DUKHPROGEN00MTAP2580 |  | Stainless Steel Handrail_2nd_App | 30d | 2013-07-10 | 2013-08-17 | DUKHPROGEN00MTSM2580 |  |  |  |  | 35d | 0d |  | MATAPP2220 | DUKHPROGN00MTAP2580 | DUKHPROGEN00MTAP2580 | DH | PRO | OA | MAT | 2MAT | FI | SP |
| DUKHPROGEN00MTAP2590 |  | Manhole Covers and Frames_2nd_App | 30d | 2013-07-10 | 2013-08-17 | DUKHPROGEN00MTSM2590 |  |  |  |  | 27d | 0d |  | MATAPP2205 | DUKHPROGN00MTAP2590 | DUKHPROGEN00MTAP2590 | DH | PRO | OA | MAT | 2MAT | XW | WI |
| DUKHPROGEN00MTAP2600 |  | kerb works_2nd_App | 30d | 2013-07-10 | 2013-08-17 | DUKHPROGEN00MTSM2600 |  |  |  |  | 49d | 0d |  | MATAPP2160 | DUKHPROGN00MTAP2600 | DUKHPROGEN00MTAP2600 | DH | PRO | OA | MAT | 2MAT | XW | IN |
| DUKHPROGEN00MTAP2610 |  | PVC Tent_2nd_App | 30d | 2013-07-10 | 2013-08-17 | DUKHPROGEN00MTSM2610 |  |  |  |  | -4d | 0d |  | MATAPP2245 | DUKHPROGN00MTAP2610 | DUKHPROGEN00MTAP2610 | DH | PRO | OA | MAT | 2MAT | XW | WI |
| DUKHPROGEN00MTAP2620 |  | Structural Steel_2nd_App | 30d | 2013-07-10 | 2013-08-17 | DUKHPROGEN00MTSM2620 |  |  |  |  | -6d | 0d |  | MATAPP2250 | DUKHPROGN00MTAP2620 | DUKHPROGEN00MTAP2620 | DH | PRO | OA | MAT | 2MAT | XW | WI |
| DUKHPROGEN00MTAP2730 |  | Car Parking Shed_2nd_App | 30d | 2013-07-11 | 2013-08-18 | DUKHPROGEN00MTSM2730 |  |  |  |  | 127d | 0d |  | MATAPP2170 | DUKHPROGN00MTAP2730 | DUKHPROGEN00MTAP2730 | DH | PRO | OA | MAT | 2MAT | XW | IN |
| DUKHPROGEN00MTAP2760 |  | Sprinklers_2nd_App | 30d | 2013-07-11 | 2013-08-18 | DUKHPROGEN00MTSM2760 |  |  |  |  | 138d | 0d |  | MATAPP2465 | DUKHPROGN00MTAP2760 | DUKHPROGEN00MTAP2760 | DH | PRO | OA | MAT | 2MAT | MP | IR |
| DUKHPROGEN00MTAP2680 |  | Water Tank_2nd_App | 30d | 2013-07-17 | 2013-08-24 | DUKHPROGEN00MTSM2680 |  |  |  |  | 46d | 0d |  | MATAPP2275 | DUKHPROGN00MTAP2680 | DUKHPROGEN00MTAP2680 | DH | PRO | OA | MAT | 2MAT | MP | PB |

| ID | WBS | Activity | Duration | Start | Finish | Predecessors | Complete | Planned start | Planned finish | Total float | Free float | Expected finish | Calendar | Cost | P3 ACTID | P6 ID (old) | NP61D | PROJECT | PHASES | PACKAGE | PART | ELEMENTS | STEP | FLOORS |
| --- | --- | --- | --- | --- | --- | --- | --- | --- | --- | --- | --- | --- | --- | --- | --- | --- | --- | --- | --- | --- | --- | --- | --- | --- |
| DUKHPROGEN00MTAP2690 |  | Fire Hydrant_2nd_App | 30d | 2013-07-17 | 2013-08-24 | DUKHPROGEN00MTSM2690 |  |  |  | 20d | 0d |  |  |  | MATAPP2425 | DUKHPROGN00MTAP2690 | DUKHPROGEN00MTAP2690 | DH | PRO | OA | MAT | 2MAT | MP | FG |
| DUKHPROGEN00MTAP2780 |  | Gazebo Structure_2nd_App | 30d | 2013-07-24 | 2013-08-31 | DUKHPROGEN00MTSM2780 |  |  |  | 71d | 6d |  |  |  | MATAPP2075 | DUKHPROGN00MTAP2780 | DUKHPROGEN00MTAP2780 | DH | PRO | OA | MAT | 2MAT | XW | IN |
| DUKHPROGEN00MTAP2790 |  | Plantation(Grass,Trees)_2nd_App | 30d | 2013-07-24 | 2013-08-31 | DUKHPROGEN00MTSM2790 |  |  |  | 26d | 0d |  |  |  | MATAPP2185 | DUKHPROGN00MTAP2790 | DUKHPROGEN00MTAP2790 | DH | PRO | OA | MAT | 2MAT | XW | IN |
| DUKHPROGEN00MTAP2800 |  | Steel Gate & Barrier gates_2nd_App | 30d | 2013-07-29 | 2013-09-04 | DUKHPROGEN00MTSM2800 |  |  |  | 63d | 0d |  |  |  | MATAPP2195 | DUKHPROGN00MTAP2800 | DUKHPROGEN00MTAP2800 | DH | PRO | OA | MAT | 2MAT | XW | IN |
| DUKHPROGEN00MTAP2810 |  | Nozzle Jet_2nd_App | 30d | 2013-07-29 | 2013-09-04 | DUKHPROGEN00MTSM2810 |  |  |  | 97d | 0d |  |  |  | MATAPP2470 | DUKHPROGN00MTAP2810 | DUKHPROGEN00MTAP2810 | DH | PRO | OA | MAT | 2MAT | MP | IR |
| DUKHPROGEN00MTAP2820 |  | Pre-cast Boundary Wall _2nd_App | 30d | 2013-07-29 | 2013-09-04 | DUKHPROGEN00MTSM2820 |  |  |  | 40d | 0d |  |  |  | MATAPP2190 | DUKHPROGN00MTAP2820 | DUKHPROGEN00MTAP2820 | DH | PRO | OA | MAT | 2MAT | XW | IN |
| DUKHPROGEN00MTAP2770 |  | Kitchen Water Filter_2nd_App | 30d | 2013-08-04 | 2013-09-10 | DUKHPROGEN00MTSM2770 |  |  |  | 14d | 0d |  |  |  | MATAPP2280 | DUKHPROGN00MTAP2770 | DUKHPROGEN00MTAP2770 | DH | PRO | OA | MAT | 2MAT | MP | PB |
| DUKHPROGEN00MTAP2830 |  | Solenoid Values_2nd_App | 30d | 2013-08-19 | 2013-09-22 | DUKHPROGEN00MTSM2830 |  |  |  | 82d | 0d |  |  |  | MATAPP2475 | DUKHPROGN00MTAP2830 | DUKHPROGEN00MTAP2830 | DH | PRO | OA | MAT | 2MAT | MP | IR |
| DUKHPROGEN00MTAP2850 |  | Fences_2nd_App | 30d | 2013-08-19 | 2013-09-22 | DUKHPROGEN00MTSM2850 |  |  |  | 126d | 0d |  |  |  | MATAPP2495 | DUKHPROGN00MTAP2850 | DUKHPROGEN00MTAP2850 | DH | PRO | OA | MAT | 2MAT | XW | IN |
| DUKHPROGEN00MTAP2840 |  | Gate Values_2nd_App | 30d | 2013-09-05 | 2013-10-09 | DUKHPROGEN00MTSM2840 |  |  |  | 67d | 0d |  |  |  | MATAPP2480 | DUKHPROGN00MTAP2840 | DUKHPROGEN00MTAP2840 | DH | PRO | OA | MAT | 2MAT | MP | IR |
| DUKHPROGEN00MTAP2860 |  | Remote Control Value_2nd_App | 30d | 2013-09-23 | 2013-10-29 | DUKHPROGEN00MTSM2860 |  |  |  | 52d | 0d |  |  |  | MATAPP2485 | DUKHPROGN00MTAP2860 | DUKHPROGEN00MTAP2860 | DH | PRO | OA | MAT | 2MAT | MP | IR |
| DUKHPROGEN00MTAP2870 |  | Irrigation Controller_2nd_App | 30d | 2013-10-10 | 2013-11-16 | DUKHPROGEN00MTSM2870 |  |  |  | 37d | 0d |  |  |  | MATAPP2490 | DUKHPROGN00MTAP2870 | DUKHPROGEN00MTAP2870 | DH | PRO | OA | MAT | 2MAT | MP | IR |
|  | L25 | **MANUFACTURING, PROCUREMENT & DELIVERY** |  | 2012-12-26 | 2014-02-14 |  |  |  |  |  |  |  |  |  |  |  |  |  |  |  |  |  |  |  |
| DUKHPROGEN00PRDV3000 |  | Proc & Del Anti Termite | 7d | 2012-12-26 A | 2012-12-28 A | DUKHPROGEN00MTAP1000 | 100% | 2012-12-26 | 2013-01-01 |  |  |  | DH01-PROCUREMENT | 62,586 | PRODEL1000 | DUKHPROGN00PRDV3000 | DUKHPROGEN00PRDV3000 | DH | PRO | OA | PRO |  | TS |  |
| DUKHPROGEN00PRDV3020 |  | Proc & Del Concrete | 7d | 2012-12-27 A | 2012-12-28 A | DUKHPROGEN00MTAP1020 | 100% | 2012-12-27 | 2013-01-02 |  |  |  | DH01-PROCUREMENT | 492,018 | PRODEL1005 | DUKHPROGN00PRDV3020 | DUKHPROGEN00PRDV3020 | DH | PRO | OA | PRO |  | TS |  |
| DUKHPROGEN00PRDV3010 |  | Proc & Del Block Work | 10d | 2013-01-13 A | 2013-01-22 A | DUKHPROGEN00MTAP1010 | 100% |  |  |  |  |  | DH01-PROCUREMENT | 1,766,741 | PRODEL1030 | DUKHPROGN00PRDV3010 | DUKHPROGEN00PRDV3010 | DH | PRO | OA | PRO |  | FI | GL |
| DUKHPROGEN00PRDV3030 |  | Proc & Del Waterproofing | 7d | 2013-01-28 A | 2013-02-01 A | DUKHPROGEN00MTAP1030 | 100% | 2013-01-28 | 2013-02-03 |  |  |  | DH01-PROCUREMENT | 436,898 | PRODEL1015 | DUKHPROGN00PRDV3030 | DUKHPROGEN00PRDV3030 | DH | PRO | OA | PRO |  | TS |  |
| DUKHPROGEN00PRDV3060 |  | Proc & Del UPVC Pipes | 40d | 2013-02-20 A | 2013-03-31 A | DUKHPROGEN00MTAP1060 | 100% |  |  |  |  |  | DH01-PROCUREMENT | 183,035 | PRODEL1290 | DUKHPROGN00PRDV3060 | DUKHPROGEN00PRDV3060 | DH | PRO | OA | PRO |  | MP | PB |
| DUKHPROGEN00PRDV3070 |  | Proc & Del Floor drains & Cleanouts | 40d | 2013-02-20 A | 2013-03-31 A | DUKHPROGEN00MTAP1070 | 100% |  |  |  |  |  | DH01-PROCUREMENT | 152,381 | PRODEL1295 | DUKHPROGN00PRDV3070 | DUKHPROGEN00PRDV3070 | DH | PRO | OA | PRO |  | MP | PB |
| DUKHPROGEN00PRDV3040 |  | Proc & Del Plastering & Accessories | 59d | 2013-04-27 | 2013-06-24 | DUKHENGP1BDWARAP4460, DUKHENGP03DWARAP5610, DUKHENGP03DWARAP5620, DUKHENGP2ADWARAP4850, DUKHENGP1ADWARAP4060, DUKHENGP1BDWARAP4450, DUKHENGP2BDWARAP5230, DUKHENGP1ADWARAP4050, DUKHPROGEN00MTAP2040 |  |  |  | 84d | 0d | 2013-06-24 | DH01-PROCUREMENT | 1,403,145 | PRODEL1035 | DUKHPROGN00PRDV3040 | DUKHPROGEN00PRDV3040 | DH | PRO | OA | PRO |  | FI | GL |
| DUKHPROGEN00PRDV3050 |  | Proc & Del Thermal Insulation | 59d | 2013-04-27 | 2013-06-24 | DUKHENGP2ADWARAP4870, DUKHENGP1ADWARAP4070, DUKHENGP03DWARAP5630, DUKHPROGEN00MTAP2050, DUKHENGP1BDWARAP4470, DUKHENGP2BDWARAP5250 |  |  |  | 125d | 0d | 2013-06-24 | DH01-PROCUREMENT | 305,815 | PRODEL1040 | DUKHPROGN00PRDV3050 | DUKHPROGEN00PRDV3050 | DH | PRO | OA | PRO |  | TS |  |
| DUKHPROGEN00PRDV3080 |  | Proc & Del Polyethylene Pipes | 73d | 2013-04-27 | 2013-07-08 | DUKHENGP1ADWMEAP4210, DUKHENGP1BDWMEAP4610, DUKHENGP1BDWMEAP4620, DUKHENGP2ADWMEAP5020, DUKHENGP2BDWMEAP5400, DUKHPROGEN00MTAP2080, DUKHENGP1ADWMEAP4220, DUKHENGP2ADWMEAP5010, DUKHENGP2BDWMEAP5390, DUKHENGP03DWMEAP5770, DUKHENGP03DWMEAP5780 |  |  |  | 67d | 0d | 2013-07-08 | DH01-PROCUREMENT | 1,200,362 | PRODEL1310 | DUKHPROGN00PRDV3080 | DUKHPROGEN00PRDV3080 | DH | PRO | OA | PRO |  | MP | PB |
| DUKHPROGEN00PRDV3110 |  | Proc & Del Stone Cladding | 97d | 2013-04-27 | 2013-08-01 | DUKHENGP03DWARAP5610, DUKHENGP2BDWARAP5230, DUKHENGP1ADWARAP4050, DUKHPROGEN00MTAP2110, DUKHENGP2ADWARAP4850, DUKHENGP1BDWARAP4450 |  |  |  | 139d | 0d | 2013-08-01 | DH01-PROCUREMENT | 199,702 | PRODEL1110 | DUKHPROGN00PRDV3110 | DUKHPROGEN00PRDV3110 | DH | PRO | OA | PRO |  | FI | FR |
| DUKHPROGEN00PRDV3090 |  | Proc & Del Cobble stone finish | 120d | 2013-04-30 | 2013-08-27 | DUKHENGP2ADWARAP4900, DUKHENGP1ADWARAP4100, DUKHPROGEN00MTAP2090, DUKHENGP1BDWARAP4520, DUKHENGP2BDWARAP5280, DUKHENGP03DWARAP5660 |  |  |  | 96d | 55d |  | DH01-PROCUREMENT | 147,148 | PRODEL1100 | DUKHPROGN00PRDV3090 | DUKHPROGEN00PRDV3090 | DH | PRO | OA | PRO |  | FI | FR |
| DUKHPROGEN00PRDV3100 |  | Proc & Del Slate Tile | 120d | 2013-04-30 | 2013-08-27 | DUKHENGP1ADWARAP4100, DUKHENGP03DWARAP5660, DUKHENGP1BDWARAP4520, DUKHPROGEN00MTAP2100, DUKHENGP2ADWARAP4900, DUKHENGP2BDWARAP5280 |  |  |  | 102d | 61d |  | DH01-PROCUREMENT | 789,388 | PRODEL1105 | DUKHPROGN00PRDV3100 | DUKHPROGEN00PRDV3100 | DH | PRO | OA | PRO |  | FI | FR |
| DUKHPROGEN00PRDV3120 |  | Proc & Del Ceramic Tile | 120d | 2013-04-30 | 2013-08-27 | DUKHENGP03DWARAP5640, DUKHPROGEN00MTAP2120, DUKHENGP1BDWARAP4500, DUKHENGP2BDWARAP5260, DUKHENGP2ADWARAP4880, DUKHENGP1ADWARAP4080 |  |  |  | 49d | 39d |  | DH01-PROCUREMENT | 840,721 | PRODEL1225 | DUKHPROGN00PRDV3120 | DUKHPROGEN00PRDV3120 | DH | PRO | OA | PRO |  | FI | FR |
| DUKHPROGEN00PRDV3130 |  | Proc & Del Porcelain Tile | 120d | 2013-04-30 | 2013-08-27 | DUKHENGP1BDWARAP4510, DUKHENGP2BDWARAP5270, DUKHENGP2ADWARAP4890, DUKHENGP03DWARAP5650, DUKHENGP1ADWARAP4090, DUKHPROGEN00MTAP2130 |  |  |  | 59d | 46d |  | DH01-PROCUREMENT | 1,121,496 | PRODEL1230 | DUKHPROGN00PRDV3130 | DUKHPROGEN00PRDV3130 | DH | PRO | OA | PRO |  | FI | FR |
| DUKHPROGEN00PRDV3140 |  | Proc & Del Pitch roofing | 40d | 2013-05-14 | 2013-06-22 | DUKHENGP2ADWARAP4870, DUKHENGP1ADWARAP4070, DUKHENGP1BDWARAP4470, DUKHENGP03DWARAP5630, DUKHPROGEN00MTAP2140, DUKHENGP2BDWARAP5250 |  |  |  | 91d | 132d |  | DH01-PROCUREMENT | 184,680 | PRODEL1045 | DUKHPROGN00PRDV3140 | DUKHPROGEN00PRDV3140 | DH | PRO | OA | PRO |  | TS |  |
| DUKHPROGEN00PRDV3180 |  | Proc & Del Cables & Wires | 120d | 2013-06-28 | 2013-10-25 | DUKHENGP1ADWELAP4160, DUKHENGP1BDWELAP4560 FF, DUKHENGP2BDWELAP5340, DUKHPROGEN00MTAP1180, DUKHENGP2ADWELAP4960, DUKHENGP03DWELAP5720 |  |  |  | 1d | 0d |  | DH01-PROCUREMENT | 1,962,856 | PRODEL1355 | DUKHPROGN00PRDV3180 | DUKHPROGEN00PRDV3180 | DH | PRO | OA | PRO |  | MP | EC |
| DUKHPROGEN00PRDV3520 |  | Proc & Del Lift Pump | 120d | 2013-07-17 | 2013-11-13 | DUKHENGP2ADWMEAP5020, DUKHENGP2ADWMEAP5010, DUKHENGP1ADWMEAP4220, DUKHENGP1BDWMEAP4610, DUKHENGP2BDWMEAP5400, DUKHENGP03DWMEAP5780, DUKHENGP1BDWMEAP4620, DUKHENGP1ADWMEAP4210, DUKHPROGEN00MTAP2520, DUKHENGP03DWMEAP5770, DUKHENGP2BDWMEAP5390 |  |  |  | 33d | 77d |  | DH01-PROCUREMENT | 1,664,265 | PRODEL1265 | DUKHPROGN00PRDV3520 | DUKHPROGEN00PRDV3520 | DH | PRO | OA | PRO |  | MP | PB |
| DUKHPROGEN00PRDV3530 |  | Proc & Del Exhaust Fan | 90d | 2013-07-17 | 2013-10-14 | DUKHENGP2ADWMEAP5040, DUKHENGP1BDWMEAP4640, DUKHPROGEN00MTAP2530, DUKHENGP03DWMEAP5800, DUKHENGP1ADWMEAP4240, DUKHENGP2BDWMEAP5420 |  |  |  | 81d | 71d |  | DH01-PROCUREMENT | 65,367 | PRODEL1340 | DUKHPROGN00PRDV3530 | DUKHPROGEN00PRDV3530 | DH | PRO | OA | PRO |  | MP | AC |
| DUKHPROGEN00PRDV3540 |  | Proc & Del Ductile Iron Pipes | 110d | 2013-07-17 | 2013-11-03 | DUKHENGI2BDWFFAP5440, DUKHPROGEN00MTAP2540, DUKHENGI1BDWFFAP4660, DUKHENGI2ADWFFAP5060, DUKHENGI1ADWFFAP4260, DUKHENGI03DWFFAP5820 |  |  |  | 12d | 30d |  | DH01-PROCUREMENT | 63,361 | PRODEL1415 | DUKHPROGN00PRDV3540 | DUKHPROGEN00PRDV3540 | DH | PRO | OA | PRO |  | MP | FG |
| DUKHPROGEN00PRDV3630 |  | Proc & Del Steel Ladder | 90d | 2013-07-23 | 2013-10-20 | DUKHPROGEN00MTAP2630 |  |  |  | 45d | 80d |  | DH01-PROCUREMENT | 5,675 | PRODEL1200 | DUKHPROGN00PRDV3630 | DUKHPROGEN00PRDV3630 | DH | PRO | OA | PRO |  | XW | WI |
| DUKHPROGEN00PRDV3660 |  | Proc & Del Interlock works | 40d | 2013-07-29 | 2013-09-06 | DUKHENGI1BDWIWAP4760, DUKHENGI03DWIWAP5920, DUKHPROGEN00MTAP2660, DUKHENGI1ADWIWAP4360, DUKHENGI2ADWIWAP5160, DUKHENGI2BDWIWAP5540 |  |  |  | 105d | 116d |  | DH01-PROCUREMENT | 143,092 | PRODEL1165 | DUKHPROGN00PRDV3660 | DUKHPROGEN00PRDV3660 | DH | PRO | OA | PRO |  | XW | IN |
| DUKHPROGEN00PRDV3670 |  | Proc & Del Irrigation Pipes | 60d | 2013-07-29 | 2013-09-26 | DUKHENGI1BDWIRAP4710, DUKHPROGEN00MTAP2670, DUKHENGI1ADWIRAP4310, DUKHENGI2BDWIRAP5490, DUKHENGI03DWIRAP5870, DUKHENGI2ADWIRAP5110 |  |  |  | 94d | 102d |  | DH01-PROCUREMENT | 25,060 | PRODEL1460 | DUKHPROGN00PRDV3670 | DUKHPROGEN00PRDV3670 | DH | PRO | OA | PRO |  | MP | IR |
| DUKHPROGEN00PRDV3640 |  | Proc & Del Water meter | 60d | 2013-08-04 | 2013-10-02 | DUKHENGP1ADWMEAP4220, DUKHENGP1BDWMEAP4610, DUKHENGP03DWMEAP5780, DUKHENGP1BDWMEAP4620, DUKHENGP2ADWMEAP5010, DUKHENGP2BDWMEAP5390, DUKHENGP1ADWMEAP4210, DUKHENGP2BDWMEAP5400, DUKHENGP03DWMEAP5770, DUKHPROGEN00MTAP2640, DUKHENGP2ADWMEAP5020 |  |  |  | 75d | 119d |  | DH01-PROCUREMENT | 133,781 | PRODEL1270 | DUKHPROGN00PRDV3640 | DUKHPROGEN00PRDV3640 | DH | PRO | OA | PRO |  | MP | PB |
| DUKHPROGEN00PRDV3650 |  | Proc & Del Isolating Values | 90d | 2013-08-04 | 2013-11-01 | DUKHENGI1BDWFFAP4660, DUKHENGI03DWFFAP5820, DUKHENGI2ADWFFAP5060, DUKHPROGEN00MTAP2650, DUKHENGI2BDWFFAP5440, DUKHENGI1ADWFFAP4260 |  |  |  | 14d | 32d |  | DH01-PROCUREMENT | 34,214 | PRODEL1420 | DUKHPROGN00PRDV3650 | DUKHPROGEN00PRDV3650 | DH | PRO | OA | PRO |  | MP | FG |
| DUKHPROGEN00PRDV3700 |  | Proc & Del Road Works Materials | 40d | 2013-08-14 | 2013-09-22 | DUKHENGI1BDWRWAP4750, DUKHENGI2ADWRWAP5150, DUKHPROGEN00MTAP2700, DUKHENGI03DWRWAP5910, DUKHENGI2BDWRWAP5530, DUKHENGI1ADWRWAP4350 |  |  |  | 230d | 211d |  | DH01-PROCUREMENT | 784,678 | PRODEL1145 | DUKHPROGN00PRDV3700 | DUKHPROGEN00PRDV3700 | DH | PRO | OA | PRO |  | XW | IN |
| DUKHPROGEN00PRDV3710 |  | Proc & Del External signage | 60d | 2013-08-14 | 2013-10-12 | DUKHPROGEN00MTAP2710 |  |  |  | 210d | 191d |  | DH01-PROCUREMENT | 413,870 | PRODEL1150 | DUKHPROGN00PRDV3710 | DUKHPROGEN00PRDV3710 | DH | PRO | OA | PRO |  | XW | IN |
| DUKHPROGEN00PRDV3720 |  | Proc & Del Road Marking | 60d | 2013-08-14 | 2013-10-12 | DUKHENGI2BDWRWAP5530, DUKHPROGEN00MTAP2720, DUKHENGI1ADWRWAP4350, DUKHENGI2ADWRWAP5150, DUKHENGI03DWRWAP5910, DUKHENGI1BDWRWAP4750 |  |  |  | 210d | 191d |  | DH01-PROCUREMENT | 21,785 | PRODEL1155 | DUKHPROGN00PRDV3720 | DUKHPROGEN00PRDV3720 | DH | PRO | OA | PRO |  | XW | IN |
| DUKHPROGEN00PRDV3740 |  | Proc & Del Stone Boulders | 60d | 2013-08-14 | 2013-10-12 | DUKHPROGEN00MTAP2740 |  |  |  | 157d | 144d |  | DH01-PROCUREMENT | 134,141 | PRODEL1175 | DUKHPROGN00PRDV3740 | DUKHPROGEN00PRDV3740 | DH | PRO | OA | PRO |  | XW | IN |
| DUKHPROGEN00PRDV3750 |  | Proc & Del Speed Humps | 60d | 2013-08-14 | 2013-10-12 | DUKHENGI2BDWRWAP5530, DUKHENGI2ADWRWAP5150, DUKHPROGEN00MTAP2750, DUKHENGI1ADWRWAP4350, DUKHENGI1BDWRWAP4750, DUKHENGI03DWRWAP5910 |  |  |  | 155d | 150d |  | DH01-PROCUREMENT | 11,400 | PRODEL1180 | DUKHPROGN00PRDV3750 | DUKHPROGEN00PRDV3750 | DH | PRO | OA | PRO |  | XW | IN |
| DUKHPROGEN00PRDV3150 |  | Proc & Del Sanitary Fittings | 120d | 2013-08-18 | 2013-12-15 | DUKHENGP1ADWMEAP4220, DUKHENGP1ADWMEAP4210, DUKHENGP2BDWMEAP5390, DUKHENGP2ADWMEAP5020, DUKHENGP1BDWMEAP4620, DUKHENGP03DWMEAP5780, DUKHENGP2ADWMEAP5010, DUKHPROGEN00MTAP2150, DUKHENGP1BDWMEAP4610, DUKHENGP03DWMEAP5770, DUKHENGP2BDWMEAP5400 |  |  |  | -19d | 15d |  | DH01-PROCUREMENT | 1,003,933 | PRODEL1300 | DUKHPROGN00PRDV3150 | DUKHPROGEN00PRDV3150 | DH | PRO | OA | PRO |  | MP | PB |
| DUKHPROGEN00PRDV3160 |  | Proc & Del Copper Pipes | 90d | 2013-08-18 | 2013-11-15 | DUKHPROGEN00MTAP2160, DUKHENGP2ADWMEAP5040, DUKHENGP1BDWMEAP4640, DUKHENGP03DWMEAP5800, DUKHENGP1ADWMEAP4240, DUKHENGP2BDWMEAP5420 |  |  |  | -16d | 0d |  | DH01-PROCUREMENT | 101,346 | PRODEL1325 | DUKHPROGN00PRDV3160 | DUKHPROGEN00PRDV3160 | DH | PRO | OA | PRO |  | MP | AC |
| DUKHPROGEN00PRDV3170 |  | Proc & Del SMDB | 120d | 2013-08-18 | 2013-12-15 | DUKHENGP2ADWELAP4970, DUKHENGP03DWELAP5730, DUKHENGP1ADWELAP4170, DUKHENGP1BDWELAP4570, DUKHENGP1ADWELAP4150, DUKHENGP2BDWELAP5350, DUKHENGP1BDWELAP4550, DUKHENGP2BDWELAP5330, DUKHPROGEN00MTAP2170, DUKHENGP03DWELAP5710, DUKHENGP2ADWELAP4950 |  |  |  | 13d | 9d |  | DH01-PROCUREMENT | 419,537 | PRODEL1350 | DUKHPROGN00PRDV3170 | DUKHPROGEN00PRDV3170 | DH | PRO | OA | PRO |  | MP | EC |
| DUKHPROGEN00PRDV3190 |  | Proc & Del Lights & Fixtures | 120d | 2013-08-18 | 2013-12-15 | DUKHENGP1BDWELAP4560 FF, DUKHENGP1ADWELAP4160, DUKHENGP2BDWELAP5340, DUKHPROGEN00MTAP2190, DUKHENGP03DWELAP5720, DUKHENGP2ADWELAP4960 |  |  |  | 26d | 15d |  | DH01-PROCUREMENT | 2,276,340 | PRODEL1360 | DUKHPROGN00PRDV3190 | DUKHPROGEN00PRDV3190 | DH | PRO | OA | PRO |  | MP | EC |
| DUKHPROGEN00PRDV3200 |  | Proc & Del Isolators | 120d | 2013-08-18 | 2013-12-15 | DUKHENGP2ADWELAP4970, DUKHENGP1BDWELAP4570, DUKHENGP2BDWELAP5350, DUKHENGP03DWELAP5730, DUKHPROGEN00MTAP2200, DUKHENGP1ADWELAP4170 |  |  |  | 51d | 27d |  | DH01-PROCUREMENT | 321,560 | PRODEL1365 | DUKHPROGN00PRDV3200 | DUKHPROGEN00PRDV3200 | DH | PRO | OA | PRO |  | MP | EC |
| DUKHPROGEN00PRDV3210 |  | Proc & Del Fire Resistant Cables | 90d | 2013-08-18 | 2013-11-15 | DUKHENGP03DWELAP5740, DUKHPROGEN00MTAP2210, DUKHENGP2ADWELAP4980, DUKHENGP1BDWELAP4580 FF, DUKHENGP2BDWELAP5360, DUKHENGP1ADWELAP4180 |  |  |  | 47d | 39d |  | DH01-PROCUREMENT | 96,639 | PRODEL1385 | DUKHPROGN00PRDV3210 | DUKHPROGEN00PRDV3210 | DH | PRO | OA | PRO |  | MP | CM |
| DUKHPROGEN00PRDV3220 |  | Proc & Del Water Chiller | 120d | 2013-08-18 | 2013-12-15 | DUKHENGP1ADWMEAP4210, DUKHENGP1BDWMEAP4620, DUKHENGP2ADWMEAP5010, DUKHENGP1ADWMEAP4220, DUKHENGP2BDWMEAP5390, DUKHENGP2BDWMEAP5400, DUKHENGP03DWMEAP5770, DUKHENGP03DWMEAP5780, DUKHPROGEN00MTAP2220, DUKHENGP2ADWMEAP5020, DUKHENGP1BDWMEAP4610 |  |  |  | 1d | 45d |  | DH01-PROCUREMENT | 97,824 | PRODEL1255 | DUKHPROGN00PRDV3220 | DUKHPROGEN00PRDV3220 | DH | PRO | OA | PRO |  | MP | PB |
| DUKHPROGEN00PRDV3230 |  | Proc & Del Water Heater | 90d | 2013-08-18 | 2013-11-15 | DUKHENGP1ADWMEAP4220, DUKHENGP03DWMEAP5780, DUKHENGP1BDWMEAP4610, DUKHENGP1BDWMEAP4620, DUKHENGP2ADWMEAP5020, DUKHENGP2BDWMEAP5390, DUKHENGP2BDWMEAP5400, DUKHENGP03DWMEAP5770, DUKHENGP1ADWMEAP4210, DUKHPROGEN00MTAP2230, DUKHENGP2ADWMEAP5010 |  |  |  | 11d | 45d |  | DH01-PROCUREMENT | 88,835 | PRODEL1305 | DUKHPROGN00PRDV3230 | DUKHPROGEN00PRDV3230 | DH | PRO | OA | PRO |  | MP | PB |
| DUKHPROGEN00PRDV3240 |  | Proc & Del Split AC | 120d | 2013-08-18 | 2013-12-15 | DUKHENGP2ADWMEAP5040, DUKHENGP1ADWMEAP4240, DUKHPROGEN00MTAP2240, DUKHENGP1BDWMEAP4640, DUKHENGP2BDWMEAP5420, DUKHENGP03DWMEAP5800 |  |  |  | 40d | 15d |  | DH01-PROCUREMENT | 605,268 | PRODEL1330 | DUKHPROGN00PRDV3240 | DUKHPROGEN00PRDV3240 | DH | PRO | OA | PRO |  | MP | AC |
| DUKHPROGEN00PRDV3260 |  | Proc & Del Smoke Detector | 90d | 2013-08-18 | 2013-11-15 | DUKHENGP1ADWELAP4180, DUKHENGP2BDWELAP5360, DUKHPROGEN00MTAP2260, DUKHENGP2ADWELAP4980, DUKHENGP03DWELAP5740, DUKHENGP1BDWELAP4580 FF |  |  |  | 47d | 39d |  | DH01-PROCUREMENT | 241,597 | PRODEL1390 | DUKHPROGN00PRDV3260 | DUKHPROGEN00PRDV3260 | DH | PRO | OA | PRO |  | MP | CM |
| DUKHPROGEN00PRDV3270 |  | Proc & Del Video Com System | 120d | 2013-08-18 | 2013-12-15 | DUKHENGP2BDWELAP5370, DUKHENGP1BDWELAP4590, DUKHENGP2ADWELAP4990, DUKHPROGEN00MTAP2270, DUKHENGP1ADWELAP4190, DUKHENGP03DWELAP5750 |  |  |  | 24d | 15d |  | DH01-PROCUREMENT | 431,525 | PRODEL1435 | DUKHPROGN00PRDV3270 | DUKHPROGEN00PRDV3270 | DH | PRO | OA | PRO |  | MP | TP |
| DUKHPROGEN00PRDV3280 |  | Proc & Del Telephone Fittings & Accessories | 120d | 2013-08-18 | 2013-12-15 | DUKHENGP2BDWELAP5380, DUKHENGP03DWELAP5760, DUKHENGP1BDWELAP4600, DUKHPROGEN00MTAP2280, DUKHENGP2ADWELAP5000, DUKHENGP1ADWELAP4200 |  |  |  | 24d | 15d |  | DH01-PROCUREMENT | 76,147 | PRODEL1440 | DUKHPROGN00PRDV3280 | DUKHPROGEN00PRDV3280 | DH | PRO | OA | PRO |  | MP | TP |
| DUKHPROGEN00PRDV3290 |  | Proc & Del Television devices,Fit. & Access. | 120d | 2013-08-18 | 2013-12-15 | DUKHPROGEN00MTAP2290, DUKHENGP2BDWELAP5380, DUKHENGP2ADWELAP5000, DUKHENGP1ADWELAP4200, DUKHENGP1BDWELAP4600, DUKHENGP03DWELAP5760 |  |  |  | 58d | 33d |  | DH01-PROCUREMENT | 264,195 | PRODEL1450 | DUKHPROGN00PRDV3290 | DUKHPROGEN00PRDV3290 | DH | PRO | OA | PRO |  | MP | TP |
| DUKHPROGEN00PRDV3300 |  | Proc & Del Gypsum Board false ceiling | 110d | 2013-08-18 | 2013-12-05 | DUKHENGP2BDWARAP5290, DUKHENGP2ADWARAP4910, DUKHENGP03DWARAP5670, DUKHPROGEN00MTAP2300, DUKHENGP1BDWARAP4480, DUKHENGP1ADWARAP4110 |  |  |  | -26d | 1d |  | DH01-PROCUREMENT | 847,555 | PRODEL1115 | DUKHPROGN00PRDV3300 | DUKHPROGEN00PRDV3300 | DH | PRO | OA | PRO |  | FI | FS |
| DUKHPROGEN00PRDV3310 |  | Proc & Del Aluminum Tile false ceiling | 120d | 2013-08-18 | 2013-12-15 | DUKHENGP03DWARAP5680, DUKHPROGEN00MTAP2310, DUKHENGP1ADWARAP4120, DUKHENGP1BDWARAP4490 |  |  |  | -5d | 0d |  | DH01-PROCUREMENT | 66,623 | PRODEL1120 | DUKHPROGN00PRDV3310 | DUKHPROGEN00PRDV3310 | DH | PRO | OA | PRO |  | FI | FS |
| DUKHPROGEN00PRDV3320 |  | Proc & Del Paints | 90d | 2013-08-18 | 2013-11-15 | DUKHPROGEN00MTAP2320, DUKHENGP2ADWARAP4850, DUKHENGP1BDWARAP4450, DUKHENGP2BDWARAP5230, DUKHENGP03DWARAP5610, DUKHENGP1ADWARAP4050 |  |  |  | -40d | 0d |  | DH01-PROCUREMENT | 694,382 | PRODEL1130 | DUKHPROGN00PRDV3320 | DUKHPROGEN00PRDV3320 | DH | PRO | OA | PRO |  | FI | PI |
| DUKHPROGEN00PRDV3330 |  | Proc & Del Booster Pump | 120d | 2013-08-18 | 2013-12-15 | DUKHENGP1BDWMEAP4620, DUKHENGP2BDWMEAP5400, DUKHENGP2ADWMEAP5010, DUKHENGP2BDWMEAP5390, DUKHPROGEN00MTAP2330, DUKHENGP1BDWMEAP4610, DUKHENGP2ADWMEAP5020, DUKHENGP1ADWMEAP4210, DUKHENGP1ADWMEAP4220, DUKHENGP03DWMEAP5770, DUKHENGP03DWMEAP5780 |  |  |  | 1d | 45d |  | DH01-PROCUREMENT | 477,080 | PRODEL1260 | DUKHPROGN00PRDV3330 | DUKHPROGEN00PRDV3330 | DH | PRO | OA | PRO |  | MP | PB |
| DUKHPROGEN00PRDV3340 |  | Proc & Del Exhaust Air louver | 90d | 2013-08-18 | 2013-11-15 | DUKHPROGEN00MTAP2340, DUKHENGP1ADWMEAP4240, DUKHENGP03DWMEAP5800, DUKHENGP2BDWMEAP5420, DUKHENGP2ADWMEAP5040, DUKHENGP1BDWMEAP4640 |  |  |  | 49d | 39d |  | DH01-PROCUREMENT | 6,537 | PRODEL1335 | DUKHPROGN00PRDV3340 | DUKHPROGEN00PRDV3340 | DH | PRO | OA | PRO |  | MP | AC |
| DUKHPROGEN00PRDV3350 |  | Proc & Del Bollard Lamp | 120d | 2013-08-18 | 2013-12-15 | DUKHENGI03DWELAP5840, DUKHENGI03DWSTAP5850, DUKHENGI2ADWSTAP5090, DUKHENGI1BDWELAP4680, DUKHENGI1ADWELAP4280, DUKHENGI1BDWSTAP4690, DUKHENGI2BDWSTAP5470, DUKHENGI2ADWELAP5080, DUKHPROGEN00MTAP2350, DUKHENGI1ADWSTAP4290, DUKHENGI2BDWELAP5460 |  |  |  | 91d | 52d |  | DH01-PROCUREMENT | 76,350 | PRODEL1375 | DUKHPROGN00PRDV3350 | DUKHPROGEN00PRDV3350 | DH | PRO | OA | PRO |  | MP | IN |
| DUKHPROGEN00PRDV3360 |  | Proc & Del Digital Alarm Communicator Panel | 120d | 2013-08-18 | 2013-12-15 | DUKHENGP1ADWELAP4180, DUKHENGP03DWELAP5740, DUKHPROGEN00MTAP2360, DUKHENGP2BDWELAP5360, DUKHENGP2ADWELAP4980, DUKHENGP1BDWELAP4580 FF |  |  |  | 17d | 9d |  | DH01-PROCUREMENT | 144,958 | PRODEL1395 | DUKHPROGN00PRDV3360 | DUKHPROGEN00PRDV3360 | DH | PRO | OA | PRO |  | MP | CM |
| DUKHPROGEN00PRDV3370 |  | Proc & Del Fire Blanket | 60d | 2013-08-18 | 2013-10-16 | DUKHENGP1BDWMEAP4630, DUKHENGP1ADWMEAP4230, DUKHPROGEN00MTAP2370, DUKHENGP2ADWMEAP5030, DUKHENGP2BDWMEAP5410, DUKHENGP03DWMEAP5790 |  |  |  | 77d | 69d |  | DH01-PROCUREMENT | 4,110 | PRODEL1405 | DUKHPROGN00PRDV3370 | DUKHPROGEN00PRDV3370 | DH | PRO | OA | PRO |  | MP | FG |
| DUKHPROGEN00PRDV3380 |  | Proc & Del Fire Extinguisher | 70d | 2013-08-18 | 2013-10-26 | DUKHENGP1BDWMEAP4630, DUKHENGP2ADWMEAP5030, DUKHENGP03DWMEAP5790, DUKHPROGEN00MTAP2380, DUKHENGP1ADWMEAP4230, DUKHENGP2BDWMEAP5410 |  |  |  | 67d | 59d |  | DH01-PROCUREMENT | 241,597 | PRODEL1410 | DUKHPROGN00PRDV3380 | DUKHPROGEN00PRDV3380 | DH | PRO | OA | PRO |  | MP | FG |
| DUKHPROGEN00PRDV3390 |  | Proc & Del GRC Panels | 90d | 2013-08-18 | 2013-11-15 | DUKHPROGEN00MTAP2390 |  |  |  | 26d | 37d |  | DH01-PROCUREMENT | 28,654 | PRODEL1125 | DUKHPROGN00PRDV3390 | DUKHPROGEN00PRDV3390 | DH | PRO | OA | PRO |  | XW | WI |
| DUKHPROGEN00PRDV3400 |  | Proc & Del Access Ladder | 90d | 2013-08-18 | 2013-11-15 | DUKHPROGEN00MTAP2400 |  |  |  | 46d | 8d |  | DH01-PROCUREMENT | 252,227 | PRODEL1210 | DUKHPROGN00PRDV3400 | DUKHPROGEN00PRDV3400 | DH | PRO | OA | PRO |  | XW | WI |
| DUKHPROGEN00PRDV3410 |  | Proc & Del Aluminium Slat Screen | 120d | 2013-08-18 | 2013-12-15 | DUKHPROGEN00MTAP2410 |  |  |  | 35d | 0d |  | DH01-PROCUREMENT | 340,407 | PRODEL1235 | DUKHPROGN00PRDV3410 | DUKHPROGEN00PRDV3410 | DH | PRO | OA | PRO |  | XW | WI |
| DUKHPROGEN00PRDV3420 |  | Proc & Del Epoxy | 40d | 2013-08-18 | 2013-09-26 | DUKHENGP1BDWARAP4450, DUKHENGP03DWARAP5610, DUKHPROGEN00MTAP2420, DUKHENGP2ADWARAP4850, DUKHENGP1ADWARAP4050, DUKHENGP2BDWARAP5230 |  |  |  | 129d | 50d |  | DH01-PROCUREMENT | 27,239 | PRODEL1135 | DUKHPROGN00PRDV3420 | DUKHPROGEN00PRDV3420 | DH | PRO | OA | PRO |  | FI | PI |
| DUKHPROGEN00PRDV3430 |  | Proc & Del Roller Shutter | 120d | 2013-08-18 | 2013-12-15 | DUKHPROGEN00MTAP2430 |  |  |  | 201d | 108d |  | DH01-PROCUREMENT | 299,957 | PRODEL1140 | DUKHPROGN00PRDV3430 | DUKHPROGEN00PRDV3430 | DH | PRO | OA | PRO |  | XW | WI |
| DUKHPROGEN00PRDV3440 |  | Proc & Del PVC Doors | 90d | 2013-08-18 | 2013-11-15 | DUKHENGP2ADWARAP4930, DUKHPROGEN00MTAP2440, DUKHENGP1ADWARAP4130, DUKHENGP1BDWARAP4530, DUKHENGP2BDWARAP5310, DUKHENGP03DWARAP5690 |  |  |  | 53d | 45d |  | DH01-PROCUREMENT | 112,079 | PRODEL1055 | DUKHPROGN00PRDV3440 | DUKHPROGEN00PRDV3440 | DH | PRO | OA | PRO |  | FI | DR |

Notes:
- DUKHPROGEN00PRDV3000: Expenses: P03-Excavation and Earth Works 5760; P1A-Excavation and Earth Works 26640; P1B-Excavation and Earth Works 21996; P2A-Excavation and Earth Works 3276; P2B-Excavation and Earth Works 4914
- DUKHPROGEN00PRDV3020: Expenses: P03-Concrete Works 71620; P1A-Concrete Works 239057; P1B-Concrete Works 165438; P2A-Concrete Works 6360; P2B-Concrete Works 9543
- DUKHPROGEN00PRDV3010: Expenses: P03-Block work 307710; P03-External works within the Plot Curtilage 42175; P1A-Block work 710088; P1A-External works within the Plot Curtilage 22847; P1B-Block work 500046; P1B-External works within the Plot Curtilage 23316; P2A-Block work 60039; P2A-External works within the Plot Curtilage 4184; P2B-Block work 90060; P2B-External works within the Plot Curtilage 6276
- DUKHPROGEN00PRDV3030: Expenses: P03-Concrete Works 59780; P1A-Concrete Works 197470; P1B-Concrete Works 152684; P2A-Concrete Works 12474; P2B-Concrete Works 14490
- DUKHPROGEN00PRDV3060: Expenses: P03-Plumbing and Drainage works 20600; P1A-Plumbing and Drainage works 93730; P1B-Plumbing and Drainage works 54268; P2A-Plumbing and Drainage works 5776; P2B-Plumbing and Drainage works 8661
- DUKHPROGEN00PRDV3070: Expenses: P03-External works within the Plot Curtilage 14330; P03-Plumbing and Drainage works 27890; P1A-Plumbing and Drainage works 60947; P1B-Plumbing and Drainage works 40230; P2A-Plumbing and Drainage works 3593; P2B-Plumbing and Drainage works 5391
- DUKHPROGEN00PRDV3040: Expenses: P03-Finishes 205700; P1A-Finishes 632399; P1B-Finishes 501156; P2A-Finishes 25556; P2B-Finishes 38334
- DUKHPROGEN00PRDV3050: Expenses: P03-Roofing 87866; P1A-Roofing 116271; P1B-Roofing 65508; P2A-Roofing 14468; P2B-Roofing 21702
- DUKHPROGEN00PRDV3080: Expenses: P03-Plumbing and Drainage works 272063; P1A-Plumbing and Drainage works 523299; P1B-Plumbing and Drainage works 296880; P2A-Plumbing and Drainage works 43248; P2B-Plumbing and Drainage works 64872
- DUKHPROGEN00PRDV3110: Expenses: P1A-Finishes 189810; P1B-Finishes 9892
- DUKHPROGEN00PRDV3090: Expenses: P03-Finishes 3754; P1A-Finishes 76118; P1B-Finishes 50596; P2A-Finishes 6672; P2B-Finishes 10008
- DUKHPROGEN00PRDV3100: Expenses: P03-Finishes 14002; P1A-Finishes 266064; P1B-Finishes 329772; P2A-Finishes 71820; P2B-Finishes 107730
- DUKHPROGEN00PRDV3120: Expenses: P03-Finishes 161630; P1A-Finishes 417912; P1B-Finishes 205376; P2A-Finishes 23424; P2B-Finishes 32379
- DUKHPROGEN00PRDV3130: Expenses: P03-Finishes 261424; P1A-Finishes 462011; P1B-Finishes 310884; P2A-Finishes 35556; P2B-Finishes 51621
- DUKHPROGEN00PRDV3140: Expenses: P2A-Roofing 73872; P2B-Roofing 110808
- DUKHPROGEN00PRDV3180: Expenses: I03-Electrical power supply and distribution 357560; I03-Telecommunication 2425; I1A-Electrical power supply and distribution 492485; I1A-Telecommunication 5210; I1B-Electrical power supply and distribution 666424; I1B-Telecommunication 2856; I2A-Electrical power supply and distribution 299416; I2A-Telecommunication 728; I2B-Electrical power supply and distribution 134268; I2B-Telecommunication 1484
- DUKHPROGEN00PRDV3520: Expenses: P03-External works within the Plot Curtilage 230990; P03-Plumbing and Drainage works 983195; P1A-Plumbing and Drainage works 264354; P1B-Plumbing and Drainage works 185726
- DUKHPROGEN00PRDV3530: Expenses: P03-Air-conditioning and Ventilation works 19105; P1A-Air-conditioning and Ventilation works 23819; P1B-Air-conditioning and Ventilation works 16918; P2A-Air-conditioning and Ventilation works 2210; P2B-Air-conditioning and Ventilation works 3315
- DUKHPROGEN00PRDV3540: Expenses: I03-Water supply system 14688; I1A-Water supply system 25365; I1B-Water supply system 15376; I2A-Water supply system 2706; I2B-Water supply system 5226
- DUKHPROGEN00PRDV3630: Expenses: I03-Water supply system 1135; I1A-Water supply system 1135; I1B-Water supply system 1135; I2A-Water supply system 1135; I2B-Water supply system 1135
- DUKHPROGEN00PRDV3660: Expenses: P1A-External works within the Plot Curtilage 38804; P1B-External works within the Plot Curtilage 73508; P2A-External works within the Plot Curtilage 12312; P2B-External works within the Plot Curtilage 18468
- DUKHPROGEN00PRDV3670: Expenses: I03-Water supply system 8772; I1A-Water supply system 9160; I1B-Water supply system 4880; I2A-Water supply system 898; I2B-Water supply system 1350
- DUKHPROGEN00PRDV3640: Expenses: P03-External works within the Plot Curtilage 28875; P1A-Plumbing and Drainage works 33042; P1B-Plumbing and Drainage works 23218; P2A-Plumbing and Drainage works 19459; P2B-Plumbing and Drainage works 29187
- DUKHPROGEN00PRDV3650: Expenses: I03-Water supply system 7931; I1A-Water supply system 13695; I1B-Water supply system 8304; I2A-Water supply system 1462; I2B-Water supply system 2822
- DUKHPROGEN00PRDV3700: Expenses: I03-Road work 189751; I1A-Road work 245875; I1B-Road work 191276; I2A-Road work 62926; I2B-Road work 94850
- DUKHPROGEN00PRDV3710: Expenses: I03-Road work 26740; I1A-Road work 126210; I1B-Road work 97196; I2A-Road work 115524; I2B-Road work 48200
- DUKHPROGEN00PRDV3720: Expenses: I03-Road work 1408; I1A-Road work 6645; I1B-Road work 5116; I2A-Road work 6080; I2B-Road work 2536
- DUKHPROGEN00PRDV3740: Expenses: I03-Hard and soft landscaping 8835; I1A-Hard and soft landscaping 31730; I1B-Hard and soft landscaping 30400; I2A-Hard and soft landscaping 16436; I2B-Hard and soft landscaping 46740
- DUKHPROGEN00PRDV3750: Expenses: I03-Hard and soft landscaping 1520; I1A-Hard and soft landscaping 4560; I1B-Hard and soft landscaping 3420; I2A-Hard and soft landscaping 760; I2B-Hard and soft landscaping 1140
- DUKHPROGEN00PRDV3150: Expenses: P03-Plumbing and Drainage works 202800; P1A-Plumbing and Drainage works 443221; P1B-Plumbing and Drainage works 292582; P2A-Plumbing and Drainage works 26132; P2B-Plumbing and Drainage works 39198
- DUKHPROGEN00PRDV3160: Expenses: P03-Air-conditioning and Ventilation works 21411; P1A-Air-conditioning and Ventilation works 47523; P1B-Air-conditioning and Ventilation works 26176; P2A-Air-conditioning and Ventilation works 2636; P2B-Air-conditioning and Ventilation works 3600
- DUKHPROGEN00PRDV3170: Expenses: P03-Electrical Installations 142254; P1A-Electrical Installations 158438; P1B-Electrical Installations 71468; P2A-Electrical Installations 23593; P2B-Electrical Installations 23784
- DUKHPROGEN00PRDV3190: Expenses: P03-Electrical Installations 395966; P1A-Electrical Installations 951566; P1B-Electrical Installations 763328; P2A-Electrical Installations 66192; P2B-Electrical Installations 99288
- DUKHPROGEN00PRDV3200: Expenses: P03-Electrical Installations 59135; P1A-Electrical Installations 144539; P1B-Electrical Installations 85916; P2A-Electrical Installations 12788; P2B-Electrical Installations 19182
- DUKHPROGEN00PRDV3210: Expenses: P03-Electrical Installations 17714; P1A-Electrical Installations 38480; P1B-Electrical Installations 32818; P2A-Electrical Installations 2893; P2B-Electrical Installations 4734
- DUKHPROGEN00PRDV3220: Expenses: P03-Plumbing and Drainage works 12290; P1A-Plumbing and Drainage works 44512; P1B-Plumbing and Drainage works 31292; P2A-Plumbing and Drainage works 3892; P2B-Plumbing and Drainage works 5838
- DUKHPROGEN00PRDV3230: Expenses: P03-Plumbing and Drainage works 3010; P1A-Plumbing and Drainage works 42123; P1B-Plumbing and Drainage works 34412; P2A-Plumbing and Drainage works 3716; P2B-Plumbing and Drainage works 5574
- DUKHPROGEN00PRDV3240: Expenses: P03-Air-conditioning and Ventilation works 118130; P1A-Air-conditioning and Ventilation works 272172; P1B-Air-conditioning and Ventilation works 188004; P2A-Air-conditioning and Ventilation works 10786; P2B-Air-conditioning and Ventilation works 16176
- DUKHPROGEN00PRDV3260: Expenses: P03-Electrical Installations 44286; P1A-Electrical Installations 96196; P1B-Electrical Installations 82042; P2A-Electrical Installations 7235; P2B-Electrical Installations 11838
- DUKHPROGEN00PRDV3270: Expenses: P03-Electrical Installations 65525; P1A-Electrical Installations 180689; P1B-Electrical Installations 128812; P2A-Electrical Installations 22599; P2B-Electrical Installations 33900
- DUKHPROGEN00PRDV3280: Expenses: P03-Electrical Installations 11560; P1A-Electrical Installations 31885; P1B-Electrical Installations 22732; P2A-Electrical Installations 3988; P2B-Electrical Installations 5982
- DUKHPROGEN00PRDV3290: Expenses: P03-Electrical Installations 46680; P1A-Electrical Installations 115542; P1B-Electrical Installations 65488; P2A-Electrical Installations 14594; P2B-Electrical Installations 21891
- DUKHPROGEN00PRDV3300: Expenses: P03-Finishes 191350; P1A-Finishes 375077; P1B-Finishes 231088; P2A-Finishes 20016; P2B-Finishes 30024
- DUKHPROGEN00PRDV3310: Expenses: P03-Finishes 28616; P1A-Finishes 23623; P1B-Finishes 14384
- DUKHPROGEN00PRDV3320: Expenses: I03-Hard and soft landscaping 372; I03-Telecommunication 677; I1A-Hard and soft landscaping 186; I1A-Telecommunication 677; I1B-Hard and soft landscaping 186; I1B-Telecommunication 677; P03-Painting and Decorating 142479; P1A-Painting and Decorating 282701; P1B-Painting and Decorating 231696; P2A-Painting and Decorating 13866; P2B-Painting and Decorating 20865
- DUKHPROGEN00PRDV3330: Expenses: P03-Plumbing and Drainage works 159770; P1A-Plumbing and Drainage works 149082; P1B-Plumbing and Drainage works 104988; P2A-Plumbing and Drainage works 25296; P2B-Plumbing and Drainage works 37944
- DUKHPROGEN00PRDV3340: Expenses: P03-Air-conditioning and Ventilation works 1910; P1A-Air-conditioning and Ventilation works 2385; P1B-Air-conditioning and Ventilation works 1692; P2A-Air-conditioning and Ventilation works 220; P2B-Air-conditioning and Ventilation works 330
- DUKHPROGEN00PRDV3350: Expenses: I03-Street lighting 15414; I1A-Street lighting 27100; I1B-Street lighting 21096; I2A-Street lighting 5582; I2B-Street lighting 7158
- DUKHPROGEN00PRDV3360: Expenses: P03-Electrical Installations 26572; P1A-Electrical Installations 57717; P1B-Electrical Installations 49224; P2A-Electrical Installations 4341; P2B-Electrical Installations 7104
- DUKHPROGEN00PRDV3370: Expenses: P03-Electrical Installations 2530; P1A-Electrical Installations 1054; P2A-Electrical Installations 526
- DUKHPROGEN00PRDV3380: Expenses: P03-Electrical Installations 44286; P1A-Electrical Installations 96196; P1B-Electrical Installations 82042; P2A-Electrical Installations 7235; P2B-Electrical Installations 11838
- DUKHPROGEN00PRDV3390: Expenses: P03-Finishes 28654
- DUKHPROGEN00PRDV3400: Expenses: P03-Metal work 27424; P1A-Metal work 140617; P1B-Metal work 65208; P2A-Metal work 8208; P2B-Metal work 10770
- DUKHPROGEN00PRDV3410: Expenses: P03-Metal work 76355; P1A-Metal work 167416; P1B-Metal work 96636
- DUKHPROGEN00PRDV3420: Expenses: I03-Water supply system 1653; I1A-Water supply system 1653; I1B-Water supply system 1653; I2A-Water supply system 1653; I2B-Water supply system 1653; P03-Painting and Decorating 3135; P1A-Painting and Decorating 7935; P1B-Painting and Decorating 7904
- DUKHPROGEN00PRDV3430: Expenses: P1A-External works within the Plot Curtilage 157324; P1B-External works within the Plot Curtilage 106548; P2A-External works within the Plot Curtilage 14434; P2B-External works within the Plot Curtilage 21651
- DUKHPROGEN00PRDV3440: Expenses: P1A-Carpentry and Joinery 44317; P1B-Carpentry and Joinery 67762

| ID | Activity | Duration | Start | Finish | Predecessors | Total float | Free float | Calendar | Cost | P3 ACTID | P6 ID (old) | NP61D | PROJECT | PHASES | PACKAGE | PART | STEP | FLOORS |
| --- | --- | --- | --- | --- | --- | --- | --- | --- | --- | --- | --- | --- | --- | --- | --- | --- | --- | --- |
| DUKHPROGEN00PRDV3450 | Proc & Del Ironmogeries | 120d | 2013-08-18 | 2013-12-15 | DUKHENGP1ADWARAP4130, DUKHENGP2ADWARAP4930, DUKHPROGEN00MTAP2450, DUKHENGP2BDWARAP5310, DUKHENGP03DWARAP5690, DUKHENGP1BDWARAP4530 | -27d | 9d | DH01-PROCUREMENT | 314,365 | PRODEL1080 | DUKHPROGN00PRDV3450 | DUKHPROGEN00PRDV3450 | DH | PRO | OA | PRO | FI | DR |
| DUKHPROGEN00PRDV3460 | Proc & Del Aluminum Doors | 120d | 2013-08-18 | 2013-12-15 | DUKHENGP2ADWARAP4930, DUKHENGP2BDWARAP5310, DUKHENGP1ADWARAP4130, DUKHENGP1BDWARAP4530, DUKHPROGEN00MTAP2460, DUKHENGP03DWARAP5690 | 22d | 15d | DH01-PROCUREMENT | 387,386 | PRODEL1085 | DUKHPROGN00PRDV3460 | DUKHPROGEN00PRDV3460 | DH | PRO | OA | PRO | FI | DR |
| DUKHPROGEN00PRDV3470 | Proc & Del Aluminum Windows | 120d | 2013-08-18 | 2013-12-15 | DUKHPROGEN00MTAP2470, DUKHENGP1BDWARAP4530, DUKHENGP03DWARAP5690, DUKHENGP1ADWARAP4130, DUKHENGP2BDWARAP5310, DUKHENGP2ADWARAP4930 | 29d | 21d | DH01-PROCUREMENT | 649,526 | PRODEL1090 | DUKHPROGN00PRDV3470 | DUKHPROGEN00PRDV3470 | DH | PRO | OA | PRO | FI | DR |
| DUKHPROGEN00PRDV3480 | Proc & Del Granite | 120d | 2013-08-18 | 2013-12-15 | DUKHENGP2ADWARAP4850, DUKHENGP1ADWARAP4050, DUKHENGP1BDWARAP4450, DUKHPROGEN00MTAP2480, DUKHENGP2BDWARAP5230, DUKHENGP03DWARAP5610 | 0d |  | DH01-PROCUREMENT | 1,215,742 | PRODEL1095 | DUKHPROGN00PRDV3480 | DUKHPROGEN00PRDV3480 | DH | PRO | OA | PRO | FI | FR |
| DUKHPROGEN00PRDV3490 | Proc & Del Wooden Doors | 120d | 2013-08-18 | 2013-12-15 | DUKHENGP2ADWARAP4930, DUKHENGP1BDWARAP4530, DUKHENGP1ADWARAP4130, DUKHENGP2BDWARAP5310, DUKHPROGEN00MTAP2490, DUKHENGP03DWARAP5690 | -27d | 9d | DH01-PROCUREMENT | 1,257,457 | PRODEL1050 | DUKHPROGN00PRDV3490 | DUKHPROGEN00PRDV3490 | DH | PRO | OA | PRO | FI | DR |
| DUKHPROGEN00PRDV3500 | Proc & Del Steel Door | 120d | 2013-08-18 | 2013-12-15 | DUKHPROGEN00MTAP2500 | -16d | 19d | DH01-PROCUREMENT | 32,990 | PRODEL1215 | DUKHPROGN00PRDV3500 | DUKHPROGEN00PRDV3500 | DH | PRO | OA | PRO | XW | WI |
| DUKHPROGEN00PRDV3510 | Proc & Del Stainless Steel Cover | 120d | 2013-08-18 | 2013-12-15 | DUKHPROGEN00MTAP2510 | -16d | 19d | DH01-PROCUREMENT | 62,406 | PRODEL1240 | DUKHPROGN00PRDV3510 | DUKHPROGEN00PRDV3510 | DH | PRO | OA | PRO | XW | WI |
| DUKHPROGEN00PRDV3550 | Proc & Del Closets /wardrobe& Pelmets | 120d | 2013-08-18 | 2013-12-15 | DUKHPROGEN00MTAP2550, DUKHENGP2ADWARAP4940, DUKHENGP03DWARAP5700, DUKHENGP2BDWARAP5320, DUKHENGP1ADWARAP4140, DUKHENGP1BDWARAP4540 | 20d | 0d | DH01-PROCUREMENT | 765,180 | PRODEL1060 | DUKHPROGN00PRDV3550 | DUKHPROGEN00PRDV3550 | DH | PRO | OA | PRO | FI | SP |
| DUKHPROGEN00PRDV3560 | Proc & Del Counters, Cabinets & Shelves | 120d | 2013-08-18 | 2013-12-15 | DUKHENGP03DWARAP5700, DUKHENGP1ADWARAP4140, DUKHENGP2ADWARAP4940, DUKHENGP1BDWARAP4540, DUKHENGP2BDWARAP5320, DUKHPROGEN00MTAP2560 | 20d | 0d | DH01-PROCUREMENT | 1,243,412 | PRODEL1065 | DUKHPROGN00PRDV3560 | DUKHPROGEN00PRDV3560 | DH | PRO | OA | PRO | FI | SP |
| DUKHPROGEN00PRDV3570 | Proc & Del Wooden Hand Rails | 100d | 2013-08-18 | 2013-11-25 | DUKHPROGEN00MTAP2570, DUKHENGP2BDWARAP5320, DUKHENGP1BDWARAP4540, DUKHENGP03DWARAP5700, DUKHENGP1ADWARAP4140, DUKHENGP2ADWARAP4940 | 40d | 20d | DH01-PROCUREMENT | 382,592 | PRODEL1070 | DUKHPROGN00PRDV3570 | DUKHPROGEN00PRDV3570 | DH | PRO | OA | PRO | FI | SP |
| DUKHPROGEN00PRDV3580 | Proc & Del Stainless Steel Handrail | 120d | 2013-08-18 | 2013-12-15 | DUKHPROGEN00MTAP2580 | 41d | 33d | DH01-PROCUREMENT | 1,412,997 | PRODEL1220 | DUKHPROGN00PRDV3580 | DUKHPROGEN00PRDV3580 | DH | PRO | OA | PRO | FI | SP |
| DUKHPROGEN00PRDV3590 | Proc & Del Manhole Covers and Frames | 90d | 2013-08-18 | 2013-11-15 | DUKHENGI2ADWWSAP5070, DUKHENGI2ADWIWAP5160, DUKHENGI1ADWIWAP4360, DUKHENGI1BDWDRAP4650, DUKHENGI1BDWIWAP4760, DUKHENGI2BDWWSAP5450, DUKHENGI1ADWWSAP4270, DUKHENGI03DWWSAP5830, DUKHENGI1ADWDRAP4250, DUKHENGI03DWDRAP5810, DUKHENGI2BDWDRAP5430, DUKHPROGEN00MTAP2590, DUKHENGI03DWIWAP5920, DUKHENGI2ADWDRAP5050, DUKHENGI1BDWWSAP4670, DUKHENGI2BDWIWAP5540 | 31d | 45d | DH01-PROCUREMENT | 369,385 | PRODEL1205 | DUKHPROGN00PRDV3590 | DUKHPROGEN00PRDV3590 | DH | PRO | OA | PRO | XW | WI |
| DUKHPROGEN00PRDV3600 | Proc & Del kerb works | 40d | 2013-08-18 | 2013-09-26 | DUKHPROGEN00MTAP2600 | 57d | 85d | DH01-PROCUREMENT | 78,509 | PRODEL1160 | DUKHPROGN00PRDV3600 | DUKHPROGEN00PRDV3600 | DH | PRO | OA | PRO | XW | IN |
| DUKHPROGEN00PRDV3610 | Proc & Del PVC Tent | 110d | 2013-08-18 | 2013-12-05 | DUKHPROGEN00MTAP2610 | -6d | 29d | DH01-PROCUREMENT | 184,116 | PRODEL1245 | DUKHPROGN00PRDV3610 | DUKHPROGEN00PRDV3610 | DH | PRO | OA | PRO | XW | WI |
| DUKHPROGEN00PRDV3620 | Proc & Del Strutural Steel | 120d | 2013-08-18 | 2013-12-15 | DUKHPROGEN00MTAP2620 | -11d | 24d | DH01-PROCUREMENT | 27,394 | PRODEL1250 | DUKHPROGN00PRDV3620 | DUKHPROGEN00PRDV3620 | DH | PRO | OA | PRO | XW | WI |
| DUKHPROGEN00PRDV3730 | Proc & Del Car Parking Shed | 90d | 2013-08-19 | 2013-11-16 | DUKHPROGEN00MTAP2730, DUKHENGI2ADWPSAP5140, DUKHENGI1ADWPSAP4340, DUKHENGI1BDWPSAP4740, DUKHENGI03DWPSAP5900, DUKHENGI2BDWPSAP5520 | 151d | 150d | DH01-PROCUREMENT | 843,454 | PRODEL1170 | DUKHPROGN00PRDV3730 | DUKHPROGEN00PRDV3730 | DH | PRO | OA | PRO | XW | IN |
| DUKHPROGEN00PRDV3760 | Proc & Del Sprinklers | 60d | 2013-08-19 | 2013-10-17 | DUKHPROGEN00MTAP2760, DUKHENGI2ADWIRAP5110, DUKHENGI03DWIRAP5870, DUKHENGI2BDWIRAP5490, DUKHENGI1ADWIRAP4310, DUKHENGI1BDWIRAP4710 | 164d | 152d | DH01-PROCUREMENT | 25,060 | PRODEL1465 | DUKHPROGN00PRDV3760 | DUKHPROGEN00PRDV3760 | DH | PRO | OA | PRO | MP | IR |
| DUKHPROGEN00PRDV3680 | Proc & Del Water Tank | 60d | 2013-08-25 | 2013-10-23 | DUKHENGP2ADWMEAP5020, DUKHENGP2ADWMEAP5010, DUKHENGP1ADWMEAP4220, DUKHENGP2BDWMEAP5390, DUKHENGP03DWMEAP5780, DUKHENGP2BDWMEAP5400, DUKHENGP03DWMEAP5770, DUKHENGP1ADWMEAP4210, DUKHPROGEN00MTAP2680, DUKHENGP1BDWMEAP4620, DUKHENGP1BDWMEAP4610 | 54d | 98d | DH01-PROCUREMENT | 97,824 | PRODEL1275 | DUKHPROGN00PRDV3680 | DUKHPROGEN00PRDV3680 | DH | PRO | OA | PRO | MP | PB |
| DUKHPROGEN00PRDV3690 | Proc & Del Fire Hydrant | 100d | 2013-08-25 | 2013-12-02 | DUKHENGI2BDWFFAP5440, DUKHENGI1ADWFFAP4260, DUKHENGI03DWFFAP5820, DUKHENGI2ADWFFAP5060, DUKHPROGEN00MTAP2690, DUKHENGI1BDWFFAP4660 | 23d | 20d | DH01-PROCUREMENT | 27,877 | PRODEL1425 | DUKHPROGN00PRDV3690 | DUKHPROGEN00PRDV3690 | DH | PRO | OA | PRO | MP | FG |
| DUKHPROGEN00PRDV3250 | Proc & Del Street Light Post Set | 120d | 2013-08-30 | 2013-12-27 | DUKHENGI2ADWTCAP5100, DUKHENGI03DWELAP5840, DUKHPROGEN00MTAP2250, DUKHENGI2ADWSTAP5090, DUKHENGI1ADWELAP4280, DUKHENGI2BDWTCAP5480, DUKHENGI03DWTCAP5860, DUKHENGI1BDWELAP4680, DUKHENGI1BDWTCAP4700, DUKHENGI03DWSTAP5850, DUKHENGI2ADWELAP5080, DUKHENGI1ADWTCAP4300, DUKHENGI2BDWELAP5460, DUKHENGI2BDWSTAP5470, DUKHENGI1ADWSTAP4290, DUKHENGI1BDWSTAP4690 | 79d | 40d | DH01-PROCUREMENT | 1,450,614 | PRODEL1370 | DUKHPROGN00PRDV3250 | DUKHPROGEN00PRDV3250 | DH | PRO | OA | PRO | MP | IN |
| DUKHPROGEN00PRDV3790 | Proc & Del Plantation(Grass,Trees) | 90d | 2013-09-01 | 2013-11-29 | DUKHPROGEN00MTAP2790, DUKHENGI1BDWSLAP4720, DUKHENGI2BDWSLAP5500, DUKHENGI03DWSLAP5880, DUKHENGI1ADWSLAP4320, DUKHENGI2ADWSLAP5120 | 30d | 38d | DH01-PROCUREMENT | 997,594 | PRODEL1185 | DUKHPROGN00PRDV3790 | DUKHPROGEN00PRDV3790 | DH | PRO | OA | PRO | XW | IN |
| DUKHPROGEN00PRDV3800 | Proc & Del Steel Gate & Barrier gates | 90d | 2013-09-05 | 2013-12-03 | DUKHPROGEN00MTAP2800 | 76d | 61d | DH01-PROCUREMENT | 22,824 | PRODEL1195 | DUKHPROGN00PRDV3800 | DUKHPROGEN00PRDV3800 | DH | PRO | OA | PRO | XW | IN |
| DUKHPROGEN00PRDV3810 | Proc & Del Nozzle Jet | 90d | 2013-09-05 | 2013-12-03 | DUKHENGI2ADWIRAP5110, DUKHENGI2BDWIRAP5490, DUKHENGI03DWIRAP5870, DUKHPROGEN00MTAP2810, DUKHENGI1ADWIRAP4310, DUKHENGI1BDWIRAP4710 | 117d | 105d | DH01-PROCUREMENT | 16,830 | PRODEL1470 | DUKHPROGN00PRDV3810 | DUKHPROGEN00PRDV3810 | DH | PRO | OA | PRO | MP | IR |
| DUKHPROGEN00PRDV3820 | Proc & Del Pre-cast Boundry Wall | 100d | 2013-09-05 | 2013-12-13 | DUKHENGI2ADWBWAP5130, DUKHENGI1BDWBWAP4730, DUKHENGI2BDWBWAP5510, DUKHPROGEN00MTAP2820, DUKHENGI1ADWBWAP4330, DUKHENGI03DWBWAP5890 | 49d | 35d | DH01-PROCUREMENT | 2,184,398 | PRODEL1190 | DUKHPROGN00PRDV3820 | DUKHPROGEN00PRDV3820 | DH | PRO | OA | PRO | XW | IN |
| DUKHPROGEN00PRDV3780 | Proc & Del Gazebo Structure | 120d | 2013-09-08 | 2014-01-05 | DUKHENGI1ADWGZAP4380, DUKHENGI2ADWGZAP5170, DUKHPROGEN00MTAP2780, DUKHENGI1BDWGZAP4780, DUKHENGI03DWGZAP5940, DUKHENGI2BDWGZAP5550 | 78d | 110d | DH01-PROCUREMENT | 85,511 | PRODEL1075 | DUKHPROGN00PRDV3780 | DUKHPROGEN00PRDV3780 | DH | PRO | OA | PRO | XW | IN |
| DUKHPROGEN00PRDV3770 | Proc & Del Kitchen Water Filter | 60d | 2013-09-11 | 2013-11-09 | DUKHENGP1ADWMEAP4210, DUKHENGP03DWMEAP5780, DUKHPROGEN00MTAP2770, DUKHENGP2BDWMEAP5400, DUKHENGP2ADWMEAP5010, DUKHENGP1BDWMEAP4620, DUKHENGP1ADWMEAP4220, DUKHENGP03DWMEAP5770, DUKHENGP2BDWMEAP5390, DUKHENGP2ADWMEAP5020, DUKHENGP1BDWMEAP4610 | 17d | 51d | DH01-PROCUREMENT | 3,138 | PRODEL1280 | DUKHPROGN00PRDV3770 | DUKHPROGEN00PRDV3770 | DH | PRO | OA | PRO | MP | PB |
| DUKHPROGEN00PRDV3830 | Proc & Del Solenoid Values | 90d | 2013-09-23 | 2013-12-21 | DUKHENGI2ADWIRAP5110, DUKHENGI03DWIRAP5870, DUKHENGI1ADWIRAP4310, DUKHENGI1BDWIRAP4710, DUKHPROGEN00MTAP2830, DUKHENGI2BDWIRAP5490 | 99d | 87d | DH01-PROCUREMENT | 31,791 | PRODEL1475 | DUKHPROGN00PRDV3830 | DUKHPROGEN00PRDV3830 | DH | PRO | OA | PRO | MP | IR |
| DUKHPROGEN00PRDV3850 | Proc & Del Fences | 90d | 2013-09-23 | 2013-12-21 | DUKHPROGEN00MTAP2850 | 151d | 158d | DH01-PROCUREMENT | 9,105 | PRODEL1495 | DUKHPROGN00PRDV3850 | DUKHPROGEN00PRDV3850 | DH | PRO | OA | PRO | XW | IN |
| DUKHPROGEN00PRDV3840 | Proc & Del Gate Values | 90d | 2013-10-10 | 2014-01-07 | DUKHENGI03DWIRAP5870, DUKHENGI1ADWIRAP4310, DUKHENGI2BDWIRAP5490, DUKHENGI2ADWIRAP5110, DUKHPROGEN00MTAP2840, DUKHENGI1BDWIRAP4710 | 82d | 70d | DH01-PROCUREMENT | 5,608 | PRODEL1480 | DUKHPROGN00PRDV3840 | DUKHPROGEN00PRDV3840 | DH | PRO | OA | PRO | MP | IR |
| DUKHPROGEN00PRDV3860 | Proc & Del Remote Control Value | 90d | 2013-10-30 | 2014-01-27 | DUKHPROGEN00MTAP2860, DUKHENGI2BDWIRAP5490, DUKHENGI1ADWIRAP4310, DUKHENGI1BDWIRAP4710, DUKHENGI03DWIRAP5870, DUKHENGI2ADWIRAP5110 | 62d | 50d | DH01-PROCUREMENT | 43,014 | PRODEL1485 | DUKHPROGN00PRDV3860 | DUKHPROGEN00PRDV3860 | DH | PRO | OA | PRO | MP | IR |
| DUKHPROGEN00PRDV3870 | Proc & Del Irrigation Controller | 90d | 2013-11-17 | 2014-02-14 | DUKHENGI03DWIRAP5870, DUKHENGI2ADWIRAP5110, DUKHENGI1ADWIRAP4310, DUKHENGI1BDWIRAP4710, DUKHENGI2BDWIRAP5490, DUKHPROGEN00MTAP2870 | 44d | 32d | DH01-PROCUREMENT | 59,842 | PRODEL1490 | DUKHPROGN00PRDV3870 | DUKHPROGEN00PRDV3870 | DH | PRO | OA | PRO | MP | IR |

Notes:
- DUKHPROGEN00PRDV3450: Expenses: P03-Carpentry and Joinery 134720; P1A-Carpentry and Joinery 93980; P1B-Carpentry and Joinery 48068; P2A-Carpentry and Joinery 14986; P2B-Carpentry and Joinery 22611
- DUKHPROGEN00PRDV3460: Expenses: P03-Metal work 40306; P1A-Metal work 259948; P1B-Metal work 87132
- DUKHPROGEN00PRDV3470: Expenses: P03-Metal work 168466; P1A-Metal work 283847; P1B-Metal work 151548; P2A-Metal work 18266; P2B-Metal work 27399
- DUKHPROGEN00PRDV3480: Expenses: P03-Finishes 139718; P1A-Finishes 606874; P1B-Finishes 438640; P2A-Finishes 12204; P2B-Finishes 18306
- DUKHPROGEN00PRDV3490: Expenses: P03-Carpentry and Joinery 538880; P1A-Carpentry and Joinery 375910; P1B-Carpentry and Joinery 192276; P2A-Carpentry and Joinery 59944; P2B-Carpentry and Joinery 90447
- DUKHPROGEN00PRDV3500: Expenses: P2A-Metal work 13196; P2B-Metal work 19794
- DUKHPROGEN00PRDV3510: Expenses: P03-External works within the Plot Curtilage 22160; P2A-External works within the Plot Curtilage 16099; P2B-External works within the Plot Curtilage 24147
- DUKHPROGEN00PRDV3550: Expenses: P03-Carpentry and Joinery 137260; P1A-Carpentry and Joinery 341390; P1B-Carpentry and Joinery 239290; P2A-Carpentry and Joinery 18896; P2B-Carpentry and Joinery 28344
- DUKHPROGEN00PRDV3560: Expenses: P03-Carpentry and Joinery 223050; P1A-Carpentry and Joinery 554753; P1B-Carpentry and Joinery 388848; P2A-Carpentry and Joinery 30705; P2B-Carpentry and Joinery 46056
- DUKHPROGEN00PRDV3570: Expenses: P03-Carpentry and Joinery 68630; P1A-Carpentry and Joinery 170697; P1B-Carpentry and Joinery 119646; P2A-Carpentry and Joinery 9447; P2B-Carpentry and Joinery 14172
- DUKHPROGEN00PRDV3580: Expenses: I03-Water supply system 4919; I1A-Water supply system 4919; I1B-Water supply system 4919; I2A-Water supply system 4919; I2B-Water supply system 4919; P03-External works within the Plot Curtilage 40710; P03-Metal work 23136; P1A-External works within the Plot Curtilage 200836; P1A-Metal work 763877; P1B-External works within the Plot Curtilage 197580; P1B-Metal work 105268; P2A-External works within the Plot Curtilage 22798; P2B-External works within the Plot Curtilage 34197
- DUKHPROGEN00PRDV3590: Expenses: I03-Surface Water drainage and Sewerage system 57406; I1A-Surface Water drainage and Sewerage system 51915; I1B-Surface Water drainage and Sewerage system 34044; I2A-Surface Water drainage and Sewerage system 6146; I2B-Surface Water drainage and Sewerage system 5674; P03-External works within the Plot Curtilage 9079; P1A-External works within the Plot Curtilage 138556; P1B-External works within the Plot Curtilage 48184; P2A-External works within the Plot Curtilage 7488; P2B-External works within the Plot Curtilage 10893
- DUKHPROGEN00PRDV3600: Expenses: P1A-External works within the Plot Curtilage 32765; P1B-External works within the Plot Curtilage 21748; P2A-External works within the Plot Curtilage 9152; P2B-External works within the Plot Curtilage 14844
- DUKHPROGEN00PRDV3610: Expenses: P1A-External works within the Plot Curtilage 108132; P1B-External works within the Plot Curtilage 75984
- DUKHPROGEN00PRDV3620: Expenses: P03-External works within the Plot Curtilage 2464; P1A-External works within the Plot Curtilage 12016; P1B-External works within the Plot Curtilage 8444; P2A-External works within the Plot Curtilage 1788; P2B-External works within the Plot Curtilage 2682
- DUKHPROGEN00PRDV3730: Expenses: I03-Road work 221678; I1A-Road work 275750; I1B-Road work 177020; I2A-Road work 49752; I2B-Road work 119254
- DUKHPROGEN00PRDV3760: Expenses: I03-Water supply system 8772; I1A-Water supply system 9160; I1B-Water supply system 4880; I2A-Water supply system 898; I2B-Water supply system 1350
- DUKHPROGEN00PRDV3680: Expenses: P03-Plumbing and Drainage works 12290; P1A-Plumbing and Drainage works 44512; P1B-Plumbing and Drainage works 31292; P2A-Plumbing and Drainage works 3892; P2B-Plumbing and Drainage works 5838
- DUKHPROGEN00PRDV3690: Expenses: I03-Water supply system 6463; I1A-Water supply system 11160; I1B-Water supply system 6764; I2A-Water supply system 1190; I2B-Water supply system 2300
- DUKHPROGEN00PRDV3250: Expenses: I03-Street lighting 292860; I1A-Street lighting 514910; I1B-Street lighting 400788; I2A-Street lighting 106058; I2B-Street lighting 135998
- DUKHPROGEN00PRDV3790: Expenses: I03-Hard and soft landscaping 460038; I1A-Hard and soft landscaping 187980; I1B-Hard and soft landscaping 188708; I2A-Hard and soft landscaping 51174; I2B-Hard and soft landscaping 109694
- DUKHPROGEN00PRDV3800: Expenses: I03-Hard and soft landscaping 5700; I1A-Hard and soft landscaping 8560; I1B-Hard and soft landscaping 6520; I2A-Hard and soft landscaping 1226; I2B-Hard and soft landscaping 818
- DUKHPROGEN00PRDV3810: Expenses: I03-Water supply system 4760; I1A-Water supply system 3720; I1B-Water supply system 3472; I2A-Water supply system 2216; I2B-Water supply system 2662
- DUKHPROGEN00PRDV3820: Expenses: I03-Hard and soft landscaping 251474; I1A-Hard and soft landscaping 929720; I1B-Hard and soft landscaping 527388; I2A-Hard and soft landscaping 188094; I2B-Hard and soft landscaping 287722
- DUKHPROGEN00PRDV3780: Expenses: I03-Hard and soft landscaping 14252; I1A-Hard and soft landscaping 28503; I1B-Hard and soft landscaping 14252; I2A-Hard and soft landscaping 14252; I2B-Hard and soft landscaping 14252
- DUKHPROGEN00PRDV3770: Expenses: P03-Plumbing and Drainage works 630; P1A-Plumbing and Drainage works 1387; P1B-Plumbing and Drainage works 916; P2A-Plumbing and Drainage works 82; P2B-Plumbing and Drainage works 123
- DUKHPROGEN00PRDV3830: Expenses: I03-Water supply system 8991; I1A-Water supply system 7030; I1B-Water supply system 6556; I2A-Water supply system 4188; I2B-Water supply system 5026
- DUKHPROGEN00PRDV3850: Expenses: I03-Water supply system 1821; I1A-Water supply system 1821; I1B-Water supply system 1821; I2A-Water supply system 1821; I2B-Water supply system 1821
- DUKHPROGEN00PRDV3840: Expenses: I03-Water supply system 1586; I1A-Water supply system 1240; I1B-Water supply system 1156; I2A-Water supply system 738; I2B-Water supply system 888
- DUKHPROGEN00PRDV3860: Expenses: I03-Water supply system 12163; I1A-Water supply system 9515; I1B-Water supply system 8872; I2A-Water supply system 5664; I2B-Water supply system 6800
- DUKHPROGEN00PRDV3870: Expenses: I03-Water supply system 16923; I1A-Water supply system 13235; I1B-Water supply system 12340; I2A-Water supply system 7882; I2B-Water supply system 9462

| ID | WBS | Activity | Duration | Start | Finish | Predecessors | Complete | Planned start | Planned finish | Total float | Free float | Resources | Cost | P3 ACTID | P6 ID (old) | NP61D | PROJECT | PHASES | PACKAGE | PART | BILL NOS | BILL DIVISION | RES PACK | rem | ELEMENTS | STEP | FLOORS | EXECUTER |
| --- | --- | --- | --- | --- | --- | --- | --- | --- | --- | --- | --- | --- | --- | --- | --- | --- | --- | --- | --- | --- | --- | --- | --- | --- | --- | --- | --- | --- |
|  | K30 | **CONSTRUCTION** |  | 2012-11-10 | 2015-01-19 |  |  |  |  |  |  |  |  |  |  |  |  |  |  |  |  |  |  |  |  |  |  |  |
|  | L15 | **PACKAGE-1A** |  | 2012-11-10 | 2015-01-12 |  |  |  |  |  |  |  |  |  |  |  |  |  |  |  |  |  |  |  |  |  |  |  |
|  | 03 | **SITE PREPARATORY WORKS** |  | 2012-11-10 | 2013-02-13 |  |  |  |  |  |  |  |  |  |  |  |  |  |  |  |  |  |  |  |  |  |  |  |
| DUKHCONP1AGNSP002000 |  | Scanning for Existing Services for rerouting | 16d | 2012-11-10 A | 2012-11-27 A | DUKHMOBP010000004000 SS+7d | 100% |  |  |  |  | ELECTRICIANS SK [70 h]; MECHANICALS SK [67.5 h]; LABOR - CIVIL [187.5 h] | 19,002 | 1ASP010020 | DUKHCON1AGNCI002000 | DUKHCONP1AGNSP002000 | DH | CON | 1A | SP | B03 | B03-D02 | RES-1A |  |  |  |  |  |
| DUKHCONP1AGNSP003000 |  | Site stripping | 20d | 2012-11-17 A | 2012-12-09 A | DUKHCONP1AGNSP002000 SS+6d | 100% |  |  |  |  | LABOR - CIVIL [375 h]; BOBCAT [100 h]; LOADER [100 h]; TRUCK [100 h]; EQUIP OPERATORS [300 h] | 1,600,580 | 1ASP010030 | DUKHCON1AGNCI003000 | DUKHCONP1AGNSP003000 | DH | CON | 1A | SP | B03 | B03-D03 | RES-1A |  |  |  |  |  |
| DUKHCONP1AGNSP004000 |  | Demolition of Existing building & landscaping | 20d | 2012-11-22 A | 2012-12-15 A | DUKHCONP1AGNSP003000 SS+5d | 100% |  |  |  |  | EQUIP OPERATORS [1750 h]; LABOR - CIVIL [937.5 h]; POCLAIN [1000 h]; LOADER [250 h]; TRUCK [250 h]; BREAKER [250 h] | 895,872 | 1ASP010040 | DUKHCON1AGNCI004000 | DUKHCONP1AGNSP004000 | DH | CON | 1A | SP | B03 | B03-D02 | RES-1A |  |  |  |  |  |
| DUKHCONP1AGNSP005000 |  | Demolition of existing services works | 20d | 2012-11-28 A | 2012-12-20 A | DUKHCONP1AGNSP004000 SS+5d | 100% | 2012-11-28 | 2012-12-22 |  |  | LABOR - CIVIL [375 h]; POCLAIN [100 h]; LOADER [100 h]; TRUCK [100 h]; EQUIP OPERATORS [400 h]; BREAKER [100 h] | 342,361 | 1ASP010050 | DUKHCON1AGNCI005000 | DUKHCONP1AGNSP005000 | DH | CON | 1A | SP | B03 | B03-D02 | RES-1A |  |  |  |  |  |
| DUKHCONP1AGNSP001000 |  | Survey works, | 20d | 2012-12-01 A | 2012-12-24 A | DUKHMOBP010000004000 | 100% |  |  |  |  | SURVEYOR SK [50 h]; LABOR - CIVIL [37.5 h] | 22,802 | 1ASP010000 | DUKHCON1AGNCI001000 | DUKHCONP1AGNSP001000 | DH | CON | 1A | SP | B03 | B03-D02 | RES-1A |  |  |  |  |  |
| DUKHCONP1AGNSP002100 |  | Submission of Scanning Reports | 5d | 2012-12-01 A | 2012-12-05 A | DUKHCONP1AGNSP002000 | 100% |  |  |  |  | QUANTITY SURVEYOUR [40 h] | 4,750 | 1ASP010000 | DUKHCON1AGNCI001000 | DUKHCONP1AGNSP001000 | DH | CON | 1A | SP | B03 | B03-D02 | RES-1A |  |  |  |  |  |
| DUKHCONP1AGNSP002200 |  | Information Required for Rerouting | 12d | 2012-12-06 A | 2012-12-20 A | DUKHCONP1AGNSP002100 | 100% |  |  |  |  |  |  | 1ASP010000 | DUKHCON1AGNCI001000 | DUKHCONP1AGNSP001000 | DH | CON | 1A | SP | B03 | B03-D02 | RES-1A |  |  |  |  |  |
| DUKHCONP1AGNSP002300 |  | Preparation & Submission for new Layout for rerouting | 7d | 2012-12-22 A | 2012-12-29 A | DUKHCONP1AGNSP002200 | 100% |  |  |  |  | QUANTITY SURVEYOUR [40 h] | 4,751 | 1ASP010000 | DUKHCON1AGNCI001000 | DUKHCONP1AGNSP001000 | DH | CON | 1A | SP | B03 | B03-D02 | RES-1A |  |  |  |  |  |
| DUKHCONP1AGNSP002400 |  | Approval for new Layout for rerouting | 14d | 2012-12-30 A | 2013-01-14 A | DUKHCONP1AGNSP002300 | 100% |  |  |  |  |  |  | 1ASP010000 | DUKHCON1AGNCI001000 | DUKHCONP1AGNSP001000 | DH | CON | 1A | SP | B03 | B03-D02 | RES-1A |  |  |  |  |  |
| DUKHCONP1AGNSP002500 |  | Rerouting Works | 25d | 2013-01-15 A | 2013-02-13 A | DUKHCONP1AGNSP002400 | 100% |  |  |  |  | LABOR - CIVIL [188 h]; ELECTRICIANS SK [70 h]; MECHANICALS SK [68 h] | 19,002 | 1ASP010000 | DUKHCON1AGNCI001000 | DUKHCONP1AGNSP001000 | DH | CON | 1A | SP | B03 | B03-D02 | RES-1A |  |  |  |  |  |
|  | 05 | **MOCK UP VILLA** |  | 2013-10-01 | 2014-03-09 |  |  |  |  |  |  |  |  |  |  |  |  |  |  |  |  |  |  |  |  |  |  |  |
|  | 15 | **FINISHING WORKS** |  | 2013-10-01 | 2014-02-19 |  |  |  |  |  |  |  |  |  |  |  |  |  |  |  |  |  |  |  |  |  |  |  |
|  | 10 | **INTERNAL FINISHES** |  | 2013-10-01 | 2014-02-19 |  |  |  |  |  |  |  |  |  |  |  |  |  |  |  |  |  |  |  |  |  |  |  |
|  | 10 | **GROUND FLOOR** |  | 2013-10-01 | 2014-02-02 |  |  |  |  |  |  |  |  |  |  |  |  |  |  |  |  |  |  |  |  |  |  |  |
| DUKHCONP1AMKARGF3000 |  | Block work | 6d | 2013-10-01 | 2013-10-07 | DUKHCONP1AZ1STGF2015 FF+5d, DUKHCONP1AZ1STGF2015 SS+21d |  |  |  | -6d | 0d | BLOCK MASON SK [780 h]; LABOR- SUBCONTRACTOR [438.75 h]; BLOCK QTY [390 Sqm] | 28,195 | 1AMKUPGF10 | DUKHCON1AMKARGF3000 | DUKHCONP1AMKARGF3000 | DH | CON | 1A | MK | B02 | B02-D03 | RES-1A | REM | FIN | IF | GF |  |
| DUKHCONP1AMKARGF3005 |  | Plastering work | 7d | 2013-10-14 | 2013-10-23 | DUKHPROGEN00PRDV3040, DUKHCONP1AMKARGF3000, DUKHCONP1AMKELGF4000 |  |  |  | 1d | 0d | PLASTER MASON SK [1092 h]; LABOR- SUBCONTRACTOR [614.25 h]; PLASTER QTY [682 Sqm] | 8,949 | 1AMKUPGF12 | DUKHCON1AMKARGF3005 | DUKHCONP1AMKARGF3005 | DH | CON | 1A | MK | B02 | B02-D10 | RES-1A | REM | FIN | IF | GF |  |
| DUKHCONP1AMKARGF3010 |  | Flooring screed | 7d | 2013-10-20 | 2013-10-27 | DUKHCONP1AMKARGF3005 SS+3d |  |  |  | 10d | 0d | SCREED MASON SK [144 h]; LABOR- SUBCONTRACTOR [54 h]; FLOORING SCREED QTY [179 Sqm] | 6,001 | 1AMKUPGF15 | DUKHCON1AMKARGF3010 | DUKHCONP1AMKARGF3010 | DH | CON | 1A | MK | B02 | B02-D10 | RES-1A | REM | FIN | IF | GF |  |
| DUKHCONP1AMKARGF3015 |  | Wet area waterproofing & Protection Screed | 5d | 2013-10-23 | 2013-10-28 | DUKHCONP1AMKARGF3005 FF+3d, DUKHCONP1AMKARGF3010 SS+3d |  |  |  | 10d | 0d | LABOR- SUBCONTRACTOR [9 h]; WETAREA WATERPROOFING QTY [28 Sqm]; WATERPROOFING SPECIALIST SK [23 h] | 952 | 1AMKUPGF18 | DUKHCON1AMKARGF3015 | DUKHCONP1AMKARGF3015 | DH | CON | 1A | MK | B02 | B02-D10 | RES-1A | REM | FIN | IF | GF |  |
| DUKHCONP1AMKARGF3020 |  | Ceramic Wall Tiling | 6d | 2013-10-29 | 2013-11-04 | DUKHCONP1AMKARGF3015, DUKHPROGEN00PRDV3120, DUKHCONP1AMKPLGF4310 |  |  |  | 10d | 0d | TILE MASON SK [354 h]; LABOR- SUBCONTRACTOR [199.5 h]; CERAMIC WALL TILE QTY [177 Sqm] | 11,574 | 1AMKUPGF24 | DUKHCON1AMKARGF3020 | DUKHCONP1AMKARGF3020 | DH | CON | 1A | MK | B02 | B02-D10 | RES-1A | REM | FIN | IF | GF |  |
| DUKHCONP1AMKARGF3025 |  | Porcelain Tile flooring | 6d | 2013-11-05 | 2013-11-11 | DUKHPROGEN00PRDV3130, DUKHCONP1AMKARGF3010, DUKHCONP1AMKARGF3020 |  |  |  | 10d | 0d | TILE MASON SK [140 h]; LABOR- SUBCONTRACTOR [78.75 h]; PORCELAIN FLOORING QTY [122 Sqm] | 9,365 | 1AMKUPGF27 | DUKHCON1AMKARGF3025 | DUKHCONP1AMKARGF3025 | DH | CON | 1A | MK | B02 | B02-D10 | RES-1A | REM | FIN | IF | GF |  |
| DUKHCONP1AMKARGF3040 |  | Cobble Tile flooring | 5d | 2013-11-12 | 2013-11-17 | DUKHPROGEN00PRDV3090, DUKHCONP1AMKARGF3010, DUKHCONP1AMKARGF3025 |  |  |  | 22d | 0d | TILE MASON SK [60 h]; LABOR- SUBCONTRACTOR [33.75 h]; COBBLE STONE QTY [37 Sqm] | 3,086 | 1AMKUPGF30 | DUKHCON1AMKARGF3040 | DUKHCONP1AMKARGF3040 | DH | CON | 1A | MK | B02 | B02-D10 | RES-1A | REM | FIN | IF | GF |  |
| DUKHCONP1AMKARGF3030 |  | Paint First coat | 5d | 2013-11-16 | 2013-11-20 | DUKHPROGEN00PRDV3320, DUKHCONP1AMKARGF3005 SS+14d |  |  |  | 5d | 0d | LABOR- SUBCONTRACTOR [185.25 h]; FIRSTCOAT PAINT QTY [616.5 Sqm]; PAINTERS SK [494 h] | 3,326 | 1AMKUPGF21 | DUKHCON1AMKARGF3030 | DUKHCONP1AMKARGF3030 | DH | CON | 1A | MK | B02 | B02-D11 | RES-1A | REM | FIN | IF | GF | ENT |
| DUKHCONP1AMKARGF3035 |  | Slate Tile Flooring & Skirting | 5d | 2013-11-18 | 2013-11-23 | DUKHCONP1AMKARGF3040, DUKHPROGEN00PRDV3100, DUKHCONP1AMKARGF3010 |  |  |  | 22d | 23d | TILE MASON SK [61 h]; LABOR- SUBCONTRACTOR [34.5 h]; SLATE TILE QTY [38 Sqm] | 8,236 | 1AMKUPGF33 | DUKHCON1AMKARGF3035 | DUKHCONP1AMKARGF3035 | DH | CON | 1A | MK | B02 | B02-D10 | RES-1A | REM | FIN | IF | GF |  |
| DUKHCONP1AMKARGF3045 |  | Fixing of Suspension systems | 7d | 2013-11-21 | 2013-11-28 | DUKHCONP1AMKARGF3030, DUKHCONP1AMKELGF4010, DUKHCONP1AMKARGF3025 |  |  |  | 10d | 6d | LABOR- SUBCONTRACTOR [65.48 h]; SUSPENSION QTY [145.5 Sqm]; FALSE CEILING SKILLED SK [116.4 h] | 2,855 | 1AMKUPGF39 | DUKHCON1AMKARGF3045 | DUKHCONP1AMKARGF3045 | DH | CON | 1A | MK | B02 | B02-D10 | RES-1A | REM | FIN | IF | GF | SUS |
| DUKHCONP1AMKARGF3060 |  | Gypsum board false ceiling | 7d | 2013-12-07 | 2013-12-14 | DUKHCONP1AMKARGF3045, DUKHCONP1AMKACGF4600, DUKHPROGEN00PRDV3300 |  |  |  | 7d | 8d | LABOR- SUBCONTRACTOR [58.73 h]; FALSE CEILING QTY [130.5 Sqm]; FALSE CEILING SKILLED SK [104.4 h] | 7,603 | 1AMKUPGF45 | DUKHCON1AMKARGF3060 | DUKHCONP1AMKARGF3060 | DH | CON | 1A | MK | B02 | B02-D10 | RES-1A | REM | FIN | IF | GF | GYP |
| DUKHCONP1AMKARGF3050 |  | Granite - Stair case flooring & Skirting | 7d | 2013-12-16 | 2013-12-24 | DUKHCONP1AMKARGF3025, DUKHCONP1AMKARGF3040, DUKHPROGEN00PRDV3480 |  |  |  | 7d | 0d | GRANITE MASON SK [68 h]; LABOR- SUBCONTRACTOR [38.25 h]; GRANITE QTY [17 Sqm] | 11,698 | 1AMKUPGF36 | DUKHCON1AMKARGF3050 | DUKHCONP1AMKARGF3050 | DH | CON | 1A | MK | B02 | B02-D10 | RES-1A | REM | FIN | IF | GF |  |
| DUKHCONP1AMKARGF3055 |  | Aluminum tile false ceiling | 7d | 2013-12-16 | 2013-12-24 | DUKHPROGEN00PRDV3310, DUKHCONP1AMKACGF4600, DUKHCONP1AMKARGF3045 |  |  |  | -1d | 0d | LABOR- SUBCONTRACTOR [6.75 h]; FALSE CEILING QTY [15 Sqm]; FALSE CEILING SKILLED SK [12 h] | 957 | 1AMKUPGF42 | DUKHCON1AMKARGF3055 | DUKHCONP1AMKARGF3055 | DH | CON | 1A | MK | B02 | B02-D10 | RES-1A | REM | FIN | IF | GF | ALU |
| DUKHCONP1AMKARGF3065 |  | Wooden door & PVC Door | 5d | 2013-12-25 | 2013-12-30 | DUKHPROGEN00PRDV3490, DUKHCONP1AMKARGF3050, DUKHCONP1AMKARGF3060, DUKHPROGEN00PRDV3450, DUKHCONP1AMKARGF3055 |  |  |  | 9d | 0d | LABOR- SUBCONTRACTOR [10.5 h]; WOODEN DOOR QTY [7 ea]; DOOR ERECTOR SK [28 h] | 29,197 | 1AMKUPGF48 | DUKHCON1AMKARGF3065 | DUKHCONP1AMKARGF3065 | DH | CON | 1A | MK | B02 | B02-D05 | RES-1A | REM | FIN | IF | GF |  |
| DUKHCONP1AMKARGF3070 |  | Aluminum doors | 5d | 2013-12-31 | 2014-01-05 | DUKHPROGEN00PRDV3460, DUKHPROGEN00PRDV3440, DUKHCONP1AMKARGF3065 |  |  |  | 9d | 0d | LABOR- SUBCONTRACTOR [6 h]; ALUMINIUM DOOR QTY [4 ea]; DOOR ERECTOR SK [16 h] | 10,402 | 1AMKUPGF51 | DUKHCON1AMKARGF3070 | DUKHCONP1AMKARGF3070 | DH | CON | 1A | MK | B02 | B02-D06 | RES-1A | REM | FIN | IF | GF |  |
| DUKHCONP1AMKARGF3075 |  | Carpentry & Joinery Works | 10d | 2014-01-06 | 2014-01-16 | DUKHPROGEN00PRDV3560, DUKHPROGEN00PRDV3550, DUKHPROGEN00PRDV3570, DUKHCONP1AMKARGF3070 |  |  |  | 9d | 0d | LABOR- SUBCONTRACTOR [19.5 h]; CABINET QTY [6 ea]; COUNTER QTY [1 ea]; JOINERY WORK SK [48 h]; COUNTER SK [4 h] | 14,259 | 1AMKUPGF57 | DUKHCON1AMKARGF3075 | DUKHCONP1AMKARGF3075 | DH | CON | 1A | MK | B02 | B02-D05 | RES-1A | REM | FIN | IF | GF |  |
| DUKHCONP1AMKARGF3080 |  | Aluminum windows | 5d | 2014-01-06 | 2014-01-11 | DUKHCONP1AMKARGF3070, DUKHPROGEN00PRDV3470 |  |  |  | 25d | 12d | LABOR- SUBCONTRACTOR [5.25 h]; ALUMINIUM WINDOWS QTY [5 ea]; WINDOW ERECTOR SK [14 h] | 4,535 | 1AMKUPGF54 | DUKHCON1AMKARGF3080 | DUKHCONP1AMKARGF3080 | DH | CON | 1A | MK | B02 | B02-D06 | RES-1A | REM | FIN | IF | GF |  |
| DUKHCONP1AMKARGF3085 |  | S.S.Handrails & Balustrade | 7d | 2014-01-18 | 2014-01-25 | DUKHCONP1AMKARGF3075, DUKHCONP1AMKARGF3050 |  |  |  | 14d | 0d | LABOR- SUBCONTRACTOR [12.75 h]; S.S.BALUSTRADE QTY [11 lm]; HANDRAIL ERECTOR SKILLED [22 h] | 11,386 | 1AMKUPGF63 | DUKHCON1AMKARGF3085 | DUKHCONP1AMKARGF3085 | DH | CON | 1A | MK | B02 | B02-D06 | RES-1A | REM | FIN | IF | GF |  |
| DUKHCONP1AMKARGF3090 |  | Installation of Granite Counter Top | 7d | 2014-01-18 | 2014-01-25 | DUKHCONP1AMKARGF3075 |  |  |  | 13d | 0d | GRANITE MASON SK [16 h]; LABOR- SUBCONTRACTOR [6 h]; GRANITE COUNTER TOP QTY [4 ea] | 4,354 | 1AMKUPGF60 | DUKHCON1AMKARGF3090 | DUKHCONP1AMKARGF3090 | DH | CON | 1A | MK | B02 | B02-D10 | RES-1A | REM | FIN | IF | GF |  |
| DUKHCONP1AMKARGF3095 |  | Final Painting | 7d | 2014-01-26 | 2014-02-02 | DUKHPROGEN00PRDV3420, DUKHCONP1AMKARGF3030, DUKHCONP1AMKARGF3035, DUKHCONP1AMKARGF3040, DUKHCONP1AMKARGF3085, DUKHCONP1AMKARGF3060, DUKHCONP1AMKARGF3080, DUKHCONP1AMKARGF3070, DUKHCONP1AMKARGF3090 |  |  |  | 14d | 17d | LABOR- SUBCONTRACTOR [185.25 h]; PAINT QTY [616.5 Sqm]; PAINTERS SK [494 h] | 7,726 | 1AMKUPGF66 | DUKHCON1AMKARGF3095 | DUKHCONP1AMKARGF3095 | DH | CON | 1A | MK | B02 | B02-D11 | RES-1A | REM | FIN | IF | GF | PNT |

Notes:
- DUKHCONP1AGNSP002000: Expenses: I1A-Demolition 19002
- DUKHCONP1AGNSP003000: Expenses: I1A-Site clearance general excavation and earthwork 1600580
- DUKHCONP1AGNSP004000: Expenses: I1A-Demolition 895872
- DUKHCONP1AGNSP005000: Expenses: I1A-Demolition 342361
- DUKHCONP1AGNSP001000: Expenses: I1A-Demolition 22802
- DUKHCONP1AGNSP002100: Expenses: I1A-Demolition 4750
- DUKHCONP1AGNSP002300: Expenses: I1A-Demolition 4751
- DUKHCONP1AGNSP002500: Expenses: I1A-Demolition 19002
- DUKHCONP1AMKARGF3000: Expenses: P1A-Block work 28195
- DUKHCONP1AMKARGF3005: Expenses: P1A-Finishes 8949
- DUKHCONP1AMKARGF3010: Expenses: P1A-Finishes 6001
- DUKHCONP1AMKARGF3015: Expenses: P1A-Finishes 952
- DUKHCONP1AMKARGF3020: Expenses: P1A-Finishes 11574
- DUKHCONP1AMKARGF3025: Expenses: P1A-Finishes 9365
- DUKHCONP1AMKARGF3040: Expenses: P1A-Finishes 3086
- DUKHCONP1AMKARGF3030: Expenses: P1A-Painting and Decorating 3326
- DUKHCONP1AMKARGF3035: Expenses: P1A-Finishes 8236
- DUKHCONP1AMKARGF3045: Expenses: P1A-Finishes 2855
- DUKHCONP1AMKARGF3060: Expenses: P1A-Finishes 7603
- DUKHCONP1AMKARGF3050: Expenses: P1A-Finishes 11698
- DUKHCONP1AMKARGF3055: Expenses: P1A-Finishes 957
- DUKHCONP1AMKARGF3065: Expenses: P1A-Carpentry and Joinery 29197
- DUKHCONP1AMKARGF3070: Expenses: P1A-Metal work 10402
- DUKHCONP1AMKARGF3075: Expenses: P1A-Carpentry and Joinery 14259
- DUKHCONP1AMKARGF3080: Expenses: P1A-Metal work 4535
- DUKHCONP1AMKARGF3085: Expenses: P1A-Metal work 11386
- DUKHCONP1AMKARGF3090: Expenses: P1A-Finishes 4354
- DUKHCONP1AMKARGF3095: Expenses: P1A-Painting and Decorating 7726

| ID | WBS | Activity | Duration | Start | Finish | Predecessors | Total float | Free float | Resources | Cost | rem | P3 ACTID | P6 ID (old) | NP61D | PROJECT | PHASES | PACKAGE | PART | ELEMENTS | STEP | FLOORS | BILL NOS | BILL DIVISION | RES PACK | EXECUTER |
| --- | --- | --- | --- | --- | --- | --- | --- | --- | --- | --- | --- | --- | --- | --- | --- | --- | --- | --- | --- | --- | --- | --- | --- | --- | --- |
|  | 15 | **FIRST FLOORS** |  | 2013-11-14 | 2014-02-19 |  |  |  |  |  |  |  |  |  |  |  |  |  |  |  |  |  |  |  |  |
| DUKHCONP1AMKARFF3300 |  | Block work | 6d | 2013-11-14 | 2013-11-20 | DUKHENGP2BDWARAP5230, DUKHENGP03DWARAP5610, DUKHENGP1ADWARAP4050, DUKHENGP1BDWARAP4450, DUKHENGP2ADWARAP4850, DUKHPROGEN00PRDV3010, DUKHCONP1AZ1STFF2035 SS+21d | -24d | 0d | BLOCK MASON SK [512 h]; LABOR- SUBCONTRACTOR [288 h]; BLOCK QTY [256 Sqm] | 15,961 | REM | 1AMKUPFF10 | DUKHCON1AMKARFF3300 | DUKHCONP1AMKARFF3300 | DH | CON | 1A | MK | FIN | IF | FF | B02 | B02-D03 | RES-1A |  |
| DUKHCONP1AMKARFF3305 |  | Plastering work | 7d | 2013-11-27 | 2013-12-04 | DUKHCONP1AMKARFF3300, DUKHCONP1AMKELFF4035, DUKHPROGEN00PRDV3040 | -16d | 0d | PLASTER MASON SK [712 h]; LABOR- SUBCONTRACTOR [400.5 h]; PLASTER QTY [445 Sqm] | 5,868 | REM | 1AMKUPFF12 | DUKHCON1AMKARFF3305 | DUKHCONP1AMKARFF3305 | DH | CON | 1A | MK | FIN | IF | FF | B02 | B02-D10 | RES-1A |  |
| DUKHCONP1AMKARFF3310 |  | Flooring screed | 7d | 2013-12-01 | 2013-12-08 | DUKHCONP1AMKARFF3305 SS+3d | -3d | 0d | SCREED MASON SK [111 h]; LABOR- SUBCONTRACTOR [42 h]; FLOORING SCREED QTY [138 Sqm] | 4,559 | REM | 1AMKUPFF15 | DUKHCON1AMKARFF3310 | DUKHCONP1AMKARFF3310 | DH | CON | 1A | MK | FIN | IF | FF | B02 | B02-D10 | RES-1A |  |
| DUKHCONP1AMKARFF3315 |  | Wet area waterproofing & Protection Screed | 5d | 2013-12-04 | 2013-12-09 | DUKHCONP1AMKARFF3310 SS+3d, DUKHCONP1AMKARFF3305 FF+3d | -3d | 0d | LABOR- SUBCONTRACTOR [42 h]; WETAREA WATERPROOFING QTY [138 Sqm]; WATERPROOFING SPECIALIST SK [111 h] | 4,588 | REM | 1AMKUPFF18 | DUKHCON1AMKARFF3315 | DUKHCONP1AMKARFF3315 | DH | CON | 1A | MK | FIN | IF | FF | B02 | B02-D10 | RES-1A |  |
| DUKHCONP1AMKARFF3320 |  | Ceramic Wall Tiling | 6d | 2013-12-10 | 2013-12-16 | DUKHCONP1AMKPLFF4325, DUKHCONP1AMKARFF3315, DUKHPROGEN00PRDV3120, DUKHCONP1AMKPLFF4330 | -3d | 0d | TILE MASON SK [304 h]; LABOR- SUBCONTRACTOR [171 h]; CERAMIC WALL TILE QTY [152 Sqm] | 5,368 | REM | 1AMKUPFF24 | DUKHCON1AMKARFF3320 | DUKHCONP1AMKARFF3320 | DH | CON | 1A | MK | FIN | IF | FF | B02 | B02-D10 | RES-1A |  |
| DUKHCONP1AMKARFF3330 |  | Paint First coat | 5d | 2013-12-14 | 2013-12-19 | DUKHCONP1AMKARFF3305 SS+14d, DUKHPROGEN00PRDV3320 | 0d | 4d | LABOR- SUBCONTRACTOR [162 h]; FIRSTCOAT PAINT QTY [539 Sqm]; PAINTERS SK [432 h] | 3,326 | REM | 1AMKUPFF21 | DUKHCON1AMKARFF3330 | DUKHCONP1AMKARFF3330 | DH | CON | 1A | MK | FIN | IF | FF | B02 | B02-D11 | RES-1A | ENT |
| DUKHCONP1AMKARFF3325 |  | Porcelain Tile flooring | 6d | 2013-12-17 | 2013-12-24 | DUKHCONP1AMKARFF3310, DUKHPROGEN00PRDV3130, DUKHCONP1AMKARFF3320 | -3d | 0d | TILE MASON SK [140 h]; LABOR- SUBCONTRACTOR [78.75 h]; PORCELAIN FLOORING QTY [122 Sqm] | 9,366 | REM | 1AMKUPFF27 | DUKHCON1AMKARFF3325 | DUKHCONP1AMKARFF3325 | DH | CON | 1A | MK | FIN | IF | FF | B02 | B02-D10 | RES-1A |  |
| DUKHCONP1AMKARFF3335 |  | Slate Tile Flooring & Skirting | 5d | 2013-12-25 | 2013-12-30 | DUKHCONP1AMKARFF3325, DUKHPROGEN00PRDV3100, DUKHCONP1AMKARFF3310 | 15d | 31d | TILE MASON SK [21 h]; LABOR- SUBCONTRACTOR [12 h]; SLATE TILE QTY [13 Sqm] | 2,550 | REM | 1AMKUPFF33 | DUKHCON1AMKARFF3335 | DUKHCONP1AMKARFF3335 | DH | CON | 1A | MK | FIN | IF | FF | B02 | B02-D10 | RES-1A |  |
| DUKHCONP1AMKARFF3345 |  | Fixing of Suspension systems | 7d | 2013-12-25 | 2014-01-01 | DUKHCONP1AMKARFF3325, DUKHCONP1AMKELFF4045, DUKHCONP1AMKARFF3330 | -2d | 0d | LABOR- SUBCONTRACTOR [58.73 h]; SUSPENSION QTY [130.5 Sqm]; FALSE CEILING SKILLED SK [104.4 h] | 2,456 | REM | 1AMKUPFF39 | DUKHCON1AMKARFF3345 | DUKHCONP1AMKARFF3345 | DH | CON | 1A | MK | FIN | IF | FF | B02 | B02-D10 | RES-1A | SUS |
| DUKHCONP1AMKARFF3350 |  | Granite - Stair case flooring & Skirting | 7d | 2013-12-25 | 2014-01-01 | DUKHPROGEN00PRDV3480, DUKHCONP1AMKARFF3325, DUKHCONP1AMKARFF3310 | 5d | 7d | GRANITE MASON SK [72 h]; LABOR- SUBCONTRACTOR [40.5 h]; GRANITE QTY [18 Sqm] | 11,699 | REM | 1AMKUPFF36 | DUKHCON1AMKARFF3350 | DUKHCONP1AMKARFF3350 | DH | CON | 1A | MK | FIN | IF | FF | B02 | B02-D10 | RES-1A |  |
| DUKHCONP1AMKARFF3360 |  | Gypsum board false ceiling | 7d | 2014-01-02 | 2014-01-09 | DUKHPROGEN00PRDV3300, DUKHCONP1AMKARFF3345, DUKHCONP1AMKACFF4615 | -2d | 0d | LABOR- SUBCONTRACTOR [58.73 h]; FALSE CEILING QTY [130.5 Sqm]; FALSE CEILING SKILLED SK [104.4 h] | 7,602 | REM | 1AMKUPFF45 | DUKHCON1AMKARFF3360 | DUKHCONP1AMKARFF3360 | DH | CON | 1A | MK | FIN | IF | FF | B02 | B02-D10 | RES-1A | GYP |
| DUKHCONP1AMKARFF3365 |  | Wooden door | 5d | 2014-01-11 | 2014-01-15 | DUKHPROGEN00PRDV3490, DUKHPROGEN00PRDV3450, DUKHCONP1AMKARFF3350, DUKHCONP1AMKARFF3360 | -2d | 0d | LABOR- SUBCONTRACTOR [10.5 h]; WOODEN DOOR QTY [7 ea]; DOOR ERECTOR SK [28 h] | 19,048 | REM | 1AMKUPFF48 | DUKHCON1AMKARFF3365 | DUKHCONP1AMKARFF3365 | DH | CON | 1A | MK | FIN | IF | FF | B02 | B02-D05 | RES-1A |  |
| DUKHCONP1AMKARFF3370 |  | Aluminum doors | 5d | 2014-01-16 | 2014-01-21 | DUKHCONP1AMKARFF3365, DUKHPROGEN00PRDV3460 | -2d | 0d | LABOR- SUBCONTRACTOR [7.5 h]; ALUMINIUM DOOR QTY [5 ea]; DOOR ERECTOR SK [20 h] | 10,167 | REM | 1AMKUPFF51 | DUKHCON1AMKARFF3370 | DUKHCONP1AMKARFF3370 | DH | CON | 1A | MK | FIN | IF | FF | B02 | B02-D06 | RES-1A |  |
| DUKHCONP1AMKARFF3375 |  | Carpentry & Joinery Works | 10d | 2014-01-22 | 2014-02-02 | DUKHPROGEN00PRDV3560, DUKHPROGEN00PRDV3550, DUKHCONP1AMKARFF3370 | -2d | 0d | LABOR- SUBCONTRACTOR [37.5 h]; CABINET QTY [3 ea]; COUNTER QTY [3 ea]; WARDROBE QTY [5 ea]; SHELVES QTY [3 ea]; JOINERY WORK SK [88 h]; COUNTER SK [12 h] | 28,992 | REM | 1AMKUPFF57 | DUKHCON1AMKARFF3375 | DUKHCONP1AMKARFF3375 | DH | CON | 1A | MK | FIN | IF | FF | B02 | B02-D05 | RES-1A |  |
| DUKHCONP1AMKARFF3380 |  | Aluminum windows | 5d | 2014-01-22 | 2014-01-27 | DUKHPROGEN00PRDV3470, DUKHCONP1AMKARFF3370 | 9d | 12d | LABOR- SUBCONTRACTOR [6 h]; ALUMINIUM WINDOWS QTY [6 ea]; WINDOW ERECTOR SK [16 h] | 6,970 | REM | 1AMKUPFF54 | DUKHCON1AMKARFF3380 | DUKHCONP1AMKARFF3380 | DH | CON | 1A | MK | FIN | IF | FF | B02 | B02-D06 | RES-1A |  |
| DUKHCONP1AMKARFF3385 |  | S.S.Handrails & Balustrade | 7d | 2014-02-03 | 2014-02-10 | DUKHPROGEN00PRDV3570, DUKHCONP1AMKARFF3375, DUKHCONP1AMKARFF3350, DUKHPROGEN00PRDV3580 | 0d |  | LABOR- SUBCONTRACTOR [36 h]; S.S.BALUSTRADE QTY [32 lm]; HANDRAIL ERECTOR SKILLED [64 h] | 38,556 | REM | 1AMKUPFF63 | DUKHCON1AMKARFF3385 | DUKHCONP1AMKARFF3385 | DH | CON | 1A | MK | FIN | IF | FF | B02 | B02-D06 | RES-1A |  |
| DUKHCONP1AMKARFF3390 |  | Installation of Granite Counter Top | 7d | 2014-02-03 | 2014-02-10 | DUKHCONP1AMKARFF3375 | 0d |  | GRANITE MASON SK [8 h]; LABOR- SUBCONTRACTOR [3 h]; GRANITE COUNTER TOP QTY [2 ea] | 949 | REM | 1AMKUPFF60 | DUKHCON1AMKARFF3390 | DUKHCONP1AMKARFF3390 | DH | CON | 1A | MK | FIN | IF | FF | B02 | B02-D10 | RES-1A |  |
| DUKHCONP1AMKARFF3395 |  | Final Painting | 7d | 2014-02-12 | 2014-02-19 | DUKHCONP1AMKARFF3390, DUKHCONP1AMKARFF3325, DUKHCONP1AMKARFF3335, DUKHCONP1AMKARFF3385, DUKHCONP1AMKARFF3310, DUKHCONP1AMKARRF3620 FF+8d, DUKHCONP1AMKARFF3370, DUKHCONP1AMKARFF3330, DUKHCONP1AMKARFF3380, DUKHCONP1AMKARFF3360 | 0d | 24d | LABOR- SUBCONTRACTOR [162 h]; PAINT QTY [539 Sqm]; PAINTERS SK [432 h] | 6,350 | REM | 1AMKUPFF66 | DUKHCON1AMKARFF3395 | DUKHCONP1AMKARFF3395 | DH | CON | 1A | MK | FIN | IF | FF | B02 | B02-D11 | RES-1A | PNT |
|  | 20 | **ROOF** |  | 2013-10-21 | 2013-11-21 |  |  |  |  |  |  |  |  |  |  |  |  |  |  |  |  |  |  |  |  |
| DUKHCONP1AMKARRF3600 |  | Block work | 6d | 2013-10-21 | 2013-10-27 | DUKHCONP1AZ1STGF2015 FS+21d | 12d | 0d | BLOCK MASON SK [56 h]; LABOR- SUBCONTRACTOR [31.5 h]; BLOCK QTY [28 Sqm] | 2,223 | REM | 1AMKIFRF10 | DUKHCON1AMKARRF3600 | DUKHCONP1AMKARRF3600 | DH | CON | 1A | MK | FIN | IF | RF | B02 | B02-D03 | RES-1A |  |
| DUKHCONP1AMKARRF3605 |  | Plastering work | 6d | 2013-10-24 | 2013-10-30 | DUKHCONP1AMKARRF3600 FF+3d, DUKHCONP1AMKARRF3600 SS+3d | 12d | 0d | PLASTER MASON SK [143 h]; LABOR- SUBCONTRACTOR [81 h]; PLASTER QTY [89 Sqm] | 1,159 | REM | 1AMKIFRF20 | DUKHCON1AMKARRF3605 | DUKHCONP1AMKARRF3605 | DH | CON | 1A | MK | FIN | IF | RF | B02 | B02-D10 | RES-1A |  |
| DUKHCONP1AMKARRF3610 |  | Flooring screed | 6d | 2013-10-31 | 2013-11-06 | DUKHCONP1AMKARRF3605 | 68d | 47d | SCREED MASON SK [12 h]; LABOR- SUBCONTRACTOR [4.5 h]; FLOORING SCREED QTY [15 Sqm] | 507 | REM | 1AMKIFRF30 | DUKHCON1AMKARRF3610 | DUKHCONP1AMKARRF3610 | DH | CON | 1A | MK | FIN | IF | RF | B02 | B02-D10 | RES-1A |  |
| DUKHCONP1AMKARRF3695 |  | Painting -Storage area | 6d | 2013-11-09 | 2013-11-14 | DUKHCONP1AMKARRF3605 FS+7d | 67d | 0d | LABOR- SUBCONTRACTOR [60 h]; PAINT QTY [184 Sqm]; PAINTERS SK [152 h] | 995 |  | 1AMKIFRF40 | DUKHCON1AMKARRF3695 | DUKHCONP1AMKARRF3695 | DH | CON | 1A | MK | FIN | IF | RF | B02 | B02-D11 | RES-1A |  |
| DUKHCONP1AMKARRF3620 |  | Epoxy Painting -Storage area | 6d | 2013-11-16 | 2013-11-21 | DUKHPROGEN00PRDV3420, DUKHCONP1AMKARRF3695 | 67d | 30d | LABOR- SUBCONTRACTOR [2.25 h]; EPOXY QTY [8 Sqm]; EPOXY SK [5 h] | 403 | REM | 1AMKIFRF50 | DUKHCON1AMKARRF3620 | DUKHCONP1AMKARRF3620 | DH | CON | 1A | MK | FIN | IF | RF | B02 | B02-D11 | RES-1A |  |

Notes:
- DUKHCONP1AMKARFF3300: Expenses: P1A-Block work 15961
- DUKHCONP1AMKARFF3305: Expenses: P1A-Finishes 5868
- DUKHCONP1AMKARFF3310: Expenses: P1A-Finishes 4559
- DUKHCONP1AMKARFF3315: Expenses: P1A-Finishes 4588
- DUKHCONP1AMKARFF3320: Expenses: P1A-Finishes 5368
- DUKHCONP1AMKARFF3330: Expenses: P1A-Painting and Decorating 3326
- DUKHCONP1AMKARFF3325: Expenses: P1A-Finishes 9366
- DUKHCONP1AMKARFF3335: Expenses: P1A-Finishes 2550
- DUKHCONP1AMKARFF3345: Expenses: P1A-Finishes 2456
- DUKHCONP1AMKARFF3350: Expenses: P1A-Finishes 11699
- DUKHCONP1AMKARFF3360: Expenses: P1A-Finishes 7602
- DUKHCONP1AMKARFF3365: Expenses: P1A-Carpentry and Joinery 19048
- DUKHCONP1AMKARFF3370: Expenses: P1A-Metal work 10167
- DUKHCONP1AMKARFF3375: Expenses: P1A-Carpentry and Joinery 28992
- DUKHCONP1AMKARFF3380: Expenses: P1A-Metal work 6970
- DUKHCONP1AMKARFF3385: Expenses: P1A-Metal work 38556
- DUKHCONP1AMKARFF3390: Expenses: P1A-Finishes 949
- DUKHCONP1AMKARFF3395: Expenses: P1A-Painting and Decorating 6350
- DUKHCONP1AMKARRF3600: Expenses: P1A-Block work 2223
- DUKHCONP1AMKARRF3605: Expenses: P1A-Finishes 1159
- DUKHCONP1AMKARRF3610: Expenses: P1A-Finishes 507
- DUKHCONP1AMKARRF3695: Expenses: P1A-Painting and Decorating 995
- DUKHCONP1AMKARRF3620: Expenses: P1A-Painting and Decorating 403

| ID | WBS | Activity | Duration | Start | Finish | Predecessors | Total float | Free float | Resources | Cost | rem | P3 ACTID | P6 ID (old) | NP61D | PROJECT | PHASES | PACKAGE | PART | ELEMENTS | STEP | FLOORS | BILL NOS | BILL DIVISION | RES PACK |
| --- | --- | --- | --- | --- | --- | --- | --- | --- | --- | --- | --- | --- | --- | --- | --- | --- | --- | --- | --- | --- | --- | --- | --- | --- |
|  | 15 | **EXTERNAL FINISHES** |  | 2013-12-02 | 2014-01-13 |  |  |  |  |  |  |  |  |  |  |  |  |  |  |  |  |  |  |  |
|  | 10 | **ROOF** |  | 2013-12-02 | 2014-01-04 |  |  |  |  |  |  |  |  |  |  |  |  |  |  |  |  |  |  |  |
| DUKHCONP1AMKARRF3630 |  | Leveling Screed for Waterproofing | 2d | 2013-12-02 | 2013-12-03 | DUKHCONP1AZ1STRF2055 SS+10d, DUKHCONP1AZ1STRF2065 SS+7d, DUKHCONP1AZ1STRF2060 SS+10d, DUKHCONP1AMKARRF3605 | -15d | 0d | SCREED MASON SK [64 h]; LABOR- SUBCONTRACTOR [36 h]; ROOF WP SCREED QTY [160 Sqm] | 7,099 | REM | 1AMKEFRF10 | DUKHCON1AMKARRF3630 | DUKHCONP1AMKARRF3630 | DH | CON | 1A | MK | FIN | EF | RF | B02 | B02-D04 | RES-1A |
| DUKHCONP1AMKARRF3635 |  | Laying of Waterproofing Membrane | 4d | 2013-12-04 | 2013-12-08 | DUKHCONP1AMKARRF3630 | -15d | 0d | LABOR- SUBCONTRACTOR [39 h]; ROOF WP MEMBRANE QTY [194 Sqm]; WATERPROOFING SPECIALIST SK [104 h] | 5,500 | REM | 1AMKEFRF15 | DUKHCON1AMKARRF3635 | DUKHCONP1AMKARRF3635 | DH | CON | 1A | MK | FIN | EF | RF | B02 | B02-D04 | RES-1A |
| DUKHCONP1AMKARRF3640 |  | Installation of Insulation & Protection | 4d | 2013-12-09 | 2013-12-12 | DUKHCONP1AMKARRF3635 | -15d | 0d | LABOR- SUBCONTRACTOR [48 h]; ROOF WP INSULATION QTY [320 Sqm]; WATERPROOFING SPECIALIST SK [128 h] | 6,992 | REM | 1AMKEFRF20 | DUKHCON1AMKARRF3640 | DUKHCONP1AMKARRF3640 | DH | CON | 1A | MK | FIN | EF | RF | B02 | B02-D04 | RES-1A |
| DUKHCONP1AMKARRF3645 |  | Lime Stone Chips & Paving slab Installation | 2d | 2013-12-14 | 2013-12-15 | DUKHCONP1AMKARRF3640 | -15d | 0d | TILE MASON SK [6 h]; LABOR- SUBCONTRACTOR [24 h]; LIME STONE QTY [14 Sqm]; PRECAST PAVING SLAB QTY [142 Sqm]; PRE CAST CONCRETE SK [57 h] | 10,418 | REM | 1AMKEFRF25 | DUKHCON1AMKARRF3645 | DUKHCONP1AMKARRF3645 | DH | CON | 1A | MK | FIN | EF | RF | B02 | B02-D04 | RES-1A |
| DUKHCONP1AMKARRF3650 |  | Install. of Gal. Frame & Aluminum Slat Screen | 5d | 2013-12-16 | 2013-12-22 | DUKHCONP1AMKARRF3645, DUKHPROGEN00PRDV3410 | 31d | 0d | LABOR- SUBCONTRACTOR [56.25 h]; ALUMINIUM SCREEN QTY [28 Sqm]; DOOR ERECTOR SK [75 h] | 7,918 | REM | 1AMKEFRF35 | DUKHCON1AMKARRF3650 | DUKHCONP1AMKARRF3650 | DH | CON | 1A | MK | FIN | EF | RF | B02 | B02-D06 | RES-1A |
| DUKHCONP1AMKARRF3655 |  | Installation of Pumps Protection cabinets | 5d | 2013-12-23 | 2013-12-28 | DUKHCONP1AMKARRF3650, DUKHCONP1AMKARRF3645 | 31d | 0d | LABOR- SUBCONTRACTOR [21 h]; CABINET QTY [7 ea]; JOINERY WORK SK [56 h] | 3,325 | REM | 1AMKEFRF30 | DUKHCON1AMKARRF3655 | DUKHCONP1AMKARRF3655 | DH | CON | 1A | MK | FIN | EF | RF | B02 | B02-D04 | RES-1A |
| DUKHCONP1AMKARRF3660 |  | Installation of Access Ladder | 6d | 2013-12-29 | 2014-01-04 | DUKHCONP1AMKARRF3655, DUKHPROGEN00PRDV3400, DUKHCONP1AMKARRF3620 | 49d | 47d | LABOR- SUBCONTRACTOR [6 h]; LADDER QTY [2 ea]; LADDER ERECTOR SK [16 h] | 6,651 | REM | 1AMKEFRF40 | DUKHCON1AMKARRF3660 | DUKHCONP1AMKARRF3660 | DH | CON | 1A | MK | FIN | EF | RF | B02 | B02-D06 | RES-1A |
|  | 15 | **ELEVATION** |  | 2013-12-16 | 2014-01-13 |  |  |  |  |  |  |  |  |  |  |  |  |  |  |  |  |  |  |  |
| DUKHCONP1AMKAREL3665 |  | External Plastering | 10d | 2013-12-16 | 2013-12-28 | DUKHCONP1AMKARRF3645, DUKHCONP1AZ1STRF2060 SS+10d, DUKHCONP1AMKARRF3605 | -8d | 0d | PLASTER MASON SK [1142 h]; LABOR- SUBCONTRACTOR [642.75 h]; EXTERNAL PLASTER QTY [571 Sqm] | 13,611 | REM | 1AMKEFEL10 | DUKHCON1AMKAREL3665 | DUKHCONP1AMKAREL3665 | DH | CON | 1A | MK | FIN | EF | EL | B02 | B02-D10 | RES-1A |
| DUKHCONP1AMKAREL3670 |  | External stone cladding works | 7d | 2013-12-29 | 2014-01-05 | DUKHPROGEN00PRDV3110, DUKHCONP1AMKAREL3665 | -8d | 0d | TILE MASON SK [90 h]; LABOR- SUBCONTRACTOR [33.75 h]; STONE CLADDING QTY [45 Sqm] | 8,978 | REM | 1AMKEFEL15 | DUKHCON1AMKAREL3670 | DUKHCONP1AMKAREL3670 | DH | CON | 1A | MK | FIN | EF | EL | B02 | B02-D10 | RES-1A |
| DUKHCONP1AMKAREL3680 |  | External Painting | 7d | 2014-01-06 | 2014-01-13 | DUKHCONP1AMKAREL3665, DUKHCONP1AMKAREL3670 | 36d | 11d | LABOR- SUBCONTRACTOR [132 h]; PAINT QTY [428 Sqm]; PAINTERS SK [344 h] | 10,751 |  | 1AMKEFEL20 | DUKHCON1AMKAREL3680 | DUKHCONP1AMKAREL3680 | DH | CON | 1A | MK | FIN | EF | EL | B02 | B02-D11 | RES-1A |
|  | 20 | **MEP WORKS** |  | 2013-10-08 | 2014-02-06 |  |  |  |  |  |  |  |  |  |  |  |  |  |  |  |  |  |  |  |
|  | 10 | **ELECTRICAL WORKS** |  | 2013-10-08 | 2014-02-04 |  |  |  |  |  |  |  |  |  |  |  |  |  |  |  |  |  |  |  |
|  | 10 | **GROUND FLOOR** |  | 2013-10-08 | 2014-01-05 |  |  |  |  |  |  |  |  |  |  |  |  |  |  |  |  |  |  |  |
| DUKHCONP1AMKELGF4000 |  | Fixing of wall conduits & switch socket boxes | 5d | 2013-10-08 | 2013-10-13 | DUKHCONP1AMKARGF3000 | 1d | 0d | SOCKET BOXES QTY [91 ea]; CODUITS QTY [23 lm]; LABOR- SUBCONTRACTOR [24 h]; ELECTRICIANS SK [134.4 h] | 4,135 |  | 1AMKEWGF10 | DUKHCON1AMKELGF4000 | DUKHCONP1AMKELGF4000 | DH | CON | 1A | MK | MEP | EW | GF | B02 | B02-D09 | RES-1A |
| DUKHCONP1AMKELGF4005 |  | Cable tray & trunking installation | 5d | 2013-10-24 | 2013-10-29 | DUKHCONP1AMKELGF4000, DUKHCONP1AMKARGF3005 | 19d | 0d | LABOR- SUBCONTRACTOR [36 h]; ELECTRICIANS SK [134.4 h]; CABLE TRAY QTY [23 lm] | 942 |  | 1AMKEWGF15 | DUKHCON1AMKELGF4005 | DUKHCONP1AMKELGF4005 | DH | CON | 1A | MK | MEP | EW | GF | B02 | B02-D09 | RES-1A |
| DUKHCONP1AMKELGF4010 |  | Installation of wiring & Main Cabling | 5d | 2013-10-30 | 2013-11-04 | DUKHCONP1AMKELGF4005, DUKHPROGEN00PRDV3180 | 21d | 2d | LABOR- SUBCONTRACTOR [12 h]; ELECTRICIANS SK [33.6 h]; CABLE QTY [23 lm] | 14,002 |  | 1AMKEWGF20 | DUKHCON1AMKELGF4010 | DUKHCONP1AMKELGF4010 | DH | CON | 1A | MK | MEP | EW | GF | B02 | B02-D09 | RES-1A |
| DUKHCONP1AMKELGF4015 |  | Install. of CAMS & Fire Fighting Accessories | 7d | 2013-12-25 | 2014-01-01 | DUKHPROGEN00PRDV3380, DUKHPROGEN00PRDV3370, DUKHCONP1AMKARGF3055, DUKHPROGEN00PRDV3360, DUKHCONP1AMKARGF3060, DUKHPROGEN00PRDV3260, DUKHPROGEN00PRDV3210 | 9d | 5d | LABOR- SUBCONTRACTOR [48 h]; MECHANICALS SK [86.4 h]; SMOKE DETECTOR POINTS QTY [12 ea]; FIRE EXTINGUISHER QTY [4 ea] | 10,676 |  | 1AMKEWGF35 | DUKHCON1AMKELGF4015 | DUKHCONP1AMKELGF4015 | DH | CON | 1A | MK | MEP | EW | GF | B02 | B02-D09 | RES-1A |
| DUKHCONP1AMKELGF4020 |  | Installation of DBS,MCCB Accessories. | 5d | 2013-12-25 | 2013-12-30 | DUKHPROGEN00PRDV3170, DUKHCONP1AMKARGF3055, DUKHCONP1AMKELGF4010, DUKHCONP1AMKARGF3060 | 6d | 0d | LABOR- SUBCONTRACTOR [6 h]; ELECTRICIANS SK [22.4 h]; MCCB QTY [8 ea]; DB QTY [1 ea] | 4,884 |  | 1AMKEWGF25 | DUKHCON1AMKELGF4020 | DUKHCONP1AMKELGF4020 | DH | CON | 1A | MK | MEP | EW | GF | B02 | B02-D09 | RES-1A |
| DUKHCONP1AMKELGF4025 |  | Installation of Lighting fixtures & Accessories | 5d | 2013-12-31 | 2014-01-05 | DUKHCONP1AMKELGF4020, DUKHPROGEN00PRDV3190, DUKHCONP1AMKARGF3055, DUKHCONP1AMKARGF3060 | 18d | 9d | LABOR- SUBCONTRACTOR [72 h]; ELECTRICIANS SK [134.4 h]; LIGHTS QTY [60 ea] | 19,290 |  | 1AMKEWGF30 | DUKHCON1AMKELGF4025 | DUKHCONP1AMKELGF4025 | DH | CON | 1A | MK | MEP | EW | GF | B02 | B02-D09 | RES-1A |
| DUKHCONP1AMKELGF4030 |  | Installation of Telephone System | 5d | 2013-12-31 | 2014-01-05 | DUKHCONP1AMKELGF4020, DUKHPROGEN00PRDV3270, DUKHCONP1AMKARGF3055, DUKHCONP1AMKARGF3060, DUKHPROGEN00PRDV3280 | 11d | 9d | LABOR- SUBCONTRACTOR [12 h]; ELECTRICIANS SK [56 h]; TELEPHONE SOCKETS QTY [5 ea] | 4,769 |  | 1AMKEWGF40 | DUKHCON1AMKELGF4030 | DUKHCONP1AMKELGF4030 | DH | CON | 1A | MK | MEP | EW | GF | B02 | B02-D09 | RES-1A |
|  | 15 | **FIRST FLOORS** |  | 2013-11-21 | 2014-01-21 |  |  |  |  |  |  |  |  |  |  |  |  |  |  |  |  |  |  |  |
| DUKHCONP1AMKELFF4035 |  | Fixing of wall conduits & switch socket boxes | 5d | 2013-11-21 | 2013-11-26 | DUKHCONP1AMKARFF3300 | -16d | 0d | LABOR- SUBCONTRACTOR [24 h]; ELECTRICIANS SK [134.4 h]; SOCKET BOXES QTY [91 ea]; CODUITS QTY [23 lm] | 4,082 |  | 1AMKEWFF10 | DUKHCON1AMKELFF4035 | DUKHCONP1AMKELFF4035 | DH | CON | 1A | MK | MEP | EW | FF | B02 | B02-D09 | RES-1A |
| DUKHCONP1AMKELFF4040 |  | Cable tray & trunking installation | 5d | 2013-12-05 | 2013-12-10 | DUKHCONP1AMKELFF4035, DUKHCONP1AMKARFF3305 | 2d | 0d | LABOR- SUBCONTRACTOR [36 h]; ELECTRICIANS SK [134.4 h]; CABLE TRAY QTY [23 lm] | 940 |  | 1AMKEWFF15 | DUKHCON1AMKELFF4040 | DUKHCONP1AMKELFF4040 | DH | CON | 1A | MK | MEP | EW | FF | B02 | B02-D09 | RES-1A |
| DUKHCONP1AMKELFF4045 |  | Installation of wiring & Main Cabling | 5d | 2013-12-11 | 2013-12-16 | DUKHCONP1AMKELFF4040, DUKHPROGEN00PRDV3180 | 4d | 2d | LABOR- SUBCONTRACTOR [12 h]; ELECTRICIANS SK [33.6 h]; CABLE QTY [23 lm] | 13,798 |  | 1AMKEWFF20 | DUKHCON1AMKELFF4045 | DUKHCONP1AMKELFF4045 | DH | CON | 1A | MK | MEP | EW | FF | B02 | B02-D09 | RES-1A |
| DUKHCONP1AMKELFF4055 |  | Install. of CAMS & Fire Fighting Accessories | 7d | 2014-01-11 | 2014-01-18 | DUKHPROGEN00PRDV3360, DUKHCONP1AMKELGF4015, DUKHPROGEN00PRDV3210, DUKHPROGEN00PRDV3260, DUKHCONP1AMKARFF3360 | 2d | 24d | LABOR- SUBCONTRACTOR [48 h]; MECHANICALS SK [86.4 h]; SMOKE DETECTOR POINTS QTY [12 ea]; FIRE EXTINGUISHER QTY [3 ea] | 10,672 |  | 1AMKEWFF35 | DUKHCON1AMKELFF4055 | DUKHCONP1AMKELFF4055 | DH | CON | 1A | MK | MEP | EW | FF | B02 | B02-D09 | RES-1A |
| DUKHCONP1AMKELFF4060 |  | Installation of DBS,MCCB Accessories. | 5d | 2014-01-11 | 2014-01-15 | DUKHCONP1AMKELFF4045, DUKHPROGEN00PRDV3170, DUKHCONP1AMKARFF3360 | 7d | 0d | LABOR- SUBCONTRACTOR [6 h]; ELECTRICIANS SK [22.4 h]; MCCB QTY [8 ea]; DB QTY [1 ea] | 4,882 |  | 1AMKEWFF25 | DUKHCON1AMKELFF4060 | DUKHCONP1AMKELFF4060 | DH | CON | 1A | MK | MEP | EW | FF | B02 | B02-D09 | RES-1A |
| DUKHCONP1AMKELFF4050 |  | Installation of Telephone System | 5d | 2014-01-16 | 2014-01-21 | DUKHPROGEN00PRDV3280, DUKHCONP1AMKELFF4060, DUKHPROGEN00PRDV3270, DUKHCONP1AMKARFF3360, DUKHCONP1AMKELGF4030 | 7d | 0d | LABOR- SUBCONTRACTOR [6 h]; ELECTRICIANS SK [56 h]; TELEPHONE SOCKETS QTY [5 ea] | 4,567 |  | 1AMKEWFF40 | DUKHCON1AMKELFF4050 | DUKHCONP1AMKELFF4050 | DH | CON | 1A | MK | MEP | EW | FF | B02 | B02-D09 | RES-1A |
| DUKHCONP1AMKELFF4065 |  | Installation of Lighting fixtures & Accessories | 5d | 2014-01-16 | 2014-01-21 | DUKHPROGEN00PRDV3190, DUKHCONP1AMKARFF3360, DUKHCONP1AMKELGF4025, DUKHCONP1AMKELFF4060 | 9d | 0d | LABOR- SUBCONTRACTOR [72 h]; ELECTRICIANS SK [134.4 h]; LIGHTS QTY [60 ea] | 19,288 |  | 1AMKEWFF30 | DUKHCON1AMKELFF4065 | DUKHCONP1AMKELFF4065 | DH | CON | 1A | MK | MEP | EW | FF | B02 | B02-D09 | RES-1A |

Notes:
- DUKHCONP1AMKARRF3630: Expenses: P1A-Roofing 7099
- DUKHCONP1AMKARRF3635: Expenses: P1A-Roofing 5500
- DUKHCONP1AMKARRF3640: Expenses: P1A-Roofing 6992
- DUKHCONP1AMKARRF3645: Expenses: P1A-Roofing 10418
- DUKHCONP1AMKARRF3650: Expenses: P1A-Metal work 7918
- DUKHCONP1AMKARRF3655: Expenses: P1A-Roofing 3325
- DUKHCONP1AMKARRF3660: Expenses: P1A-Metal work 6651
- DUKHCONP1AMKAREL3665: Expenses: P1A-Finishes 13611
- DUKHCONP1AMKAREL3670: Expenses: P1A-Finishes 8978
- DUKHCONP1AMKAREL3680: Expenses: P1A-Painting and Decorating 10751
- DUKHCONP1AMKELGF4000: Expenses: P1A-Electrical Installations 4135
- DUKHCONP1AMKELGF4005: Expenses: P1A-Electrical Installations 942
- DUKHCONP1AMKELGF4010: Expenses: P1A-Electrical Installations 14002
- DUKHCONP1AMKELGF4015: Expenses: P1A-Electrical Installations 10676
- DUKHCONP1AMKELGF4020: Expenses: P1A-Electrical Installations 4884
- DUKHCONP1AMKELGF4025: Expenses: P1A-Electrical Installations 19290
- DUKHCONP1AMKELGF4030: Expenses: P1A-Electrical Installations 4769
- DUKHCONP1AMKELFF4035: Expenses: P1A-Electrical Installations 4082
- DUKHCONP1AMKELFF4040: Expenses: P1A-Electrical Installations 940
- DUKHCONP1AMKELFF4045: Expenses: P1A-Electrical Installations 13798
- DUKHCONP1AMKELFF4055: Expenses: P1A-Electrical Installations 10672
- DUKHCONP1AMKELFF4060: Expenses: P1A-Electrical Installations 4882
- DUKHCONP1AMKELFF4050: Expenses: P1A-Electrical Installations 4567
- DUKHCONP1AMKELFF4065: Expenses: P1A-Electrical Installations 19288

| ID | WBS | Activity | Duration | Start | Finish | Predecessors | Total float | Free float | Resources | Cost | P3 ACTID | P6 ID (old) | NP61D | PROJECT | PHASES | PACKAGE | PART | ELEMENTS | STEP | FLOORS | BILL NOS | BILL DIVISION | RES PACK |
| --- | --- | --- | --- | --- | --- | --- | --- | --- | --- | --- | --- | --- | --- | --- | --- | --- | --- | --- | --- | --- | --- | --- | --- |
|  | 20 | **ROOF** |  | 2014-01-22 | 2014-02-04 |  |  |  |  |  |  |  |  |  |  |  |  |  |  |  |  |  |  |
| DUKHCONP1AMKELRF4070 |  | Installation of Isolator | 5d | 2014-01-22 | 2014-01-27 | DUKHPROGEN00PRDV3200, DUKHCONP1AMKELFF4045, DUKHCONP1AMKELFF4050, DUKHCONP1AMKARRF3645, DUKHCONP1AMKELFF4065 | 14d | 0d | LABOR- SUBCONTRACTOR [18 h]; ELECTRICIANS SK [33.6 h]; ISOLATOR QTY [6 ea] | 6,837 | 1AMKEWRF10 | DUKHCON1AMKELRF4070 | DUKHCONP1AMKELRF4070 | DH | CON | 1A | MK | MEP | EW | RF | B02 | B02-D09 | RES-1A |
| DUKHCONP1AMKELRF4075 |  | Installation of TV Dish Antenna | 7d | 2014-01-28 | 2014-02-04 | DUKHPROGEN00PRDV3290, DUKHCONP1AMKELRF4070 | 14d | 37d | LABOR- SUBCONTRACTOR [30 h]; ELECTRICIANS SK [67.2 h]; CONTROL BOX QTY [2 ea]; SWITCHING BOX QTY [4 ea] | 5,075 | 1AMKEWRF15 | DUKHCON1AMKELRF4075 | DUKHCONP1AMKELRF4075 | DH | CON | 1A | MK | MEP | EW | RF | B02 | B02-D09 | RES-1A |
|  | 15 | **PLUMBING, DRAINAGE & FIRE FIGHTING WORKS** |  | 2013-10-08 | 2014-02-06 |  |  |  |  |  |  |  |  |  |  |  |  |  |  |  |  |  |  |
|  | 10 | **GROUND FLOOR** |  | 2013-10-08 | 2014-01-13 |  |  |  |  |  |  |  |  |  |  |  |  |  |  |  |  |  |  |
| DUKHCONP1AMKPLGF4305 |  | Installation of Plumbing pipes & testing | 5d | 2013-10-08 | 2013-10-13 | DUKHCONP1AMKARGF3000 | 3d | 0d | LABOR- SUBCONTRACTOR [12 h]; MECHANICALS SK [43.2 h]; PLUMB PIPES QTY [41 lm] | 10,746 | 1AMKPLGF10 | DUKHCON1AMKPLGF4305 | DUKHCONP1AMKPLGF4305 | DH | CON | 1A | MK | MEP | PL | GF | B02 | B02-D07 | RES-1A |
| DUKHCONP1AMKPLGF4310 |  | Installation of Drainage pipes &testing | 5d | 2013-10-08 | 2013-10-13 | DUKHCONP1AMKPLGF4305 SS, DUKHCONP1AMKARGF3000 | 21d | 9d | LABOR- SUBCONTRACTOR [6 h]; MECHANICALS SK [21.6 h]; DRAINAGE PIPES QTY [31 lm] | 371 | 1AMKPLGF15 | DUKHCON1AMKPLGF4310 | DUKHCONP1AMKPLGF4310 | DH | CON | 1A | MK | MEP | PL | GF | B02 | B02-D07 | RES-1A |
| DUKHCONP1AMKPLGF4315 |  | Sanitary Fittings & Accessories | 7d | 2013-12-31 | 2014-01-07 | DUKHCONP1AMKPLGF4310, DUKHPROGEN00PRDV3770, DUKHPROGEN00PRDV3150, DUKHCONP1AMKARGF3065, DUKHPROGEN00PRDV3230 | 10d | 0d | LABOR- SUBCONTRACTOR [6 h]; MECHANICALS SK [10.8 h]; SANITARY ACC QTY [8 ea] | 13,038 | 1AMKPLGF20 | DUKHCON1AMKPLGF4315 | DUKHCONP1AMKPLGF4315 | DH | CON | 1A | MK | MEP | PL | GF | B02 | B02-D07 | RES-1A |
| DUKHCONP1AMKPLGF4320 |  | Installation of Water Heater | 5d | 2014-01-08 | 2014-01-13 | DUKHCONP1AMKARGF3055, DUKHCONP1AMKARGF3060, DUKHCONP1AMKPLGF4315 | 41d | 20d | LABOR- SUBCONTRACTOR [6 h]; MECHANICALS SK [10.8 h]; WATER HEATER QTY [2 ea] | 1,116 | 1AMKPLGF25 | DUKHCON1AMKPLGF4320 | DUKHCONP1AMKPLGF4320 | DH | CON | 1A | MK | MEP | PL | GF | B02 | B02-D07 | RES-1A |
|  | 15 | **FIRST FLOORS** |  | 2013-11-21 | 2014-01-29 |  |  |  |  |  |  |  |  |  |  |  |  |  |  |  |  |  |  |
| DUKHCONP1AMKPLFF4325 |  | Installation of Plumbing pipes & testing | 5d | 2013-11-21 | 2013-11-26 | DUKHPROGEN00PRDV3080, DUKHCONP1AMKARFF3300 | -15d | 0d | LABOR- SUBCONTRACTOR [12 h]; MECHANICALS SK [43.2 h]; PLUMB PIPES QTY [41 lm] | 10,469 | 1AMKPLFF10 | DUKHCON1AMKPLFF4325 | DUKHCONP1AMKPLFF4325 | DH | CON | 1A | MK | MEP | PL | FF | B02 | B02-D07 | RES-1A |
| DUKHCONP1AMKPLFF4330 |  | Installation of Drainage pipes & testing | 5d | 2013-11-21 | 2013-11-26 | DUKHCONP1AMKPLFF4325 SS | 6d | 9d | LABOR- SUBCONTRACTOR [6 h]; MECHANICALS SK [21.6 h]; DRAINAGE PIPES QTY [31 lm] | 318 | 1AMKPLFF15 | DUKHCON1AMKPLFF4330 | DUKHCONP1AMKPLFF4330 | DH | CON | 1A | MK | MEP | PL | FF | B02 | B02-D07 | RES-1A |
| DUKHCONP1AMKPLFF4335 |  | Sanitary Fittings & Accessories | 7d | 2014-01-16 | 2014-01-23 | DUKHCONP1AMKPLFF4330, DUKHCONP1AMKARFF3365, DUKHCONP1AMKPLGF4315 | 3d | 0d | LABOR- SUBCONTRACTOR [6 h]; MECHANICALS SK [10.8 h]; SANITARY ACC QTY [7 ea] | 14,137 | 1AMKPLFF20 | DUKHCON1AMKPLFF4335 | DUKHCONP1AMKPLFF4335 | DH | CON | 1A | MK | MEP | PL | FF | B02 | B02-D07 | RES-1A |
| DUKHCONP1AMKPLFF4340 |  | Installation of Water Heater | 5d | 2014-01-25 | 2014-01-29 | DUKHCONP1AMKARFF3360, DUKHCONP1AMKPLFF4335 | 3d | 0d | LABOR- SUBCONTRACTOR [6 h]; MECHANICALS SK [10.8 h]; WATER HEATER QTY [1 ea] | 875 | 1AMKPLFF25 | DUKHCON1AMKPLFF4340 | DUKHCONP1AMKPLFF4340 | DH | CON | 1A | MK | MEP | PL | FF | B02 | B02-D07 | RES-1A |
|  | 20 | **ROOF** |  | 2013-12-16 | 2014-02-06 |  |  |  |  |  |  |  |  |  |  |  |  |  |  |  |  |  |  |
| DUKHCONP1AMKPLRF4345 |  | Installation of Plumbing pipes & fittings | 5d | 2013-12-16 | 2013-12-22 | DUKHCONP1AMKARRF3645, DUKHCONP1AMKARRF3605 | -15d | 0d | LABOR- SUBCONTRACTOR [6 h]; MECHANICALS SK [10.8 h]; PLUMB PIPES QTY [12 lm] | 1,613 | 1AMKPLRF10 | DUKHCON1AMKPLRF4345 | DUKHCONP1AMKPLRF4345 | DH | CON | 1A | MK | MEP | PL | RF | B02 | B02-D07 | RES-1A |
| DUKHCONP1AMKPLRF4350 |  | Installation of Rain water Pipes | 5d | 2013-12-23 | 2013-12-28 | DUKHCONP1AMKPLFF4330, DUKHCONP1AMKPLRF4345 | 31d | 28d | LABOR- SUBCONTRACTOR [6 h]; MECHANICALS SK [10.8 h]; DRAINAGE PIPES QTY [10 lm] | 11,740 | 1AMKPLRF15 | DUKHCON1AMKPLRF4350 | DUKHCONP1AMKPLRF4350 | DH | CON | 1A | MK | MEP | PL | RF | B02 | B02-D07 | RES-1A |
| DUKHCONP1AMKPLRF4355 |  | Roof Water Tank Installation & Connections | 7d | 2014-01-30 | 2014-02-06 | DUKHCONP1AMKPLRF4345, DUKHCONP1AMKPLFF4340, DUKHCONP1AMKARRF3655, DUKHCONP1AMKPLRF4350, DUKHCONP1AMKARRF3645 | 3d | 18d | LABOR- SUBCONTRACTOR [18 h]; MECHANICALS SK [32.4 h]; WATER TANK QTY [3 ea] | 74,075 | 1AMKPLRF20 | DUKHCON1AMKPLRF4355 | DUKHCONP1AMKPLRF4355 | DH | CON | 1A | MK | MEP | PL | RF | B02 | B02-D07 | RES-1A |
|  | 20 | **AC WORKS** |  | 2013-11-16 | 2014-01-27 |  |  |  |  |  |  |  |  |  |  |  |  |  |  |  |  |  |  |
|  | 10 | **GROUND FLOOR** |  | 2013-11-16 | 2014-01-05 |  |  |  |  |  |  |  |  |  |  |  |  |  |  |  |  |  |  |
| DUKHCONP1AMKACGF4600 |  | Installation AC Pipes | 5d | 2013-11-16 | 2013-11-20 | DUKHCONP1AMKARGF3005, DUKHPROGEN00PRDV3160 | 20d | 0d | LABOR- SUBCONTRACTOR [30 h]; AC TECHNICIAN SK [100.8 h]; AC PIPES QTY [251 lm] | 1,513 | 1AMKACGF10 | DUKHCON1AMKACGF4600 | DUKHCONP1AMKACGF4600 | DH | CON | 1A | MK | MEP | AC | GF | B02 | B02-D08 | RES-1A |
| DUKHCONP1AMKACGF4605 |  | Fixing of Ventilation Equipments | 5d | 2013-12-25 | 2013-12-30 | DUKHPROGEN00PRDV3530, DUKHCONP1AMKACGF4600, DUKHCONP1AMKARGF3060, DUKHPROGEN00PRDV3340, DUKHCONP1AMKARGF3055 | 14d | 0d | LABOR- SUBCONTRACTOR [6 h]; AC TECHNICIAN SK [22.4 h]; VENTILIATION EQP QTY [5 ea] | 2,162 | 1AMKACGF15 | DUKHCON1AMKACGF4605 | DUKHCONP1AMKACGF4605 | DH | CON | 1A | MK | MEP | AC | GF | B02 | B02-D08 | RES-1A |
| DUKHCONP1AMKACGF4610 |  | Fixing of Split AC | 5d | 2013-12-31 | 2014-01-05 | DUKHCONP1AMKACGF4605, DUKHPROGEN00PRDV3240 | 27d | 9d | LABOR- SUBCONTRACTOR [12 h]; AC TECHNICIAN SK [33.6 h]; SPLIT UNIT QTY [5 ea] | 6,111 | 1AMKACGF20 | DUKHCON1AMKACGF4610 | DUKHCONP1AMKACGF4610 | DH | CON | 1A | MK | MEP | AC | GF | B02 | B02-D08 | RES-1A |
|  | 15 | **FIRST FLOORS** |  | 2013-12-05 | 2014-01-21 |  |  |  |  |  |  |  |  |  |  |  |  |  |  |  |  |  |  |
| DUKHCONP1AMKACFF4615 |  | Installation AC Pipes | 5d | 2013-12-05 | 2013-12-10 | DUKHPROGEN00PRDV3160, DUKHCONP1AMKARFF3305, DUKHCONP1AMKACGF4600 | 16d | 4d | LABOR- SUBCONTRACTOR [30 h]; AC TECHNICIAN SK [100.8 h]; AC PIPES QTY [251 lm] | 1,417 | 1AMKACFF10 | DUKHCON1AMKACFF4615 | DUKHCONP1AMKACFF4615 | DH | CON | 1A | MK | MEP | AC | FF | B02 | B02-D08 | RES-1A |
| DUKHCONP1AMKACFF4620 |  | Fixing of Ventilation Equipments | 5d | 2014-01-11 | 2014-01-15 | DUKHPROGEN00PRDV3340, DUKHCONP1AMKACFF4615, DUKHCONP1AMKACGF4605, DUKHCONP1AMKARFF3360 | 5d | 0d | LABOR- SUBCONTRACTOR [6 h]; AC TECHNICIAN SK [11.2 h]; VENTILIATION EQP QTY [3 ea] | 2,135 | 1AMKACFF15 | DUKHCON1AMKACFF4620 | DUKHCONP1AMKACFF4620 | DH | CON | 1A | MK | MEP | AC | FF | B02 | B02-D08 | RES-1A |
| DUKHCONP1AMKACFF4625 |  | Fixing of Split AC | 5d | 2014-01-16 | 2014-01-21 | DUKHCONP1AMKACGF4610, DUKHCONP1AMKACFF4620, DUKHPROGEN00PRDV3240 | 18d | 0d | LABOR- SUBCONTRACTOR [12 h]; AC TECHNICIAN SK [33.6 h]; SPLIT UNIT QTY [5 ea] | 6,761 | 1AMKACFF20 | DUKHCON1AMKACFF4625 | DUKHCONP1AMKACFF4625 | DH | CON | 1A | MK | MEP | AC | FF | B02 | B02-D08 | RES-1A |

Notes:
- DUKHCONP1AMKELRF4070: Expenses: P1A-Electrical Installations 6837
- DUKHCONP1AMKELRF4075: Expenses: P1A-Electrical Installations 5075
- DUKHCONP1AMKPLGF4305: Expenses: P1A-Plumbing and Drainage works 10746
- DUKHCONP1AMKPLGF4310: Expenses: P1A-Plumbing and Drainage works 371
- DUKHCONP1AMKPLGF4315: Expenses: P1A-Plumbing and Drainage works 13038
- DUKHCONP1AMKPLGF4320: Expenses: P1A-Plumbing and Drainage works 1116
- DUKHCONP1AMKPLFF4325: Expenses: P1A-Plumbing and Drainage works 10469
- DUKHCONP1AMKPLFF4330: Expenses: P1A-Plumbing and Drainage works 318
- DUKHCONP1AMKPLFF4335: Expenses: P1A-Plumbing and Drainage works 14137
- DUKHCONP1AMKPLFF4340: Expenses: P1A-Plumbing and Drainage works 875
- DUKHCONP1AMKPLRF4345: Expenses: P1A-Plumbing and Drainage works 1613
- DUKHCONP1AMKPLRF4350: Expenses: P1A-Plumbing and Drainage works 11740
- DUKHCONP1AMKPLRF4355: Expenses: P1A-Plumbing and Drainage works 74075
- DUKHCONP1AMKACGF4600: Expenses: P1A-Air-conditioning and Ventilation works 1513
- DUKHCONP1AMKACGF4605: Expenses: P1A-Air-conditioning and Ventilation works 2162
- DUKHCONP1AMKACGF4610: Expenses: P1A-Air-conditioning and Ventilation works 6111
- DUKHCONP1AMKACFF4615: Expenses: P1A-Air-conditioning and Ventilation works 1417
- DUKHCONP1AMKACFF4620: Expenses: P1A-Air-conditioning and Ventilation works 2135
- DUKHCONP1AMKACFF4625: Expenses: P1A-Air-conditioning and Ventilation works 6761

| ID | WBS | Activity | Duration | Start | Finish | Predecessors | Total float | Free float | Resources | Cost | P3 ACTID | P6 ID (old) | NP61D | PROJECT | PHASES | PACKAGE | PART | ELEMENTS | STEP | FLOORS | BILL NOS | BILL DIVISION | RES PACK |
| --- | --- | --- | --- | --- | --- | --- | --- | --- | --- | --- | --- | --- | --- | --- | --- | --- | --- | --- | --- | --- | --- | --- | --- |
|  | 20 | **ROOF** |  | 2013-12-16 | 2014-01-27 |  |  |  |  |  |  |  |  |  |  |  |  |  |  |  |  |  |  |
| DUKHCONP1AMKACRF4630 |  | Installation of Refrigerant Pipes | 5d | 2013-12-16 | 2013-12-22 | DUKHCONP1AMKACFF4615, DUKHCONP1AMKACGF4600, DUKHCONP1AMKARRF3645 | 45d | 26d | LABOR- SUBCONTRACTOR [12 h]; AC TECHNICIAN SK [44.8 h]; AC PIPES QTY [106 lm] | 3,110 | 1AMKACRF10 | DUKHCON1AMKACRF4630 | DUKHCONP1AMKACRF4630 | DH | CON | 1A | MK | MEP | AC | RF | B02 | B02-D08 | RES-1A |
| DUKHCONP1AMKACRF4635 |  | Installation of Condensing Unit | 5d | 2014-01-22 | 2014-01-27 | DUKHCONP1AMKACFF4625, DUKHCONP1AMKACRF4630, DUKHCONP1AMKARRF3645, DUKHCONP1AMKACGF4610 | 19d | 39d | LABOR- SUBCONTRACTOR [18 h]; AC TECHNICIAN SK [56 h]; AC UNITS QTY [10 ea] | 16,827 | 1AMKACRF15 | DUKHCON1AMKACRF4635 | DUKHCONP1AMKACRF4635 | DH | CON | 1A | MK | MEP | AC | RF | B02 | B02-D08 | RES-1A |
|  | 25 | **EXTERNAL WORKS** |  | 2013-12-23 | 2014-03-09 |  |  |  |  |  |  |  |  |  |  |  |  |  |  |  |  |  |  |
|  | 10 | **MISCELLANEOUS** |  | 2013-12-23 | 2014-01-19 |  |  |  |  |  |  |  |  |  |  |  |  |  |  |  |  |  |  |
| DUKHCONP1AMKMSEX5000 |  | Construction of Manholes | 7d | 2013-12-23 | 2013-12-30 | DUKHCONP1AMKPLGF4310, DUKHCONP1AMKPLFF4330, DUKHCONP1AMKPLRF4345 | -15d | 0d | MANHOLES SK [48 h]; LABOR- SUBCONTRACTOR [18 h]; MANHOLES QTY [6 ea] | 7,022 | 1AMKMSEX25 | DUKHCON1AMKMS005000 | DUKHCONP1AMKMSEX5000 | DH | CON | 1A | MK | EX | MS |  | B02 | B02-D12 | RES-1A |
| DUKHCONP1AMKMSEX5005 |  | Construction of Soak pit, Chambers | 7d | 2013-12-31 | 2014-01-07 | DUKHCONP1AMKMSEX5000 | -15d | 0d | MANHOLES SK [16 h]; LABOR- SUBCONTRACTOR [6 h]; SOAKPIT QTY [2 ea] | 4,129 | 1AMKMSEX30 | DUKHCON1AMKMS005005 | DUKHCONP1AMKMSEX5005 | DH | CON | 1A | MK | EX | MS |  | B02 | B02-D12 | RES-1A |
| DUKHCONP1AMKMSEX5020 |  | Construction Entrance Ramp | 7d | 2014-01-06 | 2014-01-13 | DUKHCONP1AMKAREL3670, DUKHCONP1AMKAREL3665 | -8d | 0d | SCREED MASON SK [16 h]; CONCRETE MASON SK [24 h]; INTERLOCK MASON SK [16 h]; LABOR- SUBCONTRACTOR [24 h]; LABOR- SUBCONTRACTOR [6 h]; SCREED QTY [14 Sqm]; CONCRETE QTY [12 Cum]; INTERLOCK QTY [19 Sqm] | 3,971 | 1AMKMSEX10 | DUKHCON1AMKMS005020 | DUKHCONP1AMKMSEX5020 | DH | CON | 1A | MK | EX | MS |  | B02 | B02-D12 | RES-1A |
| DUKHCONP1AMKMSEX5015 |  | Construction of grease Trap | 7d | 2014-01-08 | 2014-01-15 | DUKHCONP1AMKMSEX5005 | -15d | 0d | LABOR- SUBCONTRACTOR [6 h]; S.S.BALUSTRADE QTY [2 lm]; HANDRAIL ERECTOR SKILLED [8 h] | 2,837 | 1AMKMSEX20 | DUKHCON1AMKMS005015 | DUKHCONP1AMKMSEX5015 | DH | CON | 1A | MK | EX | MS |  | B02 | B02-D07 | RES-1A |
| DUKHCONP1AMKMSEX5025 |  | SS.Handrails and Balustrades | 5d | 2014-01-14 | 2014-01-19 | DUKHCONP1AMKMSEX5020 | -6d | 0d | LABOR- SUBCONTRACTOR [6 h]; GREASE TRAP QTY [2 lm]; HANDRAIL ERECTOR SKILLED [8 h] | 10,178 | 1AMKMSEX15 | DUKHCON1AMKMS005025 | DUKHCONP1AMKMSEX5025 | DH | CON | 1A | MK | EX | MS |  | B02 | B02-D12 | RES-1A |
|  | 15 | **WATER TANK ENCLOSURE** |  | 2014-01-16 | 2014-03-09 |  |  |  |  |  |  |  |  |  |  |  |  |  |  |  |  |  |  |
| DUKHCONP1AMKWEEX5030 |  | Excavation | 4d | 2014-01-16 | 2014-01-20 | DUKHCONP1AMKPLRF4345, DUKHCONP1AMKMSEX5015 | -15d | 0d | LABOR- SUBCONTRACTOR [6 h]; EXCAVATION QTY [5 Cum]; LOADER [2 h]; POCLAIN [4 h]; TRUCK [2 h]; EQUIP OPERATORS [8 h] | 112 | 1AMKWEEX10 | DUKHCON1AMKWE005030 | DUKHCONP1AMKWEEX5030 | DH | CON | 1A | MK | EX | WE |  | B02 | B02-D12 | RES-1A |
| DUKHCONP1AMKWEEX5035 |  | Construction of Raft | 7d | 2014-01-21 | 2014-01-28 | DUKHCONP1AMKWEEX5030 | -15d | 0d | STEEL FIXERS SK [8 h]; CARPENTERS SK [48 h]; CONCRETE MASON SK [8 h]; LABOR- SUBCONTRACTOR [48 h]; REINFORCEMENT BARS QTY [78 kg]; FORMWORK QTY [23 Sqm]; CONCRETE QTY [3 Cum] | 1,902 | 1AMKWEEX15 | DUKHCON1AMKWE005035 | DUKHCONP1AMKWEEX5035 | DH | CON | 1A | MK | EX | WE |  | B02 | B02-D12 | RES-1A |
| DUKHCONP1AMKWEEX5040 |  | Block works & Plastering | 7d | 2014-01-29 | 2014-02-05 | DUKHCONP1AMKWEEX5035 | -15d | 0d | BLOCK MASON SK [16 h]; PLASTER MASON SK [24 h]; LABOR- SUBCONTRACTOR [24 h]; BLOCK QTY [7 Sqm]; PLASTER QTY [14 Sqm] | 1,698 | 1AMKWEEX20 | DUKHCON1AMKWE005040 | DUKHCONP1AMKWEEX5040 | DH | CON | 1A | MK | EX | WE |  | B02 | B02-D12 | RES-1A |
| DUKHCONP1AMKWEEX5045 |  | Flooring & Painting | 7d | 2014-02-06 | 2014-02-15 | DUKHCONP1AMKWEEX5040 | -15d | 0d | LABOR- SUBCONTRACTOR [12 h]; PAINT QTY [20 Sqm]; EPOXY QTY [6 Sqm]; PAINTERS SK [16 h]; EPOXY SK [8 h] | 1,593 | 1AMKWEEX25 | DUKHCON1AMKWE005045 | DUKHCONP1AMKWEEX5045 | DH | CON | 1A | MK | EX | WE |  | B02 | B02-D12 | RES-1A |
| DUKHCONP1AMKWEEX5050 |  | Installation of Steel Gate | 5d | 2014-02-16 | 2014-02-20 | DUKHPROGEN00PRDV3510, DUKHCONP1AMKWEEX5045, DUKHPROGEN00PRDV3500, DUKHPROGEN00PRDV3610 | -15d | 0d | LABOR- SUBCONTRACTOR [6 h]; GATE QTY [1 ea]; GATE ERECTOR SK [8 h] | 8,984 | 1AMKWEEX30 | DUKHCON1AMKWE005050 | DUKHCONP1AMKWEEX5050 | DH | CON | 1A | MK | EX | WE |  | B02 | B02-D12 | RES-1A |
| DUKHCONP1AMKWEEX5060 |  | Structural steel & SS Shed cover installation | 7d | 2014-02-22 | 2014-03-01 | DUKHPROGEN00PRDV3630, DUKHCONP1AMKMSEX5025, DUKHPROGEN00PRDV3620, DUKHCONP1AMKWEEX5050 | -15d | 0d | STEEL ERECTOR SK [24 h]; LABOR- SUBCONTRACTOR [18 h]; STRUCTURAL STEEL QTY [16 kg]; SS SHED COVER QTY [5 Sqm] | 5,683 | 1AMKWEEX35 | DUKHCON1AMKWE005060 | DUKHCONP1AMKWEEX5060 | DH | CON | 1A | MK | EX | WE |  | B02 | B02-D12 | RES-1A |
| DUKHCONP1AMKWEEX5065 |  | Install. of Water Tank,Chiller,Pump & Meter | 7d | 2014-03-02 | 2014-03-09 | DUKHPROGEN00PRDV3220, DUKHPROGEN00PRDV3520, DUKHPROGEN00PRDV3680, DUKHCONP1AMKPLRF4350, DUKHPROGEN00PRDV3640, DUKHCONP1AMKPLRF4355, DUKHCONP1AMKMSEX5015, DUKHPROGEN00PRDV3330, DUKHCONP1AMKWEEX5060 | -15d | 0d | LABOR- SUBCONTRACTOR [12 h]; AC TECHNICIAN SK [11.2 h]; MECHANICALS SK [10.8 h]; WATER TANK QTY [1 ea]; CHILLER QTY [5 ea]; PUMP QTY [1 ea] | 15,292 | 1AMKWEEX40 | DUKHCON1AMKWE005065 | DUKHCONP1AMKWEEX5065 | DH | CON | 1A | MK | EX | WE |  | B02 | B02-D07 | RES-1A |
|  | 20 | **HARD LANDSCAPING** |  | 2014-01-20 | 2014-02-05 |  |  |  |  |  |  |  |  |  |  |  |  |  |  |  |  |  |  |
| DUKHCONP1AMKHDEX5090 |  | kerb works | 5d | 2014-01-20 | 2014-01-25 | DUKHPROGEN00PRDV3600, DUKHCONP1AMKMSEX5020, DUKHCONP1AMKMSEX5025 | -6d | 0d | KERBSTONE MASON SK [32 h]; LABOR- SUBCONTRACTOR [18 h]; KERBSTONE QTY [36 lm] | 1,661 | 1AMKHDEX10 | DUKHCON1AMKHD005090 | DUKHCONP1AMKHDEX5090 | DH | CON | 1A | MK | EX | HD |  | B02 | B02-D12 | RES-1A |
| DUKHCONP1AMKHDEX5095 |  | Cobble Stone Works | 5d | 2014-01-26 | 2014-01-30 | DUKHCONP1AMKHDEX5090 | -3d | 0d | TILE MASON SK [16 h]; LABOR- SUBCONTRACTOR [12 h]; COBBLE STONE QTY [11 Sqm] | 1,529 | 1AMKHDEX15 | DUKHCON1AMKHD005095 | DUKHCONP1AMKHDEX5095 | DH | CON | 1A | MK | EX | HD |  | B02 | B02-D12 | RES-1A |
| DUKHCONP1AMKHDEX5100 |  | Interlock works | 5d | 2014-02-01 | 2014-02-05 | DUKHPROGEN00PRDV3660, DUKHCONP1AMKHDEX5095 | -3d | 0d | INTERLOCK MASON SK [24 h]; LABOR- SUBCONTRACTOR [12 h]; INTERLOCK QTY [23 Sqm] | 1,966 | 1AMKHDEX20 | DUKHCON1AMKHD005100 | DUKHCONP1AMKHDEX5100 | DH | CON | 1A | MK | EX | HD |  | B02 | B02-D12 | RES-1A |
|  | 25 | **SOFT LANDSCAPING** |  | 2014-02-06 | 2014-02-23 |  |  |  |  |  |  |  |  |  |  |  |  |  |  |  |  |  |  |
| DUKHCONP1AMKSLEX5105 |  | Laying of Grass/ green area | 7d | 2014-02-06 | 2014-02-15 | DUKHCONP1AMKHDEX5100, DUKHPROGEN00PRDV3790, DUKHPROGEN00PRDV3670 | -3d | 0d | LABOR- SUBCONTRACTOR [150 h]; SWEET SOIL QTY [42 Cum]; GRASS QTY [42 Sqm]; LANDSCAPING SK [200 h] | 5,166 | 1AMKSLEX10 | DUKHCON1AMKSL005105 | DUKHCONP1AMKSLEX5105 | DH | CON | 1A | MK | EX | SL |  | B02 | B02-D12 | RES-1A |
| DUKHCONP1AMKSLEX5110 |  | Laying of Palm tree | 7d | 2014-02-16 | 2014-02-23 | DUKHCONP1AMKSLEX5105 | -3d | 5d | LABOR- SUBCONTRACTOR [12 h]; SWEET SOIL QTY [6 Cum]; PLAM TREES QTY [2 ea]; LANDSCAPING SK [16 h] | 6,084 | 1AMKSLEX15 | DUKHCON1AMKSL005110 | DUKHCONP1AMKSLEX5110 | DH | CON | 1A | MK | EX | SL |  | B02 | B02-D12 | RES-1A |

Notes:
- DUKHCONP1AMKACRF4630: Expenses: P1A-Air-conditioning and Ventilation works 3110
- DUKHCONP1AMKACRF4635: Expenses: P1A-Air-conditioning and Ventilation works 16827
- DUKHCONP1AMKMSEX5000: Expenses: P1A-External works within the Plot Curtilage 7022
- DUKHCONP1AMKMSEX5005: Expenses: P1A-External works within the Plot Curtilage 4129
- DUKHCONP1AMKMSEX5020: Expenses: P1A-External works within the Plot Curtilage 3971
- DUKHCONP1AMKMSEX5015: Expenses: P1A-Plumbing and Drainage works 2837
- DUKHCONP1AMKMSEX5025: Expenses: P1A-External works within the Plot Curtilage 10178
- DUKHCONP1AMKWEEX5030: Expenses: P1A-External works within the Plot Curtilage 112
- DUKHCONP1AMKWEEX5035: Expenses: P1A-External works within the Plot Curtilage 1902
- DUKHCONP1AMKWEEX5040: Expenses: P1A-External works within the Plot Curtilage 1698
- DUKHCONP1AMKWEEX5045: Expenses: P1A-External works within the Plot Curtilage 1593
- DUKHCONP1AMKWEEX5050: Expenses: P1A-External works within the Plot Curtilage 8984
- DUKHCONP1AMKWEEX5060: Expenses: P1A-External works within the Plot Curtilage 5683
- DUKHCONP1AMKWEEX5065: Expenses: P1A-Plumbing and Drainage works 15292
- DUKHCONP1AMKHDEX5090: Expenses: P1A-External works within the Plot Curtilage 1661
- DUKHCONP1AMKHDEX5095: Expenses: P1A-External works within the Plot Curtilage 1529
- DUKHCONP1AMKHDEX5100: Expenses: P1A-External works within the Plot Curtilage 1966
- DUKHCONP1AMKSLEX5105: Expenses: P1A-External works within the Plot Curtilage 5166
- DUKHCONP1AMKSLEX5110: Expenses: P1A-External works within the Plot Curtilage 6084

| ID | WBS | Activity | Duration | Start | Finish | Predecessors | Complete | Remaining | Planned start | Planned finish | Total float | Free float | Expected finish | Resources | Cost | CODE | P3 ACTID | P6 ID (old) | NP61D | PROJECT | PHASES | PACKAGE | PART | ELEMENTS | STEP | FLOORS | BILL NOS | BILL DIVISION | RES PACK | rem |
| --- | --- | --- | --- | --- | --- | --- | --- | --- | --- | --- | --- | --- | --- | --- | --- | --- | --- | --- | --- | --- | --- | --- | --- | --- | --- | --- | --- | --- | --- | --- |
|  | 10 | **ZONE - 1 (4 Twin Villas)** |  | 2013-02-14 | 2014-05-17 |  |  |  |  |  |  |  |  |  |  |  |  |  |  |  |  |  |  |  |  |  |  |  |  |  |
|  | 10 | **STRUCTURAL WORKS** |  | 2013-02-14 | 2013-12-23 |  |  |  |  |  |  |  |  |  |  |  |  |  |  |  |  |  |  |  |  |  |  |  |  |  |
|  | 10 | **SUB STRUCTURE** |  | 2013-02-14 | 2013-08-07 |  |  |  |  |  |  |  |  |  |  |  |  |  |  |  |  |  |  |  |  |  |  |  |  |  |
|  | 10 | **UPTO GRADE SLAB** |  | 2013-02-14 | 2013-08-07 |  |  |  |  |  |  |  |  |  |  |  |  |  |  |  |  |  |  |  |  |  |  |  |  |  |
| DUKHCONP1AZ1STUG1000 |  | Footing Excavation | 25d | 2013-02-14 A | 2013-03-30 A | DUKHMOBP010000004040 SS+5d, DUKHMOBP010000004050 SS+5d, DUKHMOBI1APS00001250, DUKHMOBI1APS00002043 SS+14d, DUKHCONP1AGNSP005000 SS+5d, DUKHCONP1AGNSP002500 | 100% |  | 2013-02-14 | 2013-03-14 |  |  |  | LABOR - CIVIL [590 h]; EXCAVATION QTY [984 Cum]; LOADER [131 h]; POCLAIN [262 h]; TRUCK [131 h]; EQUIP OPERATORS [524 h] | 68,256 | 10 | 1AP1SBUG10 | DUKHCON1AP1STUG1000 | DUKHCONP1AZ1STUG1000 | DH | CON | 1A | Z1 | ST | SB | UG | B02 | B02-D01 | RES-1A |  |
| DUKHCONP1AZ1STUG1005 |  | Footing Antitermite | 23d | 2013-02-26 A | 2013-03-30 A | DUKHCONP1AZ1STUG1000 FF+5d, DUKHPROGEN00PRDV3000, DUKHCONP1AZ1STUG1000 SS+10d | 100% |  | 2013-02-26 | 2013-03-24 |  |  |  | LABOR- SUBCONTRACTOR [432 h]; ANTITERMITE QTY [2880 sqft]; ANTITERMITE SK [1152 h] | 8,640 | 15 | 1AP1SBUG15 | DUKHCON1AP1STUG1005 | DUKHCONP1AZ1STUG1005 | DH | CON | 1A | Z1 | ST | SB | UG | B02 | B02-D01 | RES-1A | REM |
| DUKHCONP1AZ1STUG1010 |  | Footing Blinding | 23d | 2013-03-30 A | 2013-04-24 A | DUKHCONP1AZ1STUG1005 FF+3d, DUKHCONP1AZ1STUG1005 SS+3d, DUKHPROGEN00PRDV3020 | 100% |  |  |  |  |  |  | BLINDING MASON SK [454 h]; LABOR- SUBCONTRACTOR [340.5 h]; BLINDING QTY [567 Sqm] | 14,285 | 15 | 1AP1SBUG18 | DUKHCON1AP1STUG1010 | DUKHCONP1AZ1STUG1010 | DH | CON | 1A | Z1 | ST | SB | UG | B02 | B02-D02 | RES-1A | REM |
| DUKHCONP1AZ1STUG1015 |  | Footing Waterproofing & Screed | 25d | 2013-04-04 A | 2013-04-26 A | DUKHCONP1AZ1STUG1010 FF+5d, DUKHPROGEN00PRDV3030, DUKHPROGEN00PRDV3020, DUKHCONP1AZ1STUG1010 SS+5d, DUKHENGP1ADWSTAP4000 | 100% |  | 2013-04-04 | 2013-05-02 |  |  |  | SCREED MASON SK [418 h]; LABOR- SUBCONTRACTOR [156.75 h]; SCREED QTY [522 Sqm]; WATERPROOFING QTY [1457 Sqm] | 52,596 | 20 | 1AP1SBUG20 | DUKHCON1AP1STUG1015 | DUKHCONP1AZ1STUG1015 | DH | CON | 1A | Z1 | ST | SB | UG | B02 | B02-D02 | RES-1A | REM |
| DUKHCONP1AZ1STUG1020 |  | Construction of foundations | 20d | 2013-04-20 A | 2013-05-12 | DUKHMOBP010000004060 SS+2d, DUKHMOBP010000004080 SS+2d, DUKHPROGEN00PRDV3010, DUKHMOBP010000004090 SS+2d, DUKHCONP1AZ1STUG1015 SS+7d, DUKHCONP1AZ1STUG1015 FF+8d, DUKHMOBP010000004070 SS+2d | 30% | 14d |  |  | -24d | 0d | 2013-05-12 | STEEL FIXERS SK [2565 h]; CARPENTERS SK [1160 h]; CONCRETE MASON SK [720 h]; LABOR- SUBCONTRACTOR [3333.75 h]; REINFORCEMENT BARS QTY [32062 kg]; FORMWORK QTY [580 Sqm]; CONCRETE QTY [360 Cum] | 225,546 | 25 | 1AP1SBUG25 | DUKHCON1AP1STUG1020 | DUKHCONP1AZ1STUG1020 | DH | CON | 1A | Z1 | ST | SB | UG | B02 | B02-D02 | RES-1A | REM |
| DUKHCONP1AZ1STUG1025 |  | Construction of neck of columns | 25d | 2013-04-29 | 2013-05-27 | DUKHCONP1AZ1STUG1020 SS+8d, DUKHCONP1AZ1STUG1020 FF+7d |  |  |  |  | -24d | 0d |  | STEEL FIXERS SK [214 h]; CARPENTERS SK [656 h]; CONCRETE MASON SK [48 h]; LABOR- SUBCONTRACTOR [688.5 h]; REINFORCEMENT BARS QTY [2669 kg]; FORMWORK QTY [328 Sqm]; CONCRETE QTY [24 Cum] | 35,935 | 30 | 1AP1SBUG30 | DUKHCON1AP1STUG1025 | DUKHCONP1AZ1STUG1025 | DH | CON | 1A | Z1 | ST | SB | UG | B02 | B02-D02 | RES-1A | REM |
| DUKHCONP1AZ1STUG1030 |  | Waterproofing Footing & Neck Column | 25d | 2013-05-08 | 2013-06-05 | DUKHCONP1AZ1STUG1025 FF+8d, DUKHCONP1AZ1STUG1025 SS+8d |  |  |  |  | -24d | 0d |  | LABOR- SUBCONTRACTOR [141 h]; WATERPROOFING QTY [468 Sqm]; WATERPROOFING SPECIALIST SK [375 h] | 22,459 | 35 | 1AP1SBUG35 | DUKHCON1AP1STUG1030 | DUKHCONP1AZ1STUG1030 | DH | CON | 1A | Z1 | ST | SB | UG | B02 | B02-D02 | RES-1A | REM |
| DUKHCONP1AZ1STUG1035 |  | Backfilling Upto Grade Beam Bottom | 25d | 2013-05-22 | 2013-06-19 | DUKHCONP1AZ1STUG1030 SS+12d, DUKHCONP1AZ1STUG1030 FF+12d |  |  |  |  | -24d | 0d |  | LABOR- SUBCONTRACTOR [216 h]; BACKFILLING QTY [880 Cum]; BOBCAT [375 h]; PLATE COMPACTOR [375 h]; TRUCK [75 h]; EQUIP OPERATORS [825 h] | 22,363 | 40 | 1AP1SBUG40 | DUKHCON1AP1STUG1035 | DUKHCONP1AZ1STUG1035 | DH | CON | 1A | Z1 | ST | SB | UG | B02 | B02-D01 | RES-1A |  |
| DUKHCONP1AZ1STUG1040 |  | Construction of Grade Beams | 26d | 2013-06-08 | 2013-07-07 | DUKHENGP1ADWSTAP4010, DUKHCONP1AZ1STUG1035 FF+10d, DUKHCONP1AZ1STUG1035 SS+14d |  |  |  |  | -24d | 0d |  | BLINDING MASON SK [244 h]; SCREED MASON SK [224 h]; STEEL FIXERS SK [1497 h]; CARPENTERS SK [2152 h]; CONCRETE MASON SK [256 h]; LABOR- SUBCONTRACTOR [3195.75 h]; BLINDING QTY [304 Sqm]; SCREED QTY [280 Sqm]; REINFORCEMENT BARS QTY [18709 kg]; FORMWORK QTY [1076 Sqm]; CONCRETE QTY [128 Cum] | 326,110 | 45 | 1AP1SBUG45 | DUKHCON1AP1STUG1040 | DUKHCONP1AZ1STUG1040 | DH | CON | 1A | Z1 | ST | SB | UG | B02 | B02-D02 | RES-1A | REM |
| DUKHCONP1AZ1STUG1045 |  | Construction of slab on grade | 25d | 2013-07-10 | 2013-08-07 | DUKHCONP1AZ1PLUG4300 SS+8d, DUKHENGP1ADWSTAP4010, DUKHCONP1AZ1STUG1040 FF+10d, DUKHCONP1AZ1PLUG4300 FF+8d, DUKHCONP1AZ1STUG1040 SS+10d |  |  |  |  | -24d | 0d |  | SCREED QTY [1062 Sqm]; CONCRETE QTY [200 Cum]; WELDED WIRE MESH [2008 Sqm]; BLINDING MASON SK [923 h]; SCREED MASON SK [850 h]; STEEL FIXERS SK [536 h]; CONCRETE MASON SK [400 h]; LABOR- SUBCONTRACTOR [1713 h]; BLINDING QTY [1153 Sqm] | 239,062 | 50 | 1AP1SBUG50 | DUKHCON1AP1STUG1045 | DUKHCONP1AZ1STUG1045 | DH | CON | 1A | Z1 | ST | SB | UG | B02 | B02-D02 | RES-1A | REM |
|  | 15 | **SUPERSTRUCTURE** |  | 2013-07-27 | 2013-12-23 |  |  |  |  |  |  |  |  |  |  |  |  |  |  |  |  |  |  |  |  |  |  |  |  |  |
|  | 10 | **GROUND FLOOR** |  | 2013-07-27 | 2013-09-23 |  |  |  |  |  |  |  |  |  |  |  |  |  |  |  |  |  |  |  |  |  |  |  |  |  |
| DUKHCONP1AZ1STGF2000 |  | Column-Rebar & Formwork | 25d | 2013-07-27 | 2013-08-27 | DUKHCONP1AZ1STUG1045 FF+7d, DUKHCONP1AZ1STUG1045 SS+14d, DUKHENGP1ADWSTAP4020 |  |  |  |  | -24d | 0d |  | STEEL FIXERS SK [656 h]; CARPENTERS SK [1656 h]; LABOR- SUBCONTRACTOR [1734 h]; REINFORCEMENT BARS QTY [8198 kg]; FORMWORK QTY [828 Sqm] | 73,433 | 10 | 1AP1SPGF10 | DUKHCON1AP1STGF2000 | DUKHCONP1AZ1STGF2000 | DH | CON | 1A | Z1 | ST | SP | GF | B02 | B02-D02 | RES-1A | REM |
| DUKHCONP1AZ1STGF2005 |  | Column-Concrete | 24d | 2013-08-04 | 2013-09-03 | DUKHCONP1AZ1STGF2000 FF+2d, DUKHCONP1AZ1STGF2000 SS+7d |  |  |  |  | -24d | 0d |  | CONCRETE MASON SK [146 h]; LABOR- SUBCONTRACTOR [109.5 h]; CONCRETE QTY [73 Cum] | 20,945 | 15 | 1AP1SPGF15 | DUKHCON1AP1STGF2005 | DUKHCONP1AZ1STGF2005 | DH | CON | 1A | Z1 | ST | SP | GF | B02 | B02-D02 | RES-1A | REM |
| DUKHCONP1AZ1STGF2010 |  | Beam, Stairs ,Slab-Rebar & Formwork | 25d | 2013-08-22 | 2013-09-19 | DUKHENGP1ADWSTAP4030, DUKHCONP1AZ1STGF2005 FF+14d, DUKHCONP1AZ1STGF2005 SS+2d |  |  |  |  | -24d | 0d |  | STEEL FIXERS SK [4091 h]; CARPENTERS SK [5690 h]; LABOR- SUBCONTRACTOR [7335.75 h]; REINFORCEMENT BARS QTY [51136 kg]; FORMWORK QTY [2845 Sqm] | 326,549 | 20 | 1AP1SPGF20 | DUKHCON1AP1STGF2010 | DUKHCONP1AZ1STGF2010 | DH | CON | 1A | Z1 | ST | SP | GF | B02 | B02-D02 | RES-1A | REM |
| DUKHCONP1AZ1STGF2015 |  | Beam, Stairs ,Slab-Concrete | 15d | 2013-09-07 | 2013-09-23 | DUKHCONP1AZ1STGF2010 SS+10d, DUKHCONP1AZ1STGF2010 FF+3d |  |  |  |  | -24d | 0d |  | CONCRETE MASON SK [740 h]; LABOR- SUBCONTRACTOR [555 h]; CONCRETE QTY [370 Cum] | 131,494 | 25 | 1AP1SPGF25 | DUKHCON1AP1STGF2015 | DUKHCONP1AZ1STGF2015 | DH | CON | 1A | Z1 | ST | SP | GF | B02 | B02-D02 | RES-1A | REM |
|  | 15 | **FIRST FLOORS** |  | 2013-09-09 | 2013-11-06 |  |  |  |  |  |  |  |  |  |  |  |  |  |  |  |  |  |  |  |  |  |  |  |  |  |
| DUKHCONP1AZ1STFF2020 |  | Column-Rebar & Formwork | 25d | 2013-09-09 | 2013-10-07 | DUKHCONP1AZ1STGF2015 SS+2d, DUKHCONP1AZ1STGF2015 FF+5d, DUKHENGP1ADWSTAP4040 |  |  |  |  | -24d | 0d |  | STEEL FIXERS SK [574 h]; CARPENTERS SK [1472 h]; LABOR- SUBCONTRACTOR [1534.5 h]; REINFORCEMENT BARS QTY [7175 kg]; FORMWORK QTY [736 Sqm] | 64,915 | 10 | 1AP1SPFF10 | DUKHCON1AP1STFF2020 | DUKHCONP1AZ1STFF2020 | DH | CON | 1A | Z1 | ST | SP | FF | B02 | B02-D02 | RES-1A | REM |
| DUKHCONP1AZ1STFF2025 |  | Column-Concrete | 24d | 2013-09-18 | 2013-10-15 | DUKHCONP1AZ1STFF2020 SS+8d, DUKHCONP1AZ1STFF2020 FF+2d |  |  |  |  | -24d | 0d |  | CONCRETE MASON SK [128 h]; LABOR- SUBCONTRACTOR [96 h]; CONCRETE QTY [64 Cum] | 18,331 | 15 | 1AP1SPFF15 | DUKHCON1AP1STFF2025 | DUKHCONP1AZ1STFF2025 | DH | CON | 1A | Z1 | ST | SP | FF | B02 | B02-D02 | RES-1A | REM |
| DUKHCONP1AZ1STFF2030 |  | Beam, Stairs ,Slab-Rebar & Formwork | 25d | 2013-10-03 | 2013-11-03 | DUKHCONP1AZ1STFF2025 SS+2d, DUKHCONP1AZ1STFF2025 FF+14d |  |  |  |  | -24d | 0d |  | STEEL FIXERS SK [3685 h]; CARPENTERS SK [5526 h]; LABOR- SUBCONTRACTOR [6908.25 h]; REINFORCEMENT BARS QTY [46062 kg]; FORMWORK QTY [2763 Sqm] | 310,154 | 20 | 1AP1SPFF20 | DUKHCON1AP1STFF2030 | DUKHCONP1AZ1STFF2030 | DH | CON | 1A | Z1 | ST | SP | FF | B02 | B02-D02 | RES-1A | REM |
| DUKHCONP1AZ1STFF2035 |  | Beam, Stairs ,Slab-Concrete | 15d | 2013-10-21 | 2013-11-06 | DUKHCONP1AZ1STFF2030 FF+3d, DUKHCONP1AZ1STFF2030 SS+10d |  |  |  |  | -24d | 0d |  | CONCRETE MASON SK [652 h]; LABOR- SUBCONTRACTOR [489 h]; CONCRETE QTY [326 Cum] | 119,102 | 25 | 1AP1SPFF25 | DUKHCON1AP1STFF2035 | DUKHCONP1AZ1STFF2035 | DH | CON | 1A | Z1 | ST | SP | FF | B02 | B02-D02 | RES-1A | REM |

Notes:
- DUKHCONP1AZ1STUG1000: Expenses: P1A-Excavation and Earth Works 68256
- DUKHCONP1AZ1STUG1005: Expenses: P1A-Excavation and Earth Works 8640
- DUKHCONP1AZ1STUG1010: Expenses: P1A-Concrete Works 14285
- DUKHCONP1AZ1STUG1015: Expenses: P1A-Concrete Works 52596
- DUKHCONP1AZ1STUG1020: Expenses: P1A-Concrete Works 225546
- DUKHCONP1AZ1STUG1025: Expenses: P1A-Concrete Works 35935
- DUKHCONP1AZ1STUG1030: Expenses: P1A-Concrete Works 22459
- DUKHCONP1AZ1STUG1035: Expenses: P1A-Excavation and Earth Works 22363
- DUKHCONP1AZ1STUG1040: Expenses: P1A-Concrete Works 326110
- DUKHCONP1AZ1STUG1045: Expenses: P1A-Concrete Works 239062
- DUKHCONP1AZ1STGF2000: Expenses: P1A-Concrete Works 73433
- DUKHCONP1AZ1STGF2005: Expenses: P1A-Concrete Works 20945
- DUKHCONP1AZ1STGF2010: Expenses: P1A-Concrete Works 326549
- DUKHCONP1AZ1STGF2015: Expenses: P1A-Concrete Works 131494
- DUKHCONP1AZ1STFF2020: Expenses: P1A-Concrete Works 64915
- DUKHCONP1AZ1STFF2025: Expenses: P1A-Concrete Works 18331
- DUKHCONP1AZ1STFF2030: Expenses: P1A-Concrete Works 310154
- DUKHCONP1AZ1STFF2035: Expenses: P1A-Concrete Works 119102

| ID | WBS | Activity | Duration | Start | Finish | Predecessors | Total float | Free float | Resources | Cost | CODE | rem | P3 ACTID | P6 ID (old) | NP61D | PROJECT | PHASES | PACKAGE | PART | ELEMENTS | STEP | FLOORS | BILL NOS | BILL DIVISION | RES PACK | EXECUTER |
| --- | --- | --- | --- | --- | --- | --- | --- | --- | --- | --- | --- | --- | --- | --- | --- | --- | --- | --- | --- | --- | --- | --- | --- | --- | --- | --- |
|  | 20 | **ROOF** |  | 2013-10-24 | 2013-12-23 |  |  |  |  |  |  |  |  |  |  |  |  |  |  |  |  |  |  |  |  |  |
| DUKHCONP1AZ1STRF2040 |  | Column-Rebar & Formwork | 18d | 2013-10-24 | 2013-11-13 | DUKHCONP1AZ1STFF2035 SS+3d, DUKHCONP1AZ1STFF2035 FF+3d | -15d | 0d | STEEL FIXERS SK [137 h]; CARPENTERS SK [552 h]; LABOR- SUBCONTRACTOR [516.75 h]; REINFORCEMENT BARS QTY [1707 kg]; FORMWORK QTY [276 Sqm] | 21,168 | 10 | REM | 1AP1SPRF10 | DUKHCON1AP1STRF2040 | DUKHCONP1AZ1STRF2040 | DH | CON | 1A | Z1 | ST | SP | RF | B02 | B02-D02 | RES-1A |  |
| DUKHCONP1AZ1STRF2045 |  | Column-Concrete | 17d | 2013-10-29 | 2013-11-17 | DUKHCONP1AZ1STRF2040 FF+1d, DUKHCONP1AZ1STRF2040 SS+4d | -15d | 0d | CONCRETE MASON SK [30 h]; LABOR- SUBCONTRACTOR [22.5 h]; CONCRETE QTY [15 Cum] | 4,363 | 15 | REM | 1AP1SPRF15 | DUKHCON1AP1STRF2045 | DUKHCONP1AZ1STRF2045 | DH | CON | 1A | Z1 | ST | SP | RF | B02 | B02-D02 | RES-1A |  |
| DUKHCONP1AZ1STRF2050 |  | Slab-Rebar & Formwork - Head Room | 20d | 2013-11-02 | 2013-11-24 | DUKHCONP1AZ1STRF2045 FF+5d, DUKHCONP1AZ1STRF2045 SS+3d | -15d | 0d | STEEL FIXERS SK [869 h]; CARPENTERS SK [694 h]; LABOR- SUBCONTRACTOR [1172.25 h]; REINFORCEMENT BARS QTY [10859 kg]; FORMWORK QTY [347 Sqm] | 61,496 | 20 | REM | 1AP1SPRF20 | DUKHCON1AP1STRF2050 | DUKHCONP1AZ1STRF2050 | DH | CON | 1A | Z1 | ST | SP | RF | B02 | B02-D02 | RES-1A |  |
| DUKHCONP1AZ1STRF2055 |  | Slab-Concrete-Head room | 10d | 2013-11-16 | 2013-11-26 | DUKHCONP1AZ1STRF2050 SS+5d, DUKHCONP1AZ1STRF2050 FF+2d | -15d | 0d | CONCRETE MASON SK [144 h]; LABOR- SUBCONTRACTOR [108 h]; CONCRETE QTY [72 Cum] | 22,960 | 25 | REM | 1AP1SPRF25 | DUKHCON1AP1STRF2055 | DUKHCONP1AZ1STRF2055 | DH | CON | 1A | Z1 | ST | SP | RF | B02 | B02-D02 | RES-1A |  |
| DUKHCONP1AZ1STRF2060 |  | Construction of Parapets | 25d | 2013-11-18 | 2013-12-16 | DUKHCONP1AZ1STRF2055 SS+2d, DUKHCONP1AZ1STRF2055 FF+14d | -15d | 0d | BLOCK MASON SK [1408 h]; LABOR- SUBCONTRACTOR [792 h]; BLOCK QTY [704 Sqm] | 43,648 | 30 | REM | 1AP1SPRF30 | DUKHCON1AP1STRF2060 | DUKHCONP1AZ1STRF2060 | DH | CON | 1A | Z1 | ST | SP | RF | B02 | B02-D03 | RES-1A |  |
| DUKHCONP1AZ1STRF2065 |  | Construction of up stands/Plinth | 25d | 2013-11-24 | 2013-12-23 | DUKHCONP1AZ1STRF2060 FF+5d, DUKHCONP1AZ1STRF2060 SS+5d | -15d | 0d | STEEL FIXERS SK [45 h]; CARPENTERS SK [256 h]; CONCRETE MASON SK [16 h]; LABOR- SUBCONTRACTOR [237.75 h]; REINFORCEMENT BARS QTY [559 kg]; FORMWORK QTY [128 Sqm]; CONCRETE QTY [8 Cum] | 12,624 | 35 | REM | 1AP1SPRF35 | DUKHCON1AP1STRF2065 | DUKHCONP1AZ1STRF2065 | DH | CON | 1A | Z1 | ST | SP | RF | B02 | B02-D02 | RES-1A |  |
|  | 15 | **FINISHING WORKS** |  | 2013-10-08 | 2014-04-17 |  |  |  |  |  |  |  |  |  |  |  |  |  |  |  |  |  |  |  |  |  |
|  | 10 | **INTERNAL FINISHES** |  | 2013-10-08 | 2014-04-17 |  |  |  |  |  |  |  |  |  |  |  |  |  |  |  |  |  |  |  |  |  |
|  | 10 | **GROUND FLOOR** |  | 2013-10-08 | 2014-03-24 |  |  |  |  |  |  |  |  |  |  |  |  |  |  |  |  |  |  |  |  |  |
| DUKHCONP1AZ1ARGF3000 |  | Block work | 25d | 2013-10-08 | 2013-11-07 | DUKHCONP1AZ1STGF2015 FF+21d, DUKHCONP1AMKARGF3000, DUKHPROGEN00PRDV3010, DUKHCONP1AZ1STGF2015 SS+21d | -6d | 0d | BLOCK MASON SK [5454 h]; LABOR- SUBCONTRACTOR [3068.25 h]; BLOCK QTY [2727 Sqm] | 197,366 | 10 | REM | 1AP1IFGF10 | DUKHCON1AP1ARGF3000 | DUKHCONP1AZ1ARGF3000 | DH | CON | 1A | Z1 | FIN | IF | GF | B02 | B02-D03 | RES-1A |  |
| DUKHCONP1AZ1ARGF3005 |  | Plastering work | 25d | 2013-11-02 | 2013-11-30 | DUKHCONP1AZ1ARGF3000 SS+7d, DUKHPROGEN00PRDV3040, DUKHCONP1AZ1ELGF4000 FF+5d, DUKHCONP1AZ1ELGF4000 SS+5d, DUKHCONP1AZ1PLGF4305 FF+5d, DUKHCONP1AZ1PLGF4305 SS+5d, DUKHCONP1AMKARGF3005, DUKHCONP1AZ1ARGF3000 FF+7d | -6d | 0d | PLASTER MASON SK [7637 h]; LABOR- SUBCONTRACTOR [4296 h]; PLASTER QTY [4773 Sqm] | 62,645 | 12 | REM | 1AP1IFGF12 | DUKHCON1AP1ARGF3005 | DUKHCONP1AZ1ARGF3005 | DH | CON | 1A | Z1 | FIN | IF | GF | B02 | B02-D10 | RES-1A |  |
| DUKHCONP1AZ1ARGF3010 |  | Flooring screed | 21d | 2013-11-10 | 2013-12-03 | DUKHCONP1AMKARGF3010, DUKHCONP1AZ1ARGF3005 FF+3d, DUKHCONP1AZ1ARGF3005 SS+7d | 2d | 8d | SCREED MASON SK [1005 h]; LABOR- SUBCONTRACTOR [377.25 h]; FLOORING SCREED QTY [1256 Sqm] | 42,007 | 15 | REM | 1AP1IFGF15 | DUKHCON1AP1ARGF3010 | DUKHCONP1AZ1ARGF3010 | DH | CON | 1A | Z1 | FIN | IF | GF | B02 | B02-D10 | RES-1A |  |
| DUKHCONP1AZ1ARGF3015 |  | Wet area waterproofing & Protection Screed | 15d | 2013-11-19 | 2013-12-05 | DUKHCONP1AZ1ARGF3005 FF+5d, DUKHCONP1AMKARGF3015, DUKHCONP1AZ1ARGF3005 SS+7d | -6d | 0d | LABOR- SUBCONTRACTOR [59.25 h]; WETAREA WATERPROOFING QTY [196 Sqm]; WATERPROOFING SPECIALIST SK [157 h] | 6,664 | 18 | REM | 1AP1IFGF18 | DUKHCON1AP1ARGF3015 | DUKHCONP1AZ1ARGF3015 | DH | CON | 1A | Z1 | FIN | IF | GF | B02 | B02-D10 | RES-1A |  |
| DUKHCONP1AZ1ARGF3030 |  | Paint First coat | 25d | 2013-11-21 | 2013-12-21 | DUKHCONP1AMKARGF3030, DUKHCONP1AZ1ARGF3005 SS+14d, DUKHCONP1AZ1ARGF3005 FF+14d, DUKHPROGEN00PRDV3320 | 5d | 0d | LABOR- SUBCONTRACTOR [1296 h]; FIRSTCOAT PAINT QTY [4316 Sqm]; PAINTERS SK [3456 h] | 23,282 | 21 | REM | 1AP1IFGF21 | DUKHCON1AP1ARGF3030 | DUKHCONP1AZ1ARGF3030 | DH | CON | 1A | Z1 | FIN | IF | GF | B02 | B02-D11 | RES-1A | ENT |
| DUKHCONP1AZ1ARGF3020 |  | Ceramic Wall Tiling | 25d | 2013-11-25 | 2013-12-24 | DUKHCONP1AZ1ARGF3015 FF+5d, DUKHCONP1AZ1PLGF4305 FF+4d, DUKHCONP1AZ1PLGF4305 SS+4d, DUKHCONP1AMKARGF3020, DUKHPROGEN00PRDV3120, DUKHCONP1AZ1PLGF4310 FF+4d, DUKHCONP1AZ1ARGF3015 SS+5d, DUKHCONP1AZ1PLGF4310 SS+4d | -6d | 0d | TILE MASON SK [2480 h]; LABOR- SUBCONTRACTOR [1395 h]; CERAMIC WALL TILE QTY [1240 Sqm] | 81,022 | 24 | REM | 1AP1IFGF24 | DUKHCON1AP1ARGF3020 | DUKHCONP1AZ1ARGF3020 | DH | CON | 1A | Z1 | FIN | IF | GF | B02 | B02-D10 | RES-1A |  |
| DUKHCONP1AZ1ARGF3025 |  | Porcelain Tile flooring | 25d | 2013-12-01 | 2013-12-30 | DUKHPROGEN00PRDV3130, DUKHCONP1AMKARGF3025, DUKHCONP1AZ1ARGF3020 SS+5d, DUKHCONP1AZ1ARGF3010 FF+10d, DUKHCONP1AZ1ARGF3020 FF+5d, DUKHCONP1AZ1ARGF3010 SS+10d | -6d | 0d | TILE MASON SK [976 h]; LABOR- SUBCONTRACTOR [549 h]; PORCELAIN FLOORING QTY [854 Sqm] | 65,553 | 27 | REM | 1AP1IFGF27 | DUKHCON1AP1ARGF3025 | DUKHCONP1AZ1ARGF3025 | DH | CON | 1A | Z1 | FIN | IF | GF | B02 | B02-D10 | RES-1A |  |
| DUKHCONP1AZ1ARGF3045 |  | Fixing of Suspension systems | 20d | 2013-12-19 | 2014-01-11 | DUKHCONP1AZ1ELGF4010 SS+5d, DUKHCONP1AZ1ELGF4010 FF+5d, DUKHCONP1AZ1ARGF3025 FF+10d, DUKHCONP1AMKARGF3045, DUKHCONP1AZ1ARGF3030 FF+7d, DUKHCONP1AZ1ARGF3025 SS+10d, DUKHCONP1AZ1ARGF3030 SS+7d | -6d | 0d | LABOR- SUBCONTRACTOR [458.48 h]; SUSPENSION QTY [1018.53 Sqm]; FALSE CEILING SKILLED SK [815 h] | 19,985 | 39 | REM | 1AP1IFGF39 | DUKHCON1AP1ARGF3045 | DUKHCONP1AZ1ARGF3045 | DH | CON | 1A | Z1 | FIN | IF | GF | B02 | B02-D10 | RES-1A | SUS |
| DUKHCONP1AZ1ARGF3035 |  | Slate Tile Flooring & Skirting | 15d | 2013-12-22 | 2014-01-07 | DUKHCONP1AZ1ARGF3010 FF+13d, DUKHCONP1AZ1ARGF3025 FF+7d, DUKHCONP1AZ1ARGF3010 SS+13d, DUKHPROGEN00PRDV3100, DUKHCONP1AMKARGF3035, DUKHCONP1AZ1ARGF3025 SS+13d | -1d | 2d | TILE MASON SK [426 h]; LABOR- SUBCONTRACTOR [240 h]; SLATE TILE QTY [266 Sqm] | 57,650 | 33 | REM | 1AP1IFGF33 | DUKHCON1AP1ARGF3035 | DUKHCONP1AZ1ARGF3035 | DH | CON | 1A | Z1 | FIN | IF | GF | B02 | B02-D10 | RES-1A |  |
| DUKHCONP1AZ1ARGF3055 |  | Aluminum tile false ceiling | 25d | 2013-12-28 | 2014-01-25 | DUKHCONP1AZ1ACGF4600 FF+7d, DUKHCONP1AZ1ARGF3045 SS+7d, DUKHPROGEN00PRDV3310, DUKHCONP1AZ1ARGF3045 FF+7d, DUKHCONP1AMKARGF3055, DUKHCONP1AZ1ACGF4600 SS+7d | -3d | 3d | LABOR- SUBCONTRACTOR [47.25 h]; FALSE CEILING QTY [105 Sqm]; FALSE CEILING SKILLED SK [84 h] | 6,705 | 42 | REM | 1AP1IFGF42 | DUKHCON1AP1ARGF3055 | DUKHCONP1AZ1ARGF3055 | DH | CON | 1A | Z1 | FIN | IF | GF | B02 | B02-D10 | RES-1A | ALU |
| DUKHCONP1AZ1ARGF3040 |  | Cobble Tile flooring | 15d | 2013-12-29 | 2014-01-14 | DUKHCONP1AZ1ARGF3010 SS+13d, DUKHCONP1AZ1ARGF3035 SS+4d, DUKHPROGEN00PRDV3090, DUKHCONP1AMKARGF3040, DUKHCONP1AZ1ARGF3035 FF+4d, DUKHCONP1AZ1ARGF3025 SS+13d, DUKHCONP1AZ1ARGF3010 FF+13d, DUKHCONP1AZ1ARGF3025 FF+13d | -3d | 0d | TILE MASON SK [415 h]; LABOR- SUBCONTRACTOR [234 h]; COBBLE STONE QTY [259 Sqm] | 21,601 | 30 | REM | 1AP1IFGF30 | DUKHCON1AP1ARGF3040 | DUKHCONP1AZ1ARGF3040 | DH | CON | 1A | Z1 | FIN | IF | GF | B02 | B02-D10 | RES-1A |  |
| DUKHCONP1AZ1ARGF3060 |  | Gypsum board false ceiling | 25d | 2013-12-31 | 2014-01-28 | DUKHCONP1AZ1ACGF4600 SS+7d, DUKHCONP1AMKARGF3060, DUKHCONP1AZ1ARGF3045 FF+10d, DUKHPROGEN00PRDV3300, DUKHCONP1AZ1ACGF4600 FF+7d, DUKHCONP1AZ1ARGF3045 SS+10d | -6d | 0d | LABOR- SUBCONTRACTOR [420.75 h]; FALSE CEILING QTY [934.33 Sqm]; FALSE CEILING SKILLED SK [748 h] | 53,221 | 45 | REM | 1AP1IFGF45 | DUKHCON1AP1ARGF3060 | DUKHCONP1AZ1ARGF3060 | DH | CON | 1A | Z1 | FIN | IF | GF | B02 | B02-D10 | RES-1A | GYP |
| DUKHCONP1AZ1ARGF3050 |  | Granite - Stair case flooring & Skirting | 20d | 2014-01-06 | 2014-01-28 | DUKHCONP1AZ1ARGF3025 FF+13d, DUKHCONP1AZ1ARGF3040 FF+7d, DUKHCONP1AMKARGF3050, DUKHCONP1AZ1ARGF3025 SS+13d, DUKHPROGEN00PRDV3480, DUKHCONP1AZ1ARGF3040 SS+7d | -3d | 0d | GRANITE MASON SK [488 h]; LABOR- SUBCONTRACTOR [274.5 h]; GRANITE QTY [122 Sqm] | 81,887 | 36 | REM | 1AP1IFGF36 | DUKHCON1AP1ARGF3050 | DUKHCONP1AZ1ARGF3050 | DH | CON | 1A | Z1 | FIN | IF | GF | B02 | B02-D10 | RES-1A |  |
| DUKHCONP1AZ1ARGF3065 |  | Wooden door & PVC Door | 15d | 2014-01-20 | 2014-02-05 | DUKHCONP1AMKARGF3065, DUKHCONP1AZ1ARGF3050 FF+7d, DUKHPROGEN00PRDV3490, DUKHCONP1AZ1ARGF3035 SS+7d, DUKHCONP1AZ1ARGF3035 FF+7d, DUKHCONP1AZ1ARGF3050 SS+7d | -3d | 0d | LABOR- SUBCONTRACTOR [73.5 h]; WOODEN DOOR QTY [49 ea]; DOOR ERECTOR SK [196 h] | 204,380 | 48 | REM | 1AP1IFGF48 | DUKHCON1AP1ARGF3065 | DUKHCONP1AZ1ARGF3065 | DH | CON | 1A | Z1 | FIN | IF | GF | B02 | B02-D05 | RES-1A |  |
| DUKHCONP1AZ1ARGF3070 |  | Aluminum doors | 15d | 2014-01-26 | 2014-02-12 | DUKHPROGEN00PRDV3460, DUKHCONP1AMKARGF3070, DUKHCONP1AZ1ARGF3065 SS+5d, DUKHPROGEN00PRDV3450, DUKHPROGEN00PRDV3440, DUKHCONP1AZ1ARGF3065 FF+5d | -3d | 0d | LABOR- SUBCONTRACTOR [42 h]; ALUMINIUM DOOR QTY [28 ea]; DOOR ERECTOR SK [112 h] | 72,805 | 51 | REM | 1AP1IFGF51 | DUKHCON1AP1ARGF3070 | DUKHCONP1AZ1ARGF3070 | DH | CON | 1A | Z1 | FIN | IF | GF | B02 | B02-D06 | RES-1A |  |
| DUKHCONP1AZ1ARGF3075 |  | Carpentry & Joinery Works | 20d | 2014-02-01 | 2014-02-24 | DUKHCONP1AZ1ARGF3070 SS+5d, DUKHPROGEN00PRDV3550, DUKHCONP1AMKARGF3075, DUKHPROGEN00PRDV3560, DUKHCONP1AZ1ARGF3070 FF+7d | -3d | 0d | LABOR- SUBCONTRACTOR [136.5 h]; CABINET QTY [42 ea]; COUNTER QTY [7 ea]; JOINERY WORK SK [336 h]; COUNTER SK [28 h] | 99,812 | 57 | REM | 1AP1IFGF57 | DUKHCON1AP1ARGF3075 | DUKHCONP1AZ1ARGF3075 | DH | CON | 1A | Z1 | FIN | IF | GF | B02 | B02-D05 | RES-1A |  |
| DUKHCONP1AZ1ARGF3080 |  | Aluminum windows | 20d | 2014-02-02 | 2014-02-25 | DUKHCONP1AZ1ARGF3070 SS+6d, DUKHPROGEN00PRDV3470, DUKHCONP1AZ1ARGF3070 FF+6d, DUKHCONP1AMKARGF3080 | 7d | 5d | LABOR- SUBCONTRACTOR [38.25 h]; ALUMINIUM WINDOWS QTY [38 ea]; WINDOW ERECTOR SK [102 h] | 31,747 | 54 | REM | 1AP1IFGF54 | DUKHCON1AP1ARGF3080 | DUKHCONP1AZ1ARGF3080 | DH | CON | 1A | Z1 | FIN | IF | GF | B02 | B02-D06 | RES-1A |  |
| DUKHCONP1AZ1ARGF3085 |  | S.S.Balustrade | 20d | 2014-02-09 | 2014-03-04 | DUKHPROGEN00PRDV3570, DUKHCONP1AMKARGF3085, DUKHCONP1AZ1ARGF3075 SS+7d, DUKHCONP1AZ1ARGF3050 SS+7d, DUKHCONP1AZ1ARGF3050 FF+7d, DUKHCONP1AZ1ARGF3075 FF+7d | 2d | 5d | LABOR- SUBCONTRACTOR [83.25 h]; S.S.BALUSTRADE QTY [74 lm]; HANDRAIL ERECTOR SKILLED [148 h] | 106,281 | 63 | REM | 1AP1IFGF63 | DUKHCON1AP1ARGF3085 | DUKHCONP1AZ1ARGF3085 | DH | CON | 1A | Z1 | FIN | IF | GF | B02 | B02-D06 | RES-1A |  |
| DUKHCONP1AZ1ARGF3090 |  | Installation of Granite Counter Top | 15d | 2014-02-15 | 2014-03-03 | DUKHCONP1AZ1ARGF3075 SS+7d, DUKHCONP1AZ1ARGF3075 FF+6d, DUKHCONP1AMKARGF3090 | -3d | 0d | GRANITE MASON SK [112 h]; LABOR- SUBCONTRACTOR [42 h]; GRANITE COUNTER TOP QTY [28 ea] | 30,493 | 60 | REM | 1AP1IFGF60 | DUKHCON1AP1ARGF3090 | DUKHCONP1AZ1ARGF3090 | DH | CON | 1A | Z1 | FIN | IF | GF | B02 | B02-D10 | RES-1A |  |
| DUKHCONP1AZ1ARGF3095 |  | Final Painting | 25d | 2014-02-24 | 2014-03-24 | DUKHCONP1AZ1ARGF3060 SS+8d, DUKHCONP1AZ1ARGF3090 FF+8d, DUKHCONP1AZ1ACGF4610 FF+10d, DUKHCONP1AZ1ARGF3030 SS+10d, DUKHCONP1AZ1ARGF3080 SS+8d, DUKHCONP1AZ1ARGF3070 SS+5d, DUKHCONP1AZ1ARGF3085 FF+7d, DUKHCONP1AZ1ACGF4610 SS+10d, DUKHCONP1AZ1ARGF3030 FF+10d, DUKHCONP1AZ1ARGF3040 SS+13d, DUKHCONP1AZ1ARGF3040 FF+13d, DUKHCONP1AZ1ARGF3035 SS+13d, DUKHCONP1AZ1ARGF3070 FF+5d, DUKHCONP1AZ1ARGF3080 FF+8d, DUKHCONP1AZ1ARGF3035 FF+13d, DUKHCONP1AZ1ARGF3060 FF+8d, DUKHCONP1AZ1ARGF3090 SS+8d, DUKHCONP1AZ1ARGF3085 SS+7d, DUKHCONP1AMKARGF3095 | -3d | 0d | LABOR- SUBCONTRACTOR [1296 h]; PAINT QTY [4316 Sqm]; PAINTERS SK [3456 h] | 54,079 | 66 | REM | 1AP1IFGF66 | DUKHCON1AP1ARGF3095 | DUKHCONP1AZ1ARGF3095 | DH | CON | 1A | Z1 | FIN | IF | GF | B02 | B02-D11 | RES-1A | PNT |

Notes:
- DUKHCONP1AZ1STRF2040: Expenses: P1A-Concrete Works 21168
- DUKHCONP1AZ1STRF2045: Expenses: P1A-Concrete Works 4363
- DUKHCONP1AZ1STRF2050: Expenses: P1A-Concrete Works 61496
- DUKHCONP1AZ1STRF2055: Expenses: P1A-Concrete Works 22960
- DUKHCONP1AZ1STRF2060: Expenses: P1A-Block work 43648
- DUKHCONP1AZ1STRF2065: Expenses: P1A-Concrete Works 12624
- DUKHCONP1AZ1ARGF3000: Expenses: P1A-Block work 197366
- DUKHCONP1AZ1ARGF3005: Expenses: P1A-Finishes 62645
- DUKHCONP1AZ1ARGF3010: Expenses: P1A-Finishes 42007
- DUKHCONP1AZ1ARGF3015: Expenses: P1A-Finishes 6664
- DUKHCONP1AZ1ARGF3030: Expenses: P1A-Painting and Decorating 23282
- DUKHCONP1AZ1ARGF3020: Expenses: P1A-Finishes 81022
- DUKHCONP1AZ1ARGF3025: Expenses: P1A-Finishes 65553
- DUKHCONP1AZ1ARGF3045: Expenses: P1A-Finishes 19985
- DUKHCONP1AZ1ARGF3035: Expenses: P1A-Finishes 57650
- DUKHCONP1AZ1ARGF3055: Expenses: P1A-Finishes 6705
- DUKHCONP1AZ1ARGF3040: Expenses: P1A-Finishes 21601
- DUKHCONP1AZ1ARGF3060: Expenses: P1A-Finishes 53221
- DUKHCONP1AZ1ARGF3050: Expenses: P1A-Finishes 81887
- DUKHCONP1AZ1ARGF3065: Expenses: P1A-Carpentry and Joinery 204380
- DUKHCONP1AZ1ARGF3070: Expenses: P1A-Metal work 72805
- DUKHCONP1AZ1ARGF3075: Expenses: P1A-Carpentry and Joinery 99812
- DUKHCONP1AZ1ARGF3080: Expenses: P1A-Metal work 31747
- DUKHCONP1AZ1ARGF3085: Expenses: P1A-Metal work 106281
- DUKHCONP1AZ1ARGF3090: Expenses: P1A-Finishes 30493
- DUKHCONP1AZ1ARGF3095: Expenses: P1A-Painting and Decorating 54079

| ID | WBS | Activity | Duration | Start | Finish | Predecessors | Total float | Free float | Resources | Cost | CODE | rem | P3 ACTID | P6 ID (old) | NP61D | PROJECT | PHASES | PACKAGE | PART | ELEMENTS | STEP | FLOORS | BILL NOS | BILL DIVISION | RES PACK | EXECUTER |
| --- | --- | --- | --- | --- | --- | --- | --- | --- | --- | --- | --- | --- | --- | --- | --- | --- | --- | --- | --- | --- | --- | --- | --- | --- | --- | --- |
|  | 15 | **FIRST FLOORS** |  | 2013-11-21 | 2014-04-17 |  |  |  |  |  |  |  |  |  |  |  |  |  |  |  |  |  |  |  |  |  |
| DUKHCONP1AZ1ARFF3300 |  | Block work | 25d | 2013-11-21 | 2013-12-21 | DUKHCONP1AZ1STFF2020 FF+21d, DUKHCONP1AMKARFF3300, DUKHCONP1AZ1STFF2020 SS+21d, DUKHCONP1AZ1STFF2035 FF+21d, DUKHCONP1AZ1STFF2035 SS+21d | -24d | 0d | BLOCK MASON SK [3578 h]; LABOR- SUBCONTRACTOR [2013 h]; BLOCK QTY [1789 Sqm] | 111,725 | 10 | REM | 1AP1IFFF10 | DUKHCON1AP1ARFF3300 | DUKHCONP1AZ1ARFF3300 | DH | CON | 1A | Z1 | FIN | IF | FF | B02 | B02-D03 | RES-1A |  |
| DUKHCONP1AZ1ARFF3305 |  | Plastering work | 25d | 2013-12-15 | 2014-01-13 | DUKHCONP1AZ1PLFF4325 SS+6d, DUKHCONP1AZ1ELFF4035 FF+5d, DUKHCONP1AMKARFF3305, DUKHCONP1AZ1PLFF4325 FF+6d, DUKHCONP1AZ1ARFF3300 FF+7d, DUKHCONP1AZ1ELFF4035 SS+5d, DUKHCONP1AZ1ARFF3300 SS+7d | -24d | 0d | PLASTER MASON SK [4983 h]; LABOR- SUBCONTRACTOR [2803.5 h]; PLASTER QTY [3114 Sqm] | 41,082 | 12 | REM | 1AP1IFFF12 | DUKHCON1AP1ARFF3305 | DUKHCONP1AZ1ARFF3305 | DH | CON | 1A | Z1 | FIN | IF | FF | B02 | B02-D10 | RES-1A |  |
| DUKHCONP1AZ1ARFF3310 |  | Flooring screed | 21d | 2013-12-24 | 2014-01-16 | DUKHCONP1AMKARFF3310, DUKHCONP1AZ1ARFF3305 FF+3d, DUKHCONP1AZ1ARFF3305 SS+7d | -12d | 12d | SCREED MASON SK [774 h]; LABOR- SUBCONTRACTOR [290.25 h]; FLOORING SCREED QTY [967 Sqm] | 31,913 | 15 | REM | 1AP1IFFF15 | DUKHCON1AP1ARFF3310 | DUKHCONP1AZ1ARFF3310 | DH | CON | 1A | Z1 | FIN | IF | FF | B02 | B02-D10 | RES-1A |  |
| DUKHCONP1AZ1ARFF3330 |  | Paint First coat | 25d | 2014-01-01 | 2014-01-29 | DUKHCONP1AMKARFF3330, DUKHCONP1AZ1ARFF3305 SS+14d, DUKHCONP1AZ1ARFF3305 FF+14d | -10d | 14d | LABOR- SUBCONTRACTOR [1131.75 h]; FIRSTCOAT PAINT QTY [3773 Sqm]; PAINTERS SK [3018 h] | 23,282 | 21 | REM | 1AP1IFFF21 | DUKHCON1AP1ARFF3330 | DUKHCONP1AZ1ARFF3330 | DH | CON | 1A | Z1 | FIN | IF | FF | B02 | B02-D11 | RES-1A | ENT |
| DUKHCONP1AZ1ARFF3315 |  | Wet area waterproofing | 15d | 2014-01-05 | 2014-01-21 | DUKHCONP1AMKARFF3315, DUKHCONP1AZ1ARFF3305 SS+7d, DUKHCONP1AZ1ARFF3305 FF+7d | -24d | 0d | LABOR- SUBCONTRACTOR [290.25 h]; WETAREA WATERPROOFING QTY [966 Sqm]; WATERPROOFING SPECIALIST SK [773 h] | 32,116 | 18 | REM | 1AP1IFFF18 | DUKHCON1AP1ARFF3315 | DUKHCONP1AZ1ARFF3315 | DH | CON | 1A | Z1 | FIN | IF | FF | B02 | B02-D10 | RES-1A |  |
| DUKHCONP1AZ1ARFF3320 |  | Ceramic Wall Tiling | 25d | 2014-01-12 | 2014-02-09 | DUKHCONP1AZ1PLFF4325 SS+4d, DUKHCONP1AZ1ARFF3315 SS+6d, DUKHCONP1AMKARFF3320, DUKHCONP1AZ1PLFF4330 SS+7d, DUKHCONP1AZ1ARFF3315 FF+6d, DUKHCONP1AZ1PLFF4325 FF+4d, DUKHCONP1AZ1PLFF4330 FF+7d | -24d | 0d | TILE MASON SK [1062 h]; LABOR- SUBCONTRACTOR [597.75 h]; CERAMIC WALL TILE QTY [531 Sqm] | 37,574 | 24 | REM | 1AP1IFFF24 | DUKHCON1AP1ARFF3320 | DUKHCONP1AZ1ARFF3320 | DH | CON | 1A | Z1 | FIN | IF | FF | B02 | B02-D10 | RES-1A |  |
| DUKHCONP1AZ1ARFF3325 |  | Porcelain Tile flooring | 25d | 2014-01-19 | 2014-02-17 | DUKHCONP1AZ1ARFF3310 SS+10d, DUKHCONP1AZ1ARFF3310 FF+10d, DUKHCONP1AZ1ARFF3320 SS+6d, DUKHCONP1AZ1ARFF3320 FF+6d, DUKHCONP1AMKARFF3325 | -24d | 0d | TILE MASON SK [976 h]; LABOR- SUBCONTRACTOR [549 h]; PORCELAIN FLOORING QTY [854 Sqm] | 65,558 | 27 | REM | 1AP1IFFF27 | DUKHCON1AP1ARFF3325 | DUKHCONP1AZ1ARFF3325 | DH | CON | 1A | Z1 | FIN | IF | FF | B02 | B02-D10 | RES-1A |  |
| DUKHCONP1AZ1ARFF3345 |  | Fixing of Suspension systems | 20d | 2014-02-01 | 2014-02-24 | DUKHCONP1AZ1ARFF3330 SS+7d, DUKHCONP1AZ1ELFF4045 FF+5d, DUKHCONP1AZ1ELFF4045 SS+5d, DUKHCONP1AZ1ARFF3325 FF+6d, DUKHCONP1AZ1ARFF3330 FF+7d, DUKHCONP1AZ1ARFF3325 SS+6d, DUKHCONP1AMKARFF3345 | -24d | 0d | LABOR- SUBCONTRACTOR [411.23 h]; SUSPENSION QTY [913.47 Sqm]; FALSE CEILING SKILLED SK [731 h] | 17,192 | 36 | REM | 1AP1IFFF36 | DUKHCON1AP1ARFF3345 | DUKHCONP1AZ1ARFF3345 | DH | CON | 1A | Z1 | FIN | IF | FF | B02 | B02-D10 | RES-1A | SUS |
| DUKHCONP1AZ1ARFF3335 |  | Slate Tile Flooring & Skirting | 15d | 2014-02-05 | 2014-02-23 | DUKHCONP1AZ1ARFF3310 SS+13d, DUKHCONP1AMKARFF3335, DUKHCONP1AZ1ARFF3310 FF+13d, DUKHCONP1AZ1ARFF3325 FF+5d, DUKHCONP1AZ1ARFF3325 SS+13d | -16d | 8d | TILE MASON SK [146 h]; LABOR- SUBCONTRACTOR [82.5 h]; SLATE TILE QTY [91 Sqm] | 17,854 | 30 | REM | 1AP1IFFF30 | DUKHCON1AP1ARFF3335 | DUKHCONP1AZ1ARFF3335 | DH | CON | 1A | Z1 | FIN | IF | FF | B02 | B02-D10 | RES-1A |  |
| DUKHCONP1AZ1ARFF3360 |  | Gypsum board false ceiling | 25d | 2014-02-08 | 2014-03-09 | DUKHCONP1AZ1ACFF4615 SS+7d, DUKHCONP1AMKARFF3360, DUKHCONP1AZ1ACFF4615 FF+7d, DUKHCONP1AZ1ARFF3345 SS+6d, DUKHCONP1AZ1ARFF3345 FF+6d | -24d | 0d | LABOR- SUBCONTRACTOR [411 h]; FALSE CEILING QTY [913.47 Sqm]; FALSE CEILING SKILLED SK [731 h] | 53,220 | 39 | REM | 1AP1IFFF39 | DUKHCON1AP1ARFF3360 | DUKHCONP1AZ1ARFF3360 | DH | CON | 1A | Z1 | FIN | IF | FF | B02 | B02-D10 | RES-1A | GYP |
| DUKHCONP1AZ1ARFF3350 |  | Granite - Stair case flooring & Skirting | 20d | 2014-02-09 | 2014-03-04 | DUKHCONP1AMKARFF3350, DUKHCONP1AZ1ARFF3325 SS+13d, DUKHCONP1AZ1ARFF3325 FF+13d | -22d | 2d | GRANITE MASON SK [492 h]; LABOR- SUBCONTRACTOR [276.75 h]; GRANITE QTY [123 Sqm] | 81,898 | 33 | REM | 1AP1IFFF33 | DUKHCON1AP1ARFF3350 | DUKHCONP1AZ1ARFF3350 | DH | CON | 1A | Z1 | FIN | IF | FF | B02 | B02-D10 | RES-1A |  |
| DUKHCONP1AZ1ARFF3365 |  | Wooden door | 15d | 2014-02-24 | 2014-03-12 | DUKHCONP1AZ1ARFF3360 SS+3d, DUKHCONP1AMKARFF3365, DUKHCONP1AZ1ARFF3350 SS+5d, DUKHCONP1AZ1ARFF3360 FF+3d, DUKHCONP1AZ1ARFF3335 SS+7d, DUKHCONP1AZ1ARFF3335 FF+7d, DUKHCONP1AZ1ARFF3350 FF+5d | -24d | 0d | LABOR- SUBCONTRACTOR [73.5 h]; WOODEN DOOR QTY [49 ea]; DOOR ERECTOR SK [196 h] | 133,346 | 42 | REM | 1AP1IFFF42 | DUKHCON1AP1ARFF3365 | DUKHCONP1AZ1ARFF3365 | DH | CON | 1A | Z1 | FIN | IF | FF | B02 | B02-D05 | RES-1A |  |
| DUKHCONP1AZ1ARFF3370 |  | Aluminum Door | 20d | 2014-02-24 | 2014-03-18 | DUKHCONP1AMKARFF3370, DUKHCONP1AZ1ARFF3365 SS, DUKHCONP1AZ1ARFF3365 FF | -24d | 0d | LABOR- SUBCONTRACTOR [52.5 h]; ALUMINIUM DOOR QTY [35 ea]; DOOR ERECTOR SK [140 h] | 106,772 | 45 | REM | 1AP1IFFF45 | DUKHCON1AP1ARFF3370 | DUKHCONP1AZ1ARFF3370 | DH | CON | 1A | Z1 | FIN | IF | FF | B02 | B02-D06 | RES-1A |  |
| DUKHCONP1AZ1ARFF3375 |  | Carpentry & Joinery Works | 25d | 2014-03-02 | 2014-03-30 | DUKHCONP1AMKARFF3375, DUKHCONP1AZ1ARFF3370 SS+5d, DUKHCONP1AZ1ARFF3370 FF+5d | -24d | 0d | JOINERY WORK SK [616 h]; COUNTER SK [84 h]; LABOR- SUBCONTRACTOR [262.5 h]; CABINET QTY [21 ea]; COUNTER QTY [21 ea]; WARDROBE QTY [35 ea]; SHELVES QTY [21 ea] | 202,940 | 51 | REM | 1AP1IFFF51 | DUKHCON1AP1ARFF3375 | DUKHCONP1AZ1ARFF3375 | DH | CON | 1A | Z1 | FIN | IF | FF | B02 | B02-D05 | RES-1A |  |
| DUKHCONP1AZ1ARFF3380 |  | Aluminum windows | 20d | 2014-03-03 | 2014-03-25 | DUKHCONP1AZ1ARFF3370 FF+6d, DUKHCONP1AMKARFF3380, DUKHCONP1AZ1ARFF3370 SS+6d | -19d | 5d | LABOR- SUBCONTRACTOR [39 h]; ALUMINIUM WINDOWS QTY [39 ea]; WINDOW ERECTOR SK [104 h] | 48,802 | 48 | REM | 1AP1IFFF48 | DUKHCON1AP1ARFF3380 | DUKHCONP1AZ1ARFF3380 | DH | CON | 1A | Z1 | FIN | IF | FF | B02 | B02-D06 | RES-1A |  |
| DUKHCONP1AZ1ARFF3385 |  | Handrail & S.S.Balustrade | 20d | 2014-03-15 | 2014-04-06 | DUKHCONP1AZ1ARFF3350 SS+7d, DUKHCONP1AMKARFF3385, DUKHCONP1AZ1ARFF3375 FF+6d, DUKHCONP1AZ1ARFF3375 SS+6d, DUKHCONP1AZ1ARFF3350 FF+7d | -24d | 0d | LABOR- SUBCONTRACTOR [249 h]; S.S.BALUSTRADE QTY [221 lm]; HANDRAIL ERECTOR SKILLED [442 h] | 269,893 | 57 | REM | 1AP1IFFF57 | DUKHCON1AP1ARFF3385 | DUKHCONP1AZ1ARFF3385 | DH | CON | 1A | Z1 | FIN | IF | FF | B02 | B02-D06 | RES-1A |  |
| DUKHCONP1AZ1ARFF3390 |  | Installation of Granite Counter Top | 20d | 2014-03-15 | 2014-04-06 | DUKHCONP1AZ1ARFF3375 SS+6d, DUKHCONP1AMKARFF3390, DUKHCONP1AZ1ARFF3375 FF+6d | -23d | 1d | GRANITE MASON SK [56 h]; LABOR- SUBCONTRACTOR [21 h]; GRANITE COUNTER TOP QTY [14 ea] | 6,646 | 54 | REM | 1AP1IFFF54 | DUKHCON1AP1ARFF3390 | DUKHCONP1AZ1ARFF3390 | DH | CON | 1A | Z1 | FIN | IF | FF | B02 | B02-D10 | RES-1A |  |
| DUKHCONP1AZ1ARFF3395 |  | Final Painting | 25d | 2014-03-20 | 2014-04-17 | DUKHCONP1AZ1ARFF3335 FF+8d, DUKHCONP1AZ1ARFF3380 FF+10d, DUKHCONP1AZ1ARFF3385 SS+5d, DUKHCONP1AZ1ARRF3620 FF+8d, DUKHCONP1AZ1ARFF3365 SS+8d, DUKHCONP1AZ1ARFF3330 FF+10d, DUKHCONP1AZ1ARFF3335 SS+8d, DUKHCONP1AZ1ARFF3380 SS+10d, DUKHCONP1AZ1ARFF3385 FF+5d, DUKHCONP1AZ1ARFF3350 FF+8d, DUKHCONP1AZ1ARFF3350 SS+8d, DUKHCONP1AZ1ARFF3360 FF+10d, DUKHCONP1AZ1ARFF3365 FF+8d, DUKHCONP1AZ1ACFF4625 FF+6d, DUKHCONP1AZ1ARFF3360 SS+10d, DUKHCONP1AZ1ARFF3375 FF+8d, DUKHCONP1AZ1ACFF4625 SS+6d, DUKHCONP1AMKARFF3395, DUKHCONP1AZ1ARFF3390 SS+4d, DUKHCONP1AZ1ARFF3330 SS+10d, DUKHCONP1AZ1ARFF3375 SS+8d, DUKHCONP1AZ1ARFF3390 FF+8d | -24d | 0d | LABOR- SUBCONTRACTOR [1131.75 h]; PAINT QTY [3773 Sqm]; PAINTERS SK [3018 h] | 44,453 | 60 | REM | 1AP1IFFF60 | DUKHCON1AP1ARFF3395 | DUKHCONP1AZ1ARFF3395 | DH | CON | 1A | Z1 | FIN | IF | FF | B02 | B02-D11 | RES-1A | PNT |
|  | 20 | **ROOF** |  | 2013-12-10 | 2014-02-15 |  |  |  |  |  |  |  |  |  |  |  |  |  |  |  |  |  |  |  |  |  |
| DUKHCONP1AZ1ARRF3600 |  | Block work | 20d | 2013-12-10 | 2014-01-02 | DUKHCONP1AZ1STRF2055 SS+21d, DUKHCONP1AMKARRF3600, DUKHCONP1AZ1STRF2055 FF+21d | -3d | 0d | BLOCK MASON SK [392 h]; LABOR- SUBCONTRACTOR [220.5 h]; BLOCK QTY [196 Sqm] | 15,565 | 10 | REM | 1AP1IFRF10 | DUKHCON1AP1ARRF3600 | DUKHCONP1AZ1ARRF3600 | DH | CON | 1A | Z1 | FIN | IF | RF | B02 | B02-D03 | RES-1A |  |
| DUKHCONP1AZ1ARRF3605 |  | Plastering work | 20d | 2013-12-19 | 2014-01-11 | DUKHCONP1AZ1ARRF3600 FF+7d, DUKHCONP1AZ1ARRF3600 SS+7d, DUKHCONP1AMKARRF3605 | -3d | 0d | PLASTER MASON SK [999 h]; LABOR- SUBCONTRACTOR [562.5 h]; PLASTER QTY [624 Sqm] | 8,117 | 20 | REM | 1AP1IFRF20 | DUKHCON1AP1ARRF3605 | DUKHCONP1AZ1ARRF3605 | DH | CON | 1A | Z1 | FIN | IF | RF | B02 | B02-D10 | RES-1A |  |
| DUKHCONP1AZ1ARRF3610 |  | Flooring screed | 15d | 2014-01-02 | 2014-01-19 | DUKHCONP1AZ1ARRF3605 FF+7d, DUKHCONP1AZ1ARRF3605 SS+7d, DUKHCONP1AMKARRF3610 | 21d | 0d | SCREED MASON SK [87 h]; LABOR- SUBCONTRACTOR [33 h]; FLOORING SCREED QTY [108 Sqm] | 3,549 | 30 | REM | 1AP1IFRF30 | DUKHCON1AP1ARRF3610 | DUKHCONP1AZ1ARRF3610 | DH | CON | 1A | Z1 | FIN | IF | RF | B02 | B02-D10 | RES-1A |  |
| DUKHCONP1AZ1ARRF3695 |  | Painting -Storage area | 20d | 2014-01-11 | 2014-02-02 | DUKHCONP1AZ1ARRF3610 SS+7d, DUKHCONP1AMKARRF3695, DUKHCONP1AZ1ARRF3610 FF+7d | 21d | 0d | LABOR- SUBCONTRACTOR [402 h]; PAINT QTY [1288 Sqm]; PAINTERS SK [1040 h] | 6,961 | 40 |  | 1AP1IFRF40 | DUKHCON1AP1ARRF3695 | DUKHCONP1AZ1ARRF3695 | DH | CON | 1A | Z1 | FIN | IF | RF | B02 | B02-D11 | RES-1A |  |
| DUKHCONP1AZ1ARRF3620 |  | Epoxy Painting -Storage area | 15d | 2014-01-28 | 2014-02-15 | DUKHPROGEN00PRDV3420, DUKHCONP1AMKARRF3620, DUKHCONP1AZ1ARRF3695 SS+10d, DUKHCONP1AZ1ARRF3695 FF+10d | 21d | 45d | LABOR- SUBCONTRACTOR [11.25 h]; EPOXY QTY [56 Sqm]; EPOXY SK [30 h] | 2,814 | 50 | REM | 1AP1IFRF50 | DUKHCON1AP1ARRF3620 | DUKHCONP1AZ1ARRF3620 | DH | CON | 1A | Z1 | FIN | IF | RF | B02 | B02-D11 | RES-1A |  |

Notes:
- DUKHCONP1AZ1ARFF3300: Expenses: P1A-Block work 111725
- DUKHCONP1AZ1ARFF3305: Expenses: P1A-Finishes 41082
- DUKHCONP1AZ1ARFF3310: Expenses: P1A-Finishes 31913
- DUKHCONP1AZ1ARFF3330: Expenses: P1A-Painting and Decorating 23282
- DUKHCONP1AZ1ARFF3315: Expenses: P1A-Finishes 32116
- DUKHCONP1AZ1ARFF3320: Expenses: P1A-Finishes 37574
- DUKHCONP1AZ1ARFF3325: Expenses: P1A-Finishes 65558
- DUKHCONP1AZ1ARFF3345: Expenses: P1A-Finishes 17192
- DUKHCONP1AZ1ARFF3335: Expenses: P1A-Finishes 17854
- DUKHCONP1AZ1ARFF3360: Expenses: P1A-Finishes 53220
- DUKHCONP1AZ1ARFF3350: Expenses: P1A-Finishes 81898
- DUKHCONP1AZ1ARFF3365: Expenses: P1A-Carpentry and Joinery 133346
- DUKHCONP1AZ1ARFF3370: Expenses: P1A-Metal work 106772
- DUKHCONP1AZ1ARFF3375: Expenses: P1A-Carpentry and Joinery 202940
- DUKHCONP1AZ1ARFF3380: Expenses: P1A-Metal work 48802
- DUKHCONP1AZ1ARFF3385: Expenses: P1A-Metal work 269893
- DUKHCONP1AZ1ARFF3390: Expenses: P1A-Finishes 6646
- DUKHCONP1AZ1ARFF3395: Expenses: P1A-Painting and Decorating 44453
- DUKHCONP1AZ1ARRF3600: Expenses: P1A-Block work 15565
- DUKHCONP1AZ1ARRF3605: Expenses: P1A-Finishes 8117
- DUKHCONP1AZ1ARRF3610: Expenses: P1A-Finishes 3549
- DUKHCONP1AZ1ARRF3695: Expenses: P1A-Painting and Decorating 6961
- DUKHCONP1AZ1ARRF3620: Expenses: P1A-Painting and Decorating 2814

| ID | WBS | Activity | Duration | Start | Finish | Predecessors | Total float | Free float | Resources | Cost | CODE | rem | P3 ACTID | P6 ID (old) | NP61D | PROJECT | PHASES | PACKAGE | PART | ELEMENTS | STEP | FLOORS | BILL NOS | BILL DIVISION | RES PACK |
| --- | --- | --- | --- | --- | --- | --- | --- | --- | --- | --- | --- | --- | --- | --- | --- | --- | --- | --- | --- | --- | --- | --- | --- | --- | --- |
|  | 15 | **EXTERNAL FINISHES** |  | 2013-12-29 | 2014-03-18 |  |  |  |  |  |  |  |  |  |  |  |  |  |  |  |  |  |  |  |  |
|  | 10 | **ROOF** |  | 2014-01-12 | 2014-03-18 |  |  |  |  |  |  |  |  |  |  |  |  |  |  |  |  |  |  |  |  |
| DUKHCONP1AZ1ARRF3630 |  | Leveling Screed for Waterproofing | 25d | 2014-01-12 | 2014-02-09 | DUKHCONP1AZ1STRF2065 FF+10d, DUKHCONP1AZ1STRF2060 FF+10d, DUKHCONP1AZ1STRF2060 SS+10d, DUKHCONP1AZ1ARRF3605, DUKHCONP1AZ1STRF2065 SS+10d, DUKHCONP1AMKARRF3630 | -3d | 0d | SCREED MASON SK [448 h]; LABOR- SUBCONTRACTOR [252 h]; ROOF WP SCREED QTY [1120 Sqm] | 49,693 | 10 | REM | 1AP1EFRF10 | DUKHCON1AP1ARRF3630 | DUKHCONP1AZ1ARRF3630 | DH | CON | 1A | Z1 | FIN | EF | RF | B02 | B02-D04 | RES-1A |
| DUKHCONP1AZ1ARRF3635 |  | Laying of Waterproofing Membrane | 25d | 2014-01-15 | 2014-02-13 | DUKHPROGEN00PRDV3050, DUKHCONP1AMKARRF3635, DUKHCONP1AZ1ARRF3630 SS+3d, DUKHCONP1AZ1ARRF3630 FF+3d | -3d | 0d | LABOR- SUBCONTRACTOR [272.25 h]; ROOF WP MEMBRANE QTY [1358 Sqm]; WATERPROOFING SPECIALIST SK [725 h] | 38,494 | 15 | REM | 1AP1EFRF15 | DUKHCON1AP1ARRF3635 | DUKHCONP1AZ1ARRF3635 | DH | CON | 1A | Z1 | FIN | EF | RF | B02 | B02-D04 | RES-1A |
| DUKHCONP1AZ1ARRF3640 |  | Installation of Insulation & Protection | 25d | 2014-01-20 | 2014-02-18 | DUKHCONP1AZ1ARRF3635 FF+4d, DUKHCONP1AZ1ARRF3635 SS+4d, DUKHCONP1AMKARRF3640 | -3d | 0d | LABOR- SUBCONTRACTOR [336 h]; ROOF WP INSULATION QTY [2240 Sqm]; WATERPROOFING SPECIALIST SK [896 h] | 48,944 | 20 | REM | 1AP1EFRF20 | DUKHCON1AP1ARRF3640 | DUKHCONP1AZ1ARRF3640 | DH | CON | 1A | Z1 | FIN | EF | RF | B02 | B02-D04 | RES-1A |
| DUKHCONP1AZ1ARRF3645 |  | Lime Stone Chips & Paving slab Installation | 25d | 2014-01-25 | 2014-02-23 | DUKHCONP1AMKARRF3645, DUKHCONP1AZ1ARRF3640 FF+4d, DUKHCONP1AZ1ARRF3640 SS+4d | -3d | 0d | TILE MASON SK [40 h]; LABOR- SUBCONTRACTOR [164.25 h]; LIME STONE QTY [98 Sqm]; PRECAST PAVING SLAB QTY [994 Sqm]; PRE CAST CONCRETE SK [398 h] | 72,926 | 25 | REM | 1AP1EFRF25 | DUKHCON1AP1ARRF3645 | DUKHCONP1AZ1ARRF3645 | DH | CON | 1A | Z1 | FIN | EF | RF | B02 | B02-D04 | RES-1A |
| DUKHCONP1AZ1ARRF3650 |  | Install. of Gal. Frame & Aluminum Slat Screen | 25d | 2014-02-02 | 2014-03-03 | DUKHCONP1AMKARRF3650, DUKHCONP1AZ1ARRF3645 FF+7d, DUKHPROGEN00PRDV3410, DUKHCONP1AZ1ARRF3645 SS+7d | -3d | 0d | LABOR- SUBCONTRACTOR [392.25 h]; ALUMINIUM SCREEN QTY [196 Sqm]; DOOR ERECTOR SK [523 h] | 55,429 | 35 | REM | 1AP1EFRF35 | DUKHCON1AP1ARRF3650 | DUKHCONP1AZ1ARRF3650 | DH | CON | 1A | Z1 | FIN | EF | RF | B02 | B02-D06 | RES-1A |
| DUKHCONP1AZ1ARRF3655 |  | Installation of Pumps Protection cabinets | 20d | 2014-02-18 | 2014-03-12 | DUKHPROGEN00PRDV3510, DUKHCONP1AMKARRF3655, DUKHCONP1AZ1ARRF3645 SS+7d, DUKHCONP1AZ1ARRF3650 SS+8d, DUKHCONP1AZ1ARRF3650 FF+8d, DUKHCONP1AZ1ARRF3645 FF+7d | -3d | 0d | LABOR- SUBCONTRACTOR [147 h]; CABINET QTY [49 ea]; JOINERY WORK SK [392 h] | 23,275 | 30 | REM | 1AP1EFRF30 | DUKHCON1AP1ARRF3655 | DUKHCONP1AZ1ARRF3655 | DH | CON | 1A | Z1 | FIN | EF | RF | B02 | B02-D04 | RES-1A |
| DUKHCONP1AZ1ARRF3660 |  | Installation of Access Ladder | 15d | 2014-03-02 | 2014-03-18 | DUKHCONP1AZ1ARRF3655 SS+5d, DUKHCONP1AMKARRF3660, DUKHCONP1AZ1ARRF3655 FF+5d, DUKHPROGEN00PRDV3400 | 2d | 26d | LABOR- SUBCONTRACTOR [42 h]; LADDER QTY [14 ea]; LADDER ERECTOR SK [112 h] | 46,556 | 40 | REM | 1AP1EFRF40 | DUKHCON1AP1ARRF3660 | DUKHCONP1AZ1ARRF3660 | DH | CON | 1A | Z1 | FIN | EF | RF | B02 | B02-D06 | RES-1A |
|  | 15 | **ELEVATION** |  | 2013-12-29 | 2014-02-19 |  |  |  |  |  |  |  |  |  |  |  |  |  |  |  |  |  |  |  |  |
| DUKHCONP1AZ1AREL3665 |  | External Plastering | 25d | 2013-12-29 | 2014-01-26 | DUKHCONP1AZ1STRF2065 FF+7d, DUKHCONP1AZ1ARFF3305 FF+7d, DUKHCONP1AZ1STRF2065 SS+7d, DUKHCONP1AZ1ARFF3305 SS+7d, DUKHCONP1AMKAREL3665, DUKHCONP1AZ1ARRF3605 SS+7d | 23d | 0d | PLASTER MASON SK [7994 h]; LABOR- SUBCONTRACTOR [4497 h]; EXTERNAL PLASTER QTY [3997 Sqm] | 95,282 | 10 | REM | 1AP1EFEL10 | DUKHCON1AP1AREL3665 | DUKHCONP1AZ1AREL3665 | DH | CON | 1A | Z1 | FIN | EF | EL | B02 | B02-D10 | RES-1A |
| DUKHCONP1AZ1AREL3670 |  | External stone cladding works | 20d | 2014-01-15 | 2014-02-06 | DUKHPROGEN00PRDV3110, DUKHCONP1AZ1AREL3665 FF+10d, DUKHCONP1AZ1AREL3665 SS+10d, DUKHCONP1AMKAREL3670 | 25d | 0d | TILE MASON SK [630 h]; LABOR- SUBCONTRACTOR [236.25 h]; STONE CLADDING QTY [315 Sqm] | 62,842 | 15 | REM | 1AP1EFEL15 | DUKHCON1AP1AREL3670 | DUKHCONP1AZ1AREL3670 | DH | CON | 1A | Z1 | FIN | EF | EL | B02 | B02-D10 | RES-1A |
| DUKHCONP1AZ1AREL3680 |  | External Painting | 20d | 2014-01-27 | 2014-02-19 | DUKHCONP1AZ1ARRF3695 SS+4d, DUKHCONP1AZ1AREL3670 SS+10d, DUKHCONP1AZ1ARRF3695 FF+4d, DUKHCONP1AZ1AREL3670 FF+10d, DUKHCONP1AMKAREL3680 | 25d | 5d | LABOR- SUBCONTRACTOR [906 h]; PAINT QTY [2996 Sqm]; PAINTERS SK [2408 h] | 75,256 | 20 |  | 1AP1EFEL20 | DUKHCON1AP1AREL3680 | DUKHCONP1AZ1AREL3680 | DH | CON | 1A | Z1 | FIN | EF | EL | B02 | B02-D11 | RES-1A |
|  | 20 | **MEP WORKS** |  | 2013-07-01 | 2014-04-16 |  |  |  |  |  |  |  |  |  |  |  |  |  |  |  |  |  |  |  |  |
|  | 10 | **ELECTRICAL WORKS** |  | 2013-10-14 | 2014-04-16 |  |  |  |  |  |  |  |  |  |  |  |  |  |  |  |  |  |  |  |  |
|  | 10 | **GROUND FLOOR** |  | 2013-10-14 | 2014-02-24 |  |  |  |  |  |  |  |  |  |  |  |  |  |  |  |  |  |  |  |  |
| DUKHCONP1AZ1ELGF4000 |  | Fixing of wall conduits & switch socket boxes | 25d | 2013-10-14 | 2013-11-13 | DUKHCONP1AZ1ARGF3000 SS+5d, DUKHCONP1AMKELGF4000, DUKHCONP1AZ1ARGF3000 FF+5d | 3d | 2d | LABOR- SUBCONTRACTOR [168 h]; ELECTRICIANS SK [907.2 h]; SOCKET BOXES QTY [634 ea]; CODUITS QTY [161 lm] | 28,942 | 10 |  | 1AP1EWGF10 | DUKHCON1AP1ELGF4000 | DUKHCONP1AZ1ELGF4000 | DH | CON | 1A | Z1 | MEP | EW | GF | B02 | B02-D09 | RES-1A |
| DUKHCONP1AZ1ELGF4005 |  | Cable tray & trunking installation | 20d | 2013-10-30 | 2013-11-21 | DUKHCONP1AMKELGF4005, DUKHCONP1AZ1ELGF4000 FF+5d, DUKHCONP1AZ1ELGF4000 SS+5d, DUKHPROGEN00PRDV3180 | 19d | 0d | LABOR- SUBCONTRACTOR [252 h]; ELECTRICIANS SK [907.2 h]; CABLE TRAY QTY [161 lm] | 6,594 | 15 |  | 1AP1EWGF15 | DUKHCON1AP1ELGF4005 | DUKHCONP1AZ1ELGF4005 | DH | CON | 1A | Z1 | MEP | EW | GF | B02 | B02-D09 | RES-1A |
| DUKHCONP1AZ1ELGF4010 |  | Installation of wiring & Main Cabling | 25d | 2013-11-07 | 2013-12-05 | DUKHCONP1AMKELGF4010, DUKHCONP1AZ1ELGF4005 FF+7d, DUKHCONP1AZ1ELGF4005 SS+7d | 19d | 25d | LABOR- SUBCONTRACTOR [66 h]; ELECTRICIANS SK [201.6 h]; CABLE QTY [161 lm] | 98,015 | 20 |  | 1AP1EWGF20 | DUKHCON1AP1ELGF4010 | DUKHCONP1AZ1ELGF4010 | DH | CON | 1A | Z1 | MEP | EW | GF | B02 | B02-D09 | RES-1A |
| DUKHCONP1AZ1ELGF4015 |  | Install. of CAMS & Fire Fighting Accessories | 25d | 2014-01-08 | 2014-02-05 | DUKHPROGEN00PRDV3210, DUKHCONP1AZ1ARGF3055 FF+7d, DUKHPROGEN00PRDV3360, DUKHCONP1AZ1ARGF3060 SS+7d, DUKHPROGEN00PRDV3260, DUKHCONP1AZ1ARGF3060 FF+7d, DUKHPROGEN00PRDV3380, DUKHCONP1AZ1ARGF3055 SS+7d, DUKHCONP1AMKELGF4015, DUKHPROGEN00PRDV3370 | 6d | 0d | LABOR- SUBCONTRACTOR [336 h]; MECHANICALS SK [604.8 h]; SMOKE DETECTOR POINTS QTY [81 ea]; FIRE EXTINGUISHER QTY [25 ea] | 62,270 | 35 |  | 1AP1EWGF35 | DUKHCON1AP1ELGF4015 | DUKHCONP1AZ1ELGF4015 | DH | CON | 1A | Z1 | MEP | EW | GF | B02 | B02-D09 | RES-1A |
| DUKHCONP1AZ1ELGF4020 |  | Installation of DBS,MCCB Accessories. | 20d | 2014-01-14 | 2014-02-05 | DUKHCONP1AZ1ARGF3060 SS+7d, DUKHCONP1AZ1ELGF4010 FF+5d, DUKHPROGEN00PRDV3170, DUKHCONP1AMKELGF4020, DUKHCONP1AZ1ARGF3055 SS+7d, DUKHCONP1AZ1ARGF3060 FF+7d, DUKHCONP1AZ1ELGF4010 SS+5d, DUKHCONP1AZ1ARGF3055 FF+7d | -6d | 0d | LABOR- SUBCONTRACTOR [42 h]; ELECTRICIANS SK [156.8 h]; MCCB QTY [56 ea]; DB QTY [7 ea] | 22,794 | 25 |  | 1AP1EWGF25 | DUKHCON1AP1ELGF4020 | DUKHCONP1AZ1ELGF4020 | DH | CON | 1A | Z1 | MEP | EW | GF | B02 | B02-D09 | RES-1A |
| DUKHCONP1AZ1ELGF4025 |  | Installation of Lighting fixtures & Accessories | 25d | 2014-01-26 | 2014-02-24 | DUKHCONP1AZ1ARGF3060 SS+10d, DUKHCONP1AZ1ARGF3055 FF+10d, DUKHCONP1AZ1ARGF3060 FF+10d, DUKHPROGEN00PRDV3190, DUKHCONP1AZ1ELGF4020 FF+10d, DUKHCONP1AZ1ELGF4020 SS+10d, DUKHCONP1AMKELGF4025, DUKHCONP1AZ1ARGF3055 SS+10d | 1d | 0d | LABOR- SUBCONTRACTOR [504 h]; ELECTRICIANS SK [940.8 h]; LIGHTS QTY [420 ea] | 135,026 | 30 |  | 1AP1EWGF30 | DUKHCON1AP1ELGF4025 | DUKHCONP1AZ1ELGF4025 | DH | CON | 1A | Z1 | MEP | EW | GF | B02 | B02-D09 | RES-1A |
| DUKHCONP1AZ1ELGF4030 |  | Installation of Telephone System | 20d | 2014-01-26 | 2014-02-18 | DUKHCONP1AZ1ELGF4020 SS+10d, DUKHPROGEN00PRDV3270, DUKHPROGEN00PRDV3280, DUKHCONP1AZ1ARGF3060 FF+5d, DUKHCONP1AZ1ELGF4020 FF+10d, DUKHCONP1AZ1ARGF3060 SS+5d, DUKHCONP1AMKELGF4030 | -6d | 5d | LABOR- SUBCONTRACTOR [66 h]; ELECTRICIANS SK [392 h]; TELEPHONE SOCKETS QTY [35 ea] | 33,391 | 40 |  | 1AP1EWGF40 | DUKHCON1AP1ELGF4030 | DUKHCONP1AZ1ELGF4030 | DH | CON | 1A | Z1 | MEP | EW | GF | B02 | B02-D09 | RES-1A |
|  | 15 | **FIRST FLOORS** |  | 2013-11-27 | 2014-03-30 |  |  |  |  |  |  |  |  |  |  |  |  |  |  |  |  |  |  |  |  |
| DUKHCONP1AZ1ELFF4035 |  | Fixing of wall conduits & switch socket boxes | 25d | 2013-11-27 | 2013-12-26 | DUKHCONP1AMKELFF4035, DUKHCONP1AZ1ARFF3300 SS+5d, DUKHCONP1AZ1ARFF3300 FF+5d | -14d | 2d | LABOR- SUBCONTRACTOR [168 h]; ELECTRICIANS SK [907.2 h]; SOCKET BOXES QTY [634 ea]; CODUITS QTY [161 lm] | 28,577 | 10 |  | 1AP1EWFF10 | DUKHCON1AP1ELFF4035 | DUKHCONP1AZ1ELFF4035 | DH | CON | 1A | Z1 | MEP | EW | FF | B02 | B02-D09 | RES-1A |
| DUKHCONP1AZ1ELFF4040 |  | Cable tray & trunking installation | 20d | 2013-12-11 | 2014-01-04 | DUKHCONP1AMKELFF4040, DUKHCONP1AZ1ELFF4035 SS+5d, DUKHCONP1AZ1ELFF4035 FF+5d | 2d | 0d | LABOR- SUBCONTRACTOR [252 h]; ELECTRICIANS SK [907.2 h]; CABLE TRAY QTY [161 lm] | 6,580 | 15 |  | 1AP1EWFF15 | DUKHCON1AP1ELFF4040 | DUKHCONP1AZ1ELFF4040 | DH | CON | 1A | Z1 | MEP | EW | FF | B02 | B02-D09 | RES-1A |
| DUKHCONP1AZ1ELFF4045 |  | Installation of wiring & Main Cabling | 25d | 2013-12-21 | 2014-01-18 | DUKHCONP1AMKELFF4045, DUKHCONP1AZ1ELFF4040 FF+7d, DUKHCONP1AZ1ELFF4040 SS+7d | 2d | 0d | LABOR- SUBCONTRACTOR [66 h]; ELECTRICIANS SK [201.6 h]; CABLE QTY [161 lm] | 96,585 | 20 |  | 1AP1EWFF20 | DUKHCON1AP1ELFF4045 | DUKHCONP1AZ1ELFF4045 | DH | CON | 1A | Z1 | MEP | EW | FF | B02 | B02-D09 | RES-1A |
| DUKHCONP1AZ1ELFF4050 |  | Installation of Telephone System | 25d | 2014-02-15 | 2014-03-15 | DUKHCONP1AZ1ELGF4030 SS+10d, DUKHCONP1AZ1ARFF3360 FF+5d, DUKHCONP1AZ1MSEX5010 FF, DUKHCONP1AMKELFF4050, DUKHCONP1AZ1ARFF3360 SS+5d, DUKHCONP1AZ1ELGF4030 FF+10d | -12d | 11d | LABOR- SUBCONTRACTOR [42 h]; ELECTRICIANS SK [358.4 h]; TELEPHONE SOCKETS QTY [32 ea] | 31,960 | 40 |  | 1AP1EWFF40 | DUKHCON1AP1ELFF4050 | DUKHCONP1AZ1ELFF4050 | DH | CON | 1A | Z1 | MEP | EW | FF | B02 | B02-D09 | RES-1A |
| DUKHCONP1AZ1ELFF4055 |  | Install. of CAMS & Fire Fighting Accessories | 25d | 2014-02-17 | 2014-03-17 | DUKHCONP1AZ1ELGF4015 SS+5d, DUKHCONP1AMKELFF4055, DUKHCONP1AZ1ARFF3360 SS+7d, DUKHCONP1AZ1ARFF3360 FF+7d, DUKHCONP1AZ1ELGF4015 FF+5d | -22d | 1d | LABOR- SUBCONTRACTOR [318 h]; MECHANICALS SK [572.4 h]; SMOKE DETECTOR POINTS QTY [81 ea]; FIRE EXTINGUISHER QTY [21 ea] | 62,251 | 35 |  | 1AP1EWFF35 | DUKHCON1AP1ELFF4055 | DUKHCONP1AZ1ELFF4055 | DH | CON | 1A | Z1 | MEP | EW | FF | B02 | B02-D09 | RES-1A |
| DUKHCONP1AZ1ELFF4060 |  | Installation of DBS,MCCB Accessories. | 20d | 2014-02-24 | 2014-03-18 | DUKHCONP1AZ1ARFF3360 FF+8d, DUKHCONP1AZ1ELFF4045 FF+5d, DUKHCONP1AZ1ARFF3360 SS+8d, DUKHCONP1AZ1ELFF4045 SS+5d, DUKHCONP1AMKELFF4060 | -23d | 0d | LABOR- SUBCONTRACTOR [42 h]; ELECTRICIANS SK [156.8 h]; MCCB QTY [56 ea]; DB QTY [7 ea] | 22,784 | 25 |  | 1AP1EWFF25 | DUKHCON1AP1ELFF4060 | DUKHCONP1AZ1ELFF4060 | DH | CON | 1A | Z1 | MEP | EW | FF | B02 | B02-D09 | RES-1A |
| DUKHCONP1AZ1ELFF4065 |  | Installation of Lighting fixtures & Accessories | 25d | 2014-03-02 | 2014-03-30 | DUKHCONP1AZ1ARFF3360 FF+10d, DUKHCONP1AMKELFF4065, DUKHCONP1AZ1ELGF4025 FF+5d, DUKHCONP1AZ1ARFF3360 SS+10d, DUKHCONP1AZ1ELFF4060 SS+5d, DUKHCONP1AZ1ELFF4060 FF+5d, DUKHCONP1AZ1ELGF4025 SS+5d | -23d | 0d | LABOR- SUBCONTRACTOR [504 h]; ELECTRICIANS SK [940.8 h]; LIGHTS QTY [420 ea] | 135,014 | 30 |  | 1AP1EWFF30 | DUKHCON1AP1ELFF4065 | DUKHCONP1AZ1ELFF4065 | DH | CON | 1A | Z1 | MEP | EW | FF | B02 | B02-D09 | RES-1A |

Notes:
- DUKHCONP1AZ1ARRF3630: Expenses: P1A-Roofing 49693
- DUKHCONP1AZ1ARRF3635: Expenses: P1A-Roofing 38494
- DUKHCONP1AZ1ARRF3640: Expenses: P1A-Roofing 48944
- DUKHCONP1AZ1ARRF3645: Expenses: P1A-Roofing 72926
- DUKHCONP1AZ1ARRF3650: Expenses: P1A-Metal work 55429
- DUKHCONP1AZ1ARRF3655: Expenses: P1A-Roofing 23275
- DUKHCONP1AZ1ARRF3660: Expenses: P1A-Metal work 46556
- DUKHCONP1AZ1AREL3665: Expenses: P1A-Finishes 95282
- DUKHCONP1AZ1AREL3670: Expenses: P1A-Finishes 62842
- DUKHCONP1AZ1AREL3680: Expenses: P1A-Painting and Decorating 75256
- DUKHCONP1AZ1ELGF4000: Expenses: P1A-Electrical Installations 28942
- DUKHCONP1AZ1ELGF4005: Expenses: P1A-Electrical Installations 6594
- DUKHCONP1AZ1ELGF4010: Expenses: P1A-Electrical Installations 98015
- DUKHCONP1AZ1ELGF4015: Expenses: P1A-Electrical Installations 62270
- DUKHCONP1AZ1ELGF4020: Expenses: P1A-Electrical Installations 22794
- DUKHCONP1AZ1ELGF4025: Expenses: P1A-Electrical Installations 135026
- DUKHCONP1AZ1ELGF4030: Expenses: P1A-Electrical Installations 33391
- DUKHCONP1AZ1ELFF4035: Expenses: P1A-Electrical Installations 28577
- DUKHCONP1AZ1ELFF4040: Expenses: P1A-Electrical Installations 6580
- DUKHCONP1AZ1ELFF4045: Expenses: P1A-Electrical Installations 96585
- DUKHCONP1AZ1ELFF4050: Expenses: P1A-Electrical Installations 31960
- DUKHCONP1AZ1ELFF4055: Expenses: P1A-Electrical Installations 62251
- DUKHCONP1AZ1ELFF4060: Expenses: P1A-Electrical Installations 22784
- DUKHCONP1AZ1ELFF4065: Expenses: P1A-Electrical Installations 135014

| ID | WBS | Activity | Duration | Start | Finish | Predecessors | Total float | Free float | Resources | Cost | CODE | P3 ACTID | P6 ID (old) | NP61D | PROJECT | PHASES | PACKAGE | PART | ELEMENTS | STEP | FLOORS | BILL NOS | BILL DIVISION | RES PACK |
| --- | --- | --- | --- | --- | --- | --- | --- | --- | --- | --- | --- | --- | --- | --- | --- | --- | --- | --- | --- | --- | --- | --- | --- | --- |
|  | 20 | **ROOF** |  | 2014-03-16 | 2014-04-16 |  |  |  |  |  |  |  |  |  |  |  |  |  |  |  |  |  |  |  |
| DUKHCONP1AZ1ELRF4070 |  | Installation of Isolator | 18d | 2014-03-16 | 2014-04-05 | DUKHCONP1AZ1ELFF4045 SS+10d, DUKHCONP1AZ1ELFF4045 FF+10d, DUKHCONP1AZ1ARRF3645 FF+7d, DUKHCONP1AMKELRF4070, DUKHCONP1AZ1ELFF4065 FF+5d, DUKHCONP1AZ1ELFF4050 FF+7d, DUKHPROGEN00PRDV3200, DUKHCONP1AZ1ARRF3645 SS+7d, DUKHCONP1AZ1ELFF4050 SS+5d, DUKHCONP1AZ1ELFF4065 SS+5d | -23d | 0d | LABOR- SUBCONTRACTOR [126 h]; ELECTRICIANS SK [235.2 h]; ISOLATOR QTY [39 ea] | 47,854 | 10 | 1AP1EWRF10 | DUKHCON1AP1ELRF4070 | DUKHCONP1AZ1ELRF4070 | DH | CON | 1A | Z1 | MEP | EW | RF | B02 | B02-D09 | RES-1A |
| DUKHCONP1AZ1ELRF4075 |  | Installation of TV Dish Antenna | 23d | 2014-03-22 | 2014-04-16 | DUKHPROGEN00PRDV3290, DUKHCONP1AZ1ELRF4070 SS+5d, DUKHCONP1AZ1ELRF4070 FF+5d, DUKHCONP1AMKELRF4075 | -23d | 1d | LABOR- SUBCONTRACTOR [210 h]; ELECTRICIANS SK [436.8 h]; CONTROL BOX QTY [11 ea]; SWITCHING BOX QTY [28 ea] | 35,522 | 15 | 1AP1EWRF15 | DUKHCON1AP1ELRF4075 | DUKHCONP1AZ1ELRF4075 | DH | CON | 1A | Z1 | MEP | EW | RF | B02 | B02-D09 | RES-1A |
|  | 15 | **PLUMBING, DRAINAGE & FIRE FIGHTING WORKS** |  | 2013-07-01 | 2014-04-16 |  |  |  |  |  |  |  |  |  |  |  |  |  |  |  |  |  |  |  |
|  | 10 | **GROUND FLOOR** |  | 2013-07-01 | 2014-02-24 |  |  |  |  |  |  |  |  |  |  |  |  |  |  |  |  |  |  |  |
| DUKHCONP1AZ1PLUG4300 |  | Drainage / Storm Pipes in Grade Slab | 16d | 2013-07-01 | 2013-07-18 | DUKHCONP1AZ1STUG1040 SS+10d, DUKHPROGEN00PRDV3070, DUKHPROGEN00PRDV3060, DUKHCONP1AZ1STUG1040 FF+10d | -24d | 0d | LABOR- SUBCONTRACTOR [24 h]; MECHANICALS SK [43.2 h]; DRAINAGE PIPES QTY [80 lm] | 35,465 | 10 | 1AP1PLUG10 | DUKHCON1AP1PLUG4300 | DUKHCONP1AZ1PLUG4300 | DH | CON | 1A | Z1 | ST | SB | UG | B02 | B02-D07 | RES-1A |
| DUKHCONP1AZ1PLGF4305 |  | Installation of Plumbing pipes & testing | 18d | 2013-10-27 | 2013-11-16 | DUKHCONP1AMKPLGF4305, DUKHCONP1AZ1ARGF3000 SS+7d, DUKHCONP1AZ1ARGF3000 FF+7d | -6d | 0d | LABOR- SUBCONTRACTOR [84 h]; MECHANICALS SK [302.4 h]; PLUMB PIPES QTY [287 lm] | 75,226 | 10 | 1AP1PLGF10 | DUKHCON1AP1PLGF4305 | DUKHCONP1AZ1PLGF4305 | DH | CON | 1A | Z1 | MEP | PL | GF | B02 | B02-D07 | RES-1A |
| DUKHCONP1AZ1PLGF4310 |  | Installation of Drainage pipes &testing | 18d | 2013-10-27 | 2013-11-16 | DUKHCONP1AZ1PLGF4305 FF, DUKHCONP1AZ1ARGF3000 SS+7d, DUKHCONP1AMKPLGF4310, DUKHCONP1AZ1PLGF4305 SS, DUKHCONP1AZ1ARGF3000 FF+7d | 15d | 21d | LABOR- SUBCONTRACTOR [42 h]; MECHANICALS SK [118.8 h]; DRAINAGE PIPES QTY [217 lm] | 2,596 | 15 | 1AP1PLGF15 | DUKHCON1AP1PLGF4310 | DUKHCONP1AZ1PLGF4310 | DH | CON | 1A | Z1 | MEP | PL | GF | B02 | B02-D07 | RES-1A |
| DUKHCONP1AZ1PLGF4315 |  | Sanitary Fittings & Accessories | 20d | 2014-01-26 | 2014-02-18 | DUKHCONP1AZ1ARGF3065 FF+5d, DUKHCONP1AZ1PLGF4310 FF+5d, DUKHPROGEN00PRDV3770, DUKHPROGEN00PRDV3150, DUKHCONP1AZ1PLGF4310 SS+5d, DUKHCONP1AZ1ARGF3065 SS+5d, DUKHCONP1AMKPLGF4315 | 21d | 0d | LABOR- SUBCONTRACTOR [42 h]; MECHANICALS SK [75.6 h]; SANITARY ACC QTY [53 ea] | 91,253 | 20 | 1AP1PLGF20 | DUKHCON1AP1PLGF4315 | DUKHCONP1AZ1PLGF4315 | DH | CON | 1A | Z1 | MEP | PL | GF | B02 | B02-D07 | RES-1A |
| DUKHCONP1AZ1PLGF4320 |  | Installation of Water Heater | 15d | 2014-02-06 | 2014-02-24 | DUKHPROGEN00PRDV3230, DUKHCONP1AZ1PLGF4315 FF+5d, DUKHCONP1AZ1ARGF3060 FF+5d, DUKHCONP1AZ1PLGF4315 SS+5d, DUKHCONP1AZ1ARGF3060 SS+5d, DUKHCONP1AMKPLGF4320 | 21d | 10d | LABOR- SUBCONTRACTOR [42 h]; MECHANICALS SK [75.6 h]; WATER HEATER QTY [11 ea] | 7,816 | 25 | 1AP1PLGF25 | DUKHCON1AP1PLGF4320 | DUKHCONP1AZ1PLGF4320 | DH | CON | 1A | Z1 | MEP | PL | GF | B02 | B02-D07 | RES-1A |
|  | 15 | **FIRST FLOORS** |  | 2013-12-08 | 2014-03-30 |  |  |  |  |  |  |  |  |  |  |  |  |  |  |  |  |  |  |  |
| DUKHCONP1AZ1PLFF4325 |  | Installation of Plumbing pipes & testing | 18d | 2013-12-08 | 2013-12-29 | DUKHPROGEN00PRDV3080, DUKHCONP1AZ1ARFF3300 SS+7d, DUKHCONP1AZ1ARFF3300 FF+7d, DUKHCONP1AMKPLFF4325 | -24d | 0d | LABOR- SUBCONTRACTOR [84 h]; MECHANICALS SK [302.4 h]; PLUMB PIPES QTY [287 lm] | 73,278 | 10 | 1AP1PLFF10 | DUKHCON1AP1PLFF4325 | DUKHCONP1AZ1PLFF4325 | DH | CON | 1A | Z1 | MEP | PL | FF | B02 | B02-D07 | RES-1A |
| DUKHCONP1AZ1PLFF4330 |  | Installation of Drainage pipes & testing | 18d | 2013-12-08 | 2013-12-29 | DUKHCONP1AZ1ARFF3300 FF+7d, DUKHCONP1AZ1PLFF4325 FF, DUKHCONP1AZ1PLFF4325 SS, DUKHCONP1AMKPLFF4330, DUKHCONP1AZ1ARFF3300 SS+7d | -2d | 8d | LABOR- SUBCONTRACTOR [42 h]; MECHANICALS SK [118.8 h]; DRAINAGE PIPES QTY [217 lm] | 2,224 | 15 | 1AP1PLFF15 | DUKHCON1AP1PLFF4330 | DUKHCONP1AZ1PLFF4330 | DH | CON | 1A | Z1 | MEP | PL | FF | B02 | B02-D07 | RES-1A |
| DUKHCONP1AZ1PLFF4335 |  | Sanitary Fittings & Accessories | 20d | 2014-03-02 | 2014-03-24 | DUKHCONP1AZ1PLFF4330 SS+5d, DUKHCONP1AZ1ARFF3365 FF+5d, DUKHCONP1AZ1ARFF3365 SS+5d, DUKHCONP1AMKPLFF4335, DUKHCONP1AZ1PLFF4330 FF+5d | -23d | 0d | LABOR- SUBCONTRACTOR [24 h]; MECHANICALS SK [43.2 h]; SANITARY ACC QTY [49 ea] | 98,958 | 20 | 1AP1PLFF20 | DUKHCON1AP1PLFF4335 | DUKHCONP1AZ1PLFF4335 | DH | CON | 1A | Z1 | MEP | PL | FF | B02 | B02-D07 | RES-1A |
| DUKHCONP1AZ1PLFF4340 |  | Installation of Water Heater | 15d | 2014-03-13 | 2014-03-30 | DUKHCONP1AZ1PLFF4335 SS+5d, DUKHCONP1AZ1PLFF4335 FF+5d, DUKHCONP1AMKPLFF4340, DUKHCONP1AZ1ARFF3360 FF+5d, DUKHCONP1AZ1ARFF3360 SS+5d | -23d | 0d | LABOR- SUBCONTRACTOR [24 h]; MECHANICALS SK [43.2 h]; WATER HEATER QTY [7 ea] | 6,130 | 25 | 1AP1PLFF25 | DUKHCON1AP1PLFF4340 | DUKHCONP1AZ1PLFF4340 | DH | CON | 1A | Z1 | MEP | PL | FF | B02 | B02-D07 | RES-1A |
|  | 20 | **ROOF** |  | 2014-01-02 | 2014-04-16 |  |  |  |  |  |  |  |  |  |  |  |  |  |  |  |  |  |  |  |
| DUKHCONP1AZ1PLRF4345 |  | Installation of Plumbing pipes & fittings | 15d | 2014-01-02 | 2014-01-19 | DUKHCONP1AMKPLRF4345, DUKHCONP1AZ1ARRF3605 FF+7d, DUKHCONP1AZ1ARRF3605 SS+7d | 28d | 26d | LABOR- SUBCONTRACTOR [24 h]; MECHANICALS SK [75.6 h]; PLUMB PIPES QTY [84 lm] | 11,290 | 10 | 1AP1PLRF10 | DUKHCON1AP1PLRF4345 | DUKHCONP1AZ1PLRF4345 | DH | CON | 1A | Z1 | MEP | PL | RF | B02 | B02-D07 | RES-1A |
| DUKHCONP1AZ1PLRF4350 |  | Installation of Rain water Pipes | 15d | 2014-02-12 | 2014-03-01 | DUKHCONP1AZ1AREL3665 FF+7d, DUKHCONP1AZ1PLFF4330 FF+5d, DUKHCONP1AZ1ARRF3645 FF+5d, DUKHCONP1AZ1PLRF4345 SS+8d, DUKHCONP1AMKPLRF4350, DUKHCONP1AZ1AREL3665 SS+7d, DUKHCONP1AZ1PLRF4345 FF+8d, DUKHCONP1AZ1ARRF3645 SS+5d, DUKHCONP1AZ1PLFF4330 SS+5d | 2d | 10d | LABOR- SUBCONTRACTOR [24 h]; MECHANICALS SK [43.2 h]; DRAINAGE PIPES QTY [70 lm] | 82,177 | 15 | 1AP1PLRF15 | DUKHCON1AP1PLRF4350 | DUKHCONP1AZ1PLRF4350 | DH | CON | 1A | Z1 | MEP | PL | RF | B02 | B02-D07 | RES-1A |
| DUKHCONP1AZ1PLRF4355 |  | Roof Water Tank Installation & Connections | 25d | 2014-03-19 | 2014-04-16 | DUKHCONP1AZ1PLFF4340 FF+5d, DUKHCONP1AZ1PLRF4350 SS+5d, DUKHCONP1AZ1PLRF4345 FF+8d, DUKHCONP1AZ1PLRF4350 FF+5d, DUKHCONP1AMKPLRF4355, DUKHCONP1AZ1ARRF3655 FF+5d, DUKHCONP1AZ1PLRF4345 SS+8d, DUKHCONP1AZ1ARRF3655 SS+5d, DUKHCONP1AZ1PLFF4340 SS+5d | -23d | 0d | LABOR- SUBCONTRACTOR [108 h]; MECHANICALS SK [194.4 h]; WATER TANK QTY [18 ea] | 518,520 | 20 | 1AP1PLRF20 | DUKHCON1AP1PLRF4355 | DUKHCONP1AZ1PLRF4355 | DH | CON | 1A | Z1 | MEP | PL | RF | B02 | B02-D07 | RES-1A |
|  | 20 | **AC WORKS** |  | 2013-11-21 | 2014-04-13 |  |  |  |  |  |  |  |  |  |  |  |  |  |  |  |  |  |  |  |
|  | 10 | **GROUND FLOOR** |  | 2013-11-21 | 2014-02-22 |  |  |  |  |  |  |  |  |  |  |  |  |  |  |  |  |  |  |  |
| DUKHCONP1AZ1ACGF4600 |  | Installation AC Pipes | 20d | 2013-11-21 | 2013-12-14 | DUKHCONP1AZ1ARGF3005 FF+7d, DUKHPROGEN00PRDV3160, DUKHCONP1AZ1ARGF3005 SS+7d, DUKHCONP1AMKACGF4600 | 20d | 0d | LABOR- SUBCONTRACTOR [192 h]; AC TECHNICIAN SK [672 h]; AC PIPES QTY [1757 lm] | 7,061 | 10 | 1AP1ACGF10 | DUKHCON1AP1ACGF4600 | DUKHCONP1AZ1ACGF4600 | DH | CON | 1A | Z1 | MEP | AC | GF | B02 | B02-D08 | RES-1A |
| DUKHCONP1AZ1ACGF4605 |  | Fixing of Ventilation Equipments | 25d | 2014-01-08 | 2014-02-05 | DUKHPROGEN00PRDV3340, DUKHCONP1AZ1ACGF4600 FF+10d, DUKHCONP1AZ1ARGF3055 SS+7d, DUKHCONP1AZ1ARGF3060 SS+7d, DUKHPROGEN00PRDV3530, DUKHCONP1AZ1ARGF3055 FF+7d, DUKHCONP1AZ1ARGF3060 FF+7d, DUKHCONP1AZ1ACGF4600 SS+10d, DUKHCONP1AMKACGF4605 | 8d | 0d | LABOR- SUBCONTRACTOR [42 h]; AC TECHNICIAN SK [123.2 h]; VENTILIATION EQP QTY [35 ea] | 15,129 | 15 | 1AP1ACGF15 | DUKHCON1AP1ACGF4605 | DUKHCONP1AZ1ACGF4605 | DH | CON | 1A | Z1 | MEP | AC | GF | B02 | B02-D08 | RES-1A |
| DUKHCONP1AZ1ACGF4610 |  | Fixing of Split AC | 20d | 2014-01-29 | 2014-02-22 | DUKHPROGEN00PRDV3240, DUKHCONP1AMKACGF4610, DUKHCONP1AZ1ACGF4605 FF+13d, DUKHCONP1AZ1ACGF4605 SS+13d | 8d | 5d | LABOR- SUBCONTRACTOR [66 h]; AC TECHNICIAN SK [201.6 h]; SPLIT UNIT QTY [35 ea] | 42,782 | 20 | 1AP1ACGF20 | DUKHCON1AP1ACGF4610 | DUKHCONP1AZ1ACGF4610 | DH | CON | 1A | Z1 | MEP | AC | GF | B02 | B02-D08 | RES-1A |

Notes:
- DUKHCONP1AZ1ELRF4070: Expenses: P1A-Electrical Installations 47854
- DUKHCONP1AZ1ELRF4075: Expenses: P1A-Electrical Installations 35522
- DUKHCONP1AZ1PLUG4300: Expenses: P1A-Plumbing and Drainage works 35465
- DUKHCONP1AZ1PLGF4305: Expenses: P1A-Plumbing and Drainage works 75226
- DUKHCONP1AZ1PLGF4310: Expenses: P1A-Plumbing and Drainage works 2596
- DUKHCONP1AZ1PLGF4315: Expenses: P1A-Plumbing and Drainage works 91253
- DUKHCONP1AZ1PLGF4320: Expenses: P1A-Plumbing and Drainage works 7816
- DUKHCONP1AZ1PLFF4325: Expenses: P1A-Plumbing and Drainage works 73278
- DUKHCONP1AZ1PLFF4330: Expenses: P1A-Plumbing and Drainage works 2224
- DUKHCONP1AZ1PLFF4335: Expenses: P1A-Plumbing and Drainage works 98958
- DUKHCONP1AZ1PLFF4340: Expenses: P1A-Plumbing and Drainage works 6130
- DUKHCONP1AZ1PLRF4345: Expenses: P1A-Plumbing and Drainage works 11290
- DUKHCONP1AZ1PLRF4350: Expenses: P1A-Plumbing and Drainage works 82177
- DUKHCONP1AZ1PLRF4355: Expenses: P1A-Plumbing and Drainage works 518520
- DUKHCONP1AZ1ACGF4600: Expenses: P1A-Air-conditioning and Ventilation works 7061
- DUKHCONP1AZ1ACGF4605: Expenses: P1A-Air-conditioning and Ventilation works 15129
- DUKHCONP1AZ1ACGF4610: Expenses: P1A-Air-conditioning and Ventilation works 42782

| ID | WBS | Activity | Duration | Start | Finish | Predecessors | Total float | Free float | Resources | Cost | CODE | P3 ACTID | P6 ID (old) | NP61D | PROJECT | PHASES | PACKAGE | PART | ELEMENTS | STEP | FLOORS | BILL NOS | BILL DIVISION | RES PACK |
| --- | --- | --- | --- | --- | --- | --- | --- | --- | --- | --- | --- | --- | --- | --- | --- | --- | --- | --- | --- | --- | --- | --- | --- | --- |
|  | 15 | **FIRST FLOORS** |  | 2013-12-30 | 2014-04-01 |  |  |  |  |  |  |  |  |  |  |  |  |  |  |  |  |  |  |  |
| DUKHCONP1AZ1ACFF4615 |  | Installation AC Pipes | 20d | 2013-12-30 | 2014-01-21 | DUKHCONP1AMKACFF4615, DUKHCONP1AZ1ARFF3305 SS+7d, DUKHCONP1AZ1ARFF3305 FF+7d | 3d | 6d | LABOR- SUBCONTRACTOR [192 h]; AC TECHNICIAN SK [672 h]; AC PIPES QTY [1757 lm] | 6,610 | 10 | 1AP1ACFF10 | DUKHCON1AP1ACFF4615 | DUKHCONP1AZ1ACFF4615 | DH | CON | 1A | Z1 | MEP | AC | FF | B02 | B02-D08 | RES-1A |
| DUKHCONP1AZ1ACFF4620 |  | Fixing of Ventilation Equipments | 25d | 2014-02-17 | 2014-03-17 | DUKHCONP1AZ1ACFF4615 FF+10d, DUKHCONP1AZ1ARFF3360 FF+7d, DUKHCONP1AZ1ACFF4615 SS+10d, DUKHCONP1AMKACFF4620, DUKHCONP1AZ1ARFF3360 SS+7d | -21d | 0d | LABOR- SUBCONTRACTOR [24 h]; AC TECHNICIAN SK [78.4 h]; VENTILIATION EQP QTY [21 ea] | 14,948 | 15 | 1AP1ACFF15 | DUKHCON1AP1ACFF4620 | DUKHCONP1AZ1ACFF4620 | DH | CON | 1A | Z1 | MEP | AC | FF | B02 | B02-D08 | RES-1A |
| DUKHCONP1AZ1ACFF4625 |  | Fixing of Split AC | 20d | 2014-03-10 | 2014-04-01 | DUKHCONP1AMKACFF4625, DUKHCONP1AZ1ACFF4620 SS+13d, DUKHCONP1AZ1ACFF4620 FF+13d | -21d | 0d | LABOR- SUBCONTRACTOR [66 h]; AC TECHNICIAN SK [201.6 h]; SPLIT UNIT QTY [35 ea] | 47,328 | 20 | 1AP1ACFF20 | DUKHCON1AP1ACFF4625 | DUKHCONP1AZ1ACFF4625 | DH | CON | 1A | Z1 | MEP | AC | FF | B02 | B02-D08 | RES-1A |
|  | 20 | **ROOF** |  | 2014-02-02 | 2014-04-13 |  |  |  |  |  |  |  |  |  |  |  |  |  |  |  |  |  |  |  |
| DUKHCONP1AZ1ACRF4630 |  | Installation of Refrigerant Pipes | 25d | 2014-02-02 | 2014-03-03 | DUKHCONP1AZ1ARRF3645 SS+7d, DUKHCONP1AZ1ARRF3645 FF+7d, DUKHCONP1AZ1ACGF4600 SS+7d, DUKHCONP1AZ1ACFF4615 SS+7d, DUKHCONP1AMKACRF4630, DUKHCONP1AZ1ACFF4615 FF+7d, DUKHCONP1AZ1ACGF4600 FF+7d | 10d | 0d | LABOR- SUBCONTRACTOR [84 h]; AC TECHNICIAN SK [280 h]; AC PIPES QTY [742 lm] | 21,770 | 10 | 1AP1ACRF10 | DUKHCON1AP1ACRF4630 | DUKHCONP1AZ1ACRF4630 | DH | CON | 1A | Z1 | MEP | AC | RF | B02 | B02-D08 | RES-1A |
| DUKHCONP1AZ1ACRF4635 |  | Installation of Condensing Unit | 25d | 2014-03-16 | 2014-04-13 | DUKHCONP1AZ1ACRF4630 FF+5d, DUKHCONP1AZ1ACGF4610 SS+5d, DUKHCONP1AMKACRF4635, DUKHCONP1AZ1ACGF4610 FF+5d, DUKHCONP1AZ1ACFF4625 SS+5d, DUKHCONP1AZ1ACRF4630 SS+5d, DUKHCONP1AZ1ACFF4625 FF+5d | -20d | 1d | LABOR- SUBCONTRACTOR [108 h]; AC TECHNICIAN SK [392 h]; AC UNITS QTY [70 ea] | 117,791 | 15 | 1AP1ACRF15 | DUKHCON1AP1ACRF4635 | DUKHCONP1AZ1ACRF4635 | DH | CON | 1A | Z1 | MEP | AC | RF | B02 | B02-D08 | RES-1A |
|  | 25 | **EXTERNAL WORKS** |  | 2013-12-31 | 2014-05-01 |  |  |  |  |  |  |  |  |  |  |  |  |  |  |  |  |  |  |  |
|  | 10 | **MISCELLANEOUS** |  | 2013-12-31 | 2014-05-01 |  |  |  |  |  |  |  |  |  |  |  |  |  |  |  |  |  |  |  |
| DUKHCONP1AZ1MSEX5000 |  | Construction of Manholes | 25d | 2013-12-31 | 2014-01-28 | DUKHCONP1AZ1PLGF4310 FF+10d, DUKHCONP1AZ1STRF2055 SS+5d, DUKHCONP1AZ1STRF2055 FF+5d, DUKHCONP1AMKMSEX5000, DUKHCONP1AZ1PLGF4310 SS+10d, DUKHPROGEN00PRDV3590 | -11d | 0d | MANHOLES SK [336 h]; LABOR- SUBCONTRACTOR [126 h]; MANHOLES QTY [42 ea] | 49,151 | 25 | 1AP1MSEX25 | DUKHCON1AP1MS005000 | DUKHCONP1AZ1MSEX5000 | DH | CON | 1A | Z1 | EX | MS |  | B02 | B02-D12 | RES-1A |
| DUKHCONP1AZ1MSEX5005 |  | Construction of Soak pit, Chambers | 25d | 2014-01-14 | 2014-02-12 | DUKHCONP1AZ1MSEX5000 SS+12d, DUKHCONP1AMKMSEX5005, DUKHCONP1AZ1MSEX5000 FF+12d | -11d | 0d | MANHOLES SK [112 h]; LABOR- SUBCONTRACTOR [42 h]; SOAKPIT QTY [14 ea] | 28,903 | 30 | 1AP1MSEX30 | DUKHCON1AP1MS005005 | DUKHCONP1AZ1MSEX5005 | DH | CON | 1A | Z1 | EX | MS |  | B02 | B02-D12 | RES-1A |
| DUKHCONP1AZ1MSEX5020 |  | Construction Entrance Ramp | 25d | 2014-01-14 | 2014-02-12 | DUKHCONP1AZ1STRF2055 SS, DUKHCONP1AMKMSEX5020, DUKHCONP1AZ1STRF2055 FF | -8d | 0d | LABOR- SUBCONTRACTOR [42 h]; SCREED QTY [98 Sqm]; CONCRETE QTY [84 Cum]; INTERLOCK QTY [133 Sqm]; SCREED MASON SK [88 h]; CONCRETE MASON SK [168 h]; INTERLOCK MASON SK [112 h]; LABOR- SUBCONTRACTOR [168 h] | 27,797 | 10 | 1AP1MSEX10 | DUKHCON1AP1MS005020 | DUKHCONP1AZ1MSEX5020 | DH | CON | 1A | Z1 | EX | MS |  | B02 | B02-D12 | RES-1A |
| DUKHCONP1AZ1MSEX5015 |  | Construction of grease Trap | 20d | 2014-02-03 | 2014-02-26 | DUKHCONP1AZ1MSEX5005 SS+12d, DUKHCONP1AMKMSEX5015, DUKHCONP1AZ1MSEX5005 FF+12d | 9d | 24d | LABOR- SUBCONTRACTOR [24 h]; GREASE TRAP QTY [14 lm]; HANDRAIL ERECTOR SKILLED [32 h] | 19,859 | 20 | 1AP1MSEX20 | DUKHCON1AP1MS005015 | DUKHCONP1AZ1MSEX5015 | DH | CON | 1A | Z1 | EX | MS |  | B02 | B02-D07 | RES-1A |
| DUKHCONP1AZ1MSEX5025 |  | SS.Handrails and Balustrades | 20d | 2014-02-03 | 2014-02-26 | DUKHCONP1AZ1MSEX5020 FF+12d, DUKHCONP1AZ1MSEX5020 SS+12d, DUKHCONP1AMKMSEX5025, DUKHPROGEN00PRDV3580 | -2d | 11d | LABOR- SUBCONTRACTOR [24 h]; S.S.BALUSTRADE QTY [14 lm]; HANDRAIL ERECTOR SKILLED [32 h] | 71,242 | 15 | 1AP1MSEX15 | DUKHCON1AP1MS005025 | DUKHCONP1AZ1MSEX5025 | DH | CON | 1A | Z1 | EX | MS |  | B02 | B02-D12 | RES-1A |
| DUKHCONP1AZ1MSEX5010 |  | Telephone cable laying | 25d | 2014-02-13 | 2014-03-13 | DUKHCONP1AZ1MSEX5005 | -11d | 1d | LABOR- SUBCONTRACTOR [125 h]; ELECTRICIANS SK [125 h]; CONCRETE MASON SK [125 h] | 3,557 |  | 1AP1MSEX40 | DUKHCON1AP1MS005010 | DUKHCONP1AZ1MSEX5010 | DH | CON | 1A | Z1 | EX | MS |  | B02 | B02-D12 | RES-1A |
| DUKHCONP1AZ1MSEX5335 |  | Aluminum Roll-up Shutter with 2m Wall | 25d | 2014-04-03 | 2014-05-01 | DUKHPROGEN00PRDV3430, DUKHCONI1AZ1BWGL5325 SS+10d | 79d | 0d | LABOR- SUBCONTRACTOR [200 h]; DOOR ERECTOR SK [200 h]; ROLLING SHUTTER QTY [8 ea] | 59,528 | 25 | 1AP1BWFR25 | DUKHCON1AP1MS005335 | DUKHCONP1AZ1MSEX5335 | DH | CON | 1A | Z1 | EX | MS |  | B02 | B02-D12 | RES-1A |
|  | 15 | **WATER TANK ENCLOSURE** |  | 2014-01-21 | 2014-04-07 |  |  |  |  |  |  |  |  |  |  |  |  |  |  |  |  |  |  |  |
| DUKHCONP1AZ1WEEX5030 |  | Excavation | 20d | 2014-01-21 | 2014-02-13 | DUKHCONP1AZ1STRF2055 SS+5d, DUKHCONP1AMKWEEX5030, DUKHCONP1AZ1STRF2055 FF+5d | -11d | 0d | LABOR- SUBCONTRACTOR [24 h]; EXCAVATION QTY [35 Cum]; LOADER [10 h]; POCLAIN [20 h]; TRUCK [10 h]; EQUIP OPERATORS [40 h] | 784 | 10 | 1AP1WEEX10 | DUKHCON1AP1WE005030 | DUKHCONP1AZ1WEEX5030 | DH | CON | 1A | Z1 | EX | WE |  | B02 | B02-D12 | RES-1A |
| DUKHCONP1AZ1WEEX5035 |  | Construction of Raft | 25d | 2014-01-29 | 2014-02-27 | DUKHCONP1AZ1WEEX5030 FF+10d, DUKHCONP1AMKWEEX5035, DUKHCONP1AZ1WEEX5030 SS+5d | -13d | 0d | STEEL FIXERS SK [56 h]; CARPENTERS SK [336 h]; CONCRETE MASON SK [32 h]; LABOR- SUBCONTRACTOR [318 h]; REINFORCEMENT BARS QTY [546 kg]; FORMWORK QTY [161 Sqm]; CONCRETE QTY [18 Cum] | 13,314 | 15 | 1AP1WEEX15 | DUKHCON1AP1WE005035 | DUKHCONP1AZ1WEEX5035 | DH | CON | 1A | Z1 | EX | WE |  | B02 | B02-D12 | RES-1A |
| DUKHCONP1AZ1WEEX5040 |  | Block works & Plastering | 25d | 2014-02-08 | 2014-03-09 | DUKHCONP1AZ1WEEX5035 SS+8d, DUKHCONP1AZ1WEEX5035 FF+8d, DUKHCONP1AMKWEEX5040 | -13d | 0d | BLOCK MASON SK [112 h]; PLASTER MASON SK [168 h]; LABOR- SUBCONTRACTOR [168 h]; BLOCK QTY [49 Sqm]; PLASTER QTY [98 Sqm] | 11,885 | 20 | 1AP1WEEX20 | DUKHCON1AP1WE005040 | DUKHCONP1AZ1WEEX5040 | DH | CON | 1A | Z1 | EX | WE |  | B02 | B02-D12 | RES-1A |
| DUKHCONP1AZ1WEEX5045 |  | Flooring & Painting | 25d | 2014-02-16 | 2014-03-16 | DUKHCONP1AZ1WEEX5040 SS+6d, DUKHCONP1AZ1WEEX5040 FF+6d, DUKHCONP1AMKWEEX5045 | -13d | 0d | LABOR- SUBCONTRACTOR [66 h]; PAINT QTY [137 Sqm]; EPOXY QTY [39 Sqm]; PAINTERS SK [112 h]; EPOXY SK [32 h] | 11,151 | 25 | 1AP1WEEX25 | DUKHCON1AP1WE005045 | DUKHCONP1AZ1WEEX5045 | DH | CON | 1A | Z1 | EX | WE |  | B02 | B02-D12 | RES-1A |
| DUKHCONP1AZ1WEEX5050 |  | Installation of Steel Gate | 20d | 2014-03-01 | 2014-03-23 | DUKHCONP1AZ1WEEX5045 FF+6d, DUKHCONP1AMKWEEX5050, DUKHPROGEN00PRDV3500, DUKHCONP1AZ1MSEX5025 FF+10d, DUKHCONP1AZ1WEEX5045 SS+5d | -13d | 1d | LABOR- SUBCONTRACTOR [24 h]; GATE QTY [4 ea]; GATE ERECTOR SK [32 h] | 62,888 | 30 | 1AP1WEEX30 | DUKHCON1AP1WE005050 | DUKHCONP1AZ1WEEX5050 | DH | CON | 1A | Z1 | EX | WE |  | B02 | B02-D12 | RES-1A |
| DUKHCONP1AZ1WEEX5060 |  | Structural steel & SS Shed cover installation | 25d | 2014-03-02 | 2014-03-30 | DUKHCONP1AMKWEEX5060, DUKHPROGEN00PRDV3610, DUKHCONP1AZ1MSEX5025 FF+10d, DUKHCONP1AZ1WEEX5050 SS, DUKHCONP1AZ1WEEX5050 FF, DUKHPROGEN00PRDV3620 | -14d | 0d | LABOR- SUBCONTRACTOR [126 h]; STRUCTURAL STEEL QTY [112 kg]; SS SHED COVER QTY [35 Sqm]; STEEL ERECTOR SK [168 h] | 39,776 | 35 | 1AP1WEEX35 | DUKHCON1AP1WE005060 | DUKHCONP1AZ1WEEX5060 | DH | CON | 1A | Z1 | EX | WE |  | B02 | B02-D12 | RES-1A |
| DUKHCONP1AZ1WEEX5065 |  | Install. of Water Tank,Chiller,Pump & Meter | 25d | 2014-03-10 | 2014-04-07 | DUKHPROGEN00PRDV3640, DUKHCONP1AZ1WEEX5060 SS+6d, DUKHPROGEN00PRDV3330, DUKHCONP1AZ1PLRF4350 FF+5d, DUKHCONP1AZ1MSEX5015 FF+5d, DUKHPROGEN00PRDV3220, DUKHPROGEN00PRDV3520, DUKHPROGEN00PRDV3680, DUKHCONP1AZ1PLRF4350 SS+5d, DUKHCONP1AMKWEEX5065, DUKHCONP1AZ1MSEX5015 SS+5d, DUKHCONP1AZ1WEEX5060 FF+6d | -15d | 0d | LABOR- SUBCONTRACTOR [66 h]; AC TECHNICIAN SK [44.8 h]; MECHANICALS SK [75.6 h]; WATER TANK QTY [4 ea]; CHILLER QTY [35 ea]; PUMP QTY [4 ea] | 107,055 | 40 | 1AP1WEEX40 | DUKHCON1AP1WE005065 | DUKHCONP1AZ1WEEX5065 | DH | CON | 1A | Z1 | EX | WE |  | B02 | B02-D07 | RES-1A |

Notes:
- DUKHCONP1AZ1ACFF4615: Expenses: P1A-Air-conditioning and Ventilation works 6610
- DUKHCONP1AZ1ACFF4620: Expenses: P1A-Air-conditioning and Ventilation works 14948
- DUKHCONP1AZ1ACFF4625: Expenses: P1A-Air-conditioning and Ventilation works 47328
- DUKHCONP1AZ1ACRF4630: Expenses: P1A-Air-conditioning and Ventilation works 21770
- DUKHCONP1AZ1ACRF4635: Expenses: P1A-Air-conditioning and Ventilation works 117791
- DUKHCONP1AZ1MSEX5000: Expenses: P1A-External works within the Plot Curtilage 49151
- DUKHCONP1AZ1MSEX5005: Expenses: P1A-External works within the Plot Curtilage 28903
- DUKHCONP1AZ1MSEX5020: Expenses: P1A-External works within the Plot Curtilage 27797
- DUKHCONP1AZ1MSEX5015: Expenses: P1A-Plumbing and Drainage works 19859
- DUKHCONP1AZ1MSEX5025: Expenses: P1A-External works within the Plot Curtilage 71242
- DUKHCONP1AZ1MSEX5010: Expenses: P1A-External works within the Plot Curtilage 3557
- DUKHCONP1AZ1MSEX5335: Expenses: P1A-External works within the Plot Curtilage 59528
- DUKHCONP1AZ1WEEX5030: Expenses: P1A-External works within the Plot Curtilage 784
- DUKHCONP1AZ1WEEX5035: Expenses: P1A-External works within the Plot Curtilage 13314
- DUKHCONP1AZ1WEEX5040: Expenses: P1A-External works within the Plot Curtilage 11885
- DUKHCONP1AZ1WEEX5045: Expenses: P1A-External works within the Plot Curtilage 11151
- DUKHCONP1AZ1WEEX5050: Expenses: P1A-External works within the Plot Curtilage 62888
- DUKHCONP1AZ1WEEX5060: Expenses: P1A-External works within the Plot Curtilage 39776
- DUKHCONP1AZ1WEEX5065: Expenses: P1A-Plumbing and Drainage works 107055

| ID | WBS | Activity | Duration | Start | Finish | Predecessors | Complete | Remaining | Total float | Free float | Expected finish | Resources | Cost | CODE | P3 ACTID | P6 ID (old) | NP61D | PROJECT | PHASES | PACKAGE | PART | ELEMENTS | STEP | BILL NOS | BILL DIVISION | RES PACK | FLOORS | rem |
| --- | --- | --- | --- | --- | --- | --- | --- | --- | --- | --- | --- | --- | --- | --- | --- | --- | --- | --- | --- | --- | --- | --- | --- | --- | --- | --- | --- | --- |
|  | 20 | **HARD LANDSCAPING** |  | 2014-01-28 | 2014-03-11 |  |  |  |  |  |  |  |  |  |  |  |  |  |  |  |  |  |  |  |  |  |  |  |
| DUKHCONP1AZ1HDEX5090 |  | kerb works | 20d | 2014-01-28 | 2014-02-20 | DUKHCONP1AZ1MSEX5020 SS+7d, DUKHCONP1AZ1MSEX5020 FF+7d, DUKHCONP1AMKHDEX5090, DUKHPROGEN00PRDV3600 |  |  | -8d | 0d |  | KERBSTONE MASON SK [200 h]; LABOR- SUBCONTRACTOR [108 h]; KERBSTONE QTY [252 lm] | 11,624 | 10 | 1AP1HDEX10 | DUKHCON1AP1HD005090 | DUKHCONP1AZ1HDEX5090 | DH | CON | 1A | Z1 | EX | HD | B02 | B02-D12 | RES-1A |  |  |
| DUKHCONP1AZ1HDEX5095 |  | Cobble Stone Works | 20d | 2014-02-09 | 2014-03-04 | DUKHCONP1AMKHDEX5095, DUKHCONP1AZ1HDEX5090 FF+10d, DUKHCONP1AZ1HDEX5090 SS+10d |  |  | -8d | 0d |  | TILE MASON SK [112 h]; LABOR- SUBCONTRACTOR [66 h]; COBBLE STONE QTY [77 Sqm] | 10,703 | 15 | 1AP1HDEX15 | DUKHCON1AP1HD005095 | DUKHCONP1AZ1HDEX5095 | DH | CON | 1A | Z1 | EX | HD | B02 | B02-D12 | RES-1A |  |  |
| DUKHCONP1AZ1HDEX5100 |  | Interlock works | 20d | 2014-02-17 | 2014-03-11 | DUKHPROGEN00PRDV3660, DUKHCONP1AZ1HDEX5095 SS+6d, DUKHCONP1AZ1HDEX5095 FF+6d, DUKHCONP1AMKHDEX5100 |  |  | -8d | 0d |  | INTERLOCK MASON SK [144 h]; LABOR- SUBCONTRACTOR [66 h]; INTERLOCK QTY [161 Sqm] | 13,765 | 20 | 1AP1HDEX20 | DUKHCON1AP1HD005100 | DUKHCONP1AZ1HDEX5100 | DH | CON | 1A | Z1 | EX | HD | B02 | B02-D12 | RES-1A |  |  |
|  | 25 | **SOFT LANDSCAPING** |  | 2014-02-23 | 2014-03-30 |  |  |  |  |  |  |  |  |  |  |  |  |  |  |  |  |  |  |  |  |  |  |  |
| DUKHCONP1AZ1SLEX5105 |  | Laying of Grass/ green area | 25d | 2014-02-23 | 2014-03-23 | DUKHPROGEN00PRDV3790, DUKHCONP1AZ1HDEX5100 FF+5d, DUKHCONP1AMKSLEX5105, DUKHCONP1AZ1HDEX5100 SS+5d |  |  | -8d | 0d |  | LABOR- SUBCONTRACTOR [1032 h]; SWEET SOIL QTY [294 Cum]; GRASS QTY [294 Sqm]; LANDSCAPING SK [1376 h] | 36,162 | 10 | 1AP1SLEX10 | DUKHCON1AP1SL005105 | DUKHCONP1AZ1SLEX5105 | DH | CON | 1A | Z1 | EX | SL | B02 | B02-D12 | RES-1A |  |  |
| DUKHCONP1AZ1SLEX5110 |  | Laying of Palm tree | 25d | 2014-03-02 | 2014-03-30 | DUKHCONP1AMKSLEX5110, DUKHCONP1AZ1SLEX5105 FF+6d, DUKHCONP1AZ1SLEX5105 SS+6d |  |  | -8d | 16d |  | PLAM TREES QTY [14 ea]; LANDSCAPING SK [88 h]; LABOR- SUBCONTRACTOR [66 h]; SWEET SOIL QTY [42 Cum] | 42,588 | 15 | 1AP1SLEX15 | DUKHCON1AP1SL005110 | DUKHCONP1AZ1SLEX5110 | DH | CON | 1A | Z1 | EX | SL | B02 | B02-D12 | RES-1A |  |  |
|  | 30 | **TESTING AND COMMISSIONING** |  | 2014-04-19 | 2014-05-17 |  |  |  |  |  |  |  |  |  |  |  |  |  |  |  |  |  |  |  |  |  |  |  |
| DUKHCONP1AZ1ACTC8000 |  | Pre-Commissioning & Testing of AC Works | 25d | 2014-04-19 | 2014-05-17 | DUKHCONP1AMKELFF4055, DUKHCONP1AMKELRF4075, DUKHCONP1AZ1ARFF3395, DUKHCONP1AZ1ACFF4625, DUKHCONP1AMKHDEX5100, DUKHCONP1AMKACRF4635, DUKHCONP1AMKELGF4025, DUKHCONP1AZ1ACRF4635, DUKHCONP1AMKARRF3655, DUKHCONP1AMKPLRF4355, DUKHCONP1AMKELFF4050, DUKHCONP1AMKELGF4030, DUKHCONP1AMKAREL3680, DUKHCONP1AMKARFF3395, DUKHCONP1AMKMSEX5005, DUKHCONP1AMKACFF4625, DUKHCONP1AZ1AREL3680, DUKHCONP1AMKSLEX5110, DUKHCONP1AMKARRF3620, DUKHCONP1AMKELFF4065, DUKHCONP1AMKELGF4015, DUKHCONP1AZ1ARGF3095, DUKHCONP1AMKWEEX5065, DUKHCONP1AMKSLEX5105, DUKHCONP1AMKARGF3095, DUKHCONP1AMKPLGF4320, DUKHCONP1AMKPLRF4350 |  |  | -24d | 0d |  | LABOR- SUBCONTRACTOR [500 h]; AC TECHNICIAN SK [1000 h] | 3,168 |  | 1AP1ACU100 | DUKHCON1AP1AC008000 | DUKHCONP1AZ1ACTC8000 | DH | CON | 1A | Z1 | TES |  | B02 | B02-D08 | RES-1A |  |  |
| DUKHCONP1AZ1ELTC8010 |  | Pre-Commissioning & Testing of Electrical Works | 25d | 2014-04-19 | 2014-05-17 | DUKHCONP1AZ1SLEX5105, DUKHCONP1AMKACFF4625, DUKHCONP1AZ1ELFF4055, DUKHCONP1AMKMSEX5005, DUKHCONP1AMKWEEX5065, DUKHCONP1AMKARRF3655, DUKHCONP1AMKARRF3620, DUKHCONP1AMKELFF4055, DUKHCONP1AMKELGF4030, DUKHCONP1AMKAREL3680, DUKHCONP1AMKARGF3095, DUKHCONP1AMKELGF4025, DUKHCONP1AZ1ARRF3660, DUKHCONP1AZ1ELGF4025, DUKHCONP1AZ1ELFF4050, DUKHCONP1AMKSLEX5110, DUKHCONP1AMKPLGF4320, DUKHCONP1AMKELGF4015, DUKHCONP1AZ1ARRF3620, DUKHCONP1AZ1ELRF4075, DUKHCONP1AZ1ELFF4065, DUKHCONP1AZ1SLEX5110, DUKHCONP1AMKSLEX5105, DUKHCONP1AMKHDEX5100, DUKHCONP1AMKELFF4065, DUKHCONP1AMKELFF4050, DUKHCONP1AZ1ARFF3395, DUKHCONP1AZ1ELGF4015, DUKHCONP1AZ1ELGF4030, DUKHCONP1AZ1HDEX5100, DUKHCONP1AZ1MSEX5005, DUKHCONP1AMKELRF4075, DUKHCONP1AZ1ARGF3095, DUKHCONP1AZ1ARRF3655, DUKHCONP1AMKPLRF4355, DUKHCONP1AZ1AREL3680, DUKHCONP1AMKARFF3395, DUKHCONP1AMKPLRF4350, DUKHCONP1AMKACRF4635 |  |  | -24d | 0d |  | LABOR- SUBCONTRACTOR [1000 h]; ELECTRICIANS SK [2000 h] | 40,656 |  | 1AP1ELE100 | DUKHCON1AP1EL008010 | DUKHCONP1AZ1ELTC8010 | DH | CON | 1A | Z1 | TES |  | B02 | B02-D09 | RES-1A |  |  |
| DUKHCONP1AZ1PLTC8005 |  | Pre-Commissioning & Testing of Plumbing Works | 25d | 2014-04-19 | 2014-05-17 | DUKHCONP1AZ1AREL3680, DUKHCONP1AZ1ARFF3395, DUKHCONP1AMKWEEX5065, DUKHCONP1AMKELFF4055, DUKHCONP1AZ1ARRF3655, DUKHCONP1AZ1ARRF3660, DUKHCONP1AMKMSEX5005, DUKHCONP1AMKSLEX5105, DUKHCONP1AMKARRF3655, DUKHCONP1AMKPLGF4320, DUKHCONP1AMKPLRF4350, DUKHCONP1AMKPLRF4355, DUKHCONP1AMKACFF4625, DUKHCONP1AMKELGF4015, DUKHCONP1AMKELGF4030, DUKHCONP1AMKARFF3395, DUKHCONP1AMKACRF4635, DUKHCONP1AMKELFF4065, DUKHCONP1AMKELGF4025, DUKHCONP1AZ1ARRF3620, DUKHCONP1AZ1PLRF4350, DUKHCONP1AZ1WEEX5065, DUKHCONP1AMKARGF3095, DUKHCONP1AMKARRF3620, DUKHCONP1AMKELFF4050, DUKHCONP1AZ1PLGF4320, DUKHCONP1AZ1MSEX5005, DUKHCONP1AZ1SLEX5105, DUKHCONP1AMKAREL3680, DUKHCONP1AZ1PLRF4355, DUKHCONP1AMKSLEX5110, DUKHCONP1AMKELRF4075, DUKHCONP1AZ1ARGF3095, DUKHCONP1AZ1HDEX5100, DUKHCONP1AZ1SLEX5110, DUKHCONP1AMKHDEX5100 |  |  | -24d | 0d |  | LABOR- SUBCONTRACTOR [1000 h]; MECHANICALS SK [2000 h] | 9,008 |  | 1AP1PLU100 | DUKHCON1AP1PL008005 | DUKHCONP1AZ1PLTC8005 | DH | CON | 1A | Z1 | TES |  | B02 | B02-D07 | RES-1A |  |  |
|  | 15 | **ZONE - 2 (4 Twin Villas)** |  | 2013-03-30 | 2014-06-15 |  |  |  |  |  |  |  |  |  |  |  |  |  |  |  |  |  |  |  |  |  |  |  |
|  | 10 | **STRUCTURAL WORKS** |  | 2013-03-30 | 2014-01-21 |  |  |  |  |  |  |  |  |  |  |  |  |  |  |  |  |  |  |  |  |  |  |  |
|  | 10 | **SUB STRUCTURE** |  | 2013-03-30 | 2013-09-09 |  |  |  |  |  |  |  |  |  |  |  |  |  |  |  |  |  |  |  |  |  |  |  |
|  | 10 | **UPTO GRADE SLAB** |  | 2013-03-30 | 2013-09-09 |  |  |  |  |  |  |  |  |  |  |  |  |  |  |  |  |  |  |  |  |  |  |  |
| DUKHCONP1AZ2STUG1000 |  | Footing Excavation | 25d | 2013-03-30 A | 2013-04-27 A | DUKHCONP1AZ1STUG1000, DUKHCONP1AGNSP005000 | 100% |  |  |  |  | LABOR- SUBCONTRACTOR [590 h]; EXCAVATION QTY [984 Cum]; LOADER [131 h]; POCLAIN [262 h]; TRUCK [131 h]; EQUIP OPERATORS [524 h] | 68,256 | 10 | 1AP2SBUG10 | DUKHCON1AP2STUG1000 | DUKHCONP1AZ2STUG1000 | DH | CON | 1A | Z2 | ST | SB | B02 | B02-D01 | RES-1A | UG |  |
| DUKHCONP1AZ2STUG1005 |  | Footing Antitermite | 23d | 2013-04-10 A | 2013-05-06 | DUKHCONP1AZ2STUG1000 SS+10d, DUKHCONP1AZ2STUG1000 FF+5d | 61% | 9d | -12d | 0d | 2013-05-06 | LABOR- SUBCONTRACTOR [432 h]; ANTITERMITE QTY [2880 sqft]; ANTITERMITE SK [1152 h] | 8,640 | 15 | 1AP2SBUG15 | DUKHCON1AP2STUG1005 | DUKHCONP1AZ2STUG1005 | DH | CON | 1A | Z2 | ST | SB | B02 | B02-D01 | RES-1A | UG | REM |
| DUKHCONP1AZ2STUG1010 |  | Footing Blinding | 23d | 2013-04-14 A | 2013-05-09 | DUKHCONP1AZ2STUG1005 SS+3d, DUKHCONP1AZ2STUG1005 FF+3d | 48% | 12d | -12d | 0d | 2013-05-09 | BLINDING MASON SK [454 h]; LABOR- SUBCONTRACTOR [340.5 h]; BLINDING QTY [567 Sqm] | 14,285 | 15 | 1AP2SBUG18 | DUKHCON1AP2STUG1010 | DUKHCONP1AZ2STUG1010 | DH | CON | 1A | Z2 | ST | SB | B02 | B02-D02 | RES-1A | UG | REM |
| DUKHCONP1AZ2STUG1015 |  | Footing Waterproofing & Screed | 25d | 2013-04-20 A | 2013-05-18 | DUKHCONP1AZ2STUG1010 FF+5d, DUKHCONP1AZ2STUG1010 SS+5d | 24% | 19d | -12d | 0d | 2013-05-18 | SCREED MASON SK [418 h]; LABOR- SUBCONTRACTOR [156.75 h]; SCREED QTY [522 Sqm]; WATERPROOFING QTY [1457 Sqm] | 52,596 | 20 | 1AP2SBUG20 | DUKHCON1AP2STUG1015 | DUKHCONP1AZ2STUG1015 | DH | CON | 1A | Z2 | ST | SB | B02 | B02-D02 | RES-1A | UG | REM |
| DUKHCONP1AZ2STUG1020 |  | Construction of foundations | 20d | 2013-05-05 | 2013-05-27 | DUKHCONP1AZ2STUG1015 SS+7d, DUKHCONP1AZ2STUG1015 FF+8d |  |  | -12d | 12d |  | STEEL FIXERS SK [2565 h]; CARPENTERS SK [1160 h]; CONCRETE MASON SK [720 h]; LABOR- SUBCONTRACTOR [3333.75 h]; REINFORCEMENT BARS QTY [32062 kg]; FORMWORK QTY [580 Sqm]; CONCRETE QTY [360 Cum] | 225,546 | 25 | 1AP2SBUG25 | DUKHCON1AP2STUG1020 | DUKHCONP1AZ2STUG1020 | DH | CON | 1A | Z2 | ST | SB | B02 | B02-D02 | RES-1A | UG | REM |
| DUKHCONP1AZ2STUG1025 |  | Construction of neck of columns | 25d | 2013-05-28 | 2013-06-25 | DUKHCONP1AZ2STUG1020 FF+7d, DUKHCONP1AZ1STUG1025, DUKHCONP1AZ2STUG1020 SS+8d |  |  | -24d | 0d |  | STEEL FIXERS SK [214 h]; CARPENTERS SK [656 h]; CONCRETE MASON SK [48 h]; LABOR- SUBCONTRACTOR [688.5 h]; REINFORCEMENT BARS QTY [2669 kg]; FORMWORK QTY [328 Sqm]; CONCRETE QTY [24 Cum] | 35,935 | 30 | 1AP2SBUG30 | DUKHCON1AP2STUG1025 | DUKHCONP1AZ2STUG1025 | DH | CON | 1A | Z2 | ST | SB | B02 | B02-D02 | RES-1A | UG | REM |
| DUKHCONP1AZ2STUG1030 |  | Waterproofing Footing & Neck Column | 25d | 2013-06-06 | 2013-07-04 | DUKHCONP1AZ2STUG1025 SS+8d, DUKHCONP1AZ2STUG1025 FF+8d |  |  | -24d | 0d |  | LABOR- SUBCONTRACTOR [141 h]; WATERPROOFING QTY [468 Sqm]; WATERPROOFING SPECIALIST SK [375 h] | 22,459 | 35 | 1AP2SBUG35 | DUKHCON1AP2STUG1030 | DUKHCONP1AZ2STUG1030 | DH | CON | 1A | Z2 | ST | SB | B02 | B02-D02 | RES-1A | UG | REM |
| DUKHCONP1AZ2STUG1035 |  | Backfilling Upto Grade Beam Bottom | 25d | 2013-06-20 | 2013-07-18 | DUKHCONP1AZ2STUG1030 SS+12d, DUKHCONP1AZ2STUG1030 FF+12d, DUKHCONP1AZ1STUG1035 |  |  | -24d | 0d |  | LABOR- SUBCONTRACTOR [216 h]; BACKFILLING QTY [880 Cum]; BOBCAT [375 h]; PLATE COMPACTOR [375 h]; TRUCK [75 h]; EQUIP OPERATORS [825 h] | 22,363 | 40 | 1AP2SBUG40 | DUKHCON1AP2STUG1035 | DUKHCONP1AZ2STUG1035 | DH | CON | 1A | Z2 | ST | SB | B02 | B02-D01 | RES-1A | UG |  |
| DUKHCONP1AZ2STUG1040 |  | Construction of Grade Beams | 25d | 2013-07-07 | 2013-08-04 | DUKHCONP1AZ2STUG1035 SS+14d, DUKHCONP1AZ2STUG1035 FF+14d |  |  | -24d | 0d |  | SCREED QTY [280 Sqm]; REINFORCEMENT BARS QTY [18709 kg]; FORMWORK QTY [1076 Sqm]; CONCRETE QTY [128 Cum]; BLINDING MASON SK [244 h]; SCREED MASON SK [224 h]; STEEL FIXERS SK [1497 h]; CARPENTERS SK [2152 h]; CONCRETE MASON SK [256 h]; LABOR- SUBCONTRACTOR [3195.75 h]; BLINDING QTY [304 Sqm] | 326,110 | 45 | 1AP2SBUG45 | DUKHCON1AP2STUG1040 | DUKHCONP1AZ2STUG1040 | DH | CON | 1A | Z2 | ST | SB | B02 | B02-D02 | RES-1A | UG | REM |
| DUKHCONP1AZ2STUG1045 |  | Construction of slab on grade | 25d | 2013-08-08 | 2013-09-09 | DUKHCONP1AZ2PLUG4300 FF+8d, DUKHCONP1AZ2STUG1040 FF+10d, DUKHCONP1AZ2PLUG4300 SS+8d, DUKHCONP1AZ1STUG1045, DUKHCONP1AZ2STUG1040 SS+10d |  |  | -24d | 0d |  | BLINDING MASON SK [923 h]; SCREED MASON SK [850 h]; STEEL FIXERS SK [536 h]; CONCRETE MASON SK [400 h]; LABOR- SUBCONTRACTOR [1713 h]; BLINDING QTY [1153 Sqm]; SCREED QTY [1062 Sqm]; CONCRETE QTY [200 Cum]; WELDED WIRE MESH [2008 Sqm] | 239,062 | 50 | 1AP2SBUG50 | DUKHCON1AP2STUG1045 | DUKHCONP1AZ2STUG1045 | DH | CON | 1A | Z2 | ST | SB | B02 | B02-D02 | RES-1A | UG | REM |

Notes:
- DUKHCONP1AZ1HDEX5090: Expenses: P1A-External works within the Plot Curtilage 11624
- DUKHCONP1AZ1HDEX5095: Expenses: P1A-External works within the Plot Curtilage 10703
- DUKHCONP1AZ1HDEX5100: Expenses: P1A-External works within the Plot Curtilage 13765
- DUKHCONP1AZ1SLEX5105: Expenses: P1A-External works within the Plot Curtilage 36162
- DUKHCONP1AZ1SLEX5110: Expenses: P1A-External works within the Plot Curtilage 42588
- DUKHCONP1AZ1ACTC8000: Expenses: P1A-Air-conditioning and Ventilation works 3168
- DUKHCONP1AZ1ELTC8010: Expenses: P1A-Electrical Installations 40656
- DUKHCONP1AZ1PLTC8005: Expenses: P1A-Plumbing and Drainage works 9008
- DUKHCONP1AZ2STUG1000: Expenses: P1A-Excavation and Earth Works 68256
- DUKHCONP1AZ2STUG1005: Expenses: P1A-Excavation and Earth Works 8640
- DUKHCONP1AZ2STUG1010: Expenses: P1A-Concrete Works 14285
- DUKHCONP1AZ2STUG1015: Expenses: P1A-Concrete Works 52596
- DUKHCONP1AZ2STUG1020: Expenses: P1A-Concrete Works 225546
- DUKHCONP1AZ2STUG1025: Expenses: P1A-Concrete Works 35935
- DUKHCONP1AZ2STUG1030: Expenses: P1A-Concrete Works 22459
- DUKHCONP1AZ2STUG1035: Expenses: P1A-Excavation and Earth Works 22363
- DUKHCONP1AZ2STUG1040: Expenses: P1A-Concrete Works 326110
- DUKHCONP1AZ2STUG1045: Expenses: P1A-Concrete Works 239062

| ID | WBS | Activity | Duration | Start | Finish | Predecessors | Total float | Free float | Resources | Cost | CODE | rem | P3 ACTID | P6 ID (old) | NP61D | PROJECT | PHASES | PACKAGE | PART | ELEMENTS | STEP | FLOORS | BILL NOS | BILL DIVISION | RES PACK | EXECUTER |
| --- | --- | --- | --- | --- | --- | --- | --- | --- | --- | --- | --- | --- | --- | --- | --- | --- | --- | --- | --- | --- | --- | --- | --- | --- | --- | --- |
|  | 15 | **SUPERSTRUCTURE** |  | 2013-08-28 | 2014-01-21 |  |  |  |  |  |  |  |  |  |  |  |  |  |  |  |  |  |  |  |  |  |
|  | 10 | **GROUND FLOOR** |  | 2013-08-28 | 2013-10-24 |  |  |  |  |  |  |  |  |  |  |  |  |  |  |  |  |  |  |  |  |  |
| DUKHCONP1AZ2STGF2000 |  | Column-Rebar & Formwork | 25d | 2013-08-28 | 2013-09-25 | DUKHCONP1AZ1STGF2000, DUKHCONP1AZ2STUG1045 SS+14d, DUKHCONP1AZ2STUG1045 FF+7d | -24d | 0d | STEEL FIXERS SK [656 h]; CARPENTERS SK [1656 h]; LABOR- SUBCONTRACTOR [1734 h]; REINFORCEMENT BARS QTY [8198 kg]; FORMWORK QTY [828 Sqm] | 73,433 | 10 | REM | 1AP2SPGF10 | DUKHCON1AP2STGF2000 | DUKHCONP1AZ2STGF2000 | DH | CON | 1A | Z2 | ST | SP | GF | B02 | B02-D02 | RES-1A |  |
| DUKHCONP1AZ2STGF2005 |  | Column-Concrete | 24d | 2013-09-05 | 2013-10-02 | DUKHCONP1AZ2STGF2000 SS+7d, DUKHCONP1AZ2STGF2000 FF+2d | -22d | 0d | CONCRETE MASON SK [146 h]; LABOR- SUBCONTRACTOR [109.5 h]; CONCRETE QTY [73 Cum] | 20,945 | 15 | REM | 1AP2SPGF15 | DUKHCON1AP2STGF2005 | DUKHCONP1AZ2STGF2005 | DH | CON | 1A | Z2 | ST | SP | GF | B02 | B02-D02 | RES-1A |  |
| DUKHCONP1AZ2STGF2010 |  | Beam, Stairs ,Slab-Rebar & Formwork | 25d | 2013-09-21 | 2013-10-21 | DUKHCONP1AZ2STGF2005 FF+14d, DUKHCONP1AZ2STGF2005 SS+2d | -22d | 0d | STEEL FIXERS SK [4091 h]; CARPENTERS SK [5526 h]; LABOR- SUBCONTRACTOR [7212.75 h]; REINFORCEMENT BARS QTY [51136 kg]; FORMWORK QTY [2763 Sqm] | 326,549 | 20 | REM | 1AP2SPGF20 | DUKHCON1AP2STGF2010 | DUKHCONP1AZ2STGF2010 | DH | CON | 1A | Z2 | ST | SP | GF | B02 | B02-D02 | RES-1A |  |
| DUKHCONP1AZ2STGF2015 |  | Beam, Stairs ,Slab-Concrete | 14d | 2013-10-07 | 2013-10-24 | DUKHCONP1AZ1STGF2015, DUKHCONP1AZ2STGF2010 SS+10d, DUKHCONP1AZ2STGF2010 FF+3d | -22d | 0d | CONCRETE MASON SK [740 h]; LABOR- SUBCONTRACTOR [555 h]; CONCRETE QTY [370 Cum] | 131,494 | 25 | REM | 1AP2SPGF25 | DUKHCON1AP2STGF2015 | DUKHCONP1AZ2STGF2015 | DH | CON | 1A | Z2 | ST | SP | GF | B02 | B02-D02 | RES-1A |  |
|  | 15 | **FIRST FLOORS** |  | 2013-10-09 | 2013-12-07 |  |  |  |  |  |  |  |  |  |  |  |  |  |  |  |  |  |  |  |  |  |
| DUKHCONP1AZ2STFF2020 |  | Column-Rebar & Formwork | 25d | 2013-10-09 | 2013-11-09 | DUKHCONP1AZ2STGF2015 SS+2d, DUKHCONP1AZ1STFF2020, DUKHCONP1AZ2STGF2015 FF+5d | -22d | 0d | STEEL FIXERS SK [574 h]; CARPENTERS SK [1472 h]; LABOR- SUBCONTRACTOR [1534.5 h]; REINFORCEMENT BARS QTY [7175 kg]; FORMWORK QTY [736 Sqm] | 64,915 | 10 | REM | 1AP2SPFF10 | DUKHCON1AP2STFF2020 | DUKHCONP1AZ2STFF2020 | DH | CON | 1A | Z2 | ST | SP | FF | B02 | B02-D02 | RES-1A |  |
| DUKHCONP1AZ2STFF2025 |  | Column-Concrete | 24d | 2013-10-21 | 2013-11-17 | DUKHCONP1AZ2STFF2020 SS+8d, DUKHCONP1AZ2STFF2020 FF+2d | -20d | 0d | CONCRETE MASON SK [128 h]; LABOR- SUBCONTRACTOR [96 h]; CONCRETE QTY [64 Cum] | 18,331 | 15 | REM | 1AP2SPFF15 | DUKHCON1AP2STFF2025 | DUKHCONP1AZ2STFF2025 | DH | CON | 1A | Z2 | ST | SP | FF | B02 | B02-D02 | RES-1A |  |
| DUKHCONP1AZ2STFF2030 |  | Beam, Stairs ,Slab-Rebar & Formwork | 25d | 2013-11-05 | 2013-12-03 | DUKHCONP1AZ2STFF2025 FF+14d, DUKHCONP1AZ2STFF2025 SS+2d | -20d | 0d | STEEL FIXERS SK [3685 h]; CARPENTERS SK [5526 h]; LABOR- SUBCONTRACTOR [6908.25 h]; REINFORCEMENT BARS QTY [46062 kg]; FORMWORK QTY [2763 Sqm] | 310,154 | 20 | REM | 1AP2SPFF20 | DUKHCON1AP2STFF2030 | DUKHCONP1AZ2STFF2030 | DH | CON | 1A | Z2 | ST | SP | FF | B02 | B02-D02 | RES-1A |  |
| DUKHCONP1AZ2STFF2035 |  | Beam, Stairs ,Slab-Concrete | 14d | 2013-11-21 | 2013-12-07 | DUKHCONP1AZ2STFF2030 SS+10d, DUKHCONP1AZ1STFF2035, DUKHCONP1AZ2STFF2030 FF+3d | -20d | 0d | CONCRETE MASON SK [652 h]; LABOR- SUBCONTRACTOR [489 h]; CONCRETE QTY [326 Cum] | 119,102 | 25 | REM | 1AP2SPFF25 | DUKHCON1AP2STFF2035 | DUKHCONP1AZ2STFF2035 | DH | CON | 1A | Z2 | ST | SP | FF | B02 | B02-D02 | RES-1A |  |
|  | 20 | **ROOF** |  | 2013-11-24 | 2014-01-21 |  |  |  |  |  |  |  |  |  |  |  |  |  |  |  |  |  |  |  |  |  |
| DUKHCONP1AZ2STRF2040 |  | Column-Rebar & Formwork | 18d | 2013-11-24 | 2013-12-14 | DUKHCONP1AZ2STFF2035 SS+2d, DUKHCONP1AZ1STRF2040, DUKHCONP1AZ2STFF2035 FF+3d | -2d | 0d | STEEL FIXERS SK [137 h]; CARPENTERS SK [552 h]; LABOR- SUBCONTRACTOR [516.75 h]; REINFORCEMENT BARS QTY [1707 kg]; FORMWORK QTY [276 Sqm] | 21,168 | 10 | REM | 1AP2SPRF10 | DUKHCON1AP2STRF2040 | DUKHCONP1AZ2STRF2040 | DH | CON | 1A | Z2 | ST | SP | RF | B02 | B02-D02 | RES-1A |  |
| DUKHCONP1AZ2STRF2045 |  | Column-Concrete | 17d | 2013-11-27 | 2013-12-16 | DUKHCONP1AZ2STRF2040 SS+3d, DUKHCONP1AZ2STRF2040 FF+1d | 8d | 0d | CONCRETE MASON SK [30 h]; LABOR- SUBCONTRACTOR [22.5 h]; CONCRETE QTY [15 Cum] | 4,363 | 15 | REM | 1AP2SPRF15 | DUKHCON1AP2STRF2045 | DUKHCONP1AZ2STRF2045 | DH | CON | 1A | Z2 | ST | SP | RF | B02 | B02-D02 | RES-1A |  |
| DUKHCONP1AZ2STRF2050 |  | Slab-Rebar & Formwork - Head Room | 20d | 2013-11-30 | 2013-12-23 | DUKHCONP1AZ2STRF2045 SS+2d, DUKHCONP1AZ2STRF2045 FF+5d | 8d | 0d | STEEL FIXERS SK [869 h]; CARPENTERS SK [694 h]; LABOR- SUBCONTRACTOR [1172.25 h]; REINFORCEMENT BARS QTY [10859 kg]; FORMWORK QTY [347 Sqm] | 61,496 | 20 | REM | 1AP2SPRF20 | DUKHCON1AP2STRF2050 | DUKHCONP1AZ2STRF2050 | DH | CON | 1A | Z2 | ST | SP | RF | B02 | B02-D02 | RES-1A |  |
| DUKHCONP1AZ2STRF2055 |  | Slab-Concrete-Head room | 13d | 2013-12-10 | 2013-12-25 | DUKHCONP1AZ1STRF2055, DUKHCONP1AZ2STRF2050 FF+2d, DUKHCONP1AZ2STRF2050 SS+5d | 8d | 0d | CONCRETE MASON SK [144 h]; LABOR- SUBCONTRACTOR [108 h]; CONCRETE QTY [72 Cum] | 22,960 | 25 | REM | 1AP2SPRF25 | DUKHCON1AP2STRF2055 | DUKHCONP1AZ2STRF2055 | DH | CON | 1A | Z2 | ST | SP | RF | B02 | B02-D02 | RES-1A |  |
| DUKHCONP1AZ2STRF2060 |  | Construction of Parapets | 25d | 2013-12-12 | 2014-01-11 | DUKHCONP1AZ2STRF2055 FF+14d, DUKHCONP1AZ2STRF2055 SS+2d | 32d | 4d | BLOCK MASON SK [1408 h]; LABOR- SUBCONTRACTOR [792 h]; BLOCK QTY [704 Sqm] | 43,648 | 30 | REM | 1AP2SPRF30 | DUKHCON1AP2STRF2060 | DUKHCONP1AZ2STRF2060 | DH | CON | 1A | Z2 | ST | SP | RF | B02 | B02-D03 | RES-1A |  |
| DUKHCONP1AZ2STRF2065 |  | Construction of up stands/Plinth | 25d | 2013-12-24 | 2014-01-21 | DUKHCONP1AZ1STRF2065, DUKHCONP1AZ2STRF2060 FF+5d, DUKHCONP1AZ2STRF2060 SS+5d | 28d | 0d | CARPENTERS SK [256 h]; CONCRETE MASON SK [16 h]; LABOR- SUBCONTRACTOR [237.75 h]; REINFORCEMENT BARS QTY [559 kg]; FORMWORK QTY [128 Sqm]; CONCRETE QTY [8 Cum]; STEEL FIXERS SK [45 h] | 12,624 | 35 | REM | 1AP2SPRF35 | DUKHCON1AP2STRF2065 | DUKHCONP1AZ2STRF2065 | DH | CON | 1A | Z2 | ST | SP | RF | B02 | B02-D02 | RES-1A |  |
|  | 15 | **FINISHING WORKS** |  | 2013-11-09 | 2014-05-17 |  |  |  |  |  |  |  |  |  |  |  |  |  |  |  |  |  |  |  |  |  |
|  | 10 | **INTERNAL FINISHES** |  | 2013-11-09 | 2014-05-17 |  |  |  |  |  |  |  |  |  |  |  |  |  |  |  |  |  |  |  |  |  |
|  | 10 | **GROUND FLOOR** |  | 2013-11-09 | 2014-04-22 |  |  |  |  |  |  |  |  |  |  |  |  |  |  |  |  |  |  |  |  |  |
| DUKHCONP1AZ2ARGF3000 |  | Block work | 25d | 2013-11-09 | 2013-12-07 | DUKHCONP1AZ2STGF2015 FF+21d, DUKHCONP1AZ2STGF2015 SS+21d, DUKHCONP1AZ1ARGF3000 | -6d | 0d | BLOCK MASON SK [6232 h]; LABOR- SUBCONTRACTOR [3505.5 h]; BLOCK QTY [3116 Sqm] | 225,562 | 10 | REM | 1AP2IFGF10 | DUKHCON1AP2ARGF3000 | DUKHCONP1AZ2ARGF3000 | DH | CON | 1A | Z2 | FIN | IF | GF | B02 | B02-D03 | RES-1A |  |
| DUKHCONP1AZ2ARGF3005 |  | Plastering work | 25d | 2013-12-01 | 2013-12-30 | DUKHCONP1AZ1ARGF3005, DUKHCONP1AZ2ELGF4000 SS+5d, DUKHCONP1AZ2ARGF3000 FF+7d, DUKHCONP1AZ2ARGF3000 SS+7d, DUKHCONP1AZ2ELGF4000 FF+5d, DUKHCONP1AZ2PLGF4305 SS+5d, DUKHCONP1AZ2PLGF4305 FF+5d | -6d | 0d | PLASTER MASON SK [8728 h]; LABOR- SUBCONTRACTOR [4909.5 h]; PLASTER QTY [5455 Sqm] | 71,593 | 12 | REM | 1AP2IFGF12 | DUKHCON1AP2ARGF3005 | DUKHCONP1AZ2ARGF3005 | DH | CON | 1A | Z2 | FIN | IF | GF | B02 | B02-D10 | RES-1A |  |
| DUKHCONP1AZ2ARGF3010 |  | Flooring screed | 21d | 2013-12-09 | 2014-01-02 | DUKHCONP1AZ2ARGF3005 SS+7d, DUKHCONP1AZ2ARGF3005 FF+3d | 2d | 8d | SCREED MASON SK [1149 h]; LABOR- SUBCONTRACTOR [431.25 h]; FLOORING SCREED QTY [1436 Sqm] | 48,008 | 15 | REM | 1AP2IFGF15 | DUKHCON1AP2ARGF3010 | DUKHCONP1AZ2ARGF3010 | DH | CON | 1A | Z2 | FIN | IF | GF | B02 | B02-D10 | RES-1A |  |
| DUKHCONP1AZ2ARGF3015 |  | Wet area waterproofing & Protection Screed | 15d | 2013-12-19 | 2014-01-05 | DUKHCONP1AZ1ARGF3015, DUKHCONP1AZ2ARGF3005 SS+7d, DUKHCONP1AZ2ARGF3005 FF+5d | -6d | 0d | LABOR- SUBCONTRACTOR [67.5 h]; WETAREA WATERPROOFING QTY [224 Sqm]; WATERPROOFING SPECIALIST SK [180 h] | 7,616 | 18 | REM | 1AP2IFGF18 | DUKHCON1AP2ARGF3015 | DUKHCONP1AZ2ARGF3015 | DH | CON | 1A | Z2 | FIN | IF | GF | B02 | B02-D10 | RES-1A |  |
| DUKHCONP1AZ2ARGF3030 |  | Paint First coat | 25d | 2013-12-22 | 2014-01-19 | DUKHCONP1AZ2ARGF3005 SS+14d, DUKHCONP1AZ1ARGF3030, DUKHCONP1AZ2ARGF3005 FF+14d | 5d | 0d | LABOR- SUBCONTRACTOR [1479.75 h]; FIRSTCOAT PAINT QTY [4932 Sqm]; PAINTERS SK [3946 h] | 26,608 | 21 | REM | 1AP2IFGF21 | DUKHCON1AP2ARGF3030 | DUKHCONP1AZ2ARGF3030 | DH | CON | 1A | Z2 | FIN | IF | GF | B02 | B02-D11 | RES-1A | ENT |
| DUKHCONP1AZ2ARGF3020 |  | Ceramic Wall Tiling | 25d | 2013-12-25 | 2014-01-22 | DUKHCONP1AZ2PLGF4305 FF+4d, DUKHCONP1AZ2PLGF4310 SS+4d, DUKHCONP1AZ1ARGF3020, DUKHCONP1AZ2PLGF4305 SS+4d, DUKHCONP1AZ2ARGF3015 SS+5d, DUKHCONP1AZ2ARGF3015 FF+5d, DUKHCONP1AZ2PLGF4310 FF+4d | -6d | 0d | TILE MASON SK [2834 h]; LABOR- SUBCONTRACTOR [1594.5 h]; CERAMIC WALL TILE QTY [1417 Sqm] | 92,597 | 24 | REM | 1AP2IFGF24 | DUKHCON1AP2ARGF3020 | DUKHCONP1AZ2ARGF3020 | DH | CON | 1A | Z2 | FIN | IF | GF | B02 | B02-D10 | RES-1A |  |
| DUKHCONP1AZ2ARGF3025 |  | Porcelain Tile flooring | 25d | 2013-12-31 | 2014-01-28 | DUKHCONP1AZ1ARGF3025, DUKHCONP1AZ2ARGF3020 FF+5d, DUKHCONP1AZ2ARGF3010 FF+10d, DUKHCONP1AZ2ARGF3010 SS+10d, DUKHCONP1AZ2ARGF3020 SS+5d | -6d | 0d | TILE MASON SK [1116 h]; LABOR- SUBCONTRACTOR [627.75 h]; PORCELAIN FLOORING QTY [976 Sqm] | 74,919 | 27 | REM | 1AP2IFGF27 | DUKHCON1AP2ARGF3025 | DUKHCONP1AZ2ARGF3025 | DH | CON | 1A | Z2 | FIN | IF | GF | B02 | B02-D10 | RES-1A |  |
| DUKHCONP1AZ2ARGF3045 |  | Fixing of Suspension systems | 20d | 2014-01-18 | 2014-02-09 | DUKHCONP1AZ2ARGF3030 FF+7d, DUKHCONP1AZ1ARGF3045, DUKHCONP1AZ2ELGF4010 FF+5d, DUKHCONP1AZ2ARGF3025 FF+10d, DUKHCONP1AZ2ARGF3030 SS+7d, DUKHCONP1AZ2ARGF3025 SS+10d, DUKHCONP1AZ2ELGF4010 SS+5d | -6d | 0d | LABOR- SUBCONTRACTOR [523.82 h]; SUSPENSION QTY [1164.04 Sqm]; FALSE CEILING SKILLED SK [931.23 h] | 22,840 | 39 | REM | 1AP2IFGF39 | DUKHCON1AP2ARGF3045 | DUKHCONP1AZ2ARGF3045 | DH | CON | 1A | Z2 | FIN | IF | GF | B02 | B02-D10 | RES-1A | SUS |
| DUKHCONP1AZ2ARGF3035 |  | Slate Tile Flooring & Skirting | 15d | 2014-01-20 | 2014-02-05 | DUKHCONP1AZ2ARGF3010 FF+13d, DUKHCONP1AZ2ARGF3025 SS+13d, DUKHCONP1AZ2ARGF3025 FF+7d, DUKHCONP1AZ2ARGF3010 SS+13d | -1d | 2d | TILE MASON SK [487 h]; LABOR- SUBCONTRACTOR [274.5 h]; SLATE TILE QTY [304 Sqm] | 65,885 | 33 | REM | 1AP2IFGF33 | DUKHCON1AP2ARGF3035 | DUKHCONP1AZ2ARGF3035 | DH | CON | 1A | Z2 | FIN | IF | GF | B02 | B02-D10 | RES-1A |  |
| DUKHCONP1AZ2ARGF3055 |  | Aluminum tile false ceiling | 25d | 2014-01-26 | 2014-02-24 | DUKHCONP1AZ2ARGF3045 FF+7d, DUKHCONP1AZ2ARGF3045 SS+7d, DUKHCONP1AZ2ACGF4600 SS+7d, DUKHCONP1AZ2ACGF4600 FF+7d | -3d | 3d | LABOR- SUBCONTRACTOR [54 h]; FALSE CEILING QTY [120 Sqm]; FALSE CEILING SKILLED SK [96 h] | 7,661 | 42 | REM | 1AP2IFGF42 | DUKHCON1AP2ARGF3055 | DUKHCONP1AZ2ARGF3055 | DH | CON | 1A | Z2 | FIN | IF | GF | B02 | B02-D10 | RES-1A | ALU |
| DUKHCONP1AZ2ARGF3040 |  | Cobble Tile flooring | 15d | 2014-01-27 | 2014-02-13 | DUKHCONP1AZ2ARGF3010 SS+13d, DUKHCONP1AZ2ARGF3025 FF+13d, DUKHCONP1AZ2ARGF3010 FF+13d, DUKHCONP1AZ2ARGF3025 SS+13d, DUKHCONP1AZ2ARGF3035 FF+4d, DUKHCONP1AZ2ARGF3035 SS+4d | -3d | 0d | TILE MASON SK [474 h]; LABOR- SUBCONTRACTOR [267 h]; COBBLE STONE QTY [296 Sqm] | 24,687 | 30 | REM | 1AP2IFGF30 | DUKHCON1AP2ARGF3040 | DUKHCONP1AZ2ARGF3040 | DH | CON | 1A | Z2 | FIN | IF | GF | B02 | B02-D10 | RES-1A |  |
| DUKHCONP1AZ2ARGF3060 |  | Gypsum board false ceiling | 25d | 2014-01-29 | 2014-02-27 | DUKHCONP1AZ2ARGF3045 SS+10d, DUKHCONP1AZ1ARGF3060, DUKHCONP1AZ2ACGF4600 SS+7d, DUKHCONP1AZ2ACGF4600 FF+7d, DUKHCONP1AZ2ARGF3045 FF+10d | -6d | 0d | LABOR- SUBCONTRACTOR [480.75 h]; FALSE CEILING QTY [1068.04 Sqm]; FALSE CEILING SKILLED SK [854.4 h] | 60,827 | 45 | REM | 1AP2IFGF45 | DUKHCON1AP2ARGF3060 | DUKHCONP1AZ2ARGF3060 | DH | CON | 1A | Z2 | FIN | IF | GF | B02 | B02-D10 | RES-1A | GYP |
| DUKHCONP1AZ2ARGF3050 |  | Granite - Stair case flooring & Skirting | 20d | 2014-02-04 | 2014-02-27 | DUKHCONP1AZ2ARGF3025 SS+13d, DUKHCONP1AZ2ARGF3040 SS+7d, DUKHCONP1AZ2ARGF3025 FF+13d, DUKHCONP1AZ2ARGF3040 FF+7d | -3d | 0d | GRANITE MASON SK [560 h]; LABOR- SUBCONTRACTOR [315 h]; GRANITE QTY [140 Sqm] | 93,589 | 36 | REM | 1AP2IFGF36 | DUKHCON1AP2ARGF3050 | DUKHCONP1AZ2ARGF3050 | DH | CON | 1A | Z2 | FIN | IF | GF | B02 | B02-D10 | RES-1A |  |
| DUKHCONP1AZ2ARGF3065 |  | Wooden door & PVC Door | 15d | 2014-02-19 | 2014-03-08 | DUKHCONP1AZ1ARGF3065, DUKHCONP1AZ2ARGF3050 SS+7d, DUKHCONP1AZ2ARGF3035 SS+7d, DUKHCONP1AZ2ARGF3050 FF+7d, DUKHCONP1AZ2ARGF3035 FF+7d | -3d | 0d | LABOR- SUBCONTRACTOR [84 h]; WOODEN DOOR QTY [56 ea]; DOOR ERECTOR SK [224 h] | 233,577 | 48 | REM | 1AP2IFGF48 | DUKHCON1AP2ARGF3065 | DUKHCONP1AZ2ARGF3065 | DH | CON | 1A | Z2 | FIN | IF | GF | B02 | B02-D05 | RES-1A |  |
| DUKHCONP1AZ2ARGF3070 |  | Aluminum doors | 15d | 2014-02-25 | 2014-03-13 | DUKHCONP1AZ2ARGF3065 FF+5d, DUKHCONP1AZ1ARGF3070, DUKHCONP1AZ2ARGF3065 SS+5d | -3d | 0d | LABOR- SUBCONTRACTOR [48 h]; ALUMINIUM DOOR QTY [32 ea]; DOOR ERECTOR SK [128 h] | 83,208 | 51 | REM | 1AP2IFGF51 | DUKHCON1AP2ARGF3070 | DUKHCONP1AZ2ARGF3070 | DH | CON | 1A | Z2 | FIN | IF | GF | B02 | B02-D06 | RES-1A |  |
| DUKHCONP1AZ2ARGF3075 |  | Carpentry & Joinery Works | 20d | 2014-03-03 | 2014-03-25 | DUKHCONP1AZ2ARGF3070 FF+7d, DUKHCONP1AZ2ARGF3070 SS+5d, DUKHCONP1AZ1ARGF3075 | -3d | 0d | LABOR- SUBCONTRACTOR [156 h]; CABINET QTY [48 ea]; COUNTER QTY [8 ea]; JOINERY WORK SK [384 h]; COUNTER SK [32 h] | 114,072 | 57 | REM | 1AP2IFGF57 | DUKHCON1AP2ARGF3075 | DUKHCONP1AZ2ARGF3075 | DH | CON | 1A | Z2 | FIN | IF | GF | B02 | B02-D05 | RES-1A |  |
| DUKHCONP1AZ2ARGF3080 |  | Aluminum windows | 20d | 2014-03-04 | 2014-03-26 | DUKHCONP1AZ2ARGF3070 SS+6d, DUKHCONP1AZ2ARGF3070 FF+6d, DUKHCONP1AZ1ARGF3080 | 7d | 5d | LABOR- SUBCONTRACTOR [44.25 h]; ALUMINIUM WINDOWS QTY [44 ea]; WINDOW ERECTOR SK [118 h] | 36,283 | 54 | REM | 1AP2IFGF54 | DUKHCON1AP2ARGF3080 | DUKHCONP1AZ2ARGF3080 | DH | CON | 1A | Z2 | FIN | IF | GF | B02 | B02-D06 | RES-1A |  |
| DUKHCONP1AZ2ARGF3085 |  | S.S.Balustrade | 20d | 2014-03-11 | 2014-04-02 | DUKHCONP1AZ2ARGF3075 FF+7d, DUKHCONP1AZ2ARGF3075 SS+7d, DUKHCONP1AZ2ARGF3050 SS+7d, DUKHCONP1AZ2ARGF3050 FF+7d | 2d | 5d | HANDRAIL ERECTOR SKILLED [168 h]; LABOR- SUBCONTRACTOR [94.5 h]; S.S.BALUSTRADE QTY [84 lm] | 121,464 | 63 | REM | 1AP2IFGF63 | DUKHCON1AP2ARGF3085 | DUKHCONP1AZ2ARGF3085 | DH | CON | 1A | Z2 | FIN | IF | GF | B02 | B02-D06 | RES-1A |  |
| DUKHCONP1AZ2ARGF3090 |  | Installation of Granite Counter Top | 15d | 2014-03-16 | 2014-04-01 | DUKHCONP1AZ2ARGF3075 SS+7d, DUKHCONP1AZ2ARGF3075 FF+6d | -3d | 0d | GRANITE MASON SK [128 h]; LABOR- SUBCONTRACTOR [48 h]; GRANITE COUNTER TOP QTY [32 ea] | 34,847 | 60 | REM | 1AP2IFGF60 | DUKHCON1AP2ARGF3090 | DUKHCONP1AZ2ARGF3090 | DH | CON | 1A | Z2 | FIN | IF | GF | B02 | B02-D10 | RES-1A |  |
| DUKHCONP1AZ2ARGF3095 |  | Final Painting | 25d | 2014-03-25 | 2014-04-22 | DUKHCONP1AZ2ARGF3035 SS+13d, DUKHCONP1AZ2ARGF3080 SS+8d, DUKHCONP1AZ1ARGF3095, DUKHCONP1AZ2ARGF3060 SS+8d, DUKHCONP1AZ2ARGF3040 FF+13d, DUKHCONP1AZ2ARGF3070 SS+5d, DUKHCONP1AZ2ACGF4610 FF+10d, DUKHCONP1AZ2ARGF3090 SS+8d, DUKHCONP1AZ2ARGF3030 SS+10d, DUKHCONP1AZ2ARGF3040 SS+13d, DUKHCONP1AZ2ARGF3070 FF+5d, DUKHCONP1AZ2ARGF3090 FF+8d, DUKHCONP1AZ2ARGF3085 SS+7d, DUKHCONP1AZ2ARGF3030 FF+10d, DUKHCONP1AZ2ARGF3080 FF+8d, DUKHCONP1AZ2ACGF4610 SS+10d, DUKHCONP1AZ2ARGF3085 FF+7d, DUKHCONP1AZ2ARGF3035 FF+13d, DUKHCONP1AZ2ARGF3060 FF+8d | -3d | 0d | LABOR- SUBCONTRACTOR [1479.75 h]; PAINT QTY [4932 Sqm]; PAINTERS SK [3946 h] | 61,805 | 66 | REM | 1AP2IFGF66 | DUKHCON1AP2ARGF3095 | DUKHCONP1AZ2ARGF3095 | DH | CON | 1A | Z2 | FIN | IF | GF | B02 | B02-D11 | RES-1A | PNT |

Notes:
- DUKHCONP1AZ2STGF2000: Expenses: P1A-Concrete Works 73433
- DUKHCONP1AZ2STGF2005: Expenses: P1A-Concrete Works 20945
- DUKHCONP1AZ2STGF2010: Expenses: P1A-Concrete Works 326549
- DUKHCONP1AZ2STGF2015: Expenses: P1A-Concrete Works 131494
- DUKHCONP1AZ2STFF2020: Expenses: P1A-Concrete Works 64915
- DUKHCONP1AZ2STFF2025: Expenses: P1A-Concrete Works 18331
- DUKHCONP1AZ2STFF2030: Expenses: P1A-Concrete Works 310154
- DUKHCONP1AZ2STFF2035: Expenses: P1A-Concrete Works 119102
- DUKHCONP1AZ2STRF2040: Expenses: P1A-Concrete Works 21168
- DUKHCONP1AZ2STRF2045: Expenses: P1A-Concrete Works 4363
- DUKHCONP1AZ2STRF2050: Expenses: P1A-Concrete Works 61496
- DUKHCONP1AZ2STRF2055: Expenses: P1A-Concrete Works 22960
- DUKHCONP1AZ2STRF2060: Expenses: P1A-Block work 43648
- DUKHCONP1AZ2STRF2065: Expenses: P1A-Concrete Works 12624
- DUKHCONP1AZ2ARGF3000: Expenses: P1A-Block work 225562
- DUKHCONP1AZ2ARGF3005: Expenses: P1A-Finishes 71593
- DUKHCONP1AZ2ARGF3010: Expenses: P1A-Finishes 48008
- DUKHCONP1AZ2ARGF3015: Expenses: P1A-Finishes 7616
- DUKHCONP1AZ2ARGF3030: Expenses: P1A-Painting and Decorating 26608
- DUKHCONP1AZ2ARGF3020: Expenses: P1A-Finishes 92597
- DUKHCONP1AZ2ARGF3025: Expenses: P1A-Finishes 74919
- DUKHCONP1AZ2ARGF3045: Expenses: P1A-Finishes 22840
- DUKHCONP1AZ2ARGF3035: Expenses: P1A-Finishes 65885
- DUKHCONP1AZ2ARGF3055: Expenses: P1A-Finishes 7661
- DUKHCONP1AZ2ARGF3040: Expenses: P1A-Finishes 24687
- DUKHCONP1AZ2ARGF3060: Expenses: P1A-Finishes 60827
- DUKHCONP1AZ2ARGF3050: Expenses: P1A-Finishes 93589
- DUKHCONP1AZ2ARGF3065: Expenses: P1A-Carpentry and Joinery 233577
- DUKHCONP1AZ2ARGF3070: Expenses: P1A-Metal work 83208
- DUKHCONP1AZ2ARGF3075: Expenses: P1A-Carpentry and Joinery 114072
- DUKHCONP1AZ2ARGF3080: Expenses: P1A-Metal work 36283
- DUKHCONP1AZ2ARGF3085: Expenses: P1A-Metal work 121464
- DUKHCONP1AZ2ARGF3090: Expenses: P1A-Finishes 34847
- DUKHCONP1AZ2ARGF3095: Expenses: P1A-Painting and Decorating 61805

| ID | WBS | Activity | Duration | Start | Finish | Predecessors | Total float | Free float | Resources | Cost | CODE | rem | P3 ACTID | P6 ID (old) | NP61D | PROJECT | PHASES | PACKAGE | PART | ELEMENTS | STEP | FLOORS | BILL NOS | BILL DIVISION | RES PACK | EXECUTER |
| --- | --- | --- | --- | --- | --- | --- | --- | --- | --- | --- | --- | --- | --- | --- | --- | --- | --- | --- | --- | --- | --- | --- | --- | --- | --- | --- |
|  | 15 | **FIRST FLOORS** |  | 2013-12-22 | 2014-05-17 |  |  |  |  |  |  |  |  |  |  |  |  |  |  |  |  |  |  |  |  |  |
| DUKHCONP1AZ2ARFF3300 |  | Block work | 25d | 2013-12-22 | 2014-01-19 | DUKHCONP1AZ2STFF2020 SS+21d, DUKHCONP1AZ2STFF2035 FF+21d, DUKHCONP1AZ2STFF2035 SS+21d, DUKHCONP1AZ2STFF2020 FF+21d, DUKHCONP1AZ1ARFF3300 | -24d | 0d | BLOCK MASON SK [4088 h]; LABOR- SUBCONTRACTOR [2299.5 h]; BLOCK QTY [2044 Sqm] | 127,687 | 10 | REM | 1AP2IFFF10 | DUKHCON1AP2ARFF3300 | DUKHCONP1AZ2ARFF3300 | DH | CON | 1A | Z2 | FIN | IF | FF | B02 | B02-D03 | RES-1A |  |
| DUKHCONP1AZ2ARFF3305 |  | Plastering work | 25d | 2014-01-15 | 2014-02-13 | DUKHCONP1AZ2ARFF3300 SS+7d, DUKHCONP1AZ2ELFF4035 SS+5d, DUKHCONP1AZ2ELFF4035 FF+5d, DUKHCONP1AZ2PLFF4325 FF+6d, DUKHCONP1AZ2ARFF3300 FF+7d, DUKHCONP1AZ1ARFF3305, DUKHCONP1AZ2PLFF4325 SS+6d | -24d | 0d | PLASTER MASON SK [5695 h]; LABOR- SUBCONTRACTOR [3204 h]; PLASTER QTY [3559 Sqm] | 46,951 | 12 | REM | 1AP2IFFF12 | DUKHCON1AP2ARFF3305 | DUKHCONP1AZ2ARFF3305 | DH | CON | 1A | Z2 | FIN | IF | FF | B02 | B02-D10 | RES-1A |  |
| DUKHCONP1AZ2ARFF3310 |  | Flooring screed | 21d | 2014-01-23 | 2014-02-17 | DUKHCONP1AZ2ARFF3305 FF+3d, DUKHCONP1AZ2ARFF3305 SS+7d | -12d | 12d | SCREED MASON SK [884 h]; LABOR- SUBCONTRACTOR [331.5 h]; FLOORING SCREED QTY [1105 Sqm] | 36,472 | 15 | REM | 1AP2IFFF15 | DUKHCON1AP2ARFF3310 | DUKHCONP1AZ2ARFF3310 | DH | CON | 1A | Z2 | FIN | IF | FF | B02 | B02-D10 | RES-1A |  |
| DUKHCONP1AZ2ARFF3330 |  | Paint First coat | 25d | 2014-02-01 | 2014-03-02 | DUKHCONP1AZ2ARFF3305 SS+14d, DUKHCONP1AZ2ARFF3305 FF+14d | -10d | 14d | LABOR- SUBCONTRACTOR [1293.75 h]; FIRSTCOAT PAINT QTY [4311.37 Sqm]; PAINTERS SK [3449 h] | 26,608 | 21 | REM | 1AP2IFFF21 | DUKHCON1AP2ARFF3330 | DUKHCONP1AZ2ARFF3330 | DH | CON | 1A | Z2 | FIN | IF | FF | B02 | B02-D11 | RES-1A | ENT |
| DUKHCONP1AZ2ARFF3315 |  | Wet area waterproofing | 15d | 2014-02-04 | 2014-02-22 | DUKHCONP1AZ2ARFF3305 SS+7d, DUKHCONP1AZ2ARFF3305 FF+7d, DUKHCONP1AZ1ARFF3315 | -24d | 0d | LABOR- SUBCONTRACTOR [331.5 h]; WETAREA WATERPROOFING QTY [1104 Sqm]; WATERPROOFING SPECIALIST SK [884 h] | 36,704 | 18 | REM | 1AP2IFFF18 | DUKHCON1AP2ARFF3315 | DUKHCONP1AZ2ARFF3315 | DH | CON | 1A | Z2 | FIN | IF | FF | B02 | B02-D10 | RES-1A |  |
| DUKHCONP1AZ2ARFF3320 |  | Ceramic Wall Tiling | 25d | 2014-02-12 | 2014-03-12 | DUKHCONP1AZ2ARFF3315 FF+6d, DUKHCONP1AZ1ARFF3320, DUKHCONP1AZ2ARFF3315 SS+6d, DUKHCONP1AZ2PLFF4330 SS+7d, DUKHCONP1AZ2PLFF4325 SS+4d, DUKHCONP1AZ2PLFF4325 FF+4d, DUKHCONP1AZ2PLFF4330 FF+7d | -24d | 0d | TILE MASON SK [1214 h]; LABOR- SUBCONTRACTOR [683.25 h]; CERAMIC WALL TILE QTY [607 Sqm] | 42,941 | 24 | REM | 1AP2IFFF24 | DUKHCON1AP2ARFF3320 | DUKHCONP1AZ2ARFF3320 | DH | CON | 1A | Z2 | FIN | IF | FF | B02 | B02-D10 | RES-1A |  |
| DUKHCONP1AZ2ARFF3325 |  | Porcelain Tile flooring | 25d | 2014-02-19 | 2014-03-19 | DUKHCONP1AZ2ARFF3320 FF+6d, DUKHCONP1AZ2ARFF3320 SS+6d, DUKHCONP1AZ2ARFF3310 FF+10d, DUKHCONP1AZ2ARFF3310 SS+10d, DUKHCONP1AZ1ARFF3325 | -24d | 0d | TILE MASON SK [1116 h]; LABOR- SUBCONTRACTOR [627.75 h]; PORCELAIN FLOORING QTY [976 Sqm] | 74,923 | 27 | REM | 1AP2IFFF27 | DUKHCON1AP2ARFF3325 | DUKHCONP1AZ2ARFF3325 | DH | CON | 1A | Z2 | FIN | IF | FF | B02 | B02-D10 | RES-1A |  |
| DUKHCONP1AZ2ARFF3345 |  | Fixing of Suspension systems | 20d | 2014-03-04 | 2014-03-26 | DUKHCONP1AZ2ARFF3330 FF+7d, DUKHCONP1AZ2ARFF3330 SS+7d, DUKHCONP1AZ2ARFF3325 SS+6d, DUKHCONP1AZ2ARFF3325 FF+6d, DUKHCONP1AZ2ELFF4045 SS+5d, DUKHCONP1AZ2ELFF4045 FF+5d, DUKHCONP1AZ1ARFF3345 | -24d | 0d | LABOR- SUBCONTRACTOR [469.8 h]; SUSPENSION QTY [1044 Sqm]; FALSE CEILING SKILLED SK [835.2 h] | 19,648 | 36 | REM | 1AP2IFFF36 | DUKHCON1AP2ARFF3345 | DUKHCONP1AZ2ARFF3345 | DH | CON | 1A | Z2 | FIN | IF | FF | B02 | B02-D10 | RES-1A | SUS |
| DUKHCONP1AZ2ARFF3335 |  | Slate Tile Flooring & Skirting | 15d | 2014-03-09 | 2014-03-25 | DUKHCONP1AZ2ARFF3310 FF+13d, DUKHCONP1AZ2ARFF3310 SS+13d, DUKHCONP1AZ2ARFF3325 SS+13d, DUKHCONP1AZ2ARFF3325 FF+5d | -16d | 8d | TILE MASON SK [167 h]; LABOR- SUBCONTRACTOR [94.5 h]; SLATE TILE QTY [104 Sqm] | 20,405 | 30 | REM | 1AP2IFFF30 | DUKHCON1AP2ARFF3335 | DUKHCONP1AZ2ARFF3335 | DH | CON | 1A | Z2 | FIN | IF | FF | B02 | B02-D10 | RES-1A |  |
| DUKHCONP1AZ2ARFF3360 |  | Gypsum board false ceiling | 25d | 2014-03-11 | 2014-04-08 | DUKHCONP1AZ2ACFF4615 SS+7d, DUKHCONP1AZ2ARFF3345 FF+6d, DUKHCONP1AZ2ACFF4615 FF+7d, DUKHCONP1AZ2ARFF3345 SS+6d, DUKHCONP1AZ1ARFF3360 | -24d | 0d | LABOR- SUBCONTRACTOR [469.8 h]; FALSE CEILING QTY [1044 Sqm]; FALSE CEILING SKILLED SK [835.2 h] | 60,821 | 39 | REM | 1AP2IFFF39 | DUKHCON1AP2ARFF3360 | DUKHCONP1AZ2ARFF3360 | DH | CON | 1A | Z2 | FIN | IF | FF | B02 | B02-D10 | RES-1A | GYP |
| DUKHCONP1AZ2ARFF3350 |  | Granite - Stair case flooring & Skirting | 20d | 2014-03-12 | 2014-04-03 | DUKHCONP1AZ2ARFF3325 SS+13d, DUKHCONP1AZ2ARFF3325 FF+13d | -22d | 2d | GRANITE MASON SK [560 h]; LABOR- SUBCONTRACTOR [315 h]; GRANITE QTY [140 Sqm] | 93,598 | 33 | REM | 1AP2IFFF33 | DUKHCON1AP2ARFF3350 | DUKHCONP1AZ2ARFF3350 | DH | CON | 1A | Z2 | FIN | IF | FF | B02 | B02-D10 | RES-1A |  |
| DUKHCONP1AZ2ARFF3365 |  | Wooden door | 15d | 2014-03-26 | 2014-04-12 | DUKHCONP1AZ2ARFF3350 FF+5d, DUKHCONP1AZ2ARFF3360 SS+3d, DUKHCONP1AZ2ARFF3335 SS+7d, DUKHCONP1AZ2ARFF3335 FF+7d, DUKHCONP1AZ1ARFF3365, DUKHCONP1AZ2ARFF3360 FF+3d, DUKHCONP1AZ2ARFF3350 SS+5d | -24d | 0d | LABOR- SUBCONTRACTOR [84 h]; WOODEN DOOR QTY [56 ea]; DOOR ERECTOR SK [224 h] | 152,394 | 42 | REM | 1AP2IFFF42 | DUKHCON1AP2ARFF3365 | DUKHCONP1AZ2ARFF3365 | DH | CON | 1A | Z2 | FIN | IF | FF | B02 | B02-D05 | RES-1A |  |
| DUKHCONP1AZ2ARFF3370 |  | Aluminum Door | 20d | 2014-03-26 | 2014-04-17 | DUKHCONP1AZ1ARFF3370, DUKHCONP1AZ2ARFF3365 FF, DUKHCONP1AZ2ARFF3365 SS | -24d | 0d | LABOR- SUBCONTRACTOR [60 h]; ALUMINIUM DOOR QTY [40 ea]; DOOR ERECTOR SK [160 h] | 122,026 | 45 | REM | 1AP2IFFF45 | DUKHCON1AP2ARFF3370 | DUKHCONP1AZ2ARFF3370 | DH | CON | 1A | Z2 | FIN | IF | FF | B02 | B02-D06 | RES-1A |  |
| DUKHCONP1AZ2ARFF3375 |  | Carpentry & Joinery Works | 25d | 2014-04-01 | 2014-04-29 | DUKHCONP1AZ2ARFF3370 FF+5d, DUKHCONP1AZ1ARFF3375, DUKHCONP1AZ2ARFF3370 SS+5d | -24d | 0d | LABOR- SUBCONTRACTOR [300 h]; CABINET QTY [24 ea]; COUNTER QTY [24 ea]; WARDROBE QTY [40 ea]; SHELVES QTY [24 ea]; JOINERY WORK SK [704 h]; COUNTER SK [96 h] | 231,933 | 51 | REM | 1AP2IFFF51 | DUKHCON1AP2ARFF3375 | DUKHCONP1AZ2ARFF3375 | DH | CON | 1A | Z2 | FIN | IF | FF | B02 | B02-D05 | RES-1A |  |
| DUKHCONP1AZ2ARFF3380 |  | Aluminum windows | 20d | 2014-04-02 | 2014-04-24 | DUKHCONP1AZ2ARFF3370 SS+6d, DUKHCONP1AZ2ARFF3370 FF+6d | -20d | 4d | LABOR- SUBCONTRACTOR [44.25 h]; ALUMINIUM WINDOWS QTY [44 ea]; WINDOW ERECTOR SK [118 h] | 55,776 | 48 | REM | 1AP2IFFF48 | DUKHCON1AP2ARFF3380 | DUKHCONP1AZ2ARFF3380 | DH | CON | 1A | Z2 | FIN | IF | FF | B02 | B02-D06 | RES-1A |  |
| DUKHCONP1AZ2ARFF3385 |  | Handrail & Balustrade | 20d | 2014-04-13 | 2014-05-05 | DUKHCONP1AZ2ARFF3350 SS+7d, DUKHCONP1AZ2ARFF3375 FF+5d, DUKHCONP1AZ2ARFF3375 SS+5d, DUKHCONP1AZ2ARFF3350 FF+7d | -24d | 0d | LABOR- SUBCONTRACTOR [283.5 h]; S.S.BALUSTRADE QTY [252 lm]; HANDRAIL ERECTOR SKILLED [504 h] | 308,447 | 57 | REM | 1AP2IFFF57 | DUKHCON1AP2ARFF3385 | DUKHCONP1AZ2ARFF3385 | DH | CON | 1A | Z2 | FIN | IF | FF | B02 | B02-D06 | RES-1A |  |
| DUKHCONP1AZ2ARFF3390 |  | Installation of Granite Counter Top | 20d | 2014-04-13 | 2014-05-05 | DUKHCONP1AZ2ARFF3375 FF+5d, DUKHCONP1AZ2ARFF3375 SS+6d | -23d | 1d | GRANITE MASON SK [64 h]; LABOR- SUBCONTRACTOR [24 h]; GRANITE COUNTER TOP QTY [16 ea] | 7,594 | 54 | REM | 1AP2IFFF54 | DUKHCON1AP2ARFF3390 | DUKHCONP1AZ2ARFF3390 | DH | CON | 1A | Z2 | FIN | IF | FF | B02 | B02-D10 | RES-1A |  |
| DUKHCONP1AZ2ARFF3395 |  | Final Painting | 25d | 2014-04-19 | 2014-05-17 | DUKHCONP1AZ2ARFF3375 SS+8d, DUKHCONP1AZ2ACFF4625 SS+6d, DUKHCONP1AZ2ARFF3365 SS+8d, DUKHCONP1AZ1ARFF3395, DUKHCONP1AZ2ARFF3330 FF+10d, DUKHCONP1AZ2ARFF3335 SS+8d, DUKHCONP1AZ2ARFF3350 FF+8d, DUKHCONP1AZ2ARFF3375 FF+8d, DUKHCONP1AZ2ARFF3390 FF+6d, DUKHCONP1AZ2ARFF3390 SS+4d, DUKHCONP1AZ2ARFF3385 FF+6d, DUKHCONP1AZ2ARFF3385 SS+5d, DUKHCONP1AZ2ARFF3365 FF+8d, DUKHCONP1AZ2ARFF3335 FF+8d, DUKHCONP1AZ2ARFF3380 SS+10d, DUKHCONP1AZ2ARFF3330 SS+10d, DUKHCONP1AZ2ARFF3360 SS+10d, DUKHCONP1AZ2ACFF4625 FF+6d, DUKHCONP1AZ2ARFF3380 FF+10d, DUKHCONP1AZ2ARFF3350 SS+8d, DUKHCONP1AZ2ARFF3360 FF+10d | -24d | 0d | PAINTERS SK [3449 h]; LABOR- SUBCONTRACTOR [1293.75 h]; PAINT QTY [4311.37 Sqm] | 50,803 | 60 | REM | 1AP2IFFF60 | DUKHCON1AP2ARFF3395 | DUKHCONP1AZ2ARFF3395 | DH | CON | 1A | Z2 | FIN | IF | FF | B02 | B02-D11 | RES-1A | PNT |
|  | 20 | **ROOF** |  | 2014-01-05 | 2014-03-11 |  |  |  |  |  |  |  |  |  |  |  |  |  |  |  |  |  |  |  |  |  |
| DUKHCONP1AZ2ARRF3600 |  | Block work | 20d | 2014-01-05 | 2014-01-27 | DUKHCONP1AZ2STRF2055 FF+21d, DUKHCONP1AZ2STRF2055 SS+21d, DUKHCONP1AZ1ARRF3600 | 28d | 0d | BLOCK MASON SK [448 h]; LABOR- SUBCONTRACTOR [252 h]; BLOCK QTY [224 Sqm] | 17,789 | 10 | REM | 1AP2IFRF10 | DUKHCON1AP2ARRF3600 | DUKHCONP1AZ2ARRF3600 | DH | CON | 1A | Z2 | FIN | IF | RF | B02 | B02-D03 | RES-1A |  |
| DUKHCONP1AZ2ARRF3605 |  | Plastering work | 20d | 2014-01-13 | 2014-02-04 | DUKHCONP1AZ2ARRF3600 FF+7d, DUKHCONP1AZ2ARRF3600 SS+7d | 28d | 0d | PLASTER MASON SK [1143 h]; LABOR- SUBCONTRACTOR [643.5 h]; PLASTER QTY [714 Sqm] | 9,277 | 20 | REM | 1AP2IFRF20 | DUKHCON1AP2ARRF3605 | DUKHCONP1AZ2ARRF3605 | DH | CON | 1A | Z2 | FIN | IF | RF | B02 | B02-D10 | RES-1A |  |
| DUKHCONP1AZ2ARRF3610 |  | Flooring screed | 15d | 2014-01-27 | 2014-02-13 | DUKHCONP1AZ2ARRF3605 SS+7d, DUKHCONP1AZ2ARRF3605 FF+7d | 33d | 0d | SCREED MASON SK [99 h]; LABOR- SUBCONTRACTOR [37.5 h]; FLOORING SCREED QTY [123 Sqm] | 4,056 | 30 | REM | 1AP2IFRF30 | DUKHCON1AP2ARRF3610 | DUKHCONP1AZ2ARRF3610 | DH | CON | 1A | Z2 | FIN | IF | RF | B02 | B02-D10 | RES-1A |  |
| DUKHCONP1AZ2ARRF3695 |  | Painting -Storage area | 20d | 2014-02-04 | 2014-02-27 | DUKHCONP1AZ2ARRF3610 SS+7d, DUKHCONP1AZ2ARRF3610 FF+7d | 33d | 0d | LABOR- SUBCONTRACTOR [456 h]; PAINT QTY [1472 Sqm]; PAINTERS SK [1184 h] | 7,956 | 40 |  | 1AP2IFRF40 | DUKHCON1AP2ARRF3695 | DUKHCONP1AZ2ARRF3695 | DH | CON | 1A | Z2 | FIN | IF | RF | B02 | B02-D11 | RES-1A |  |
| DUKHCONP1AZ2ARRF3620 |  | Epoxy Painting -Storage area | 15d | 2014-02-23 | 2014-03-11 | DUKHCONP1AZ2ARRF3695 SS+10d, DUKHCONP1AZ2ARRF3695 FF+10d | 33d | 57d | LABOR- SUBCONTRACTOR [13.5 h]; EPOXY QTY [64 Sqm]; EPOXY SK [35 h] | 3,216 | 50 | REM | 1AP2IFRF50 | DUKHCON1AP2ARRF3620 | DUKHCONP1AZ2ARRF3620 | DH | CON | 1A | Z2 | FIN | IF | RF | B02 | B02-D11 | RES-1A |  |

Notes:
- DUKHCONP1AZ2ARFF3300: Expenses: P1A-Block work 127687
- DUKHCONP1AZ2ARFF3305: Expenses: P1A-Finishes 46951
- DUKHCONP1AZ2ARFF3310: Expenses: P1A-Finishes 36472
- DUKHCONP1AZ2ARFF3330: Expenses: P1A-Painting and Decorating 26608
- DUKHCONP1AZ2ARFF3315: Expenses: P1A-Finishes 36704
- DUKHCONP1AZ2ARFF3320: Expenses: P1A-Finishes 42941
- DUKHCONP1AZ2ARFF3325: Expenses: P1A-Finishes 74923
- DUKHCONP1AZ2ARFF3345: Expenses: P1A-Finishes 19648
- DUKHCONP1AZ2ARFF3335: Expenses: P1A-Finishes 20405
- DUKHCONP1AZ2ARFF3360: Expenses: P1A-Finishes 60821
- DUKHCONP1AZ2ARFF3350: Expenses: P1A-Finishes 93598
- DUKHCONP1AZ2ARFF3365: Expenses: P1A-Carpentry and Joinery 152394
- DUKHCONP1AZ2ARFF3370: Expenses: P1A-Metal work 122026
- DUKHCONP1AZ2ARFF3375: Expenses: P1A-Carpentry and Joinery 231933
- DUKHCONP1AZ2ARFF3380: Expenses: P1A-Metal work 55776
- DUKHCONP1AZ2ARFF3385: Expenses: P1A-Metal work 308447
- DUKHCONP1AZ2ARFF3390: Expenses: P1A-Finishes 7594
- DUKHCONP1AZ2ARFF3395: Expenses: P1A-Painting and Decorating 50803
- DUKHCONP1AZ2ARRF3600: Expenses: P1A-Block work 17789
- DUKHCONP1AZ2ARRF3605: Expenses: P1A-Finishes 9277
- DUKHCONP1AZ2ARRF3610: Expenses: P1A-Finishes 4056
- DUKHCONP1AZ2ARRF3695: Expenses: P1A-Painting and Decorating 7956
- DUKHCONP1AZ2ARRF3620: Expenses: P1A-Painting and Decorating 3216

| ID | WBS | Activity | Duration | Start | Finish | Predecessors | Total float | Free float | Resources | Cost | CODE | rem | P3 ACTID | P6 ID (old) | NP61D | PROJECT | PHASES | PACKAGE | PART | ELEMENTS | STEP | FLOORS | BILL NOS | BILL DIVISION | RES PACK |
| --- | --- | --- | --- | --- | --- | --- | --- | --- | --- | --- | --- | --- | --- | --- | --- | --- | --- | --- | --- | --- | --- | --- | --- | --- | --- |
|  | 15 | **EXTERNAL FINISHES** |  | 2014-01-27 | 2014-04-16 |  |  |  |  |  |  |  |  |  |  |  |  |  |  |  |  |  |  |  |  |
|  | 10 | **ROOF** |  | 2014-02-10 | 2014-04-16 |  |  |  |  |  |  |  |  |  |  |  |  |  |  |  |  |  |  |  |  |
| DUKHCONP1AZ2ARRF3630 |  | Leveling Screed for Waterproofing | 25d | 2014-02-10 | 2014-03-11 | DUKHCONP1AZ2STRF2060 FF+10d, DUKHCONP1AZ2STRF2065 FF+10d, DUKHCONP1AZ2STRF2065 SS+10d, DUKHCONP1AZ1ARRF3630, DUKHCONP1AZ2STRF2060 SS+10d | -3d | 0d | SCREED MASON SK [512 h]; LABOR- SUBCONTRACTOR [288 h]; ROOF WP SCREED QTY [1280 Sqm] | 56,792 | 10 | REM | 1AP2EFRF10 | DUKHCON1AP2ARRF3630 | DUKHCONP1AZ2ARRF3630 | DH | CON | 1A | Z2 | FIN | EF | RF | B02 | B02-D04 | RES-1A |
| DUKHCONP1AZ2ARRF3635 |  | Laying of Waterproofing Membrane | 25d | 2014-02-15 | 2014-03-15 | DUKHCONP1AZ2ARRF3630 SS+3d, DUKHCONP1AZ2ARRF3630 FF+3d | -3d | 0d | LABOR- SUBCONTRACTOR [310.5 h]; ROOF WP MEMBRANE QTY [1552 Sqm]; WATERPROOFING SPECIALIST SK [828 h] | 43,994 | 15 | REM | 1AP2EFRF15 | DUKHCON1AP2ARRF3635 | DUKHCONP1AZ2ARRF3635 | DH | CON | 1A | Z2 | FIN | EF | RF | B02 | B02-D04 | RES-1A |
| DUKHCONP1AZ2ARRF3640 |  | Installation of Insulation & Protection | 25d | 2014-02-19 | 2014-03-19 | DUKHCONP1AZ2ARRF3635 SS+4d, DUKHCONP1AZ2ARRF3635 FF+4d | -3d | 0d | LABOR- SUBCONTRACTOR [384 h]; ROOF WP INSULATION QTY [2560 Sqm]; WATERPROOFING SPECIALIST SK [1024 h] | 55,936 | 20 | REM | 1AP2EFRF20 | DUKHCON1AP2ARRF3640 | DUKHCONP1AZ2ARRF3640 | DH | CON | 1A | Z2 | FIN | EF | RF | B02 | B02-D04 | RES-1A |
| DUKHCONP1AZ2ARRF3645 |  | Lime Stone Chips & Paving slab Installation | 25d | 2014-02-24 | 2014-03-24 | DUKHCONP1AZ2ARRF3640 SS+4d, DUKHCONP1AZ2ARRF3640 FF+4d | -3d | 0d | TILE MASON SK [45 h]; LABOR- SUBCONTRACTOR [188.25 h]; LIME STONE QTY [112 Sqm]; PRECAST PAVING SLAB QTY [1136 Sqm]; PRE CAST CONCRETE SK [455 h] | 83,344 | 25 | REM | 1AP2EFRF25 | DUKHCON1AP2ARRF3645 | DUKHCONP1AZ2ARRF3645 | DH | CON | 1A | Z2 | FIN | EF | RF | B02 | B02-D04 | RES-1A |
| DUKHCONP1AZ2ARRF3650 |  | Install. of Gal. Frame & Aluminum Slat Screen | 25d | 2014-03-04 | 2014-04-01 | DUKHCONP1AZ2ARRF3645 FF+7d, DUKHCONP1AZ2ARRF3645 SS+7d | -3d | 0d | LABOR- SUBCONTRACTOR [448.5 h]; ALUMINIUM SCREEN QTY [224 Sqm]; DOOR ERECTOR SK [598 h] | 63,347 | 35 | REM | 1AP2EFRF35 | DUKHCON1AP2ARRF3650 | DUKHCONP1AZ2ARRF3650 | DH | CON | 1A | Z2 | FIN | EF | RF | B02 | B02-D06 | RES-1A |
| DUKHCONP1AZ2ARRF3655 |  | Installation of Pumps Protection cabinets | 20d | 2014-03-19 | 2014-04-10 | DUKHCONP1AZ2ARRF3650 SS+8d, DUKHCONP1AZ2ARRF3645 SS+7d, DUKHCONP1AZ1ARRF3655, DUKHCONP1AZ2ARRF3645 FF+7d, DUKHCONP1AZ2ARRF3650 FF+8d | -3d | 0d | LABOR- SUBCONTRACTOR [168 h]; CABINET QTY [56 ea]; JOINERY WORK SK [448 h] | 26,600 | 30 | REM | 1AP2EFRF30 | DUKHCON1AP2ARRF3655 | DUKHCONP1AZ2ARRF3655 | DH | CON | 1A | Z2 | FIN | EF | RF | B02 | B02-D04 | RES-1A |
| DUKHCONP1AZ2ARRF3660 |  | Installation of Access Ladder | 15d | 2014-03-31 | 2014-04-16 | DUKHCONP1AZ2ARRF3655 SS+5d, DUKHCONP1AZ2ARRF3655 FF+5d | 2d | 26d | LABOR- SUBCONTRACTOR [48 h]; LADDER QTY [16 ea]; LADDER ERECTOR SK [128 h] | 53,206 | 40 | REM | 1AP2EFRF40 | DUKHCON1AP2ARRF3660 | DUKHCONP1AZ2ARRF3660 | DH | CON | 1A | Z2 | FIN | EF | RF | B02 | B02-D06 | RES-1A |
|  | 15 | **ELEVATION** |  | 2014-01-27 | 2014-03-20 |  |  |  |  |  |  |  |  |  |  |  |  |  |  |  |  |  |  |  |  |
| DUKHCONP1AZ2AREL3665 |  | External Plastering | 25d | 2014-01-27 | 2014-02-25 | DUKHCONP1AZ2STRF2065 SS+7d, DUKHCONP1AZ2STRF2065 FF+7d, DUKHCONP1AZ1AREL3665, DUKHCONP1AZ2ARFF3305 SS+7d, DUKHCONP1AZ2ARRF3605 SS+7d, DUKHCONP1AZ2ARFF3305 FF+7d | 23d | 0d | PLASTER MASON SK [9136 h]; LABOR- SUBCONTRACTOR [5139 h]; EXTERNAL PLASTER QTY [4568 Sqm] | 108,894 | 10 | REM | 1AP2EFEL10 | DUKHCON1AP2AREL3665 | DUKHCONP1AZ2AREL3665 | DH | CON | 1A | Z2 | FIN | EF | EL | B02 | B02-D10 | RES-1A |
| DUKHCONP1AZ2AREL3670 |  | External stone cladding works | 20d | 2014-02-15 | 2014-03-09 | DUKHCONP1AZ2AREL3665 FF+10d, DUKHCONP1AZ1AREL3670, DUKHCONP1AZ2AREL3665 SS+10d | 25d | 0d | TILE MASON SK [720 h]; LABOR- SUBCONTRACTOR [270 h]; STONE CLADDING QTY [360 Sqm] | 71,820 | 15 | REM | 1AP2EFEL15 | DUKHCON1AP2AREL3670 | DUKHCONP1AZ2AREL3670 | DH | CON | 1A | Z2 | FIN | EF | EL | B02 | B02-D10 | RES-1A |
| DUKHCONP1AZ2AREL3680 |  | External Painting | 20d | 2014-02-26 | 2014-03-20 | DUKHCONP1AZ2ARRF3695 SS+4d, DUKHCONP1AZ2AREL3670 SS+10d, DUKHCONP1AZ2ARRF3695 FF+4d, DUKHCONP1AZ2AREL3670 FF+10d, DUKHCONP1AZ1AREL3680 | 25d | 5d | LABOR- SUBCONTRACTOR [1032 h]; PAINT QTY [3424 Sqm]; PAINTERS SK [2752 h] | 86,006 | 20 |  | 1AP2EFEL20 | DUKHCON1AP2AREL3680 | DUKHCONP1AZ2AREL3680 | DH | CON | 1A | Z2 | FIN | EF | EL | B02 | B02-D11 | RES-1A |
|  | 20 | **MEP WORKS** |  | 2013-07-30 | 2014-05-15 |  |  |  |  |  |  |  |  |  |  |  |  |  |  |  |  |  |  |  |  |
|  | 10 | **ELECTRICAL WORKS** |  | 2013-11-14 | 2014-05-15 |  |  |  |  |  |  |  |  |  |  |  |  |  |  |  |  |  |  |  |  |
|  | 10 | **GROUND FLOOR** |  | 2013-11-14 | 2014-03-25 |  |  |  |  |  |  |  |  |  |  |  |  |  |  |  |  |  |  |  |  |
| DUKHCONP1AZ2ELGF4000 |  | Fixing of wall conduits & switch socket boxes | 25d | 2013-11-14 | 2013-12-12 | DUKHCONP1AZ2ARGF3000 SS+5d, DUKHCONP1AZ2ARGF3000 FF+5d | 3d | 0d | LABOR- SUBCONTRACTOR [192 h]; ELECTRICIANS SK [1030.4 h]; SOCKET BOXES QTY [724 ea]; CODUITS QTY [184 lm] | 33,077 | 10 |  | 1AP2EWGF10 | DUKHCON1AP2ELGF4000 | DUKHCONP1AZ2ELGF4000 | DH | CON | 1A | Z2 | MEP | EW | GF | B02 | B02-D09 | RES-1A |
| DUKHCONP1AZ2ELGF4005 |  | Cable tray & trunking installation | 20d | 2013-11-26 | 2013-12-19 | DUKHCONP1AZ2ELGF4000 FF+5d, DUKHCONP1AZ1ELGF4005, DUKHCONP1AZ2ELGF4000 SS+5d | 21d | 0d | LABOR- SUBCONTRACTOR [288 h]; ELECTRICIANS SK [1030.4 h]; CABLE TRAY QTY [184 lm] | 7,536 | 15 |  | 1AP2EWGF15 | DUKHCON1AP2ELGF4005 | DUKHCONP1AZ2ELGF4005 | DH | CON | 1A | Z2 | MEP | EW | GF | B02 | B02-D09 | RES-1A |
| DUKHCONP1AZ2ELGF4010 |  | Installation of wiring & Main Cabling | 25d | 2013-12-04 | 2014-01-02 | DUKHCONP1AZ2ELGF4005 FF+7d, DUKHCONP1AZ2ELGF4005 SS+7d | 21d | 27d | LABOR- SUBCONTRACTOR [72 h]; ELECTRICIANS SK [224 h]; CABLE QTY [184 lm] | 112,018 | 20 |  | 1AP2EWGF20 | DUKHCON1AP2ELGF4010 | DUKHCONP1AZ2ELGF4010 | DH | CON | 1A | Z2 | MEP | EW | GF | B02 | B02-D09 | RES-1A |
| DUKHCONP1AZ2ELGF4015 |  | Install. of CAMS & Fire Fighting Accessories | 25d | 2014-02-06 | 2014-03-08 | DUKHCONP1AZ2ARGF3060 FF+7d, DUKHCONP1AZ1ELGF4015, DUKHCONP1AZ2ARGF3055 SS+7d, DUKHCONP1AZ2ARGF3060 SS+7d, DUKHCONP1AZ2ARGF3055 FF+7d | 6d | 0d | LABOR- SUBCONTRACTOR [384 h]; MECHANICALS SK [691.2 h]; SMOKE DETECTOR POINTS QTY [92 ea]; FIRE EXTINGUISHER QTY [28 ea] | 71,164 | 35 |  | 1AP2EWGF35 | DUKHCON1AP2ELGF4015 | DUKHCONP1AZ2ELGF4015 | DH | CON | 1A | Z2 | MEP | EW | GF | B02 | B02-D09 | RES-1A |
| DUKHCONP1AZ2ELGF4020 |  | Installation of DBS,MCCB Accessories. | 20d | 2014-02-13 | 2014-03-08 | DUKHCONP1AZ2ARGF3060 FF+7d, DUKHCONP1AZ2ARGF3055 SS+7d, DUKHCONP1AZ2ELGF4010 FF+5d, DUKHCONP1AZ2ELGF4010 SS+5d, DUKHCONP1AZ2ARGF3055 FF+7d, DUKHCONP1AZ2ARGF3060 SS+7d | -6d | 0d | LABOR- SUBCONTRACTOR [48 h]; ELECTRICIANS SK [179.2 h]; MCCB QTY [64 ea]; DB QTY [8 ea] | 26,049 | 25 |  | 1AP2EWGF25 | DUKHCON1AP2ELGF4020 | DUKHCONP1AZ2ELGF4020 | DH | CON | 1A | Z2 | MEP | EW | GF | B02 | B02-D09 | RES-1A |
| DUKHCONP1AZ2ELGF4025 |  | Installation of Lighting fixtures & Accessories | 25d | 2014-02-25 | 2014-03-25 | DUKHCONP1AZ1ELGF4025, DUKHCONP1AZ2ARGF3055 FF+10d, DUKHCONP1AZ2ARGF3055 SS+10d, DUKHCONP1AZ2ELGF4020 SS+10d, DUKHCONP1AZ2ARGF3060 FF+10d, DUKHCONP1AZ2ELGF4020 FF+10d, DUKHCONP1AZ2ARGF3060 SS+10d | 1d | 0d | LABOR- SUBCONTRACTOR [576 h]; ELECTRICIANS SK [1075.2 h]; LIGHTS QTY [480 ea] | 154,315 | 30 |  | 1AP2EWGF30 | DUKHCON1AP2ELGF4025 | DUKHCONP1AZ2ELGF4025 | DH | CON | 1A | Z2 | MEP | EW | GF | B02 | B02-D09 | RES-1A |
| DUKHCONP1AZ2ELGF4030 |  | Installation of Telephone System | 20d | 2014-02-25 | 2014-03-19 | DUKHCONP1AZ2ARGF3060 SS+5d, DUKHCONP1AZ1ELGF4030, DUKHCONP1AZ2ARGF3060 FF+5d, DUKHCONP1AZ2ELGF4020 FF+10d, DUKHCONP1AZ2ELGF4020 SS+10d | -6d | 5d | LABOR- SUBCONTRACTOR [72 h]; ELECTRICIANS SK [448 h]; TELEPHONE SOCKETS QTY [40 ea] | 38,162 | 40 |  | 1AP2EWGF40 | DUKHCON1AP2ELGF4030 | DUKHCONP1AZ2ELGF4030 | DH | CON | 1A | Z2 | MEP | EW | GF | B02 | B02-D09 | RES-1A |
|  | 15 | **FIRST FLOORS** |  | 2013-12-28 | 2014-04-28 |  |  |  |  |  |  |  |  |  |  |  |  |  |  |  |  |  |  |  |  |
| DUKHCONP1AZ2ELFF4035 |  | Fixing of wall conduits & switch socket boxes | 25d | 2013-12-28 | 2014-01-25 | DUKHCONP1AZ2ARFF3300 FF+5d, DUKHCONP1AZ2ARFF3300 SS+5d | -13d | 0d | LABOR- SUBCONTRACTOR [192 h]; ELECTRICIANS SK [1030.4 h]; SOCKET BOXES QTY [724 ea]; CODUITS QTY [184 lm] | 32,659 | 10 |  | 1AP2EWFF10 | DUKHCON1AP2ELFF4035 | DUKHCONP1AZ2ELFF4035 | DH | CON | 1A | Z2 | MEP | EW | FF | B02 | B02-D09 | RES-1A |
| DUKHCONP1AZ2ELFF4040 |  | Cable tray & trunking installation | 20d | 2014-01-08 | 2014-01-30 | DUKHCONP1AZ2ELFF4035 SS+5d, DUKHCONP1AZ2ELFF4035 FF+5d | 5d | 2d | LABOR- SUBCONTRACTOR [288 h]; ELECTRICIANS SK [1030.4 h]; CABLE TRAY QTY [184 lm] | 7,520 | 15 |  | 1AP2EWFF15 | DUKHCON1AP2ELFF4040 | DUKHCONP1AZ2ELFF4040 | DH | CON | 1A | Z2 | MEP | EW | FF | B02 | B02-D09 | RES-1A |
| DUKHCONP1AZ2ELFF4045 |  | Installation of wiring & Main Cabling | 25d | 2014-01-19 | 2014-02-17 | DUKHCONP1AZ2ELFF4040 FF+7d, DUKHCONP1AZ1ELFF4045, DUKHCONP1AZ2ELFF4040 SS+7d | 3d | 0d | LABOR- SUBCONTRACTOR [72 h]; ELECTRICIANS SK [224 h]; CABLE QTY [184 lm] | 110,383 | 20 |  | 1AP2EWFF20 | DUKHCON1AP2ELFF4045 | DUKHCONP1AZ2ELFF4045 | DH | CON | 1A | Z2 | MEP | EW | FF | B02 | B02-D09 | RES-1A |
| DUKHCONP1AZ2ELFF4050 |  | Installation of Telephone System | 25d | 2014-03-17 | 2014-04-14 | DUKHCONP1AZ2ARFF3360 FF+5d, DUKHCONP1AZ2ARFF3360 SS+5d, DUKHCONP1AZ2ELGF4030 SS+10d, DUKHCONP1AZ2ELGF4030 FF+10d, DUKHCONP1AZ2MSEX5010 FF | -13d | 10d | LABOR- SUBCONTRACTOR [48 h]; ELECTRICIANS SK [403.2 h]; TELEPHONE SOCKETS QTY [36 ea] | 36,523 | 40 |  | 1AP2EWFF40 | DUKHCON1AP2ELFF4050 | DUKHCONP1AZ2ELFF4050 | DH | CON | 1A | Z2 | MEP | EW | FF | B02 | B02-D09 | RES-1A |
| DUKHCONP1AZ2ELFF4055 |  | Install. of CAMS & Fire Fighting Accessories | 25d | 2014-03-19 | 2014-04-16 | DUKHCONP1AZ2ELGF4015 FF+5d, DUKHCONP1AZ1ELFF4055, DUKHCONP1AZ2ARFF3360 FF+7d, DUKHCONP1AZ2ELGF4015 SS+5d, DUKHCONP1AZ2ARFF3360 SS+7d | -23d | 0d | LABOR- SUBCONTRACTOR [360 h]; MECHANICALS SK [648 h]; SMOKE DETECTOR POINTS QTY [92 ea]; FIRE EXTINGUISHER QTY [24 ea] | 71,142 | 35 |  | 1AP2EWFF35 | DUKHCON1AP2ELFF4055 | DUKHCONP1AZ2ELFF4055 | DH | CON | 1A | Z2 | MEP | EW | FF | B02 | B02-D09 | RES-1A |
| DUKHCONP1AZ2ELFF4060 |  | Installation of DBS,MCCB Accessories. | 20d | 2014-03-23 | 2014-04-14 | DUKHCONP1AZ2ELFF4045 SS+5d, DUKHCONP1AZ2ARFF3360 SS+8d, DUKHCONP1AZ2ELFF4045 FF+5d, DUKHCONP1AZ1ELFF4060, DUKHCONP1AZ2ARFF3360 FF+5d | -21d | 2d | LABOR- SUBCONTRACTOR [48 h]; ELECTRICIANS SK [179.2 h]; MCCB QTY [64 ea]; DB QTY [8 ea] | 26,040 | 25 |  | 1AP2EWFF25 | DUKHCON1AP2ELFF4060 | DUKHCONP1AZ2ELFF4060 | DH | CON | 1A | Z2 | MEP | EW | FF | B02 | B02-D09 | RES-1A |
| DUKHCONP1AZ2ELFF4065 |  | Installation of Lighting fixtures & Accessories | 25d | 2014-03-31 | 2014-04-28 | DUKHCONP1AZ2ELGF4025 FF+5d, DUKHCONP1AZ2ARFF3360 SS+10d, DUKHCONP1AZ2ARFF3360 FF+10d, DUKHCONP1AZ1ELFF4065, DUKHCONP1AZ2ELFF4060 SS+5d, DUKHCONP1AZ2ELFF4060 FF+5d, DUKHCONP1AZ2ELGF4025 SS+5d | -23d | 0d | LABOR- SUBCONTRACTOR [576 h]; ELECTRICIANS SK [1075.2 h]; LIGHTS QTY [480 ea] | 154,301 | 30 |  | 1AP2EWFF30 | DUKHCON1AP2ELFF4065 | DUKHCONP1AZ2ELFF4065 | DH | CON | 1A | Z2 | MEP | EW | FF | B02 | B02-D09 | RES-1A |

Notes:
- DUKHCONP1AZ2ARRF3630: Expenses: P1A-Roofing 56792
- DUKHCONP1AZ2ARRF3635: Expenses: P1A-Roofing 43994
- DUKHCONP1AZ2ARRF3640: Expenses: P1A-Roofing 55936
- DUKHCONP1AZ2ARRF3645: Expenses: P1A-Roofing 83344
- DUKHCONP1AZ2ARRF3650: Expenses: P1A-Metal work 63347
- DUKHCONP1AZ2ARRF3655: Expenses: P1A-Roofing 26600
- DUKHCONP1AZ2ARRF3660: Expenses: P1A-Metal work 53206
- DUKHCONP1AZ2AREL3665: Expenses: P1A-Finishes 108894
- DUKHCONP1AZ2AREL3670: Expenses: P1A-Finishes 71820
- DUKHCONP1AZ2AREL3680: Expenses: P1A-Painting and Decorating 86006
- DUKHCONP1AZ2ELGF4000: Expenses: P1A-Electrical Installations 33077
- DUKHCONP1AZ2ELGF4005: Expenses: P1A-Electrical Installations 7536
- DUKHCONP1AZ2ELGF4010: Expenses: P1A-Electrical Installations 112018
- DUKHCONP1AZ2ELGF4015: Expenses: P1A-Electrical Installations 71164
- DUKHCONP1AZ2ELGF4020: Expenses: P1A-Electrical Installations 26049
- DUKHCONP1AZ2ELGF4025: Expenses: P1A-Electrical Installations 154315
- DUKHCONP1AZ2ELGF4030: Expenses: P1A-Electrical Installations 38162
- DUKHCONP1AZ2ELFF4035: Expenses: P1A-Electrical Installations 32659
- DUKHCONP1AZ2ELFF4040: Expenses: P1A-Electrical Installations 7520
- DUKHCONP1AZ2ELFF4045: Expenses: P1A-Electrical Installations 110383
- DUKHCONP1AZ2ELFF4050: Expenses: P1A-Electrical Installations 36523
- DUKHCONP1AZ2ELFF4055: Expenses: P1A-Electrical Installations 71142
- DUKHCONP1AZ2ELFF4060: Expenses: P1A-Electrical Installations 26040
- DUKHCONP1AZ2ELFF4065: Expenses: P1A-Electrical Installations 154301

| ID | WBS | Activity | Duration | Start | Finish | Predecessors | Total float | Free float | Resources | Cost | CODE | P3 ACTID | P6 ID (old) | NP61D | PROJECT | PHASES | PACKAGE | PART | ELEMENTS | STEP | FLOORS | BILL NOS | BILL DIVISION | RES PACK |
| --- | --- | --- | --- | --- | --- | --- | --- | --- | --- | --- | --- | --- | --- | --- | --- | --- | --- | --- | --- | --- | --- | --- | --- | --- |
|  | 20 | **ROOF** |  | 2014-04-14 | 2014-05-15 |  |  |  |  |  |  |  |  |  |  |  |  |  |  |  |  |  |  |  |
| DUKHCONP1AZ2ELRF4070 |  | Installation of Isolator | 18d | 2014-04-14 | 2014-05-04 | DUKHCONP1AZ2ARRF3645 SS+7d, DUKHCONP1AZ2ELFF4045 SS+10d, DUKHCONP1AZ2ELFF4065 FF+5d, DUKHCONP1AZ2ELFF4065 SS+5d, DUKHCONP1AZ2ARRF3645 FF+7d, DUKHCONP1AZ2ELFF4050 SS+5d, DUKHCONP1AZ2ELFF4045 FF+10d, DUKHCONP1AZ2ELFF4050 FF+7d | -23d | 0d | LABOR- SUBCONTRACTOR [144 h]; ELECTRICIANS SK [268.8 h]; ISOLATOR QTY [44 ea] | 54,690 | 10 | 1AP2EWRF10 | DUKHCON1AP2ELRF4070 | DUKHCONP1AZ2ELRF4070 | DH | CON | 1A | Z2 | MEP | EW | RF | B02 | B02-D09 | RES-1A |
| DUKHCONP1AZ2ELRF4075 |  | Installation of TV Dish Antenna | 23d | 2014-04-20 | 2014-05-15 | DUKHCONP1AZ2ELRF4070 SS+5d, DUKHCONP1AZ2ELRF4070 FF+5d | -23d | 1d | LABOR- SUBCONTRACTOR [240 h]; ELECTRICIANS SK [492.8 h]; CONTROL BOX QTY [12 ea]; SWITCHING BOX QTY [32 ea] | 40,597 | 15 | 1AP2EWRF15 | DUKHCON1AP2ELRF4075 | DUKHCONP1AZ2ELRF4075 | DH | CON | 1A | Z2 | MEP | EW | RF | B02 | B02-D09 | RES-1A |
|  | 15 | **PLUMBING, DRAINAGE & FIRE FIGHTING WORKS** |  | 2013-07-30 | 2014-05-15 |  |  |  |  |  |  |  |  |  |  |  |  |  |  |  |  |  |  |  |
|  | 10 | **GROUND FLOOR** |  | 2013-07-30 | 2014-03-25 |  |  |  |  |  |  |  |  |  |  |  |  |  |  |  |  |  |  |  |
| DUKHCONP1AZ2PLUG4300 |  | Drainage / Storm Pipes in Grade Slab | 16d | 2013-07-30 | 2013-08-20 | DUKHCONP1AZ2STUG1040 FF+11d, DUKHCONP1AZ2STUG1040 SS+11d | -24d | 0d | LABOR- SUBCONTRACTOR [24 h]; MECHANICALS SK [43.2 h]; DRAINAGE PIPES QTY [80 lm] | 35,465 | 10 | 1AP2PLUG10 | DUKHCON1AP2PLUG4300 | DUKHCONP1AZ2PLUG4300 | DH | CON | 1A | Z2 | ST | SB | UG | B02 | B02-D07 | RES-1A |
| DUKHCONP1AZ2PLGF4305 |  | Installation of Plumbing pipes & testing | 18d | 2013-11-25 | 2013-12-15 | DUKHCONP1AZ2ARGF3000 FF+7d, DUKHCONP1AZ2ARGF3000 SS+7d, DUKHCONP1AZ1PLGF4305 | -6d | 0d | LABOR- SUBCONTRACTOR [96 h]; MECHANICALS SK [345.6 h]; PLUMB PIPES QTY [328 lm] | 85,973 | 10 | 1AP2PLGF10 | DUKHCON1AP2PLGF4305 | DUKHCONP1AZ2PLGF4305 | DH | CON | 1A | Z2 | MEP | PL | GF | B02 | B02-D07 | RES-1A |
| DUKHCONP1AZ2PLGF4310 |  | Installation of Drainage pipes &testing | 18d | 2013-11-25 | 2013-12-15 | DUKHCONP1AZ2PLGF4305 FF, DUKHCONP1AZ2ARGF3000 SS+7d, DUKHCONP1AZ2ARGF3000 FF+7d, DUKHCONP1AZ2PLGF4305 SS | 15d | 13d | LABOR- SUBCONTRACTOR [48 h]; MECHANICALS SK [129.6 h]; DRAINAGE PIPES QTY [248 lm] | 2,966 | 15 | 1AP2PLGF15 | DUKHCON1AP2PLGF4310 | DUKHCONP1AZ2PLGF4310 | DH | CON | 1A | Z2 | MEP | PL | GF | B02 | B02-D07 | RES-1A |
| DUKHCONP1AZ2PLGF4315 |  | Sanitary Fittings & Accessories | 20d | 2014-02-25 | 2014-03-19 | DUKHCONP1AZ1PLGF4315, DUKHCONP1AZ2ARGF3065 FF+5d, DUKHCONP1AZ2PLGF4310 FF+5d, DUKHCONP1AZ2PLGF4310 SS+5d, DUKHCONP1AZ2ARGF3065 SS+5d | 21d | 0d | LABOR- SUBCONTRACTOR [48 h]; MECHANICALS SK [86.4 h]; SANITARY ACC QTY [60 ea] | 104,291 | 20 | 1AP2PLGF20 | DUKHCON1AP2PLGF4315 | DUKHCONP1AZ2PLGF4315 | DH | CON | 1A | Z2 | MEP | PL | GF | B02 | B02-D07 | RES-1A |
| DUKHCONP1AZ2PLGF4320 |  | Installation of Water Heater | 15d | 2014-03-09 | 2014-03-25 | DUKHCONP1AZ2PLGF4315 SS+5d, DUKHCONP1AZ1PLGF4320, DUKHCONP1AZ2PLGF4315 FF+5d, DUKHCONP1AZ2ARGF3060 SS+5d, DUKHCONP1AZ2ARGF3060 FF+5d | 21d | 10d | LABOR- SUBCONTRACTOR [48 h]; MECHANICALS SK [86.4 h]; WATER HEATER QTY [12 ea] | 8,932 | 25 | 1AP2PLGF25 | DUKHCON1AP2PLGF4320 | DUKHCONP1AZ2PLGF4320 | DH | CON | 1A | Z2 | MEP | PL | GF | B02 | B02-D07 | RES-1A |
|  | 15 | **FIRST FLOORS** |  | 2014-01-08 | 2014-04-23 |  |  |  |  |  |  |  |  |  |  |  |  |  |  |  |  |  |  |  |
| DUKHCONP1AZ2PLFF4325 |  | Installation of Plumbing pipes & testing | 18d | 2014-01-08 | 2014-01-28 | DUKHCONP1AZ2ARFF3300 SS+7d, DUKHCONP1AZ2ARFF3300 FF+8d | -24d | 0d | LABOR- SUBCONTRACTOR [96 h]; MECHANICALS SK [345.6 h]; PLUMB PIPES QTY [328 lm] | 83,745 | 10 | 1AP2PLFF10 | DUKHCON1AP2PLFF4325 | DUKHCONP1AZ2PLFF4325 | DH | CON | 1A | Z2 | MEP | PL | FF | B02 | B02-D07 | RES-1A |
| DUKHCONP1AZ2PLFF4330 |  | Installation of Drainage pipes & testing | 18d | 2014-01-08 | 2014-01-28 | DUKHCONP1AZ2ARFF3300 SS+7d, DUKHCONP1AZ2ARFF3300 FF+7d, DUKHCONP1AZ2PLFF4325 SS, DUKHCONP1AZ1PLFF4330, DUKHCONP1AZ2PLFF4325 FF | -2d | 7d | LABOR- SUBCONTRACTOR [48 h]; MECHANICALS SK [129.6 h]; DRAINAGE PIPES QTY [248 lm] | 2,542 | 15 | 1AP2PLFF15 | DUKHCON1AP2PLFF4330 | DUKHCONP1AZ2PLFF4330 | DH | CON | 1A | Z2 | MEP | PL | FF | B02 | B02-D07 | RES-1A |
| DUKHCONP1AZ2PLFF4335 |  | Sanitary Fittings & Accessories | 20d | 2014-03-26 | 2014-04-17 | DUKHCONP1AZ2ARFF3365 FF+5d, DUKHCONP1AZ2PLFF4330 FF+5d, DUKHCONP1AZ2PLFF4330 SS+5d, DUKHCONP1AZ2ARFF3365 SS | -19d | 0d | LABOR- SUBCONTRACTOR [24 h]; MECHANICALS SK [43.2 h]; SANITARY ACC QTY [56 ea] | 113,094 | 20 | 1AP2PLFF20 | DUKHCON1AP2PLFF4335 | DUKHCONP1AZ2PLFF4335 | DH | CON | 1A | Z2 | MEP | PL | FF | B02 | B02-D07 | RES-1A |
| DUKHCONP1AZ2PLFF4340 |  | Installation of Water Heater | 15d | 2014-04-07 | 2014-04-23 | DUKHCONP1AZ2PLFF4335 SS+5d, DUKHCONP1AZ2PLFF4335 FF+5d, DUKHCONP1AZ1PLFF4340, DUKHCONP1AZ2ARFF3360 FF+5d, DUKHCONP1AZ2ARFF3360 SS+5d | -19d | 4d | LABOR- SUBCONTRACTOR [24 h]; MECHANICALS SK [43.2 h]; WATER HEATER QTY [8 ea] | 7,006 | 25 | 1AP2PLFF25 | DUKHCON1AP2PLFF4340 | DUKHCONP1AZ2PLFF4340 | DH | CON | 1A | Z2 | MEP | PL | FF | B02 | B02-D07 | RES-1A |
|  | 20 | **ROOF** |  | 2014-01-27 | 2014-05-15 |  |  |  |  |  |  |  |  |  |  |  |  |  |  |  |  |  |  |  |
| DUKHCONP1AZ2PLRF4345 |  | Installation of Plumbing pipes & fittings | 15d | 2014-01-27 | 2014-02-13 | DUKHCONP1AZ2ARRF3605 SS+7d, DUKHCONP1AZ2ARRF3605 FF+7d | 32d | 30d | LABOR- SUBCONTRACTOR [24 h]; MECHANICALS SK [86.4 h]; PLUMB PIPES QTY [96 lm] | 12,902 | 10 | 1AP2PLRF10 | DUKHCON1AP2PLRF4345 | DUKHCONP1AZ2PLRF4345 | DH | CON | 1A | Z2 | MEP | PL | RF | B02 | B02-D07 | RES-1A |
| DUKHCONP1AZ2PLRF4350 |  | Installation of Rain water Pipes | 15d | 2014-03-13 | 2014-03-30 | DUKHCONP1AZ2PLRF4345 SS+8d, DUKHCONP1AZ2PLFF4330 FF+5d, DUKHCONP1AZ2AREL3665 SS+7d, DUKHCONP1AZ2AREL3665 FF+7d, DUKHCONP1AZ1PLRF4350, DUKHCONP1AZ2PLFF4330 SS+5d, DUKHCONP1AZ2ARRF3645 SS+5d, DUKHCONP1AZ2ARRF3645 FF+5d, DUKHCONP1AZ2PLRF4345 FF+8d | 2d | 10d | LABOR- SUBCONTRACTOR [24 h]; MECHANICALS SK [43.2 h]; DRAINAGE PIPES QTY [80 lm] | 93,917 | 15 | 1AP2PLRF15 | DUKHCON1AP2PLRF4350 | DUKHCONP1AZ2PLRF4350 | DH | CON | 1A | Z2 | MEP | PL | RF | B02 | B02-D07 | RES-1A |
| DUKHCONP1AZ2PLRF4355 |  | Roof Water Tank Installation & Connections | 25d | 2014-04-17 | 2014-05-15 | DUKHCONP1AZ2PLRF4345 SS+8d, DUKHCONP1AZ2PLRF4345 FF+8d, DUKHCONP1AZ2ARRF3655 FF+5d, DUKHCONP1AZ2PLFF4340 SS+5d, DUKHCONP1AZ2PLRF4350 FF+5d, DUKHCONP1AZ1PLRF4355, DUKHCONP1AZ2ARRF3655 SS+5d, DUKHCONP1AZ2PLFF4340 FF+5d, DUKHCONP1AZ2PLRF4350 SS+5d | -23d | 0d | LABOR- SUBCONTRACTOR [120 h]; MECHANICALS SK [216 h]; WATER TANK QTY [20 ea] | 592,597 | 20 | 1AP2PLRF20 | DUKHCON1AP2PLRF4355 | DUKHCONP1AZ2PLRF4355 | DH | CON | 1A | Z2 | MEP | PL | RF | B02 | B02-D07 | RES-1A |
|  | 20 | **AC WORKS** |  | 2013-12-15 | 2014-05-13 |  |  |  |  |  |  |  |  |  |  |  |  |  |  |  |  |  |  |  |
|  | 10 | **GROUND FLOOR** |  | 2013-12-15 | 2014-03-23 |  |  |  |  |  |  |  |  |  |  |  |  |  |  |  |  |  |  |  |
| DUKHCONP1AZ2ACGF4600 |  | Installation AC Pipes | 20d | 2013-12-15 | 2014-01-07 | DUKHCONP1AZ2ARGF3005 SS+7d, DUKHCONP1AZ2ARGF3005 FF+7d, DUKHCONP1AZ1ACGF4600 | 25d | 5d | LABOR- SUBCONTRACTOR [216 h]; AC TECHNICIAN SK [761.6 h]; AC PIPES QTY [2008 lm] | 8,069 | 10 | 1AP2ACGF10 | DUKHCON1AP2ACGF4600 | DUKHCONP1AZ2ACGF4600 | DH | CON | 1A | Z2 | MEP | AC | GF | B02 | B02-D08 | RES-1A |
| DUKHCONP1AZ2ACGF4605 |  | Fixing of Ventilation Equipments | 25d | 2014-02-06 | 2014-03-08 | DUKHCONP1AZ2ACGF4600 SS+10d, DUKHCONP1AZ1ACGF4605, DUKHCONP1AZ2ARGF3055 FF+7d, DUKHCONP1AZ2ACGF4600 FF+10d, DUKHCONP1AZ2ARGF3055 SS+7d, DUKHCONP1AZ2ARGF3060 FF+7d, DUKHCONP1AZ2ARGF3060 SS+7d | 8d | 0d | LABOR- SUBCONTRACTOR [48 h]; AC TECHNICIAN SK [134.4 h]; VENTILIATION EQP QTY [40 ea] | 17,289 | 15 | 1AP2ACGF15 | DUKHCON1AP2ACGF4605 | DUKHCONP1AZ2ACGF4605 | DH | CON | 1A | Z2 | MEP | AC | GF | B02 | B02-D08 | RES-1A |
| DUKHCONP1AZ2ACGF4610 |  | Fixing of Split AC | 20d | 2014-03-01 | 2014-03-23 | DUKHCONP1AZ1ACGF4610, DUKHCONP1AZ2ACGF4605 FF+13d, DUKHCONP1AZ2ACGF4605 SS+13d | 8d | 5d | LABOR- SUBCONTRACTOR [72 h]; AC TECHNICIAN SK [224 h]; SPLIT UNIT QTY [40 ea] | 48,894 | 20 | 1AP2ACGF20 | DUKHCON1AP2ACGF4610 | DUKHCONP1AZ2ACGF4610 | DH | CON | 1A | Z2 | MEP | AC | GF | B02 | B02-D08 | RES-1A |

Notes:
- DUKHCONP1AZ2ELRF4070: Expenses: P1A-Electrical Installations 54690
- DUKHCONP1AZ2ELRF4075: Expenses: P1A-Electrical Installations 40597
- DUKHCONP1AZ2PLUG4300: Expenses: P1A-Plumbing and Drainage works 35465
- DUKHCONP1AZ2PLGF4305: Expenses: P1A-Plumbing and Drainage works 85973
- DUKHCONP1AZ2PLGF4310: Expenses: P1A-Plumbing and Drainage works 2966
- DUKHCONP1AZ2PLGF4315: Expenses: P1A-Plumbing and Drainage works 104291
- DUKHCONP1AZ2PLGF4320: Expenses: P1A-Plumbing and Drainage works 8932
- DUKHCONP1AZ2PLFF4325: Expenses: P1A-Plumbing and Drainage works 83745
- DUKHCONP1AZ2PLFF4330: Expenses: P1A-Plumbing and Drainage works 2542
- DUKHCONP1AZ2PLFF4335: Expenses: P1A-Plumbing and Drainage works 113094
- DUKHCONP1AZ2PLFF4340: Expenses: P1A-Plumbing and Drainage works 7006
- DUKHCONP1AZ2PLRF4345: Expenses: P1A-Plumbing and Drainage works 12902
- DUKHCONP1AZ2PLRF4350: Expenses: P1A-Plumbing and Drainage works 93917
- DUKHCONP1AZ2PLRF4355: Expenses: P1A-Plumbing and Drainage works 592597
- DUKHCONP1AZ2ACGF4600: Expenses: P1A-Air-conditioning and Ventilation works 8069
- DUKHCONP1AZ2ACGF4605: Expenses: P1A-Air-conditioning and Ventilation works 17289
- DUKHCONP1AZ2ACGF4610: Expenses: P1A-Air-conditioning and Ventilation works 48894

| ID | WBS | Activity | Duration | Start | Finish | Predecessors | Total float | Free float | Resources | Cost | CODE | P3 ACTID | P6 ID (old) | NP61D | PROJECT | PHASES | PACKAGE | PART | ELEMENTS | STEP | FLOORS | BILL NOS | BILL DIVISION | RES PACK |
| --- | --- | --- | --- | --- | --- | --- | --- | --- | --- | --- | --- | --- | --- | --- | --- | --- | --- | --- | --- | --- | --- | --- | --- | --- |
|  | 15 | **FIRST FLOORS** |  | 2014-01-29 | 2014-05-01 |  |  |  |  |  |  |  |  |  |  |  |  |  |  |  |  |  |  |  |
| DUKHCONP1AZ2ACFF4615 |  | Installation AC Pipes | 20d | 2014-01-29 | 2014-02-22 | DUKHCONP1AZ1ACFF4615, DUKHCONP1AZ2ARFF3305 SS+7d, DUKHCONP1AZ2ARFF3305 FF+7d | 3d | 5d | LABOR- SUBCONTRACTOR [216 h]; AC TECHNICIAN SK [761.6 h]; AC PIPES QTY [2008 lm] | 7,555 | 10 | 1AP2ACFF10 | DUKHCON1AP2ACFF4615 | DUKHCONP1AZ2ACFF4615 | DH | CON | 1A | Z2 | MEP | AC | FF | B02 | B02-D08 | RES-1A |
| DUKHCONP1AZ2ACFF4620 |  | Fixing of Ventilation Equipments | 25d | 2014-03-19 | 2014-04-16 | DUKHCONP1AZ2ARFF3360 FF+7d, DUKHCONP1AZ2ACFF4615 FF+10d, DUKHCONP1AZ1ACFF4620, DUKHCONP1AZ2ARFF3360 SS+7d, DUKHCONP1AZ2ACFF4615 SS+10d | -22d | 0d | LABOR- SUBCONTRACTOR [24 h]; AC TECHNICIAN SK [89.6 h]; VENTILIATION EQP QTY [24 ea] | 17,083 | 15 | 1AP2ACFF15 | DUKHCON1AP2ACFF4620 | DUKHCONP1AZ2ACFF4620 | DH | CON | 1A | Z2 | MEP | AC | FF | B02 | B02-D08 | RES-1A |
| DUKHCONP1AZ2ACFF4625 |  | Fixing of Split AC | 20d | 2014-04-09 | 2014-05-01 | DUKHCONP1AZ2ACFF4620 FF+13d, DUKHCONP1AZ2ACFF4620 SS+13d, DUKHCONP1AZ1ACFF4625 | -22d | 0d | LABOR- SUBCONTRACTOR [72 h]; AC TECHNICIAN SK [224 h]; SPLIT UNIT QTY [40 ea] | 54,090 | 20 | 1AP2ACFF20 | DUKHCON1AP2ACFF4625 | DUKHCONP1AZ2ACFF4625 | DH | CON | 1A | Z2 | MEP | AC | FF | B02 | B02-D08 | RES-1A |
|  | 20 | **ROOF** |  | 2014-03-04 | 2014-05-13 |  |  |  |  |  |  |  |  |  |  |  |  |  |  |  |  |  |  |  |
| DUKHCONP1AZ2ACRF4630 |  | Installation of Refrigerant Pipes | 25d | 2014-03-04 | 2014-04-01 | DUKHCONP1AZ2ARRF3645 FF+7d, DUKHCONP1AZ2ACFF4615 SS+7d, DUKHCONP1AZ2ACGF4600 SS+7d, DUKHCONP1AZ2ACFF4615 FF+7d, DUKHCONP1AZ2ACGF4600 FF+7d, DUKHCONP1AZ1ACRF4630, DUKHCONP1AZ2ARRF3645 SS+7d | 10d | 0d | LABOR- SUBCONTRACTOR [96 h]; AC TECHNICIAN SK [313.6 h]; AC PIPES QTY [848 lm] | 24,880 | 10 | 1AP2ACRF10 | DUKHCON1AP2ACRF4630 | DUKHCONP1AZ2ACRF4630 | DH | CON | 1A | Z2 | MEP | AC | RF | B02 | B02-D08 | RES-1A |
| DUKHCONP1AZ2ACRF4635 |  | Installation of Condensing Unit | 25d | 2014-04-15 | 2014-05-13 | DUKHCONP1AZ2ACRF4630 SS+5d, DUKHCONP1AZ2ACFF4625 FF+5d, DUKHCONP1AZ2ACFF4625 SS+5d, DUKHCONP1AZ1ACRF4635, DUKHCONP1AZ2ACGF4610 FF+5d, DUKHCONP1AZ2ACRF4630 FF+5d, DUKHCONP1AZ2ACGF4610 SS+5d | -21d | 0d | LABOR- SUBCONTRACTOR [120 h]; AC TECHNICIAN SK [448 h]; AC UNITS QTY [80 ea] | 134,618 | 15 | 1AP2ACRF15 | DUKHCON1AP2ACRF4635 | DUKHCONP1AZ2ACRF4635 | DH | CON | 1A | Z2 | MEP | AC | RF | B02 | B02-D08 | RES-1A |
|  | 25 | **EXTERNAL WORKS** |  | 2013-12-23 | 2014-05-31 |  |  |  |  |  |  |  |  |  |  |  |  |  |  |  |  |  |  |  |
|  | 10 | **MISCELLANEOUS** |  | 2013-12-23 | 2014-05-31 |  |  |  |  |  |  |  |  |  |  |  |  |  |  |  |  |  |  |  |
| DUKHCONP1AZ2MSEX5000 |  | Construction of Manholes | 25d | 2013-12-23 | 2014-01-20 | DUKHCONP1AZ2STRF2055 FF+10d, DUKHCONP1AZ2STRF2055 SS+10d, DUKHCONP1AZ2PLGF4310 FF+10d, DUKHCONP1AZ2PLGF4310 SS+10d | 9d | 0d | MANHOLES SK [384 h]; LABOR- SUBCONTRACTOR [144 h]; MANHOLES QTY [48 ea] | 56,173 | 25 | 1AP2MSEX25 | DUKHCON1AP2MS005000 | DUKHCONP1AZ2MSEX5000 | DH | CON | 1A | Z2 | EX | MS |  | B02 | B02-D12 | RES-1A |
| DUKHCONP1AZ2MSEX5005 |  | Construction of Soak pit, Chambers | 25d | 2014-01-06 | 2014-02-03 | DUKHCONP1AZ2MSEX5000 FF+12d, DUKHCONP1AZ2MSEX5000 SS+12d | 9d | 0d | MANHOLES SK [128 h]; LABOR- SUBCONTRACTOR [48 h]; SOAKPIT QTY [16 ea] | 33,032 | 30 | 1AP2MSEX30 | DUKHCON1AP2MS005005 | DUKHCONP1AZ2MSEX5005 | DH | CON | 1A | Z2 | EX | MS |  | B02 | B02-D12 | RES-1A |
| DUKHCONP1AZ2MSEX5015 |  | Construction of grease Trap | 20d | 2014-01-26 | 2014-02-18 | DUKHCONP1AZ2MSEX5005 SS+12d, DUKHCONP1AZ2MSEX5005 FF+12d | 9d | 0d | LABOR- SUBCONTRACTOR [24 h]; GREASE TRAP QTY [16 lm]; HANDRAIL ERECTOR SKILLED [32 h] | 22,696 | 20 | 1AP2MSEX20 | DUKHCON1AP2MS005015 | DUKHCONP1AZ2MSEX5015 | DH | CON | 1A | Z2 | EX | MS |  | B02 | B02-D07 | RES-1A |
| DUKHCONP1AZ2MSEX5020 |  | Construction Entrance Ramp | 25d | 2014-02-13 | 2014-03-13 | DUKHCONP1AZ1MSEX5020, DUKHCONP1AZ2STRF2055 SS, DUKHCONP1AZ2STRF2055 FF | -8d | 0d | SCREED MASON SK [96 h]; CONCRETE MASON SK [192 h]; INTERLOCK MASON SK [128 h]; LABOR- SUBCONTRACTOR [192 h]; LABOR- SUBCONTRACTOR [48 h]; SCREED QTY [112 Sqm]; CONCRETE QTY [96 Cum]; INTERLOCK QTY [152 Sqm] | 31,768 | 10 | 1AP2MSEX10 | DUKHCON1AP2MS005020 | DUKHCONP1AZ2MSEX5020 | DH | CON | 1A | Z2 | EX | MS |  | B02 | B02-D12 | RES-1A |
| DUKHCONP1AZ2MSEX5010 |  | Telephone cable laying | 25d | 2014-02-19 | 2014-03-19 | DUKHCONP1AZ2MSEX5005, DUKHCONP1AZ2MSEX5015 | 9d | 22d | LABOR- SUBCONTRACTOR [125 h]; ELECTRICIANS SK [125 h]; CONCRETE MASON SK [125 h] | 3,557 |  | 1AP2MSEX40 | DUKHCON1AP2MS005010 | DUKHCONP1AZ2MSEX5010 | DH | CON | 1A | Z2 | EX | MS |  | B02 | B02-D12 | RES-1A |
| DUKHCONP1AZ2MSEX5025 |  | SS.Handrails and Balustrades | 20d | 2014-03-03 | 2014-03-25 | DUKHCONP1AZ2MSEX5020 FF+10d, DUKHCONP1AZ2MSEX5020 SS+10d | -5d | 6d | LABOR- SUBCONTRACTOR [24 h]; S.S.BALUSTRADE QTY [16 lm]; HANDRAIL ERECTOR SKILLED [32 h] | 81,420 | 15 | 1AP2MSEX15 | DUKHCON1AP2MS005025 | DUKHCONP1AZ2MSEX5025 | DH | CON | 1A | Z2 | EX | MS |  | B02 | B02-D12 | RES-1A |
| DUKHCONP1AZ2MSEX5335 |  | Aluminum Roll-up Shutter with 2m Wall | 25d | 2014-05-03 | 2014-05-31 | DUKHCONP1AZ1MSEX5335, DUKHPROGEN00PRDV3430, DUKHCONI1AZ1BWGL5325 | 79d | 0d | LABOR- SUBCONTRACTOR [200 h]; DOOR ERECTOR SK [200 h]; ROLLING SHUTTER QTY [8 ea] | 59,528 | 25 | 1AP2BWFR25 | DUKHCON1AP2MS005335 | DUKHCONP1AZ2MSEX5335 | DH | CON | 1A | Z2 | EX | MS |  | B02 | B02-D12 | RES-1A |
|  | 15 | **WATER TANK ENCLOSURE** |  | 2014-02-15 | 2014-05-06 |  |  |  |  |  |  |  |  |  |  |  |  |  |  |  |  |  |  |  |
| DUKHCONP1AZ2WEEX5030 |  | Excavation | 20d | 2014-02-15 | 2014-03-09 | DUKHCONP1AZ2STRF2055 SS+5d, DUKHCONP1AZ1WEEX5030, DUKHCONP1AZ2STRF2055 FF+5d | -11d | 0d | LABOR- SUBCONTRACTOR [24 h]; EXCAVATION QTY [40 Cum]; LOADER [10 h]; POCLAIN [20 h]; TRUCK [10 h]; EQUIP OPERATORS [40 h] | 896 | 10 | 1AP2WEEX10 | DUKHCON1AP2WE005030 | DUKHCONP1AZ2WEEX5030 | DH | CON | 1A | Z2 | EX | WE |  | B02 | B02-D12 | RES-1A |
| DUKHCONP1AZ2WEEX5035 |  | Construction of Raft | 25d | 2014-02-20 | 2014-03-20 | DUKHCONP1AZ2WEEX5030 SS+5d, DUKHCONP1AZ2WEEX5030 FF+10d | -11d | 0d | STEEL FIXERS SK [64 h]; CARPENTERS SK [384 h]; CONCRETE MASON SK [32 h]; LABOR- SUBCONTRACTOR [360 h]; REINFORCEMENT BARS QTY [624 kg]; FORMWORK QTY [184 Sqm]; CONCRETE QTY [20 Cum] | 15,216 | 15 | 1AP2WEEX15 | DUKHCON1AP2WE005035 | DUKHCONP1AZ2WEEX5035 | DH | CON | 1A | Z2 | EX | WE |  | B02 | B02-D12 | RES-1A |
| DUKHCONP1AZ2WEEX5040 |  | Block works & Plastering | 25d | 2014-03-02 | 2014-03-30 | DUKHCONP1AZ2WEEX5035 FF+8d, DUKHCONP1AZ2WEEX5035 SS+8d | -11d | 0d | BLOCK MASON SK [128 h]; PLASTER MASON SK [192 h]; LABOR- SUBCONTRACTOR [192 h]; BLOCK QTY [56 Sqm]; PLASTER QTY [112 Sqm] | 13,582 | 20 | 1AP2WEEX20 | DUKHCON1AP2WE005040 | DUKHCONP1AZ2WEEX5040 | DH | CON | 1A | Z2 | EX | WE |  | B02 | B02-D12 | RES-1A |
| DUKHCONP1AZ2WEEX5045 |  | Flooring & Painting | 25d | 2014-03-09 | 2014-04-06 | DUKHCONP1AZ2WEEX5040 SS+6d, DUKHCONP1AZ2WEEX5040 FF+6d | -11d | 0d | EPOXY QTY [44 Sqm]; PAINTERS SK [128 h]; EPOXY SK [32 h]; LABOR- SUBCONTRACTOR [72 h]; PAINT QTY [156 Sqm] | 12,744 | 25 | 1AP2WEEX25 | DUKHCON1AP2WE005045 | DUKHCONP1AZ2WEEX5045 | DH | CON | 1A | Z2 | EX | WE |  | B02 | B02-D12 | RES-1A |
| DUKHCONP1AZ2WEEX5050 |  | Installation of Steel Gate | 20d | 2014-03-22 | 2014-04-13 | DUKHCONP1AZ2MSEX5025 FF+10d, DUKHCONP1AZ2WEEX5045 SS+5d, DUKHCONP1AZ2WEEX5045 FF+6d | -11d | 3d | LABOR- SUBCONTRACTOR [24 h]; GATE QTY [4 ea]; GATE ERECTOR SK [32 h] | 71,872 | 30 | 1AP2WEEX30 | DUKHCON1AP2WE005050 | DUKHCONP1AZ2WEEX5050 | DH | CON | 1A | Z2 | EX | WE |  | B02 | B02-D12 | RES-1A |
| DUKHCONP1AZ2WEEX5060 |  | Structural steel & SS Shed cover installation | 25d | 2014-03-31 | 2014-04-28 | DUKHCONP1AZ2MSEX5025 FF+10d, DUKHCONP1AZ2WEEX5050 SS+5d, DUKHCONP1AZ1WEEX5060, DUKHCONP1AZ2WEEX5050 FF+10d | -14d | 0d | LABOR- SUBCONTRACTOR [144 h]; STRUCTURAL STEEL QTY [128 kg]; SS SHED COVER QTY [40 Sqm]; STEEL ERECTOR SK [192 h] | 45,463 | 35 | 1AP2WEEX35 | DUKHCON1AP2WE005060 | DUKHCONP1AZ2WEEX5060 | DH | CON | 1A | Z2 | EX | WE |  | B02 | B02-D12 | RES-1A |
| DUKHCONP1AZ2WEEX5065 |  | Install. of Water Tank,Chiller,Pump & Meter | 25d | 2014-04-08 | 2014-05-06 | DUKHCONP1AZ2WEEX5060 SS+6d, DUKHCONP1AZ2MSEX5015 SS+5d, DUKHCONP1AZ1WEEX5065, DUKHCONP1AZ2WEEX5060 FF+6d, DUKHCONP1AZ2MSEX5015 FF+5d, DUKHCONP1AZ2PLRF4350 FF+5d, DUKHCONP1AZ2PLRF4350 SS+5d | -15d | 0d | LABOR- SUBCONTRACTOR [72 h]; AC TECHNICIAN SK [44.8 h]; MECHANICALS SK [86.4 h]; WATER TANK QTY [4 ea]; CHILLER QTY [40 ea]; PUMP QTY [4 ea] | 122,349 | 40 | 1AP2WEEX40 | DUKHCON1AP2WE005065 | DUKHCONP1AZ2WEEX5065 | DH | CON | 1A | Z2 | EX | WE |  | B02 | B02-D07 | RES-1A |

Notes:
- DUKHCONP1AZ2ACFF4615: Expenses: P1A-Air-conditioning and Ventilation works 7555
- DUKHCONP1AZ2ACFF4620: Expenses: P1A-Air-conditioning and Ventilation works 17083
- DUKHCONP1AZ2ACFF4625: Expenses: P1A-Air-conditioning and Ventilation works 54090
- DUKHCONP1AZ2ACRF4630: Expenses: P1A-Air-conditioning and Ventilation works 24880
- DUKHCONP1AZ2ACRF4635: Expenses: P1A-Air-conditioning and Ventilation works 134618
- DUKHCONP1AZ2MSEX5000: Expenses: P1A-External works within the Plot Curtilage 56173
- DUKHCONP1AZ2MSEX5005: Expenses: P1A-External works within the Plot Curtilage 33032
- DUKHCONP1AZ2MSEX5015: Expenses: P1A-Plumbing and Drainage works 22696
- DUKHCONP1AZ2MSEX5020: Expenses: P1A-External works within the Plot Curtilage 31768
- DUKHCONP1AZ2MSEX5010: Expenses: P1A-External works within the Plot Curtilage 3557
- DUKHCONP1AZ2MSEX5025: Expenses: P1A-External works within the Plot Curtilage 81420
- DUKHCONP1AZ2MSEX5335: Expenses: P1A-External works within the Plot Curtilage 59528
- DUKHCONP1AZ2WEEX5030: Expenses: P1A-External works within the Plot Curtilage 896
- DUKHCONP1AZ2WEEX5035: Expenses: P1A-External works within the Plot Curtilage 15216
- DUKHCONP1AZ2WEEX5040: Expenses: P1A-External works within the Plot Curtilage 13582
- DUKHCONP1AZ2WEEX5045: Expenses: P1A-External works within the Plot Curtilage 12744
- DUKHCONP1AZ2WEEX5050: Expenses: P1A-External works within the Plot Curtilage 71872
- DUKHCONP1AZ2WEEX5060: Expenses: P1A-External works within the Plot Curtilage 45463
- DUKHCONP1AZ2WEEX5065: Expenses: P1A-Plumbing and Drainage works 122349

| ID | WBS | Activity | Duration | Start | Finish | Predecessors | Total float | Free float | Resources | Cost | CODE | P3 ACTID | P6 ID (old) | NP61D | PROJECT | PHASES | PACKAGE | PART | ELEMENTS | STEP | BILL NOS | BILL DIVISION | RES PACK | FLOORS | rem |
| --- | --- | --- | --- | --- | --- | --- | --- | --- | --- | --- | --- | --- | --- | --- | --- | --- | --- | --- | --- | --- | --- | --- | --- | --- | --- |
|  | 20 | **HARD LANDSCAPING** |  | 2014-02-27 | 2014-04-09 |  |  |  |  |  |  |  |  |  |  |  |  |  |  |  |  |  |  |  |  |
| DUKHCONP1AZ2HDEX5090 |  | kerb works | 20d | 2014-02-27 | 2014-03-22 | DUKHCONP1AZ2MSEX5020 FF+7d, DUKHCONP1AZ1HDEX5090, DUKHCONP1AZ2MSEX5020 SS+7d | -8d | 0d | KERBSTONE MASON SK [224 h]; LABOR- SUBCONTRACTOR [120 h]; KERBSTONE QTY [288 lm] | 13,284 | 10 | 1AP2HDEX10 | DUKHCON1AP2HD005090 | DUKHCONP1AZ2HDEX5090 | DH | CON | 1A | Z2 | EX | HD | B02 | B02-D12 | RES-1A |  |  |
| DUKHCONP1AZ2HDEX5095 |  | Cobble Stone Works | 20d | 2014-03-11 | 2014-04-02 | DUKHCONP1AZ2HDEX5090 SS+10d, DUKHCONP1AZ2HDEX5090 FF+10d | -8d | 0d | TILE MASON SK [128 h]; LABOR- SUBCONTRACTOR [72 h]; COBBLE STONE QTY [88 Sqm] | 12,232 | 15 | 1AP2HDEX15 | DUKHCON1AP2HD005095 | DUKHCONP1AZ2HDEX5095 | DH | CON | 1A | Z2 | EX | HD | B02 | B02-D12 | RES-1A |  |  |
| DUKHCONP1AZ2HDEX5100 |  | Interlock works | 20d | 2014-03-18 | 2014-04-09 | DUKHCONP1AZ2HDEX5095 SS+6d, DUKHCONP1AZ2HDEX5095 FF+6d | -8d | 0d | INTERLOCK MASON SK [160 h]; LABOR- SUBCONTRACTOR [72 h]; INTERLOCK QTY [184 Sqm] | 15,733 | 20 | 1AP2HDEX20 | DUKHCON1AP2HD005100 | DUKHCONP1AZ2HDEX5100 | DH | CON | 1A | Z2 | EX | HD | B02 | B02-D12 | RES-1A |  |  |
|  | 25 | **SOFT LANDSCAPING** |  | 2014-03-24 | 2014-04-28 |  |  |  |  |  |  |  |  |  |  |  |  |  |  |  |  |  |  |  |  |
| DUKHCONP1AZ2SLEX5105 |  | Laying of Grass/ green area | 25d | 2014-03-24 | 2014-04-21 | DUKHCONP1AZ2HDEX5100 FF+5d, DUKHCONP1AZ2HDEX5100 SS+5d | -8d | 0d | SWEET SOIL QTY [336 Cum]; GRASS QTY [336 Sqm]; LANDSCAPING SK [1568 h]; LABOR- SUBCONTRACTOR [1176 h] | 41,328 | 10 | 1AP2SLEX10 | DUKHCON1AP2SL005105 | DUKHCONP1AZ2SLEX5105 | DH | CON | 1A | Z2 | EX | SL | B02 | B02-D12 | RES-1A |  |  |
| DUKHCONP1AZ2SLEX5110 |  | Laying of Palm tree | 25d | 2014-03-31 | 2014-04-28 | DUKHCONP1AZ2SLEX5105 FF+6d, DUKHCONP1AZ2SLEX5105 SS+6d | -8d | 16d | LABOR- SUBCONTRACTOR [72 h]; SWEET SOIL QTY [48 Cum]; PLAM TREES QTY [16 ea]; LANDSCAPING SK [96 h] | 48,672 | 15 | 1AP2SLEX15 | DUKHCON1AP2SL005110 | DUKHCONP1AZ2SLEX5110 | DH | CON | 1A | Z2 | EX | SL | B02 | B02-D12 | RES-1A |  |  |
|  | 30 | **TESTING AND COMMISSIONING** |  | 2014-05-18 | 2014-06-15 |  |  |  |  |  |  |  |  |  |  |  |  |  |  |  |  |  |  |  |  |
| DUKHCONP1AZ2ACTC8000 |  | Pre-Commissioning & Testing of AC Works | 25d | 2014-05-18 | 2014-06-15 | DUKHCONP1AZ2ARFF3395, DUKHCONP1AZ2AREL3680, DUKHCONP1AZ1ACTC8000, DUKHCONP1AZ2ARGF3095, DUKHCONP1AZ2ACRF4635, DUKHCONP1AZ2ACFF4625 | -24d | 0d | LABOR- SUBCONTRACTOR [500 h]; AC TECHNICIAN SK [1000 h] | 3,168 |  | 1AP2ACU100 | DUKHCON1AP2AC008000 | DUKHCONP1AZ2ACTC8000 | DH | CON | 1A | Z2 | TES |  | B02 | B02-D08 | RES-1A |  |  |
| DUKHCONP1AZ2ELTC8010 |  | Pre-Commissioning & Testing of Electrical Works | 25d | 2014-05-18 | 2014-06-15 | DUKHCONP1AZ2SLEX5105, DUKHCONP1AZ2SLEX5110, DUKHCONP1AZ1ELTC8010, DUKHCONP1AZ2HDEX5100, DUKHCONP1AZ2ARFF3395, DUKHCONP1AZ2ELGF4030, DUKHCONP1AZ2AREL3680, DUKHCONP1AZ2ELRF4075, DUKHCONP1AZ2ARGF3095, DUKHCONP1AZ2ELGF4025, DUKHCONP1AZ2ARRF3620, DUKHCONP1AZ2ARRF3655, DUKHCONP1AZ2ELFF4055, DUKHCONP1AZ2MSEX5005, DUKHCONP1AZ2ARRF3660, DUKHCONP1AZ2ELFF4065, DUKHCONP1AZ2ELFF4050, DUKHCONP1AZ2ELGF4015 | -24d | 0d | LABOR- SUBCONTRACTOR [1000 h]; ELECTRICIANS SK [2000 h] | 40,656 |  | 1AP2ELE100 | DUKHCON1AP2EL008010 | DUKHCONP1AZ2ELTC8010 | DH | CON | 1A | Z2 | TES |  | B02 | B02-D09 | RES-1A |  |  |
| DUKHCONP1AZ2PLTC8005 |  | Pre-Commissioning & Testing of Plumbing Works | 25d | 2014-05-18 | 2014-06-15 | DUKHCONP1AZ2HDEX5100, DUKHCONP1AZ2ARRF3620, DUKHCONP1AZ2AREL3680, DUKHCONP1AZ2ARRF3655, DUKHCONP1AZ2ARRF3660, DUKHCONP1AZ2ARFF3395, DUKHCONP1AZ2PLRF4350, DUKHCONP1AZ2PLGF4320, DUKHCONP1AZ1PLTC8005, DUKHCONP1AZ2SLEX5110, DUKHCONP1AZ2PLRF4355, DUKHCONP1AZ2WEEX5065, DUKHCONP1AZ2MSEX5005, DUKHCONP1AZ2ARGF3095, DUKHCONP1AZ2SLEX5105 | -24d | 0d | LABOR- SUBCONTRACTOR [1000 h]; MECHANICALS SK [2000 h] | 9,008 |  | 1AP2PLU100 | DUKHCON1AP2PL008005 | DUKHCONP1AZ2PLTC8005 | DH | CON | 1A | Z2 | TES |  | B02 | B02-D07 | RES-1A |  |  |
|  | 20 | **ZONE - 3 (4 Twin Villas)** |  | 2013-04-27 | 2014-07-14 |  |  |  |  |  |  |  |  |  |  |  |  |  |  |  |  |  |  |  |  |
|  | 10 | **STRUCTURAL WORKS** |  | 2013-04-27 | 2014-02-20 |  |  |  |  |  |  |  |  |  |  |  |  |  |  |  |  |  |  |  |  |
|  | 10 | **SUB STRUCTURE** |  | 2013-04-27 | 2013-10-08 |  |  |  |  |  |  |  |  |  |  |  |  |  |  |  |  |  |  |  |  |
|  | 10 | **UPTO GRADE SLAB** |  | 2013-04-27 | 2013-10-08 |  |  |  |  |  |  |  |  |  |  |  |  |  |  |  |  |  |  |  |  |
| DUKHCONP1AZ3STUG1000 |  | Footing Excavation | 25d | 2013-04-27 | 2013-05-25 | DUKHCONP1AGNSP005000, DUKHCONP1AZ2STUG1000 | -11d | 0d | LABOR- SUBCONTRACTOR [590 h]; EXCAVATION QTY [984 Cum]; LOADER [131 h]; POCLAIN [262 h]; TRUCK [131 h]; EQUIP OPERATORS [524 h] | 68,256 | 10 | 1AP3SBUG10 | DUKHCON1AP3STUG1000 | DUKHCONP1AZ3STUG1000 | DH | CON | 1A | Z3 | ST | SB | B02 | B02-D01 | RES-1A | UG |  |
| DUKHCONP1AZ3STUG1005 |  | Footing Antitermite | 23d | 2013-05-08 | 2013-06-03 | DUKHCONP1AZ3STUG1000 SS+10d, DUKHCONP1AZ3STUG1000 FF+5d | -11d | 0d | LABOR- SUBCONTRACTOR [432 h]; ANTITERMITE QTY [2880 sqft]; ANTITERMITE SK [1152 h] | 8,640 | 15 | 1AP3SBUG15 | DUKHCON1AP3STUG1005 | DUKHCONP1AZ3STUG1005 | DH | CON | 1A | Z3 | ST | SB | B02 | B02-D01 | RES-1A | UG | REM |
| DUKHCONP1AZ3STUG1010 |  | Footing Blinding | 23d | 2013-05-12 | 2013-06-06 | DUKHCONP1AZ3STUG1005 SS+3d, DUKHCONP1AZ3STUG1005 FF+3d | -11d | 0d | BLINDING MASON SK [454 h]; LABOR- SUBCONTRACTOR [340.5 h]; BLINDING QTY [567 Sqm] | 14,285 | 15 | 1AP3SBUG18 | DUKHCON1AP3STUG1010 | DUKHCONP1AZ3STUG1010 | DH | CON | 1A | Z3 | ST | SB | B02 | B02-D02 | RES-1A | UG | REM |
| DUKHCONP1AZ3STUG1015 |  | Footing Waterproofing & Screed | 25d | 2013-05-18 | 2013-06-15 | DUKHCONP1AZ3STUG1010 SS+5d, DUKHCONP1AZ3STUG1010 FF+5d | -11d | 0d | SCREED MASON SK [418 h]; LABOR- SUBCONTRACTOR [156.75 h]; SCREED QTY [522 Sqm]; WATERPROOFING QTY [1457 Sqm] | 52,596 | 20 | 1AP3SBUG20 | DUKHCON1AP3STUG1015 | DUKHCONP1AZ3STUG1015 | DH | CON | 1A | Z3 | ST | SB | B02 | B02-D02 | RES-1A | UG | REM |
| DUKHCONP1AZ3STUG1020 |  | Construction of foundations | 20d | 2013-06-02 | 2013-06-24 | DUKHCONP1AZ3STUG1015 FF+8d, DUKHCONP1AZ3STUG1015 SS+7d | -11d | 13d | STEEL FIXERS SK [2565 h]; CARPENTERS SK [1160 h]; CONCRETE MASON SK [720 h]; LABOR- SUBCONTRACTOR [3333.75 h]; REINFORCEMENT BARS QTY [32062 kg]; FORMWORK QTY [580 Sqm]; CONCRETE QTY [360 Cum] | 225,546 | 25 | 1AP3SBUG25 | DUKHCON1AP3STUG1020 | DUKHCONP1AZ3STUG1020 | DH | CON | 1A | Z3 | ST | SB | B02 | B02-D02 | RES-1A | UG | REM |
| DUKHCONP1AZ3STUG1025 |  | Construction of neck of columns | 25d | 2013-06-26 | 2013-07-24 | DUKHCONP1AZ2STUG1025, DUKHCONP1AZ3STUG1020 SS+8d, DUKHCONP1AZ3STUG1020 FF+7d | -24d | 0d | STEEL FIXERS SK [214 h]; CARPENTERS SK [656 h]; CONCRETE MASON SK [48 h]; LABOR- SUBCONTRACTOR [688.5 h]; REINFORCEMENT BARS QTY [2669 kg]; FORMWORK QTY [328 Sqm]; CONCRETE QTY [24 Cum] | 35,935 | 30 | 1AP3SBUG30 | DUKHCON1AP3STUG1025 | DUKHCONP1AZ3STUG1025 | DH | CON | 1A | Z3 | ST | SB | B02 | B02-D02 | RES-1A | UG | REM |
| DUKHCONP1AZ3STUG1030 |  | Waterproofing Footing & Neck Column | 25d | 2013-07-06 | 2013-08-03 | DUKHCONP1AZ3STUG1025 SS+8d, DUKHCONP1AZ3STUG1025 FF+8d | -24d | 0d | LABOR- SUBCONTRACTOR [141 h]; WATERPROOFING QTY [468 Sqm]; WATERPROOFING SPECIALIST SK [375 h] | 22,459 | 35 | 1AP3SBUG35 | DUKHCON1AP3STUG1030 | DUKHCONP1AZ3STUG1030 | DH | CON | 1A | Z3 | ST | SB | B02 | B02-D02 | RES-1A | UG | REM |
| DUKHCONP1AZ3STUG1035 |  | Backfilling Upto Grade Beam Bottom | 25d | 2013-07-20 | 2013-08-20 | DUKHCONP1AZ3STUG1030 SS+12d, DUKHCONP1AZ3STUG1030 FF+12d, DUKHCONP1AZ2STUG1035 | -24d | 0d | LABOR- SUBCONTRACTOR [216 h]; BACKFILLING QTY [880 Cum]; BOBCAT [375 h]; PLATE COMPACTOR [375 h]; TRUCK [75 h]; EQUIP OPERATORS [825 h] | 22,363 | 40 | 1AP3SBUG40 | DUKHCON1AP3STUG1035 | DUKHCONP1AZ3STUG1035 | DH | CON | 1A | Z3 | ST | SB | B02 | B02-D01 | RES-1A | UG |  |
| DUKHCONP1AZ3STUG1040 |  | Construction of Grade Beams | 25d | 2013-08-05 | 2013-09-05 | DUKHCONP1AZ3STUG1035 SS+14d, DUKHCONP1AZ3STUG1035 FF+14d | -24d | 0d | BLINDING MASON SK [244 h]; SCREED MASON SK [224 h]; STEEL FIXERS SK [1497 h]; CARPENTERS SK [2152 h]; CONCRETE MASON SK [256 h]; LABOR- SUBCONTRACTOR [3195.75 h]; BLINDING QTY [304 Sqm]; SCREED QTY [280 Sqm]; REINFORCEMENT BARS QTY [18709 kg]; FORMWORK QTY [1076 Sqm]; CONCRETE QTY [128 Cum] | 326,110 | 45 | 1AP3SBUG45 | DUKHCON1AP3STUG1040 | DUKHCONP1AZ3STUG1040 | DH | CON | 1A | Z3 | ST | SB | B02 | B02-D02 | RES-1A | UG | REM |
| DUKHCONP1AZ3STUG1045 |  | Construction of slab on grade | 25d | 2013-09-10 | 2013-10-08 | DUKHCONP1AZ3PLUG4300 FF+8d, DUKHCONP1AZ3STUG1040 FF+10d, DUKHCONP1AZ3STUG1040 SS+10d, DUKHCONP1AZ2STUG1045, DUKHCONP1AZ3PLUG4300 SS+8d | -24d | 0d | BLINDING MASON SK [923 h]; SCREED MASON SK [850 h]; STEEL FIXERS SK [536 h]; CONCRETE MASON SK [400 h]; LABOR- SUBCONTRACTOR [1713 h]; BLINDING QTY [1153 Sqm]; SCREED QTY [1062 Sqm]; CONCRETE QTY [200 Cum]; WELDED WIRE MESH [2008 Sqm] | 239,062 | 50 | 1AP3SBUG50 | DUKHCON1AP3STUG1045 | DUKHCONP1AZ3STUG1045 | DH | CON | 1A | Z3 | ST | SB | B02 | B02-D02 | RES-1A | UG | REM |

Notes:
- DUKHCONP1AZ2HDEX5090: Expenses: P1A-External works within the Plot Curtilage 13284
- DUKHCONP1AZ2HDEX5095: Expenses: P1A-External works within the Plot Curtilage 12232
- DUKHCONP1AZ2HDEX5100: Expenses: P1A-External works within the Plot Curtilage 15733
- DUKHCONP1AZ2SLEX5105: Expenses: P1A-External works within the Plot Curtilage 41328
- DUKHCONP1AZ2SLEX5110: Expenses: P1A-External works within the Plot Curtilage 48672
- DUKHCONP1AZ2ACTC8000: Expenses: P1A-Air-conditioning and Ventilation works 3168
- DUKHCONP1AZ2ELTC8010: Expenses: P1A-Electrical Installations 40656
- DUKHCONP1AZ2PLTC8005: Expenses: P1A-Plumbing and Drainage works 9008
- DUKHCONP1AZ3STUG1000: Expenses: P1A-Excavation and Earth Works 68256
- DUKHCONP1AZ3STUG1005: Expenses: P1A-Excavation and Earth Works 8640
- DUKHCONP1AZ3STUG1010: Expenses: P1A-Concrete Works 14285
- DUKHCONP1AZ3STUG1015: Expenses: P1A-Concrete Works 52596
- DUKHCONP1AZ3STUG1020: Expenses: P1A-Concrete Works 225546
- DUKHCONP1AZ3STUG1025: Expenses: P1A-Concrete Works 35935
- DUKHCONP1AZ3STUG1030: Expenses: P1A-Concrete Works 22459
- DUKHCONP1AZ3STUG1035: Expenses: P1A-Excavation and Earth Works 22363
- DUKHCONP1AZ3STUG1040: Expenses: P1A-Concrete Works 326110
- DUKHCONP1AZ3STUG1045: Expenses: P1A-Concrete Works 239062

| ID | WBS | Activity | Duration | Start | Finish | Predecessors | Total float | Free float | Resources | Cost | CODE | rem | P3 ACTID | P6 ID (old) | NP61D | PROJECT | PHASES | PACKAGE | PART | ELEMENTS | STEP | FLOORS | BILL NOS | BILL DIVISION | RES PACK | EXECUTER |
| --- | --- | --- | --- | --- | --- | --- | --- | --- | --- | --- | --- | --- | --- | --- | --- | --- | --- | --- | --- | --- | --- | --- | --- | --- | --- | --- |
|  | 15 | **SUPERSTRUCTURE** |  | 2013-09-26 | 2014-02-20 |  |  |  |  |  |  |  |  |  |  |  |  |  |  |  |  |  |  |  |  |  |
|  | 10 | **GROUND FLOOR** |  | 2013-09-26 | 2013-11-23 |  |  |  |  |  |  |  |  |  |  |  |  |  |  |  |  |  |  |  |  |  |
| DUKHCONP1AZ3STGF2000 |  | Column-Rebar & Formwork | 25d | 2013-09-26 | 2013-10-27 | DUKHCONP1AZ3STUG1045 SS+14d, DUKHCONP1AZ2STGF2000, DUKHCONP1AZ3STUG1045 FF+7d | -24d | 0d | STEEL FIXERS SK [656 h]; CARPENTERS SK [1656 h]; LABOR- SUBCONTRACTOR [1734 h]; REINFORCEMENT BARS QTY [8198 kg]; FORMWORK QTY [828 Sqm] | 73,433 | 10 | REM | 1AP3SPGF10 | DUKHCON1AP3STGF2000 | DUKHCONP1AZ3STGF2000 | DH | CON | 1A | Z3 | ST | SP | GF | B02 | B02-D02 | RES-1A |  |
| DUKHCONP1AZ3STGF2005 |  | Column-Concrete | 24d | 2013-10-05 | 2013-11-03 | DUKHCONP1AZ3STGF2000 SS+7d, DUKHCONP1AZ3STGF2000 FF+2d | -22d | 0d | CONCRETE MASON SK [146 h]; LABOR- SUBCONTRACTOR [109.5 h]; CONCRETE QTY [73 Cum] | 20,945 | 15 | REM | 1AP3SPGF15 | DUKHCON1AP3STGF2005 | DUKHCONP1AZ3STGF2005 | DH | CON | 1A | Z3 | ST | SP | GF | B02 | B02-D02 | RES-1A |  |
| DUKHCONP1AZ3STGF2010 |  | Beam, Stairs ,Slab-Rebar & Formwork | 25d | 2013-10-22 | 2013-11-19 | DUKHCONP1AZ3STGF2005 FF+14d, DUKHCONP1AZ3STGF2005 SS+2d | -22d | 0d | STEEL FIXERS SK [4091 h]; CARPENTERS SK [5526 h]; LABOR- SUBCONTRACTOR [7212.75 h]; REINFORCEMENT BARS QTY [51136 kg]; FORMWORK QTY [2763 Sqm] | 326,549 | 20 | REM | 1AP3SPGF20 | DUKHCON1AP3STGF2010 | DUKHCONP1AZ3STGF2010 | DH | CON | 1A | Z3 | ST | SP | GF | B02 | B02-D02 | RES-1A |  |
| DUKHCONP1AZ3STGF2015 |  | Beam, Stairs ,Slab-Concrete | 14d | 2013-11-07 | 2013-11-23 | DUKHCONP1AZ2STGF2015, DUKHCONP1AZ3STGF2010 SS+10d, DUKHCONP1AZ3STGF2010 FF+3d | -22d | 0d | CONCRETE MASON SK [740 h]; LABOR- SUBCONTRACTOR [555 h]; CONCRETE QTY [370 Cum] | 131,494 | 25 | REM | 1AP3SPGF25 | DUKHCON1AP3STGF2015 | DUKHCONP1AZ3STGF2015 | DH | CON | 1A | Z3 | ST | SP | GF | B02 | B02-D02 | RES-1A |  |
|  | 15 | **FIRST FLOORS** |  | 2013-11-10 | 2014-01-06 |  |  |  |  |  |  |  |  |  |  |  |  |  |  |  |  |  |  |  |  |  |
| DUKHCONP1AZ3STFF2020 |  | Column-Rebar & Formwork | 25d | 2013-11-10 | 2013-12-08 | DUKHCONP1AZ2STFF2020, DUKHCONP1AZ3STGF2015 FF+5d, DUKHCONP1AZ3STGF2015 SS+2d | -22d | 0d | STEEL FIXERS SK [574 h]; CARPENTERS SK [1472 h]; LABOR- SUBCONTRACTOR [1534.5 h]; REINFORCEMENT BARS QTY [7175 kg]; FORMWORK QTY [736 Sqm] | 64,915 | 10 | REM | 1AP3SPFF10 | DUKHCON1AP3STFF2020 | DUKHCONP1AZ3STFF2020 | DH | CON | 1A | Z3 | ST | SP | FF | B02 | B02-D02 | RES-1A |  |
| DUKHCONP1AZ3STFF2025 |  | Column-Concrete | 24d | 2013-11-19 | 2013-12-16 | DUKHCONP1AZ3STFF2020 FF+2d, DUKHCONP1AZ3STFF2020 SS+8d | -20d | 0d | CONCRETE MASON SK [128 h]; LABOR- SUBCONTRACTOR [96 h]; CONCRETE QTY [64 Cum] | 18,331 | 15 | REM | 1AP3SPFF15 | DUKHCON1AP3STFF2025 | DUKHCONP1AZ3STFF2025 | DH | CON | 1A | Z3 | ST | SP | FF | B02 | B02-D02 | RES-1A |  |
| DUKHCONP1AZ3STFF2030 |  | Beam, Stairs ,Slab-Rebar & Formwork | 25d | 2013-12-04 | 2014-01-02 | DUKHCONP1AZ3STFF2025 SS+2d, DUKHCONP1AZ3STFF2025 FF+14d | -20d | 0d | STEEL FIXERS SK [3685 h]; CARPENTERS SK [5526 h]; LABOR- SUBCONTRACTOR [6908.25 h]; REINFORCEMENT BARS QTY [46062 kg]; FORMWORK QTY [2763 Sqm] | 310,154 | 20 | REM | 1AP3SPFF20 | DUKHCON1AP3STFF2030 | DUKHCONP1AZ3STFF2030 | DH | CON | 1A | Z3 | ST | SP | FF | B02 | B02-D02 | RES-1A |  |
| DUKHCONP1AZ3STFF2035 |  | Beam, Stairs ,Slab-Concrete | 14d | 2013-12-22 | 2014-01-06 | DUKHCONP1AZ3STFF2030 FF+3d, DUKHCONP1AZ3STFF2030 SS+10d, DUKHCONP1AZ2STFF2035 | -20d | 0d | CONCRETE MASON SK [652 h]; LABOR- SUBCONTRACTOR [489 h]; CONCRETE QTY [326 Cum] | 119,102 | 25 | REM | 1AP3SPFF25 | DUKHCON1AP3STFF2035 | DUKHCONP1AZ3STFF2035 | DH | CON | 1A | Z3 | ST | SP | FF | B02 | B02-D02 | RES-1A |  |
|  | 20 | **ROOF** |  | 2013-12-24 | 2014-02-20 |  |  |  |  |  |  |  |  |  |  |  |  |  |  |  |  |  |  |  |  |  |
| DUKHCONP1AZ3STRF2040 |  | Column-Rebar & Formwork | 18d | 2013-12-24 | 2014-01-13 | DUKHCONP1AZ3STFF2035 SS+2d, DUKHCONP1AZ2STRF2040, DUKHCONP1AZ3STFF2035 FF+3d | -9d | 0d | STEEL FIXERS SK [137 h]; CARPENTERS SK [552 h]; LABOR- SUBCONTRACTOR [516.75 h]; REINFORCEMENT BARS QTY [1707 kg]; FORMWORK QTY [276 Sqm] | 21,168 | 10 | REM | 1AP3SPRF10 | DUKHCON1AP3STRF2040 | DUKHCONP1AZ3STRF2040 | DH | CON | 1A | Z3 | ST | SP | RF | B02 | B02-D02 | RES-1A |  |
| DUKHCONP1AZ3STRF2045 |  | Column-Concrete | 17d | 2013-12-28 | 2014-01-15 | DUKHCONP1AZ3STRF2040 SS+3d, DUKHCONP1AZ3STRF2040 FF+1d | -4d | 0d | CONCRETE MASON SK [30 h]; LABOR- SUBCONTRACTOR [22.5 h]; CONCRETE QTY [15 Cum] | 4,363 | 15 | REM | 1AP3SPRF15 | DUKHCON1AP3STRF2045 | DUKHCONP1AZ3STRF2045 | DH | CON | 1A | Z3 | ST | SP | RF | B02 | B02-D02 | RES-1A |  |
| DUKHCONP1AZ3STRF2050 |  | Slab-Rebar & Formwork - Head Room | 20d | 2013-12-30 | 2014-01-21 | DUKHCONP1AZ3STRF2045 SS+2d, DUKHCONP1AZ3STRF2045 FF+5d | -4d | 0d | STEEL FIXERS SK [869 h]; CARPENTERS SK [694 h]; LABOR- SUBCONTRACTOR [1172.25 h]; REINFORCEMENT BARS QTY [10859 kg]; FORMWORK QTY [347 Sqm] | 61,496 | 20 | REM | 1AP3SPRF20 | DUKHCON1AP3STRF2050 | DUKHCONP1AZ3STRF2050 | DH | CON | 1A | Z3 | ST | SP | RF | B02 | B02-D02 | RES-1A |  |
| DUKHCONP1AZ3STRF2055 |  | Slab-Concrete-Head room | 13d | 2014-01-09 | 2014-01-23 | DUKHCONP1AZ3STRF2050 SS+5d, DUKHCONP1AZ2STRF2055, DUKHCONP1AZ3STRF2050 FF+2d | -4d | 0d | LABOR- SUBCONTRACTOR [108 h]; CONCRETE QTY [72 Cum]; CONCRETE MASON SK [144 h] | 22,960 | 25 | REM | 1AP3SPRF25 | DUKHCON1AP3STRF2055 | DUKHCONP1AZ3STRF2055 | DH | CON | 1A | Z3 | ST | SP | RF | B02 | B02-D02 | RES-1A |  |
| DUKHCONP1AZ3STRF2060 |  | Construction of Parapets | 25d | 2014-01-12 | 2014-02-09 | DUKHCONP1AZ3STRF2055 FF+14d, DUKHCONP1AZ3STRF2055 SS+2d | 32d | 4d | BLOCK MASON SK [1408 h]; LABOR- SUBCONTRACTOR [792 h]; BLOCK QTY [704 Sqm] | 43,648 | 30 | REM | 1AP3SPRF30 | DUKHCON1AP3STRF2060 | DUKHCONP1AZ3STRF2060 | DH | CON | 1A | Z3 | ST | SP | RF | B02 | B02-D03 | RES-1A |  |
| DUKHCONP1AZ3STRF2065 |  | Construction of up stands/Plinth | 25d | 2014-01-22 | 2014-02-20 | DUKHCONP1AZ3STRF2060 FF+5d, DUKHCONP1AZ3STRF2060 SS+5d, DUKHCONP1AZ2STRF2065 | 28d | 0d | STEEL FIXERS SK [45 h]; CARPENTERS SK [256 h]; CONCRETE MASON SK [16 h]; LABOR- SUBCONTRACTOR [237.75 h]; REINFORCEMENT BARS QTY [559 kg]; FORMWORK QTY [128 Sqm]; CONCRETE QTY [8 Cum] | 12,624 | 35 | REM | 1AP3SPRF35 | DUKHCON1AP3STRF2065 | DUKHCONP1AZ3STRF2065 | DH | CON | 1A | Z3 | ST | SP | RF | B02 | B02-D02 | RES-1A |  |
|  | 15 | **FINISHING WORKS** |  | 2013-12-08 | 2014-06-15 |  |  |  |  |  |  |  |  |  |  |  |  |  |  |  |  |  |  |  |  |  |
|  | 10 | **INTERNAL FINISHES** |  | 2013-12-08 | 2014-06-15 |  |  |  |  |  |  |  |  |  |  |  |  |  |  |  |  |  |  |  |  |  |
|  | 10 | **GROUND FLOOR** |  | 2013-12-08 | 2014-05-21 |  |  |  |  |  |  |  |  |  |  |  |  |  |  |  |  |  |  |  |  |  |
| DUKHCONP1AZ3ARGF3000 |  | Block work | 25d | 2013-12-08 | 2014-01-06 | DUKHCONP1AZ2ARGF3000, DUKHCONP1AZ3STGF2015 FF+21d, DUKHCONP1AZ3STGF2015 SS+21d | -6d | 0d | BLOCK MASON SK [6232 h]; LABOR- SUBCONTRACTOR [3505.5 h]; BLOCK QTY [3116 Sqm] | 225,562 | 10 | REM | 1AP3IFGF10 | DUKHCON1AP3ARGF3000 | DUKHCONP1AZ3ARGF3000 | DH | CON | 1A | Z3 | FIN | IF | GF | B02 | B02-D03 | RES-1A |  |
| DUKHCONP1AZ3ARGF3005 |  | Plastering work | 25d | 2013-12-31 | 2014-01-28 | DUKHCONP1AZ3ARGF3000 FF+7d, DUKHCONP1AZ2ARGF3005, DUKHCONP1AZ3ELGF4000 SS+5d, DUKHCONP1AZ3ELGF4000 FF+5d, DUKHCONP1AZ3PLGF4305 SS+5d, DUKHCONP1AZ3PLGF4305 FF+5d, DUKHCONP1AZ3ARGF3000 SS+7d | -6d | 0d | PLASTER MASON SK [8728 h]; LABOR- SUBCONTRACTOR [4909.5 h]; PLASTER QTY [5455 Sqm] | 71,593 | 12 | REM | 1AP3IFGF12 | DUKHCON1AP3ARGF3005 | DUKHCONP1AZ3ARGF3005 | DH | CON | 1A | Z3 | FIN | IF | GF | B02 | B02-D10 | RES-1A |  |
| DUKHCONP1AZ3ARGF3010 |  | Flooring screed | 21d | 2014-01-08 | 2014-02-01 | DUKHCONP1AZ3ARGF3005 FF+3d, DUKHCONP1AZ3ARGF3005 SS+7d | 2d | 8d | SCREED MASON SK [1149 h]; LABOR- SUBCONTRACTOR [431.25 h]; FLOORING SCREED QTY [1436 Sqm] | 48,008 | 15 | REM | 1AP3IFGF15 | DUKHCON1AP3ARGF3010 | DUKHCONP1AZ3ARGF3010 | DH | CON | 1A | Z3 | FIN | IF | GF | B02 | B02-D10 | RES-1A |  |
| DUKHCONP1AZ3ARGF3015 |  | Wet area waterproofing & Protection Screed | 15d | 2014-01-18 | 2014-02-03 | DUKHCONP1AZ3ARGF3005 FF+5d, DUKHCONP1AZ2ARGF3015, DUKHCONP1AZ3ARGF3005 SS+7d | -6d | 0d | LABOR- SUBCONTRACTOR [67.5 h]; WETAREA WATERPROOFING QTY [224 Sqm]; WATERPROOFING SPECIALIST SK [180 h] | 7,616 | 18 | REM | 1AP3IFGF18 | DUKHCON1AP3ARGF3015 | DUKHCONP1AZ3ARGF3015 | DH | CON | 1A | Z3 | FIN | IF | GF | B02 | B02-D10 | RES-1A |  |
| DUKHCONP1AZ3ARGF3030 |  | Paint First coat | 25d | 2014-01-20 | 2014-02-18 | DUKHCONP1AZ3ARGF3005 FF+14d, DUKHCONP1AZ2ARGF3030, DUKHCONP1AZ3ARGF3005 SS+14d | 5d | 0d | LABOR- SUBCONTRACTOR [1479.75 h]; FIRSTCOAT PAINT QTY [4932 Sqm]; PAINTERS SK [3946 h] | 26,608 | 21 | REM | 1AP3IFGF21 | DUKHCON1AP3ARGF3030 | DUKHCONP1AZ3ARGF3030 | DH | CON | 1A | Z3 | FIN | IF | GF | B02 | B02-D11 | RES-1A | ENT |
| DUKHCONP1AZ3ARGF3020 |  | Ceramic Wall Tiling | 25d | 2014-01-23 | 2014-02-22 | DUKHCONP1AZ2ARGF3020, DUKHCONP1AZ3PLGF4305 SS+4d, DUKHCONP1AZ3PLGF4310 FF+4d, DUKHCONP1AZ3PLGF4305 FF+4d, DUKHCONP1AZ3PLGF4310 SS+4d, DUKHCONP1AZ3ARGF3015 FF+5d, DUKHCONP1AZ3ARGF3015 SS+5d | -6d | 0d | TILE MASON SK [2834 h]; LABOR- SUBCONTRACTOR [1594.5 h]; CERAMIC WALL TILE QTY [1417 Sqm] | 92,597 | 24 | REM | 1AP3IFGF24 | DUKHCON1AP3ARGF3020 | DUKHCONP1AZ3ARGF3020 | DH | CON | 1A | Z3 | FIN | IF | GF | B02 | B02-D10 | RES-1A |  |
| DUKHCONP1AZ3ARGF3025 |  | Porcelain Tile flooring | 25d | 2014-01-29 | 2014-02-27 | DUKHCONP1AZ3ARGF3010 SS+10d, DUKHCONP1AZ3ARGF3010 FF+10d, DUKHCONP1AZ3ARGF3020 SS+5d, DUKHCONP1AZ3ARGF3020 FF+5d, DUKHCONP1AZ2ARGF3025 | -6d | 0d | TILE MASON SK [1116 h]; LABOR- SUBCONTRACTOR [627.75 h]; PORCELAIN FLOORING QTY [976 Sqm] | 74,919 | 27 | REM | 1AP3IFGF27 | DUKHCON1AP3ARGF3025 | DUKHCONP1AZ3ARGF3025 | DH | CON | 1A | Z3 | FIN | IF | GF | B02 | B02-D10 | RES-1A |  |
| DUKHCONP1AZ3ARGF3045 |  | Fixing of Suspension systems | 20d | 2014-02-17 | 2014-03-11 | DUKHCONP1AZ3ARGF3030 SS+7d, DUKHCONP1AZ3ARGF3030 FF+7d, DUKHCONP1AZ3ARGF3025 FF+10d, DUKHCONP1AZ3ELGF4010 SS+5d, DUKHCONP1AZ2ARGF3045, DUKHCONP1AZ3ELGF4010 FF+5d, DUKHCONP1AZ3ARGF3025 SS+10d | -6d | 0d | LABOR- SUBCONTRACTOR [523.82 h]; SUSPENSION QTY [1164.04 Sqm]; FALSE CEILING SKILLED SK [931.23 h] | 22,840 | 39 | REM | 1AP3IFGF39 | DUKHCON1AP3ARGF3045 | DUKHCONP1AZ3ARGF3045 | DH | CON | 1A | Z3 | FIN | IF | GF | B02 | B02-D10 | RES-1A | SUS |
| DUKHCONP1AZ3ARGF3035 |  | Slate Tile Flooring & Skirting | 15d | 2014-02-19 | 2014-03-08 | DUKHCONP1AZ3ARGF3025 SS+13d, DUKHCONP1AZ3ARGF3025 FF+7d, DUKHCONP1AZ3ARGF3010 FF+13d, DUKHCONP1AZ3ARGF3010 SS+13d | -1d | 2d | TILE MASON SK [487 h]; LABOR- SUBCONTRACTOR [274.5 h]; SLATE TILE QTY [304 Sqm] | 65,885 | 33 | REM | 1AP3IFGF33 | DUKHCON1AP3ARGF3035 | DUKHCONP1AZ3ARGF3035 | DH | CON | 1A | Z3 | FIN | IF | GF | B02 | B02-D10 | RES-1A |  |
| DUKHCONP1AZ3ARGF3055 |  | Aluminum tile false ceiling | 25d | 2014-02-25 | 2014-03-25 | DUKHCONP1AZ3ARGF3045 SS+7d, DUKHCONP1AZ3ARGF3045 FF+7d, DUKHCONP1AZ3ACGF4600 SS+7d, DUKHCONP1AZ3ACGF4600 FF+7d | -3d | 3d | LABOR- SUBCONTRACTOR [54 h]; FALSE CEILING QTY [120 Sqm]; FALSE CEILING SKILLED SK [96 h] | 7,661 | 42 | REM | 1AP3IFGF42 | DUKHCON1AP3ARGF3055 | DUKHCONP1AZ3ARGF3055 | DH | CON | 1A | Z3 | FIN | IF | GF | B02 | B02-D10 | RES-1A | ALU |
| DUKHCONP1AZ3ARGF3040 |  | Cobble Tile flooring | 15d | 2014-02-26 | 2014-03-15 | DUKHCONP1AZ3ARGF3010 FF+13d, DUKHCONP1AZ3ARGF3035 SS+4d, DUKHCONP1AZ3ARGF3010 SS+13d, DUKHCONP1AZ3ARGF3025 SS+13d, DUKHCONP1AZ3ARGF3035 FF+4d, DUKHCONP1AZ3ARGF3025 FF+13d | -3d | 0d | TILE MASON SK [474 h]; LABOR- SUBCONTRACTOR [267 h]; COBBLE STONE QTY [296 Sqm] | 24,687 | 30 | REM | 1AP3IFGF30 | DUKHCON1AP3ARGF3040 | DUKHCONP1AZ3ARGF3040 | DH | CON | 1A | Z3 | FIN | IF | GF | B02 | B02-D10 | RES-1A |  |
| DUKHCONP1AZ3ARGF3060 |  | Gypsum board false ceiling | 25d | 2014-03-01 | 2014-03-29 | DUKHCONP1AZ2ARGF3060, DUKHCONP1AZ3ARGF3045 SS+10d, DUKHCONP1AZ3ARGF3045 FF+10d, DUKHCONP1AZ3ACGF4600 FF+7d, DUKHCONP1AZ3ACGF4600 SS+7d | -6d | 0d | FALSE CEILING QTY [1068.04 Sqm]; FALSE CEILING SKILLED SK [854.4 h]; LABOR- SUBCONTRACTOR [480.75 h] | 60,827 | 45 | REM | 1AP3IFGF45 | DUKHCON1AP3ARGF3060 | DUKHCONP1AZ3ARGF3060 | DH | CON | 1A | Z3 | FIN | IF | GF | B02 | B02-D10 | RES-1A | GYP |
| DUKHCONP1AZ3ARGF3050 |  | Granite - Stair case flooring & Skirting | 20d | 2014-03-06 | 2014-03-29 | DUKHCONP1AZ3ARGF3025 FF+13d, DUKHCONP1AZ3ARGF3040 SS+7d, DUKHCONP1AZ3ARGF3040 FF+7d, DUKHCONP1AZ3ARGF3025 SS+13d | -3d | 0d | GRANITE MASON SK [560 h]; LABOR- SUBCONTRACTOR [315 h]; GRANITE QTY [140 Sqm] | 93,589 | 36 | REM | 1AP3IFGF36 | DUKHCON1AP3ARGF3050 | DUKHCONP1AZ3ARGF3050 | DH | CON | 1A | Z3 | FIN | IF | GF | B02 | B02-D10 | RES-1A |  |
| DUKHCONP1AZ3ARGF3065 |  | Wooden door & PVC Door | 15d | 2014-03-20 | 2014-04-06 | DUKHCONP1AZ3ARGF3035 FF+7d, DUKHCONP1AZ3ARGF3050 SS+7d, DUKHCONP1AZ3ARGF3050 FF+7d, DUKHCONP1AZ2ARGF3065, DUKHCONP1AZ3ARGF3035 SS+7d | -3d | 0d | LABOR- SUBCONTRACTOR [84 h]; WOODEN DOOR QTY [56 ea]; DOOR ERECTOR SK [224 h] | 233,577 | 48 | REM | 1AP3IFGF48 | DUKHCON1AP3ARGF3065 | DUKHCONP1AZ3ARGF3065 | DH | CON | 1A | Z3 | FIN | IF | GF | B02 | B02-D05 | RES-1A |  |
| DUKHCONP1AZ3ARGF3070 |  | Aluminum doors | 15d | 2014-03-26 | 2014-04-12 | DUKHCONP1AZ3ARGF3065 SS+5d, DUKHCONP1AZ3ARGF3065 FF+5d, DUKHCONP1AZ2ARGF3070 | -3d | 0d | LABOR- SUBCONTRACTOR [48 h]; ALUMINIUM DOOR QTY [32 ea]; DOOR ERECTOR SK [128 h] | 83,208 | 51 | REM | 1AP3IFGF51 | DUKHCON1AP3ARGF3070 | DUKHCONP1AZ3ARGF3070 | DH | CON | 1A | Z3 | FIN | IF | GF | B02 | B02-D06 | RES-1A |  |
| DUKHCONP1AZ3ARGF3075 |  | Carpentry & Joinery Works | 20d | 2014-04-01 | 2014-04-23 | DUKHCONP1AZ3ARGF3070 SS+5d, DUKHCONP1AZ2ARGF3075, DUKHCONP1AZ3ARGF3070 FF+7d | -3d | 0d | LABOR- SUBCONTRACTOR [156 h]; CABINET QTY [48 ea]; COUNTER QTY [8 ea]; JOINERY WORK SK [384 h]; COUNTER SK [32 h] | 114,072 | 57 | REM | 1AP3IFGF57 | DUKHCON1AP3ARGF3075 | DUKHCONP1AZ3ARGF3075 | DH | CON | 1A | Z3 | FIN | IF | GF | B02 | B02-D05 | RES-1A |  |
| DUKHCONP1AZ3ARGF3080 |  | Aluminum windows | 20d | 2014-04-02 | 2014-04-24 | DUKHCONP1AZ3ARGF3070 SS+6d, DUKHCONP1AZ2ARGF3080, DUKHCONP1AZ3ARGF3070 FF+6d | 7d | 5d | LABOR- SUBCONTRACTOR [44.25 h]; ALUMINIUM WINDOWS QTY [44 ea]; WINDOW ERECTOR SK [118 h] | 36,283 | 54 | REM | 1AP3IFGF54 | DUKHCON1AP3ARGF3080 | DUKHCONP1AZ3ARGF3080 | DH | CON | 1A | Z3 | FIN | IF | GF | B02 | B02-D06 | RES-1A |  |
| DUKHCONP1AZ3ARGF3085 |  | S.S.Balustrade | 20d | 2014-04-09 | 2014-05-01 | DUKHCONP1AZ3ARGF3050 FF+7d, DUKHCONP1AZ3ARGF3075 FF+7d, DUKHCONP1AZ3ARGF3050 SS+7d, DUKHCONP1AZ3ARGF3075 SS+7d | 2d | 5d | LABOR- SUBCONTRACTOR [94.5 h]; S.S.BALUSTRADE QTY [84 lm]; HANDRAIL ERECTOR SKILLED [168 h] | 121,464 | 63 | REM | 1AP3IFGF63 | DUKHCON1AP3ARGF3085 | DUKHCONP1AZ3ARGF3085 | DH | CON | 1A | Z3 | FIN | IF | GF | B02 | B02-D06 | RES-1A |  |
| DUKHCONP1AZ3ARGF3090 |  | Installation of Granite Counter Top | 15d | 2014-04-14 | 2014-04-30 | DUKHCONP1AZ3ARGF3075 FF+6d, DUKHCONP1AZ3ARGF3075 SS+7d | -3d | 0d | GRANITE MASON SK [128 h]; LABOR- SUBCONTRACTOR [48 h]; GRANITE COUNTER TOP QTY [32 ea] | 34,847 | 60 | REM | 1AP3IFGF60 | DUKHCON1AP3ARGF3090 | DUKHCONP1AZ3ARGF3090 | DH | CON | 1A | Z3 | FIN | IF | GF | B02 | B02-D10 | RES-1A |  |
| DUKHCONP1AZ3ARGF3095 |  | Final Painting | 25d | 2014-04-23 | 2014-05-21 | DUKHCONP1AZ3ARGF3040 SS+13d, DUKHCONP1AZ3ARGF3090 SS+8d, DUKHCONP1AZ3ARGF3060 FF+8d, DUKHCONP1AZ3ARGF3030 FF+10d, DUKHCONP1AZ3ARGF3035 FF+13d, DUKHCONP1AZ3ARGF3060 SS+8d, DUKHCONP1AZ3ARGF3070 FF+5d, DUKHCONP1AZ3ARGF3080 FF+8d, DUKHCONP1AZ3ACGF4610 FF+10d, DUKHCONP1AZ2ARGF3095, DUKHCONP1AZ3ACGF4610 SS+10d, DUKHCONP1AZ3ARGF3085 SS+7d, DUKHCONP1AZ3ARGF3030 SS+10d, DUKHCONP1AZ3ARGF3040 FF+13d, DUKHCONP1AZ3ARGF3035 SS+13d, DUKHCONP1AZ3ARGF3070 SS+5d, DUKHCONP1AZ3ARGF3080 SS+8d, DUKHCONP1AZ3ARGF3090 FF+8d, DUKHCONP1AZ3ARGF3085 FF+7d | -3d | 0d | LABOR- SUBCONTRACTOR [1479.75 h]; PAINT QTY [4932 Sqm]; PAINTERS SK [3946 h] | 61,805 | 66 | REM | 1AP3IFGF66 | DUKHCON1AP3ARGF3095 | DUKHCONP1AZ3ARGF3095 | DH | CON | 1A | Z3 | FIN | IF | GF | B02 | B02-D11 | RES-1A | PNT |

Notes:
- DUKHCONP1AZ3STGF2000: Expenses: P1A-Concrete Works 73433
- DUKHCONP1AZ3STGF2005: Expenses: P1A-Concrete Works 20945
- DUKHCONP1AZ3STGF2010: Expenses: P1A-Concrete Works 326549
- DUKHCONP1AZ3STGF2015: Expenses: P1A-Concrete Works 131494
- DUKHCONP1AZ3STFF2020: Expenses: P1A-Concrete Works 64915
- DUKHCONP1AZ3STFF2025: Expenses: P1A-Concrete Works 18331
- DUKHCONP1AZ3STFF2030: Expenses: P1A-Concrete Works 310154
- DUKHCONP1AZ3STFF2035: Expenses: P1A-Concrete Works 119102
- DUKHCONP1AZ3STRF2040: Expenses: P1A-Concrete Works 21168
- DUKHCONP1AZ3STRF2045: Expenses: P1A-Concrete Works 4363
- DUKHCONP1AZ3STRF2050: Expenses: P1A-Concrete Works 61496
- DUKHCONP1AZ3STRF2055: Expenses: P1A-Concrete Works 22960
- DUKHCONP1AZ3STRF2060: Expenses: P1A-Block work 43648
- DUKHCONP1AZ3STRF2065: Expenses: P1A-Concrete Works 12624
- DUKHCONP1AZ3ARGF3000: Expenses: P1A-Block work 225562
- DUKHCONP1AZ3ARGF3005: Expenses: P1A-Finishes 71593
- DUKHCONP1AZ3ARGF3010: Expenses: P1A-Finishes 48008
- DUKHCONP1AZ3ARGF3015: Expenses: P1A-Finishes 7616
- DUKHCONP1AZ3ARGF3030: Expenses: P1A-Painting and Decorating 26608
- DUKHCONP1AZ3ARGF3020: Expenses: P1A-Finishes 92597
- DUKHCONP1AZ3ARGF3025: Expenses: P1A-Finishes 74919
- DUKHCONP1AZ3ARGF3045: Expenses: P1A-Finishes 22840
- DUKHCONP1AZ3ARGF3035: Expenses: P1A-Finishes 65885
- DUKHCONP1AZ3ARGF3055: Expenses: P1A-Finishes 7661
- DUKHCONP1AZ3ARGF3040: Expenses: P1A-Finishes 24687
- DUKHCONP1AZ3ARGF3060: Expenses: P1A-Finishes 60827
- DUKHCONP1AZ3ARGF3050: Expenses: P1A-Finishes 93589
- DUKHCONP1AZ3ARGF3065: Expenses: P1A-Carpentry and Joinery 233577
- DUKHCONP1AZ3ARGF3070: Expenses: P1A-Metal work 83208
- DUKHCONP1AZ3ARGF3075: Expenses: P1A-Carpentry and Joinery 114072
- DUKHCONP1AZ3ARGF3080: Expenses: P1A-Metal work 36283
- DUKHCONP1AZ3ARGF3085: Expenses: P1A-Metal work 121464
- DUKHCONP1AZ3ARGF3090: Expenses: P1A-Finishes 34847
- DUKHCONP1AZ3ARGF3095: Expenses: P1A-Painting and Decorating 61805

| ID | WBS | Activity | Duration | Start | Finish | Predecessors | Total float | Free float | Resources | Cost | CODE | rem | P3 ACTID | P6 ID (old) | NP61D | PROJECT | PHASES | PACKAGE | PART | ELEMENTS | STEP | FLOORS | BILL NOS | BILL DIVISION | RES PACK | EXECUTER |
| --- | --- | --- | --- | --- | --- | --- | --- | --- | --- | --- | --- | --- | --- | --- | --- | --- | --- | --- | --- | --- | --- | --- | --- | --- | --- | --- |
|  | 15 | **FIRST FLOORS** |  | 2014-01-20 | 2014-06-15 |  |  |  |  |  |  |  |  |  |  |  |  |  |  |  |  |  |  |  |  |  |
| DUKHCONP1AZ3ARFF3300 |  | Block work | 25d | 2014-01-20 | 2014-02-18 | DUKHCONP1AZ3STFF2035 SS+21d, DUKHCONP1AZ2ARFF3300, DUKHCONP1AZ3STFF2020 SS+21d, DUKHCONP1AZ3STFF2020 FF+21d, DUKHCONP1AZ3STFF2035 FF+21d | -24d | 0d | BLOCK MASON SK [4088 h]; LABOR- SUBCONTRACTOR [2299.5 h]; BLOCK QTY [2044 Sqm] | 127,687 | 10 | REM | 1AP3IFFF10 | DUKHCON1AP3ARFF3300 | DUKHCONP1AZ3ARFF3300 | DH | CON | 1A | Z3 | FIN | IF | FF | B02 | B02-D03 | RES-1A |  |
| DUKHCONP1AZ3ARFF3305 |  | Plastering work | 25d | 2014-02-15 | 2014-03-15 | DUKHCONP1AZ2ARFF3305, DUKHCONP1AZ3PLFF4325 FF+6d, DUKHCONP1AZ3PLFF4325 SS+6d, DUKHCONP1AZ3ELFF4035 SS+5d, DUKHCONP1AZ3ARFF3300 FF+7d, DUKHCONP1AZ3ARFF3300 SS+7d, DUKHCONP1AZ3ELFF4035 FF+5d | -24d | 0d | PLASTER MASON SK [5695 h]; LABOR- SUBCONTRACTOR [3204 h]; PLASTER QTY [3559 Sqm] | 46,951 | 12 | REM | 1AP3IFFF12 | DUKHCON1AP3ARFF3305 | DUKHCONP1AZ3ARFF3305 | DH | CON | 1A | Z3 | FIN | IF | FF | B02 | B02-D10 | RES-1A |  |
| DUKHCONP1AZ3ARFF3310 |  | Flooring screed | 21d | 2014-02-23 | 2014-03-18 | DUKHCONP1AZ3ARFF3305 SS+7d, DUKHCONP1AZ3ARFF3305 FF+3d | -12d | 12d | SCREED MASON SK [884 h]; LABOR- SUBCONTRACTOR [331.5 h]; FLOORING SCREED QTY [1105 Sqm] | 36,472 | 15 | REM | 1AP3IFFF15 | DUKHCON1AP3ARFF3310 | DUKHCONP1AZ3ARFF3310 | DH | CON | 1A | Z3 | FIN | IF | FF | B02 | B02-D10 | RES-1A |  |
| DUKHCONP1AZ3ARFF3330 |  | Paint First coat | 25d | 2014-03-03 | 2014-03-31 | DUKHCONP1AZ3ARFF3305 SS+14d, DUKHCONP1AZ3ARFF3305 FF+14d | -10d | 14d | LABOR- SUBCONTRACTOR [1293.75 h]; FIRSTCOAT PAINT QTY [4311.37 Sqm]; PAINTERS SK [3449 h] | 26,608 | 21 | REM | 1AP3IFFF21 | DUKHCON1AP3ARFF3330 | DUKHCONP1AZ3ARFF3330 | DH | CON | 1A | Z3 | FIN | IF | FF | B02 | B02-D11 | RES-1A | ENT |
| DUKHCONP1AZ3ARFF3315 |  | Wet area waterproofing | 15d | 2014-03-06 | 2014-03-23 | DUKHCONP1AZ2ARFF3315, DUKHCONP1AZ3ARFF3305 SS+7d, DUKHCONP1AZ3ARFF3305 FF+7d | -24d | 0d | LABOR- SUBCONTRACTOR [331.5 h]; WETAREA WATERPROOFING QTY [1104 Sqm]; WATERPROOFING SPECIALIST SK [884 h] | 36,704 | 18 | REM | 1AP3IFFF18 | DUKHCON1AP3ARFF3315 | DUKHCONP1AZ3ARFF3315 | DH | CON | 1A | Z3 | FIN | IF | FF | B02 | B02-D10 | RES-1A |  |
| DUKHCONP1AZ3ARFF3320 |  | Ceramic Wall Tiling | 25d | 2014-03-13 | 2014-04-10 | DUKHCONP1AZ3PLFF4325 FF+4d, DUKHCONP1AZ3ARFF3315 SS+6d, DUKHCONP1AZ3ARFF3315 FF+6d, DUKHCONP1AZ3PLFF4330 SS+7d, DUKHCONP1AZ3PLFF4325 SS+4d, DUKHCONP1AZ2ARFF3320, DUKHCONP1AZ3PLFF4330 FF+7d | -24d | 0d | TILE MASON SK [1214 h]; LABOR- SUBCONTRACTOR [683.25 h]; CERAMIC WALL TILE QTY [607 Sqm] | 42,941 | 24 | REM | 1AP3IFFF24 | DUKHCON1AP3ARFF3320 | DUKHCONP1AZ3ARFF3320 | DH | CON | 1A | Z3 | FIN | IF | FF | B02 | B02-D10 | RES-1A |  |
| DUKHCONP1AZ3ARFF3325 |  | Porcelain Tile flooring | 25d | 2014-03-20 | 2014-04-17 | DUKHCONP1AZ2ARFF3325, DUKHCONP1AZ3ARFF3320 SS+6d, DUKHCONP1AZ3ARFF3310 SS+10d, DUKHCONP1AZ3ARFF3310 FF+10d, DUKHCONP1AZ3ARFF3320 FF+6d | -24d | 0d | TILE MASON SK [1116 h]; LABOR- SUBCONTRACTOR [627.75 h]; PORCELAIN FLOORING QTY [976 Sqm] | 74,923 | 27 | REM | 1AP3IFFF27 | DUKHCON1AP3ARFF3325 | DUKHCONP1AZ3ARFF3325 | DH | CON | 1A | Z3 | FIN | IF | FF | B02 | B02-D10 | RES-1A |  |
| DUKHCONP1AZ3ARFF3345 |  | Fixing of Suspension systems | 20d | 2014-04-02 | 2014-04-24 | DUKHCONP1AZ2ARFF3345, DUKHCONP1AZ3ELFF4045 SS+5d, DUKHCONP1AZ3ARFF3330 FF+7d, DUKHCONP1AZ3ARFF3330 SS+7d, DUKHCONP1AZ3ARFF3325 FF+6d, DUKHCONP1AZ3ARFF3325 SS+6d, DUKHCONP1AZ3ELFF4045 FF+5d | -24d | 0d | LABOR- SUBCONTRACTOR [469.8 h]; SUSPENSION QTY [1044 Sqm]; FALSE CEILING SKILLED SK [835.2 h] | 19,648 | 36 | REM | 1AP3IFFF36 | DUKHCON1AP3ARFF3345 | DUKHCONP1AZ3ARFF3345 | DH | CON | 1A | Z3 | FIN | IF | FF | B02 | B02-D10 | RES-1A | SUS |
| DUKHCONP1AZ3ARFF3335 |  | Slate Tile Flooring & Skirting | 15d | 2014-04-07 | 2014-04-23 | DUKHCONP1AZ3ARFF3310 SS+13d, DUKHCONP1AZ3ARFF3325 SS+13d, DUKHCONP1AZ3ARFF3310 FF+13d, DUKHCONP1AZ3ARFF3325 FF+5d | -16d | 8d | TILE MASON SK [167 h]; LABOR- SUBCONTRACTOR [94.5 h]; SLATE TILE QTY [104 Sqm] | 20,405 | 30 | REM | 1AP3IFFF30 | DUKHCON1AP3ARFF3335 | DUKHCONP1AZ3ARFF3335 | DH | CON | 1A | Z3 | FIN | IF | FF | B02 | B02-D10 | RES-1A |  |
| DUKHCONP1AZ3ARFF3360 |  | Gypsum board false ceiling | 25d | 2014-04-09 | 2014-05-07 | DUKHCONP1AZ3ACFF4615 SS+7d, DUKHCONP1AZ3ACFF4615 FF+7d, DUKHCONP1AZ3ARFF3345 FF+6d, DUKHCONP1AZ3ARFF3345 SS+6d, DUKHCONP1AZ2ARFF3360 | -24d | 0d | LABOR- SUBCONTRACTOR [469.8 h]; FALSE CEILING QTY [1044 Sqm]; FALSE CEILING SKILLED SK [835.2 h] | 60,821 | 39 | REM | 1AP3IFFF39 | DUKHCON1AP3ARFF3360 | DUKHCONP1AZ3ARFF3360 | DH | CON | 1A | Z3 | FIN | IF | FF | B02 | B02-D10 | RES-1A | GYP |
| DUKHCONP1AZ3ARFF3350 |  | Granite - Stair case flooring & Skirting | 20d | 2014-04-10 | 2014-05-03 | DUKHCONP1AZ3ARFF3325 SS+13d, DUKHCONP1AZ3ARFF3325 FF+13d | -22d | 2d | GRANITE MASON SK [560 h]; LABOR- SUBCONTRACTOR [315 h]; GRANITE QTY [140 Sqm] | 93,598 | 33 | REM | 1AP3IFFF33 | DUKHCON1AP3ARFF3350 | DUKHCONP1AZ3ARFF3350 | DH | CON | 1A | Z3 | FIN | IF | FF | B02 | B02-D10 | RES-1A |  |
| DUKHCONP1AZ3ARFF3365 |  | Wooden door | 15d | 2014-04-24 | 2014-05-11 | DUKHCONP1AZ3ARFF3360 FF+3d, DUKHCONP1AZ3ARFF3335 FF+7d, DUKHCONP1AZ3ARFF3350 SS+5d, DUKHCONP1AZ3ARFF3360 SS+3d, DUKHCONP1AZ3ARFF3350 FF+5d, DUKHCONP1AZ3ARFF3335 SS+7d, DUKHCONP1AZ2ARFF3365 | -24d | 0d | LABOR- SUBCONTRACTOR [84 h]; WOODEN DOOR QTY [56 ea]; DOOR ERECTOR SK [224 h] | 152,394 | 42 | REM | 1AP3IFFF42 | DUKHCON1AP3ARFF3365 | DUKHCONP1AZ3ARFF3365 | DH | CON | 1A | Z3 | FIN | IF | FF | B02 | B02-D05 | RES-1A |  |
| DUKHCONP1AZ3ARFF3370 |  | Aluminum Door | 20d | 2014-04-24 | 2014-05-17 | DUKHCONP1AZ3ARFF3365 SS, DUKHCONP1AZ3ARFF3365 FF, DUKHCONP1AZ2ARFF3370 | -24d | 0d | LABOR- SUBCONTRACTOR [60 h]; ALUMINIUM DOOR QTY [40 ea]; DOOR ERECTOR SK [160 h] | 122,026 | 45 | REM | 1AP3IFFF45 | DUKHCON1AP3ARFF3370 | DUKHCONP1AZ3ARFF3370 | DH | CON | 1A | Z3 | FIN | IF | FF | B02 | B02-D06 | RES-1A |  |
| DUKHCONP1AZ3ARFF3375 |  | Carpentry & Joinery Works | 25d | 2014-04-30 | 2014-05-28 | DUKHCONP1AZ2ARFF3375, DUKHCONP1AZ3ARFF3370 FF+5d, DUKHCONP1AZ3ARFF3370 SS+5d | -24d | 0d | LABOR- SUBCONTRACTOR [300 h]; CABINET QTY [24 ea]; COUNTER QTY [24 ea]; WARDROBE QTY [40 ea]; SHELVES QTY [24 ea]; JOINERY WORK SK [704 h]; COUNTER SK [96 h] | 231,933 | 51 | REM | 1AP3IFFF51 | DUKHCON1AP3ARFF3375 | DUKHCONP1AZ3ARFF3375 | DH | CON | 1A | Z3 | FIN | IF | FF | B02 | B02-D05 | RES-1A |  |
| DUKHCONP1AZ3ARFF3380 |  | Aluminum windows | 20d | 2014-05-01 | 2014-05-24 | DUKHCONP1AZ3ARFF3370 FF+6d, DUKHCONP1AZ3ARFF3370 SS+6d | -20d | 4d | LABOR- SUBCONTRACTOR [44.25 h]; ALUMINIUM WINDOWS QTY [44 ea]; WINDOW ERECTOR SK [118 h] | 55,776 | 48 | REM | 1AP3IFFF48 | DUKHCON1AP3ARFF3380 | DUKHCONP1AZ3ARFF3380 | DH | CON | 1A | Z3 | FIN | IF | FF | B02 | B02-D06 | RES-1A |  |
| DUKHCONP1AZ3ARFF3385 |  | Handrail & Balustrade | 20d | 2014-05-12 | 2014-06-03 | DUKHCONP1AZ3ARFF3350 FF+7d, DUKHCONP1AZ3ARFF3375 SS+5d, DUKHCONP1AZ3ARFF3350 SS+7d, DUKHCONP1AZ3ARFF3375 FF+5d | -24d | 0d | LABOR- SUBCONTRACTOR [283.5 h]; S.S.BALUSTRADE QTY [252 lm]; HANDRAIL ERECTOR SKILLED [504 h] | 308,447 | 57 | REM | 1AP3IFFF57 | DUKHCON1AP3ARFF3385 | DUKHCONP1AZ3ARFF3385 | DH | CON | 1A | Z3 | FIN | IF | FF | B02 | B02-D06 | RES-1A |  |
| DUKHCONP1AZ3ARFF3390 |  | Installation of Granite Counter Top | 20d | 2014-05-12 | 2014-06-03 | DUKHCONP1AZ3ARFF3375 SS+6d, DUKHCONP1AZ3ARFF3375 FF+5d | -23d | 1d | GRANITE MASON SK [64 h]; LABOR- SUBCONTRACTOR [24 h]; GRANITE COUNTER TOP QTY [16 ea] | 7,594 | 54 | REM | 1AP3IFFF54 | DUKHCON1AP3ARFF3390 | DUKHCONP1AZ3ARFF3390 | DH | CON | 1A | Z3 | FIN | IF | FF | B02 | B02-D10 | RES-1A |  |
| DUKHCONP1AZ3ARFF3395 |  | Final Painting | 25d | 2014-05-18 | 2014-06-15 | DUKHCONP1AZ3ARFF3335 SS+8d, DUKHCONP1AZ3ARFF3335 FF+8d, DUKHCONP1AZ3ARFF3350 SS+8d, DUKHCONP1AZ3ARFF3380 SS+10d, DUKHCONP1AZ3ARFF3390 FF+6d, DUKHCONP1AZ3ACFF4625 SS+6d, DUKHCONP1AZ3ARFF3350 FF+8d, DUKHCONP1AZ3ARFF3380 FF+10d, DUKHCONP1AZ3ARFF3330 SS+10d, DUKHCONP1AZ3ARFF3375 FF+8d, DUKHCONP1AZ3ARFF3375 SS+8d, DUKHCONP1AZ3ARFF3385 FF+6d, DUKHCONP1AZ3ARFF3360 SS+10d, DUKHCONP1AZ3ARFF3390 SS+4d, DUKHCONP1AZ3ARFF3360 FF+10d, DUKHCONP1AZ3ACFF4625 FF+6d, DUKHCONP1AZ2ARFF3395, DUKHCONP1AZ3ARFF3365 SS+8d, DUKHCONP1AZ3ARFF3365 FF+8d, DUKHCONP1AZ3ARFF3385 SS+5d, DUKHCONP1AZ3ARFF3330 FF+10d | -24d | 0d | LABOR- SUBCONTRACTOR [1293.75 h]; PAINT QTY [4311.37 Sqm]; PAINTERS SK [3449 h] | 50,803 | 60 | REM | 1AP3IFFF60 | DUKHCON1AP3ARFF3395 | DUKHCONP1AZ3ARFF3395 | DH | CON | 1A | Z3 | FIN | IF | FF | B02 | B02-D11 | RES-1A | PNT |
|  | 20 | **ROOF** |  | 2014-02-03 | 2014-04-09 |  |  |  |  |  |  |  |  |  |  |  |  |  |  |  |  |  |  |  |  |  |
| DUKHCONP1AZ3ARRF3600 |  | Block work | 20d | 2014-02-03 | 2014-02-26 | DUKHCONP1AZ2ARRF3600, DUKHCONP1AZ3STRF2055 FF+21d, DUKHCONP1AZ3STRF2055 SS+21d | 28d | 0d | BLOCK MASON SK [448 h]; LABOR- SUBCONTRACTOR [252 h]; BLOCK QTY [224 Sqm] | 17,789 | 10 | REM | 1AP3IFRF10 | DUKHCON1AP3ARRF3600 | DUKHCONP1AZ3ARRF3600 | DH | CON | 1A | Z3 | FIN | IF | RF | B02 | B02-D03 | RES-1A |  |
| DUKHCONP1AZ3ARRF3605 |  | Plastering work | 20d | 2014-02-12 | 2014-03-06 | DUKHCONP1AZ3ARRF3600 SS+7d, DUKHCONP1AZ3ARRF3600 FF+7d | 28d | 0d | PLASTER MASON SK [1143 h]; LABOR- SUBCONTRACTOR [643.5 h]; PLASTER QTY [714 Sqm] | 9,277 | 20 | REM | 1AP3IFRF20 | DUKHCON1AP3ARRF3605 | DUKHCONP1AZ3ARRF3605 | DH | CON | 1A | Z3 | FIN | IF | RF | B02 | B02-D10 | RES-1A |  |
| DUKHCONP1AZ3ARRF3610 |  | Flooring screed | 15d | 2014-02-26 | 2014-03-15 | DUKHCONP1AZ3ARRF3605 FF+7d, DUKHCONP1AZ3ARRF3605 SS+7d | 33d | 0d | SCREED MASON SK [99 h]; LABOR- SUBCONTRACTOR [37.5 h]; FLOORING SCREED QTY [123 Sqm] | 4,056 | 30 | REM | 1AP3IFRF30 | DUKHCON1AP3ARRF3610 | DUKHCONP1AZ3ARRF3610 | DH | CON | 1A | Z3 | FIN | IF | RF | B02 | B02-D10 | RES-1A |  |
| DUKHCONP1AZ3ARRF3695 |  | Painting -Storage area | 20d | 2014-03-06 | 2014-03-29 | DUKHCONP1AZ3ARRF3610 SS+7d, DUKHCONP1AZ3ARRF3610 FF+7d | 33d | 0d | LABOR- SUBCONTRACTOR [456 h]; PAINT QTY [1472 Sqm]; PAINTERS SK [1184 h] | 7,956 | 40 |  | 1AP3IFRF40 | DUKHCON1AP3ARRF3695 | DUKHCONP1AZ3ARRF3695 | DH | CON | 1A | Z3 | FIN | IF | RF | B02 | B02-D11 | RES-1A |  |
| DUKHCONP1AZ3ARRF3620 |  | Epoxy Painting -Storage area | 15d | 2014-03-24 | 2014-04-09 | DUKHCONP1AZ3ARRF3695 FF+10d, DUKHCONP1AZ3ARRF3695 SS+10d | 33d | 57d | LABOR- SUBCONTRACTOR [13.5 h]; EPOXY QTY [64 Sqm]; EPOXY SK [35 h] | 3,216 | 50 | REM | 1AP3IFRF50 | DUKHCON1AP3ARRF3620 | DUKHCONP1AZ3ARRF3620 | DH | CON | 1A | Z3 | FIN | IF | RF | B02 | B02-D11 | RES-1A |  |

Notes:
- DUKHCONP1AZ3ARFF3300: Expenses: P1A-Block work 127687
- DUKHCONP1AZ3ARFF3305: Expenses: P1A-Finishes 46951
- DUKHCONP1AZ3ARFF3310: Expenses: P1A-Finishes 36472
- DUKHCONP1AZ3ARFF3330: Expenses: P1A-Painting and Decorating 26608
- DUKHCONP1AZ3ARFF3315: Expenses: P1A-Finishes 36704
- DUKHCONP1AZ3ARFF3320: Expenses: P1A-Finishes 42941
- DUKHCONP1AZ3ARFF3325: Expenses: P1A-Finishes 74923
- DUKHCONP1AZ3ARFF3345: Expenses: P1A-Finishes 19648
- DUKHCONP1AZ3ARFF3335: Expenses: P1A-Finishes 20405
- DUKHCONP1AZ3ARFF3360: Expenses: P1A-Finishes 60821
- DUKHCONP1AZ3ARFF3350: Expenses: P1A-Finishes 93598
- DUKHCONP1AZ3ARFF3365: Expenses: P1A-Carpentry and Joinery 152394
- DUKHCONP1AZ3ARFF3370: Expenses: P1A-Metal work 122026
- DUKHCONP1AZ3ARFF3375: Expenses: P1A-Carpentry and Joinery 231933
- DUKHCONP1AZ3ARFF3380: Expenses: P1A-Metal work 55776
- DUKHCONP1AZ3ARFF3385: Expenses: P1A-Metal work 308447
- DUKHCONP1AZ3ARFF3390: Expenses: P1A-Finishes 7594
- DUKHCONP1AZ3ARFF3395: Expenses: P1A-Painting and Decorating 50803
- DUKHCONP1AZ3ARRF3600: Expenses: P1A-Block work 17789
- DUKHCONP1AZ3ARRF3605: Expenses: P1A-Finishes 9277
- DUKHCONP1AZ3ARRF3610: Expenses: P1A-Finishes 4056
- DUKHCONP1AZ3ARRF3695: Expenses: P1A-Painting and Decorating 7956
- DUKHCONP1AZ3ARRF3620: Expenses: P1A-Painting and Decorating 3216

| ID | WBS | Activity | Duration | Start | Finish | Predecessors | Total float | Free float | Resources | Cost | CODE | rem | P3 ACTID | P6 ID (old) | NP61D | PROJECT | PHASES | PACKAGE | PART | ELEMENTS | STEP | FLOORS | BILL NOS | BILL DIVISION | RES PACK |
| --- | --- | --- | --- | --- | --- | --- | --- | --- | --- | --- | --- | --- | --- | --- | --- | --- | --- | --- | --- | --- | --- | --- | --- | --- | --- |
|  | 15 | **EXTERNAL FINISHES** |  | 2014-02-26 | 2014-05-15 |  |  |  |  |  |  |  |  |  |  |  |  |  |  |  |  |  |  |  |  |
|  | 10 | **ROOF** |  | 2014-03-12 | 2014-05-15 |  |  |  |  |  |  |  |  |  |  |  |  |  |  |  |  |  |  |  |  |
| DUKHCONP1AZ3ARRF3630 |  | Leveling Screed for Waterproofing | 25d | 2014-03-12 | 2014-04-09 | DUKHCONP1AZ3STRF2065 FF+10d, DUKHCONP1AZ2ARRF3630, DUKHCONP1AZ3STRF2060 SS+10d, DUKHCONP1AZ3STRF2065 SS+10d, DUKHCONP1AZ3STRF2060 FF+10d | -3d | 0d | SCREED MASON SK [512 h]; LABOR- SUBCONTRACTOR [288 h]; ROOF WP SCREED QTY [1280 Sqm] | 56,792 | 10 | REM | 1AP3EFRF10 | DUKHCON1AP3ARRF3630 | DUKHCONP1AZ3ARRF3630 | DH | CON | 1A | Z3 | FIN | EF | RF | B02 | B02-D04 | RES-1A |
| DUKHCONP1AZ3ARRF3635 |  | Laying of Waterproofing Membrane | 25d | 2014-03-16 | 2014-04-13 | DUKHCONP1AZ3ARRF3630 FF+3d, DUKHCONP1AZ3ARRF3630 SS+3d | -3d | 0d | LABOR- SUBCONTRACTOR [310.5 h]; ROOF WP MEMBRANE QTY [1552 Sqm]; WATERPROOFING SPECIALIST SK [828 h] | 43,994 | 15 | REM | 1AP3EFRF15 | DUKHCON1AP3ARRF3635 | DUKHCONP1AZ3ARRF3635 | DH | CON | 1A | Z3 | FIN | EF | RF | B02 | B02-D04 | RES-1A |
| DUKHCONP1AZ3ARRF3640 |  | Installation of Insulation & Protection | 25d | 2014-03-20 | 2014-04-17 | DUKHCONP1AZ3ARRF3635 SS+4d, DUKHCONP1AZ3ARRF3635 FF+4d | -3d | 0d | LABOR- SUBCONTRACTOR [384 h]; ROOF WP INSULATION QTY [2560 Sqm]; WATERPROOFING SPECIALIST SK [1024 h] | 55,936 | 20 | REM | 1AP3EFRF20 | DUKHCON1AP3ARRF3640 | DUKHCONP1AZ3ARRF3640 | DH | CON | 1A | Z3 | FIN | EF | RF | B02 | B02-D04 | RES-1A |
| DUKHCONP1AZ3ARRF3645 |  | Lime Stone Chips & Paving slab Installation | 25d | 2014-03-25 | 2014-04-22 | DUKHCONP1AZ3ARRF3640 SS+4d, DUKHCONP1AZ3ARRF3640 FF+4d | -3d | 0d | PRECAST PAVING SLAB QTY [1136 Sqm]; PRE CAST CONCRETE SK [455 h]; LIME STONE QTY [112 Sqm]; TILE MASON SK [45 h]; LABOR- SUBCONTRACTOR [188.25 h] | 83,344 | 25 | REM | 1AP3EFRF25 | DUKHCON1AP3ARRF3645 | DUKHCONP1AZ3ARRF3645 | DH | CON | 1A | Z3 | FIN | EF | RF | B02 | B02-D04 | RES-1A |
| DUKHCONP1AZ3ARRF3650 |  | Install. of Gal. Frame & Aluminum Slat Screen | 25d | 2014-04-02 | 2014-04-30 | DUKHCONP1AZ3ARRF3645 SS+7d, DUKHCONP1AZ3ARRF3645 FF+7d | -3d | 0d | LABOR- SUBCONTRACTOR [448.5 h]; ALUMINIUM SCREEN QTY [224 Sqm]; DOOR ERECTOR SK [598 h] | 63,347 | 35 | REM | 1AP3EFRF35 | DUKHCON1AP3ARRF3650 | DUKHCONP1AZ3ARRF3650 | DH | CON | 1A | Z3 | FIN | EF | RF | B02 | B02-D06 | RES-1A |
| DUKHCONP1AZ3ARRF3655 |  | Installation of Pumps Protection cabinets | 20d | 2014-04-17 | 2014-05-10 | DUKHCONP1AZ3ARRF3645 SS+7d, DUKHCONP1AZ3ARRF3650 FF+8d, DUKHCONP1AZ3ARRF3650 SS+8d, DUKHCONP1AZ2ARRF3655, DUKHCONP1AZ3ARRF3645 FF+7d | -3d | 0d | LABOR- SUBCONTRACTOR [168 h]; CABINET QTY [56 ea]; JOINERY WORK SK [448 h] | 26,600 | 30 | REM | 1AP3EFRF30 | DUKHCON1AP3ARRF3655 | DUKHCONP1AZ3ARRF3655 | DH | CON | 1A | Z3 | FIN | EF | RF | B02 | B02-D04 | RES-1A |
| DUKHCONP1AZ3ARRF3660 |  | Installation of Access Ladder | 15d | 2014-04-29 | 2014-05-15 | DUKHCONP1AZ3ARRF3655 FF+5d, DUKHCONP1AZ3ARRF3655 SS+5d | 2d | 26d | LABOR- SUBCONTRACTOR [48 h]; LADDER QTY [16 ea]; LADDER ERECTOR SK [128 h] | 53,206 | 40 | REM | 1AP3EFRF40 | DUKHCON1AP3ARRF3660 | DUKHCONP1AZ3ARRF3660 | DH | CON | 1A | Z3 | FIN | EF | RF | B02 | B02-D06 | RES-1A |
|  | 15 | **ELEVATION** |  | 2014-02-26 | 2014-04-19 |  |  |  |  |  |  |  |  |  |  |  |  |  |  |  |  |  |  |  |  |
| DUKHCONP1AZ3AREL3665 |  | External Plastering | 25d | 2014-02-26 | 2014-03-26 | DUKHCONP1AZ3ARFF3305 FF+7d, DUKHCONP1AZ3ARRF3605 SS+7d, DUKHCONP1AZ3STRF2065 SS+7d, DUKHCONP1AZ3ARFF3305 SS+7d, DUKHCONP1AZ2AREL3665, DUKHCONP1AZ3STRF2065 FF+7d | 23d | 0d | PLASTER MASON SK [9136 h]; LABOR- SUBCONTRACTOR [5139 h]; EXTERNAL PLASTER QTY [4568 Sqm] | 108,894 | 10 | REM | 1AP3EFEL10 | DUKHCON1AP3AREL3665 | DUKHCONP1AZ3AREL3665 | DH | CON | 1A | Z3 | FIN | EF | EL | B02 | B02-D10 | RES-1A |
| DUKHCONP1AZ3AREL3670 |  | External stone cladding works | 20d | 2014-03-16 | 2014-04-07 | DUKHCONP1AZ2AREL3670, DUKHCONP1AZ3AREL3665 SS+10d, DUKHCONP1AZ3AREL3665 FF+10d | 25d | 0d | TILE MASON SK [720 h]; LABOR- SUBCONTRACTOR [270 h]; STONE CLADDING QTY [360 Sqm] | 71,820 | 15 | REM | 1AP3EFEL15 | DUKHCON1AP3AREL3670 | DUKHCONP1AZ3AREL3670 | DH | CON | 1A | Z3 | FIN | EF | EL | B02 | B02-D10 | RES-1A |
| DUKHCONP1AZ3AREL3680 |  | External Painting | 20d | 2014-03-27 | 2014-04-19 | DUKHCONP1AZ3AREL3670 FF+10d, DUKHCONP1AZ2AREL3680, DUKHCONP1AZ3ARRF3695 FF+4d, DUKHCONP1AZ3AREL3670 SS+10d, DUKHCONP1AZ3ARRF3695 SS+4d | 25d | 5d | LABOR- SUBCONTRACTOR [1032 h]; PAINT QTY [3424 Sqm]; PAINTERS SK [2752 h] | 86,006 | 20 |  | 1AP3EFEL20 | DUKHCON1AP3AREL3680 | DUKHCONP1AZ3AREL3680 | DH | CON | 1A | Z3 | FIN | EF | EL | B02 | B02-D11 | RES-1A |
|  | 20 | **MEP WORKS** |  | 2013-09-01 | 2014-06-14 |  |  |  |  |  |  |  |  |  |  |  |  |  |  |  |  |  |  |  |  |
|  | 10 | **ELECTRICAL WORKS** |  | 2013-12-14 | 2014-06-14 |  |  |  |  |  |  |  |  |  |  |  |  |  |  |  |  |  |  |  |  |
|  | 10 | **GROUND FLOOR** |  | 2013-12-14 | 2014-04-23 |  |  |  |  |  |  |  |  |  |  |  |  |  |  |  |  |  |  |  |  |
| DUKHCONP1AZ3ELGF4000 |  | Fixing of wall conduits & switch socket boxes | 25d | 2013-12-14 | 2014-01-12 | DUKHCONP1AZ3ARGF3000 FF+5d, DUKHCONP1AZ3ARGF3000 SS+5d | 3d | 0d | LABOR- SUBCONTRACTOR [192 h]; ELECTRICIANS SK [1030.4 h]; SOCKET BOXES QTY [724 ea]; CODUITS QTY [184 lm] | 33,077 | 10 |  | 1AP3EWGF10 | DUKHCON1AP3ELGF4000 | DUKHCONP1AZ3ELGF4000 | DH | CON | 1A | Z3 | MEP | EW | GF | B02 | B02-D09 | RES-1A |
| DUKHCONP1AZ3ELGF4005 |  | Cable tray & trunking installation | 20d | 2013-12-26 | 2014-01-18 | DUKHCONP1AZ3ELGF4000 SS+5d, DUKHCONP1AZ2ELGF4005, DUKHCONP1AZ3ELGF4000 FF+5d | 21d | 0d | LABOR- SUBCONTRACTOR [288 h]; ELECTRICIANS SK [1030.4 h]; CABLE TRAY QTY [184 lm] | 7,536 | 15 |  | 1AP3EWGF15 | DUKHCON1AP3ELGF4005 | DUKHCONP1AZ3ELGF4005 | DH | CON | 1A | Z3 | MEP | EW | GF | B02 | B02-D09 | RES-1A |
| DUKHCONP1AZ3ELGF4010 |  | Installation of wiring & Main Cabling | 25d | 2014-01-04 | 2014-02-01 | DUKHCONP1AZ3ELGF4005 FF+7d, DUKHCONP1AZ3ELGF4005 SS+7d | 21d | 27d | LABOR- SUBCONTRACTOR [72 h]; ELECTRICIANS SK [224 h]; CABLE QTY [184 lm] | 112,018 | 20 |  | 1AP3EWGF20 | DUKHCON1AP3ELGF4010 | DUKHCONP1AZ3ELGF4010 | DH | CON | 1A | Z3 | MEP | EW | GF | B02 | B02-D09 | RES-1A |
| DUKHCONP1AZ3ELGF4015 |  | Install. of CAMS & Fire Fighting Accessories | 25d | 2014-03-09 | 2014-04-06 | DUKHCONP1AZ3ARGF3055 SS+7d, DUKHCONP1AZ3ARGF3060 FF+7d, DUKHCONP1AZ2ELGF4015, DUKHCONP1AZ3ARGF3055 FF+7d, DUKHCONP1AZ3ARGF3060 SS+7d | 6d | 0d | LABOR- SUBCONTRACTOR [384 h]; MECHANICALS SK [691.2 h]; SMOKE DETECTOR POINTS QTY [92 ea]; FIRE EXTINGUISHER QTY [28 ea] | 71,164 | 35 |  | 1AP3EWGF35 | DUKHCON1AP3ELGF4015 | DUKHCONP1AZ3ELGF4015 | DH | CON | 1A | Z3 | MEP | EW | GF | B02 | B02-D09 | RES-1A |
| DUKHCONP1AZ3ELGF4020 |  | Installation of DBS,MCCB Accessories. | 20d | 2014-03-15 | 2014-04-06 | DUKHCONP1AZ3ARGF3055 FF+7d, DUKHCONP1AZ3ARGF3055 SS+7d, DUKHCONP1AZ3ARGF3060 FF+7d, DUKHCONP1AZ3ELGF4010 SS+5d, DUKHCONP1AZ3ARGF3060 SS+7d, DUKHCONP1AZ3ELGF4010 FF+5d | -6d | 0d | LABOR- SUBCONTRACTOR [48 h]; ELECTRICIANS SK [179.2 h]; MCCB QTY [64 ea]; DB QTY [8 ea] | 26,049 | 25 |  | 1AP3EWGF25 | DUKHCON1AP3ELGF4020 | DUKHCONP1AZ3ELGF4020 | DH | CON | 1A | Z3 | MEP | EW | GF | B02 | B02-D09 | RES-1A |
| DUKHCONP1AZ3ELGF4025 |  | Installation of Lighting fixtures & Accessories | 25d | 2014-03-26 | 2014-04-23 | DUKHCONP1AZ2ELGF4025, DUKHCONP1AZ3ARGF3060 SS+10d, DUKHCONP1AZ3ARGF3055 SS+10d, DUKHCONP1AZ3ARGF3055 FF+10d, DUKHCONP1AZ3ELGF4020 FF+10d, DUKHCONP1AZ3ARGF3060 FF+10d, DUKHCONP1AZ3ELGF4020 SS+10d | 1d | 0d | LABOR- SUBCONTRACTOR [576 h]; ELECTRICIANS SK [1075.2 h]; LIGHTS QTY [480 ea] | 154,315 | 30 |  | 1AP3EWGF30 | DUKHCON1AP3ELGF4025 | DUKHCONP1AZ3ELGF4025 | DH | CON | 1A | Z3 | MEP | EW | GF | B02 | B02-D09 | RES-1A |
| DUKHCONP1AZ3ELGF4030 |  | Installation of Telephone System | 20d | 2014-03-26 | 2014-04-17 | DUKHCONP1AZ3ARGF3060 SS+5d, DUKHCONP1AZ3ELGF4020 SS+10d, DUKHCONP1AZ2ELGF4030, DUKHCONP1AZ3ARGF3060 FF+5d, DUKHCONP1AZ3ELGF4020 FF+10d | -6d | 5d | LABOR- SUBCONTRACTOR [72 h]; ELECTRICIANS SK [448 h]; TELEPHONE SOCKETS QTY [40 ea] | 38,162 | 40 |  | 1AP3EWGF40 | DUKHCON1AP3ELGF4030 | DUKHCONP1AZ3ELGF4030 | DH | CON | 1A | Z3 | MEP | EW | GF | B02 | B02-D09 | RES-1A |
|  | 15 | **FIRST FLOORS** |  | 2014-01-26 | 2014-05-27 |  |  |  |  |  |  |  |  |  |  |  |  |  |  |  |  |  |  |  |  |
| DUKHCONP1AZ3ELFF4035 |  | Fixing of wall conduits & switch socket boxes | 25d | 2014-01-26 | 2014-02-24 | DUKHCONP1AZ3ARFF3300 FF+5d, DUKHCONP1AZ3ARFF3300 SS+5d | -13d | 0d | LABOR- SUBCONTRACTOR [192 h]; ELECTRICIANS SK [1030.4 h]; SOCKET BOXES QTY [724 ea]; CODUITS QTY [184 lm] | 32,659 | 10 |  | 1AP3EWFF10 | DUKHCON1AP3ELFF4035 | DUKHCONP1AZ3ELFF4035 | DH | CON | 1A | Z3 | MEP | EW | FF | B02 | B02-D09 | RES-1A |
| DUKHCONP1AZ3ELFF4040 |  | Cable tray & trunking installation | 20d | 2014-02-06 | 2014-03-02 | DUKHCONP1AZ3ELFF4035 SS+5d, DUKHCONP1AZ3ELFF4035 FF+5d | 5d | 2d | LABOR- SUBCONTRACTOR [288 h]; ELECTRICIANS SK [1030.4 h]; CABLE TRAY QTY [184 lm] | 7,520 | 15 |  | 1AP3EWFF15 | DUKHCON1AP3ELFF4040 | DUKHCONP1AZ3ELFF4040 | DH | CON | 1A | Z3 | MEP | EW | FF | B02 | B02-D09 | RES-1A |
| DUKHCONP1AZ3ELFF4045 |  | Installation of wiring & Main Cabling | 25d | 2014-02-18 | 2014-03-18 | DUKHCONP1AZ3ELFF4040 FF+7d, DUKHCONP1AZ2ELFF4045, DUKHCONP1AZ3ELFF4040 SS+7d | 3d | 0d | LABOR- SUBCONTRACTOR [72 h]; ELECTRICIANS SK [224 h]; CABLE QTY [184 lm] | 110,383 | 20 |  | 1AP3EWFF20 | DUKHCON1AP3ELFF4045 | DUKHCONP1AZ3ELFF4045 | DH | CON | 1A | Z3 | MEP | EW | FF | B02 | B02-D09 | RES-1A |
| DUKHCONP1AZ3ELFF4050 |  | Installation of Telephone System | 25d | 2014-04-15 | 2014-05-13 | DUKHCONP1AZ3ELGF4030 SS+10d, DUKHCONP1AZ3MSEX5010 FF, DUKHCONP1AZ3ARFF3360 FF+5d, DUKHCONP1AZ3ARFF3360 SS+5d, DUKHCONP1AZ3ELGF4030 FF+10d | -13d | 10d | LABOR- SUBCONTRACTOR [48 h]; ELECTRICIANS SK [403.2 h]; TELEPHONE SOCKETS QTY [36 ea] | 36,523 | 40 |  | 1AP3EWFF40 | DUKHCON1AP3ELFF4050 | DUKHCONP1AZ3ELFF4050 | DH | CON | 1A | Z3 | MEP | EW | FF | B02 | B02-D09 | RES-1A |
| DUKHCONP1AZ3ELFF4055 |  | Install. of CAMS & Fire Fighting Accessories | 25d | 2014-04-17 | 2014-05-15 | DUKHCONP1AZ3ARFF3360 FF+7d, DUKHCONP1AZ3ARFF3360 SS+7d, DUKHCONP1AZ3ELGF4015 FF+5d, DUKHCONP1AZ3ELGF4015 SS+5d, DUKHCONP1AZ2ELFF4055 | -23d | 0d | LABOR- SUBCONTRACTOR [360 h]; MECHANICALS SK [648 h]; SMOKE DETECTOR POINTS QTY [92 ea]; FIRE EXTINGUISHER QTY [24 ea] | 71,142 | 35 |  | 1AP3EWFF35 | DUKHCON1AP3ELFF4055 | DUKHCONP1AZ3ELFF4055 | DH | CON | 1A | Z3 | MEP | EW | FF | B02 | B02-D09 | RES-1A |
| DUKHCONP1AZ3ELFF4060 |  | Installation of DBS,MCCB Accessories. | 20d | 2014-04-21 | 2014-05-13 | DUKHCONP1AZ3ELFF4045 FF+5d, DUKHCONP1AZ3ELFF4045 SS+5d, DUKHCONP1AZ3ARFF3360 FF+5d, DUKHCONP1AZ2ELFF4060, DUKHCONP1AZ3ARFF3360 SS+8d | -21d | 2d | LABOR- SUBCONTRACTOR [48 h]; ELECTRICIANS SK [179.2 h]; MCCB QTY [64 ea]; DB QTY [8 ea] | 26,040 | 25 |  | 1AP3EWFF25 | DUKHCON1AP3ELFF4060 | DUKHCONP1AZ3ELFF4060 | DH | CON | 1A | Z3 | MEP | EW | FF | B02 | B02-D09 | RES-1A |
| DUKHCONP1AZ3ELFF4065 |  | Installation of Lighting fixtures & Accessories | 25d | 2014-04-29 | 2014-05-27 | DUKHCONP1AZ2ELFF4065, DUKHCONP1AZ3ELFF4060 SS+5d, DUKHCONP1AZ3ELFF4060 FF+5d, DUKHCONP1AZ3ARFF3360 SS+10d, DUKHCONP1AZ3ELGF4025 SS+5d, DUKHCONP1AZ3ARFF3360 FF+10d, DUKHCONP1AZ3ELGF4025 FF+5d | -23d | 0d | LABOR- SUBCONTRACTOR [576 h]; ELECTRICIANS SK [1075.2 h]; LIGHTS QTY [480 ea] | 154,301 | 30 |  | 1AP3EWFF30 | DUKHCON1AP3ELFF4065 | DUKHCONP1AZ3ELFF4065 | DH | CON | 1A | Z3 | MEP | EW | FF | B02 | B02-D09 | RES-1A |

Notes:
- DUKHCONP1AZ3ARRF3630: Expenses: P1A-Roofing 56792
- DUKHCONP1AZ3ARRF3635: Expenses: P1A-Roofing 43994
- DUKHCONP1AZ3ARRF3640: Expenses: P1A-Roofing 55936
- DUKHCONP1AZ3ARRF3645: Expenses: P1A-Roofing 83344
- DUKHCONP1AZ3ARRF3650: Expenses: P1A-Metal work 63347
- DUKHCONP1AZ3ARRF3655: Expenses: P1A-Roofing 26600
- DUKHCONP1AZ3ARRF3660: Expenses: P1A-Metal work 53206
- DUKHCONP1AZ3AREL3665: Expenses: P1A-Finishes 108894
- DUKHCONP1AZ3AREL3670: Expenses: P1A-Finishes 71820
- DUKHCONP1AZ3AREL3680: Expenses: P1A-Painting and Decorating 86006
- DUKHCONP1AZ3ELGF4000: Expenses: P1A-Electrical Installations 33077
- DUKHCONP1AZ3ELGF4005: Expenses: P1A-Electrical Installations 7536
- DUKHCONP1AZ3ELGF4010: Expenses: P1A-Electrical Installations 112018
- DUKHCONP1AZ3ELGF4015: Expenses: P1A-Electrical Installations 71164
- DUKHCONP1AZ3ELGF4020: Expenses: P1A-Electrical Installations 26049
- DUKHCONP1AZ3ELGF4025: Expenses: P1A-Electrical Installations 154315
- DUKHCONP1AZ3ELGF4030: Expenses: P1A-Electrical Installations 38162
- DUKHCONP1AZ3ELFF4035: Expenses: P1A-Electrical Installations 32659
- DUKHCONP1AZ3ELFF4040: Expenses: P1A-Electrical Installations 7520
- DUKHCONP1AZ3ELFF4045: Expenses: P1A-Electrical Installations 110383
- DUKHCONP1AZ3ELFF4050: Expenses: P1A-Electrical Installations 36523
- DUKHCONP1AZ3ELFF4055: Expenses: P1A-Electrical Installations 71142
- DUKHCONP1AZ3ELFF4060: Expenses: P1A-Electrical Installations 26040
- DUKHCONP1AZ3ELFF4065: Expenses: P1A-Electrical Installations 154301

| ID | WBS | Activity | Duration | Start | Finish | Predecessors | Total float | Free float | Resources | Cost | CODE | P3 ACTID | P6 ID (old) | NP61D | PROJECT | PHASES | PACKAGE | PART | ELEMENTS | STEP | FLOORS | BILL NOS | BILL DIVISION | RES PACK |
| --- | --- | --- | --- | --- | --- | --- | --- | --- | --- | --- | --- | --- | --- | --- | --- | --- | --- | --- | --- | --- | --- | --- | --- | --- |
|  | 20 | **ROOF** |  | 2014-05-13 | 2014-06-14 |  |  |  |  |  |  |  |  |  |  |  |  |  |  |  |  |  |  |  |
| DUKHCONP1AZ3ELRF4070 |  | Installation of Isolator | 18d | 2014-05-13 | 2014-06-02 | DUKHCONP1AZ3ELFF4065 FF+5d, DUKHCONP1AZ3ARRF3645 SS+7d, DUKHCONP1AZ3ELFF4045 FF+10d, DUKHCONP1AZ3ELFF4065 SS+5d, DUKHCONP1AZ3ARRF3645 FF+7d, DUKHCONP1AZ3ELFF4045 SS+10d, DUKHCONP1AZ3ELFF4050 SS+5d, DUKHCONP1AZ3ELFF4050 FF+7d | -23d | 0d | LABOR- SUBCONTRACTOR [144 h]; ELECTRICIANS SK [268.8 h]; ISOLATOR QTY [44 ea] | 54,690 | 10 | 1AP3EWRF10 | DUKHCON1AP3ELRF4070 | DUKHCONP1AZ3ELRF4070 | DH | CON | 1A | Z3 | MEP | EW | RF | B02 | B02-D09 | RES-1A |
| DUKHCONP1AZ3ELRF4075 |  | Installation of TV Dish Antenna | 23d | 2014-05-19 | 2014-06-14 | DUKHCONP1AZ3ELRF4070 FF+5d, DUKHCONP1AZ3ELRF4070 SS+5d | -23d | 1d | LABOR- SUBCONTRACTOR [240 h]; ELECTRICIANS SK [492.8 h]; CONTROL BOX QTY [12 ea]; SWITCHING BOX QTY [32 ea] | 40,597 | 15 | 1AP3EWRF15 | DUKHCON1AP3ELRF4075 | DUKHCONP1AZ3ELRF4075 | DH | CON | 1A | Z3 | MEP | EW | RF | B02 | B02-D09 | RES-1A |
|  | 15 | **PLUMBING, DRAINAGE & FIRE FIGHTING WORKS** |  | 2013-09-01 | 2014-06-14 |  |  |  |  |  |  |  |  |  |  |  |  |  |  |  |  |  |  |  |
|  | 10 | **GROUND FLOOR** |  | 2013-09-01 | 2014-04-23 |  |  |  |  |  |  |  |  |  |  |  |  |  |  |  |  |  |  |  |
| DUKHCONP1AZ3PLUG4300 |  | Drainage / Storm Pipes in Grade Slab | 16d | 2013-09-01 | 2013-09-18 | DUKHCONP1AZ3STUG1040 FF+11d, DUKHCONP1AZ3STUG1040 SS+11d | -24d | 0d | LABOR- SUBCONTRACTOR [24 h]; MECHANICALS SK [43.2 h]; DRAINAGE PIPES QTY [80 lm] | 35,465 | 10 | 1AP3PLUG10 | DUKHCON1AP3PLUG4300 | DUKHCONP1AZ3PLUG4300 | DH | CON | 1A | Z3 | ST | SB | UG | B02 | B02-D07 | RES-1A |
| DUKHCONP1AZ3PLGF4305 |  | Installation of Plumbing pipes & testing | 18d | 2013-12-25 | 2014-01-14 | DUKHCONP1AZ3ARGF3000 FF+7d, DUKHCONP1AZ2PLGF4305, DUKHCONP1AZ3ARGF3000 SS+7d | -6d | 0d | LABOR- SUBCONTRACTOR [96 h]; MECHANICALS SK [345.6 h]; PLUMB PIPES QTY [328 lm] | 85,973 | 10 | 1AP3PLGF10 | DUKHCON1AP3PLGF4305 | DUKHCONP1AZ3PLGF4305 | DH | CON | 1A | Z3 | MEP | PL | GF | B02 | B02-D07 | RES-1A |
| DUKHCONP1AZ3PLGF4310 |  | Installation of Drainage pipes &testing | 18d | 2013-12-25 | 2014-01-14 | DUKHCONP1AZ3ARGF3000 SS+7d, DUKHCONP1AZ3PLGF4305 FF, DUKHCONP1AZ3PLGF4305 SS, DUKHCONP1AZ3ARGF3000 FF+7d | 15d | 13d | LABOR- SUBCONTRACTOR [48 h]; MECHANICALS SK [129.6 h]; DRAINAGE PIPES QTY [248 lm] | 2,966 | 15 | 1AP3PLGF15 | DUKHCON1AP3PLGF4310 | DUKHCONP1AZ3PLGF4310 | DH | CON | 1A | Z3 | MEP | PL | GF | B02 | B02-D07 | RES-1A |
| DUKHCONP1AZ3PLGF4315 |  | Sanitary Fittings & Accessories | 20d | 2014-03-26 | 2014-04-17 | DUKHCONP1AZ3PLGF4310 SS+5d, DUKHCONP1AZ2PLGF4315, DUKHCONP1AZ3PLGF4310 FF+5d, DUKHCONP1AZ3ARGF3065 FF+5d, DUKHCONP1AZ3ARGF3065 SS+5d | 21d | 0d | LABOR- SUBCONTRACTOR [48 h]; MECHANICALS SK [86.4 h]; SANITARY ACC QTY [60 ea] | 104,291 | 20 | 1AP3PLGF20 | DUKHCON1AP3PLGF4315 | DUKHCONP1AZ3PLGF4315 | DH | CON | 1A | Z3 | MEP | PL | GF | B02 | B02-D07 | RES-1A |
| DUKHCONP1AZ3PLGF4320 |  | Installation of Water Heater | 15d | 2014-04-07 | 2014-04-23 | DUKHCONP1AZ2PLGF4320, DUKHCONP1AZ3PLGF4315 FF+5d, DUKHCONP1AZ3ARGF3060 SS+5d, DUKHCONP1AZ3PLGF4315 SS+5d, DUKHCONP1AZ3ARGF3060 FF+5d | 21d | 10d | LABOR- SUBCONTRACTOR [48 h]; MECHANICALS SK [86.4 h]; WATER HEATER QTY [12 ea] | 8,932 | 25 | 1AP3PLGF25 | DUKHCON1AP3PLGF4320 | DUKHCONP1AZ3PLGF4320 | DH | CON | 1A | Z3 | MEP | PL | GF | B02 | B02-D07 | RES-1A |
|  | 15 | **FIRST FLOORS** |  | 2014-02-06 | 2014-05-22 |  |  |  |  |  |  |  |  |  |  |  |  |  |  |  |  |  |  |  |
| DUKHCONP1AZ3PLFF4325 |  | Installation of Plumbing pipes & testing | 18d | 2014-02-06 | 2014-02-27 | DUKHCONP1AZ3ARFF3300 SS+7d, DUKHCONP1AZ3ARFF3300 FF+8d | -24d | 0d | LABOR- SUBCONTRACTOR [96 h]; MECHANICALS SK [345.6 h]; PLUMB PIPES QTY [328 lm] | 83,745 | 10 | 1AP3PLFF10 | DUKHCON1AP3PLFF4325 | DUKHCONP1AZ3PLFF4325 | DH | CON | 1A | Z3 | MEP | PL | FF | B02 | B02-D07 | RES-1A |
| DUKHCONP1AZ3PLFF4330 |  | Installation of Drainage pipes & testing | 18d | 2014-02-06 | 2014-02-27 | DUKHCONP1AZ3PLFF4325 SS, DUKHCONP1AZ3PLFF4325 FF, DUKHCONP1AZ3ARFF3300 SS+7d, DUKHCONP1AZ3ARFF3300 FF+7d, DUKHCONP1AZ2PLFF4330 | -2d | 6d | LABOR- SUBCONTRACTOR [48 h]; MECHANICALS SK [129.6 h]; DRAINAGE PIPES QTY [248 lm] | 2,542 | 15 | 1AP3PLFF15 | DUKHCON1AP3PLFF4330 | DUKHCONP1AZ3PLFF4330 | DH | CON | 1A | Z3 | MEP | PL | FF | B02 | B02-D07 | RES-1A |
| DUKHCONP1AZ3PLFF4335 |  | Sanitary Fittings & Accessories | 20d | 2014-04-24 | 2014-05-17 | DUKHCONP1AZ3PLFF4330 FF+5d, DUKHCONP1AZ3ARFF3365 FF+5d, DUKHCONP1AZ3ARFF3365 SS, DUKHCONP1AZ3PLFF4330 SS+5d | -19d | 0d | LABOR- SUBCONTRACTOR [24 h]; MECHANICALS SK [43.2 h]; SANITARY ACC QTY [56 ea] | 113,094 | 20 | 1AP3PLFF20 | DUKHCON1AP3PLFF4335 | DUKHCONP1AZ3PLFF4335 | DH | CON | 1A | Z3 | MEP | PL | FF | B02 | B02-D07 | RES-1A |
| DUKHCONP1AZ3PLFF4340 |  | Installation of Water Heater | 15d | 2014-05-06 | 2014-05-22 | DUKHCONP1AZ3ARFF3360 FF+5d, DUKHCONP1AZ3ARFF3360 SS+5d, DUKHCONP1AZ3PLFF4335 SS+5d, DUKHCONP1AZ2PLFF4340, DUKHCONP1AZ3PLFF4335 FF+5d | -19d | 4d | LABOR- SUBCONTRACTOR [24 h]; MECHANICALS SK [43.2 h]; WATER HEATER QTY [8 ea] | 7,006 | 25 | 1AP3PLFF25 | DUKHCON1AP3PLFF4340 | DUKHCONP1AZ3PLFF4340 | DH | CON | 1A | Z3 | MEP | PL | FF | B02 | B02-D07 | RES-1A |
|  | 20 | **ROOF** |  | 2014-02-26 | 2014-06-14 |  |  |  |  |  |  |  |  |  |  |  |  |  |  |  |  |  |  |  |
| DUKHCONP1AZ3PLRF4345 |  | Installation of Plumbing pipes & fittings | 15d | 2014-02-26 | 2014-03-15 | DUKHCONP1AZ3ARRF3605 SS+7d, DUKHCONP1AZ3ARRF3605 FF+7d | 32d | 30d | LABOR- SUBCONTRACTOR [24 h]; MECHANICALS SK [86.4 h]; PLUMB PIPES QTY [96 lm] | 12,902 | 10 | 1AP3PLRF10 | DUKHCON1AP3PLRF4345 | DUKHCONP1AZ3PLRF4345 | DH | CON | 1A | Z3 | MEP | PL | RF | B02 | B02-D07 | RES-1A |
| DUKHCONP1AZ3PLRF4350 |  | Installation of Rain water Pipes | 15d | 2014-04-12 | 2014-04-28 | DUKHCONP1AZ3PLFF4330 FF+5d, DUKHCONP1AZ3PLFF4330 SS+5d, DUKHCONP1AZ3PLRF4345 SS+8d, DUKHCONP1AZ3AREL3665 SS+7d, DUKHCONP1AZ3ARRF3645 SS+5d, DUKHCONP1AZ3AREL3665 FF+7d, DUKHCONP1AZ3ARRF3645 FF+5d, DUKHCONP1AZ3PLRF4345 FF+8d, DUKHCONP1AZ2PLRF4350 | 2d | 10d | LABOR- SUBCONTRACTOR [24 h]; MECHANICALS SK [43.2 h]; DRAINAGE PIPES QTY [80 lm] | 93,917 | 15 | 1AP3PLRF15 | DUKHCON1AP3PLRF4350 | DUKHCONP1AZ3PLRF4350 | DH | CON | 1A | Z3 | MEP | PL | RF | B02 | B02-D07 | RES-1A |
| DUKHCONP1AZ3PLRF4355 |  | Roof Water Tank Installation & Connections | 25d | 2014-05-17 | 2014-06-14 | DUKHCONP1AZ2PLRF4355, DUKHCONP1AZ3PLRF4345 SS+8d, DUKHCONP1AZ3ARRF3655 SS+5d, DUKHCONP1AZ3PLRF4345 FF+8d, DUKHCONP1AZ3PLRF4350 SS+5d, DUKHCONP1AZ3PLFF4340 FF+5d, DUKHCONP1AZ3ARRF3655 FF+5d, DUKHCONP1AZ3PLRF4350 FF+5d, DUKHCONP1AZ3PLFF4340 SS+5d | -23d | 0d | LABOR- SUBCONTRACTOR [120 h]; MECHANICALS SK [216 h]; WATER TANK QTY [20 ea] | 592,597 | 20 | 1AP3PLRF20 | DUKHCON1AP3PLRF4355 | DUKHCONP1AZ3PLRF4355 | DH | CON | 1A | Z3 | MEP | PL | RF | B02 | B02-D07 | RES-1A |
|  | 20 | **AC WORKS** |  | 2014-01-14 | 2014-06-11 |  |  |  |  |  |  |  |  |  |  |  |  |  |  |  |  |  |  |  |
|  | 10 | **GROUND FLOOR** |  | 2014-01-14 | 2014-04-21 |  |  |  |  |  |  |  |  |  |  |  |  |  |  |  |  |  |  |  |
| DUKHCONP1AZ3ACGF4600 |  | Installation AC Pipes | 20d | 2014-01-14 | 2014-02-05 | DUKHCONP1AZ3ARGF3005 FF+7d, DUKHCONP1AZ2ACGF4600, DUKHCONP1AZ3ARGF3005 SS+7d | 25d | 5d | LABOR- SUBCONTRACTOR [216 h]; AC TECHNICIAN SK [761.6 h]; AC PIPES QTY [2008 lm] | 8,069 | 10 | 1AP3ACGF10 | DUKHCON1AP3ACGF4600 | DUKHCONP1AZ3ACGF4600 | DH | CON | 1A | Z3 | MEP | AC | GF | B02 | B02-D08 | RES-1A |
| DUKHCONP1AZ3ACGF4605 |  | Fixing of Ventilation Equipments | 25d | 2014-03-09 | 2014-04-06 | DUKHCONP1AZ2ACGF4605, DUKHCONP1AZ3ARGF3055 SS+7d, DUKHCONP1AZ3ARGF3055 FF+7d, DUKHCONP1AZ3ACGF4600 SS+10d, DUKHCONP1AZ3ARGF3060 SS+7d, DUKHCONP1AZ3ARGF3060 FF+7d, DUKHCONP1AZ3ACGF4600 FF+10d | 8d | 0d | LABOR- SUBCONTRACTOR [48 h]; AC TECHNICIAN SK [134.4 h]; VENTILIATION EQP QTY [40 ea] | 17,289 | 15 | 1AP3ACGF15 | DUKHCON1AP3ACGF4605 | DUKHCONP1AZ3ACGF4605 | DH | CON | 1A | Z3 | MEP | AC | GF | B02 | B02-D08 | RES-1A |
| DUKHCONP1AZ3ACGF4610 |  | Fixing of Split AC | 20d | 2014-03-30 | 2014-04-21 | DUKHCONP1AZ3ACGF4605 FF+13d, DUKHCONP1AZ2ACGF4610, DUKHCONP1AZ3ACGF4605 SS+13d | 8d | 5d | LABOR- SUBCONTRACTOR [72 h]; AC TECHNICIAN SK [224 h]; SPLIT UNIT QTY [40 ea] | 48,894 | 20 | 1AP3ACGF20 | DUKHCON1AP3ACGF4610 | DUKHCONP1AZ3ACGF4610 | DH | CON | 1A | Z3 | MEP | AC | GF | B02 | B02-D08 | RES-1A |

Notes:
- DUKHCONP1AZ3ELRF4070: Expenses: P1A-Electrical Installations 54690
- DUKHCONP1AZ3ELRF4075: Expenses: P1A-Electrical Installations 40597
- DUKHCONP1AZ3PLUG4300: Expenses: P1A-Plumbing and Drainage works 35465
- DUKHCONP1AZ3PLGF4305: Expenses: P1A-Plumbing and Drainage works 85973
- DUKHCONP1AZ3PLGF4310: Expenses: P1A-Plumbing and Drainage works 2966
- DUKHCONP1AZ3PLGF4315: Expenses: P1A-Plumbing and Drainage works 104291
- DUKHCONP1AZ3PLGF4320: Expenses: P1A-Plumbing and Drainage works 8932
- DUKHCONP1AZ3PLFF4325: Expenses: P1A-Plumbing and Drainage works 83745
- DUKHCONP1AZ3PLFF4330: Expenses: P1A-Plumbing and Drainage works 2542
- DUKHCONP1AZ3PLFF4335: Expenses: P1A-Plumbing and Drainage works 113094
- DUKHCONP1AZ3PLFF4340: Expenses: P1A-Plumbing and Drainage works 7006
- DUKHCONP1AZ3PLRF4345: Expenses: P1A-Plumbing and Drainage works 12902
- DUKHCONP1AZ3PLRF4350: Expenses: P1A-Plumbing and Drainage works 93917
- DUKHCONP1AZ3PLRF4355: Expenses: P1A-Plumbing and Drainage works 592597
- DUKHCONP1AZ3ACGF4600: Expenses: P1A-Air-conditioning and Ventilation works 8069
- DUKHCONP1AZ3ACGF4605: Expenses: P1A-Air-conditioning and Ventilation works 17289
- DUKHCONP1AZ3ACGF4610: Expenses: P1A-Air-conditioning and Ventilation works 48894

| ID | WBS | Activity | Duration | Start | Finish | Predecessors | Total float | Free float | Resources | Cost | CODE | P3 ACTID | P6 ID (old) | NP61D | PROJECT | PHASES | PACKAGE | PART | ELEMENTS | STEP | FLOORS | BILL NOS | BILL DIVISION | RES PACK |
| --- | --- | --- | --- | --- | --- | --- | --- | --- | --- | --- | --- | --- | --- | --- | --- | --- | --- | --- | --- | --- | --- | --- | --- | --- |
|  | 15 | **FIRST FLOORS** |  | 2014-03-01 | 2014-05-31 |  |  |  |  |  |  |  |  |  |  |  |  |  |  |  |  |  |  |  |
| DUKHCONP1AZ3ACFF4615 |  | Installation AC Pipes | 20d | 2014-03-01 | 2014-03-23 | DUKHCONP1AZ2ACFF4615, DUKHCONP1AZ3ARFF3305 SS+7d, DUKHCONP1AZ3ARFF3305 FF+7d | 3d | 5d | LABOR- SUBCONTRACTOR [216 h]; AC TECHNICIAN SK [761.6 h]; AC PIPES QTY [2008 lm] | 7,555 | 10 | 1AP3ACFF10 | DUKHCON1AP3ACFF4615 | DUKHCONP1AZ3ACFF4615 | DH | CON | 1A | Z3 | MEP | AC | FF | B02 | B02-D08 | RES-1A |
| DUKHCONP1AZ3ACFF4620 |  | Fixing of Ventilation Equipments | 25d | 2014-04-17 | 2014-05-15 | DUKHCONP1AZ3ACFF4615 FF+10d, DUKHCONP1AZ3ARFF3360 FF+7d, DUKHCONP1AZ3ACFF4615 SS+10d, DUKHCONP1AZ2ACFF4620, DUKHCONP1AZ3ARFF3360 SS+7d | -22d | 0d | LABOR- SUBCONTRACTOR [24 h]; AC TECHNICIAN SK [89.6 h]; VENTILIATION EQP QTY [24 ea] | 17,083 | 15 | 1AP3ACFF15 | DUKHCON1AP3ACFF4620 | DUKHCONP1AZ3ACFF4620 | DH | CON | 1A | Z3 | MEP | AC | FF | B02 | B02-D08 | RES-1A |
| DUKHCONP1AZ3ACFF4625 |  | Fixing of Split AC | 20d | 2014-05-08 | 2014-05-31 | DUKHCONP1AZ3ACFF4620 SS+13d, DUKHCONP1AZ3ACFF4620 FF+13d, DUKHCONP1AZ2ACFF4625 | -22d | 0d | LABOR- SUBCONTRACTOR [72 h]; AC TECHNICIAN SK [224 h]; SPLIT UNIT QTY [40 ea] | 54,090 | 20 | 1AP3ACFF20 | DUKHCON1AP3ACFF4625 | DUKHCONP1AZ3ACFF4625 | DH | CON | 1A | Z3 | MEP | AC | FF | B02 | B02-D08 | RES-1A |
|  | 20 | **ROOF** |  | 2014-04-02 | 2014-06-11 |  |  |  |  |  |  |  |  |  |  |  |  |  |  |  |  |  |  |  |
| DUKHCONP1AZ3ACRF4630 |  | Installation of Refrigerant Pipes | 25d | 2014-04-02 | 2014-04-30 | DUKHCONP1AZ3ARRF3645 FF+7d, DUKHCONP1AZ3ACGF4600 SS+7d, DUKHCONP1AZ3ACFF4615 SS+7d, DUKHCONP1AZ3ACGF4600 FF+7d, DUKHCONP1AZ2ACRF4630, DUKHCONP1AZ3ARRF3645 SS+7d, DUKHCONP1AZ3ACFF4615 FF+7d | 10d | 0d | LABOR- SUBCONTRACTOR [96 h]; AC TECHNICIAN SK [313.6 h]; AC PIPES QTY [848 lm] | 24,880 | 10 | 1AP3ACRF10 | DUKHCON1AP3ACRF4630 | DUKHCONP1AZ3ACRF4630 | DH | CON | 1A | Z3 | MEP | AC | RF | B02 | B02-D08 | RES-1A |
| DUKHCONP1AZ3ACRF4635 |  | Installation of Condensing Unit | 25d | 2014-05-14 | 2014-06-11 | DUKHCONP1AZ3ACFF4625 SS+5d, DUKHCONP1AZ3ACRF4630 SS+5d, DUKHCONP1AZ2ACRF4635, DUKHCONP1AZ3ACRF4630 FF+5d, DUKHCONP1AZ3ACGF4610 FF+5d, DUKHCONP1AZ3ACGF4610 SS+5d, DUKHCONP1AZ3ACFF4625 FF+5d | -21d | 0d | LABOR- SUBCONTRACTOR [120 h]; AC TECHNICIAN SK [448 h]; AC UNITS QTY [80 ea] | 134,618 | 15 | 1AP3ACRF15 | DUKHCON1AP3ACRF4635 | DUKHCONP1AZ3ACRF4635 | DH | CON | 1A | Z3 | MEP | AC | RF | B02 | B02-D08 | RES-1A |
|  | 25 | **EXTERNAL WORKS** |  | 2014-01-21 | 2014-06-29 |  |  |  |  |  |  |  |  |  |  |  |  |  |  |  |  |  |  |  |
|  | 10 | **MISCELLANEOUS** |  | 2014-01-21 | 2014-06-29 |  |  |  |  |  |  |  |  |  |  |  |  |  |  |  |  |  |  |  |
| DUKHCONP1AZ3MSEX5000 |  | Construction of Manholes | 25d | 2014-01-21 | 2014-02-19 | DUKHCONP1AZ3STRF2055 SS+10d, DUKHCONP1AZ3PLGF4310 FF+10d, DUKHCONP1AZ3PLGF4310 SS+10d, DUKHCONP1AZ3STRF2055 FF+10d | 9d | 0d | MANHOLES SK [384 h]; LABOR- SUBCONTRACTOR [144 h]; MANHOLES QTY [48 ea] | 56,173 | 25 | 1AP3MSEX25 | DUKHCON1AP3MS005000 | DUKHCONP1AZ3MSEX5000 | DH | CON | 1A | Z3 | EX | MS |  | B02 | B02-D12 | RES-1A |
| DUKHCONP1AZ3MSEX5005 |  | Construction of Soak pit, Chambers | 25d | 2014-02-04 | 2014-03-05 | DUKHCONP1AZ3MSEX5000 SS+12d, DUKHCONP1AZ3MSEX5000 FF+12d | 9d | 0d | SOAKPIT QTY [16 ea]; MANHOLES SK [128 h]; LABOR- SUBCONTRACTOR [48 h] | 33,032 | 30 | 1AP3MSEX30 | DUKHCON1AP3MS005005 | DUKHCONP1AZ3MSEX5005 | DH | CON | 1A | Z3 | EX | MS |  | B02 | B02-D12 | RES-1A |
| DUKHCONP1AZ3MSEX5015 |  | Construction of grease Trap | 20d | 2014-02-25 | 2014-03-19 | DUKHCONP1AZ3MSEX5005 SS+12d, DUKHCONP1AZ3MSEX5005 FF+12d | 9d | 0d | LABOR- SUBCONTRACTOR [24 h]; GREASE TRAP QTY [16 lm]; HANDRAIL ERECTOR SKILLED [32 h] | 22,696 | 20 | 1AP3MSEX20 | DUKHCON1AP3MS005015 | DUKHCONP1AZ3MSEX5015 | DH | CON | 1A | Z3 | EX | MS |  | B02 | B02-D07 | RES-1A |
| DUKHCONP1AZ3MSEX5020 |  | Construction Entrance Ramp | 25d | 2014-03-15 | 2014-04-12 | DUKHCONP1AZ3STRF2055 FF, DUKHCONP1AZ2MSEX5020, DUKHCONP1AZ3STRF2055 SS | -8d | 0d | SCREED MASON SK [96 h]; CONCRETE MASON SK [192 h]; INTERLOCK MASON SK [128 h]; LABOR- SUBCONTRACTOR [192 h]; LABOR- SUBCONTRACTOR [48 h]; SCREED QTY [112 Sqm]; CONCRETE QTY [96 Cum]; INTERLOCK QTY [152 Sqm] | 31,768 | 10 | 1AP3MSEX10 | DUKHCON1AP3MS005020 | DUKHCONP1AZ3MSEX5020 | DH | CON | 1A | Z3 | EX | MS |  | B02 | B02-D12 | RES-1A |
| DUKHCONP1AZ3MSEX5010 |  | Telephone cable laying | 25d | 2014-03-20 | 2014-04-17 | DUKHCONP1AZ3MSEX5015 | 9d | 22d | LABOR- SUBCONTRACTOR [125 h]; ELECTRICIANS SK [125 h]; CONCRETE MASON SK [125 h] | 3,557 |  | 1AP3MSEX40 | DUKHCON1AP3MS005010 | DUKHCONP1AZ3MSEX5010 | DH | CON | 1A | Z3 | EX | MS |  | B02 | B02-D12 | RES-1A |
| DUKHCONP1AZ3MSEX5025 |  | SS.Handrails and Balustrades | 20d | 2014-04-01 | 2014-04-23 | DUKHCONP1AZ3MSEX5020 FF+10d, DUKHCONP1AZ3MSEX5020 SS+10d | -5d | 1d | LABOR- SUBCONTRACTOR [24 h]; S.S.BALUSTRADE QTY [16 lm]; HANDRAIL ERECTOR SKILLED [32 h] | 81,420 | 15 | 1AP3MSEX15 | DUKHCON1AP3MS005025 | DUKHCONP1AZ3MSEX5025 | DH | CON | 1A | Z3 | EX | MS |  | B02 | B02-D12 | RES-1A |
| DUKHCONP1AZ3MSEX5335 |  | Aluminum Roll-up Shutter with 2m Wall | 25d | 2014-06-01 | 2014-06-29 | DUKHCONI1AZ2BWGL5325 SS+10d, DUKHCONP1AZ2MSEX5335 | 79d | 8d | LABOR- SUBCONTRACTOR [200 h]; DOOR ERECTOR SK [200 h]; ROLLING SHUTTER QTY [8 ea] | 59,528 | 25 | 1AP3BWFR25 | DUKHCON1AP3MS005335 | DUKHCONP1AZ3MSEX5335 | DH | CON | 1A | Z3 | EX | MS |  | B02 | B02-D12 | RES-1A |
|  | 15 | **WATER TANK ENCLOSURE** |  | 2014-03-10 | 2014-06-04 |  |  |  |  |  |  |  |  |  |  |  |  |  |  |  |  |  |  |  |
| DUKHCONP1AZ3WEEX5030 |  | Excavation | 20d | 2014-03-10 | 2014-04-01 | DUKHCONP1AZ2WEEX5030, DUKHCONP1AZ3STRF2055 FF+5d, DUKHCONP1AZ3STRF2055 SS+5d | -6d | 0d | LABOR- SUBCONTRACTOR [24 h]; EXCAVATION QTY [40 Cum]; LOADER [10 h]; POCLAIN [20 h]; TRUCK [10 h]; EQUIP OPERATORS [40 h] | 896 | 10 | 1AP3WEEX10 | DUKHCON1AP3WE005030 | DUKHCONP1AZ3WEEX5030 | DH | CON | 1A | Z3 | EX | WE |  | B02 | B02-D12 | RES-1A |
| DUKHCONP1AZ3WEEX5035 |  | Construction of Raft | 25d | 2014-03-16 | 2014-04-13 | DUKHCONP1AZ3WEEX5030 FF+10d, DUKHCONP1AZ3WEEX5030 SS+5d | -6d | 0d | STEEL FIXERS SK [64 h]; CARPENTERS SK [384 h]; CONCRETE MASON SK [32 h]; LABOR- SUBCONTRACTOR [360 h]; REINFORCEMENT BARS QTY [624 kg]; FORMWORK QTY [184 Sqm]; CONCRETE QTY [20 Cum] | 15,216 | 15 | 1AP3WEEX15 | DUKHCON1AP3WE005035 | DUKHCONP1AZ3WEEX5035 | DH | CON | 1A | Z3 | EX | WE |  | B02 | B02-D12 | RES-1A |
| DUKHCONP1AZ3WEEX5040 |  | Block works & Plastering | 25d | 2014-03-25 | 2014-04-22 | DUKHCONP1AZ3WEEX5035 SS+8d, DUKHCONP1AZ3WEEX5035 FF+8d | -6d | 0d | BLOCK MASON SK [128 h]; PLASTER MASON SK [192 h]; LABOR- SUBCONTRACTOR [192 h]; BLOCK QTY [56 Sqm]; PLASTER QTY [112 Sqm] | 13,582 | 20 | 1AP3WEEX20 | DUKHCON1AP3WE005040 | DUKHCONP1AZ3WEEX5040 | DH | CON | 1A | Z3 | EX | WE |  | B02 | B02-D12 | RES-1A |
| DUKHCONP1AZ3WEEX5045 |  | Flooring & Painting | 25d | 2014-04-01 | 2014-04-29 | DUKHCONP1AZ3WEEX5040 SS+6d, DUKHCONP1AZ3WEEX5040 FF+6d | -6d | 0d | LABOR- SUBCONTRACTOR [72 h]; PAINT QTY [156 Sqm]; EPOXY QTY [44 Sqm]; PAINTERS SK [128 h]; EPOXY SK [32 h] | 12,744 | 25 | 1AP3WEEX25 | DUKHCON1AP3WE005045 | DUKHCONP1AZ3WEEX5045 | DH | CON | 1A | Z3 | EX | WE |  | B02 | B02-D12 | RES-1A |
| DUKHCONP1AZ3WEEX5050 |  | Installation of Steel Gate | 20d | 2014-04-14 | 2014-05-06 | DUKHCONP1AZ3WEEX5045 SS+5d, DUKHCONP1AZ3MSEX5025 FF+10d, DUKHCONP1AZ3WEEX5045 FF+6d | -6d | 8d | LABOR- SUBCONTRACTOR [24 h]; GATE QTY [4 ea]; GATE ERECTOR SK [32 h] | 71,872 | 30 | 1AP3WEEX30 | DUKHCON1AP3WE005050 | DUKHCONP1AZ3WEEX5050 | DH | CON | 1A | Z3 | EX | WE |  | B02 | B02-D12 | RES-1A |
| DUKHCONP1AZ3WEEX5060 |  | Structural steel & SS Shed cover installation | 25d | 2014-04-29 | 2014-05-27 | DUKHCONP1AZ3WEEX5050 SS+5d, DUKHCONP1AZ2WEEX5060, DUKHCONP1AZ3WEEX5050 FF+10d, DUKHCONP1AZ3MSEX5025 FF+10d | -14d | 0d | LABOR- SUBCONTRACTOR [144 h]; STRUCTURAL STEEL QTY [128 kg]; SS SHED COVER QTY [40 Sqm]; STEEL ERECTOR SK [192 h] | 45,463 | 35 | 1AP3WEEX35 | DUKHCON1AP3WE005060 | DUKHCONP1AZ3WEEX5060 | DH | CON | 1A | Z3 | EX | WE |  | B02 | B02-D12 | RES-1A |
| DUKHCONP1AZ3WEEX5065 |  | Install. of Water Tank,Chiller,Pump & Meter | 25d | 2014-05-07 | 2014-06-04 | DUKHCONP1AZ2WEEX5065, DUKHCONP1AZ3WEEX5060 SS+6d, DUKHCONP1AZ3MSEX5015 SS+5d, DUKHCONP1AZ3PLRF4350 SS+5d, DUKHCONP1AZ3PLRF4350 FF+5d, DUKHCONP1AZ3WEEX5060 FF+6d, DUKHCONP1AZ3MSEX5015 FF+5d | -15d | 0d | LABOR- SUBCONTRACTOR [72 h]; AC TECHNICIAN SK [44.8 h]; MECHANICALS SK [86.4 h]; WATER TANK QTY [4 ea]; CHILLER QTY [40 ea]; PUMP QTY [4 ea] | 122,349 | 40 | 1AP3WEEX40 | DUKHCON1AP3WE005065 | DUKHCONP1AZ3WEEX5065 | DH | CON | 1A | Z3 | EX | WE |  | B02 | B02-D07 | RES-1A |

Notes:
- DUKHCONP1AZ3ACFF4615: Expenses: P1A-Air-conditioning and Ventilation works 7555
- DUKHCONP1AZ3ACFF4620: Expenses: P1A-Air-conditioning and Ventilation works 17083
- DUKHCONP1AZ3ACFF4625: Expenses: P1A-Air-conditioning and Ventilation works 54090
- DUKHCONP1AZ3ACRF4630: Expenses: P1A-Air-conditioning and Ventilation works 24880
- DUKHCONP1AZ3ACRF4635: Expenses: P1A-Air-conditioning and Ventilation works 134618
- DUKHCONP1AZ3MSEX5000: Expenses: P1A-External works within the Plot Curtilage 56173
- DUKHCONP1AZ3MSEX5005: Expenses: P1A-External works within the Plot Curtilage 33032
- DUKHCONP1AZ3MSEX5015: Expenses: P1A-Plumbing and Drainage works 22696
- DUKHCONP1AZ3MSEX5020: Expenses: P1A-External works within the Plot Curtilage 31768
- DUKHCONP1AZ3MSEX5010: Expenses: P1A-External works within the Plot Curtilage 3557
- DUKHCONP1AZ3MSEX5025: Expenses: P1A-External works within the Plot Curtilage 81420
- DUKHCONP1AZ3MSEX5335: Expenses: P1A-External works within the Plot Curtilage 59528
- DUKHCONP1AZ3WEEX5030: Expenses: P1A-External works within the Plot Curtilage 896
- DUKHCONP1AZ3WEEX5035: Expenses: P1A-External works within the Plot Curtilage 15216
- DUKHCONP1AZ3WEEX5040: Expenses: P1A-External works within the Plot Curtilage 13582
- DUKHCONP1AZ3WEEX5045: Expenses: P1A-External works within the Plot Curtilage 12744
- DUKHCONP1AZ3WEEX5050: Expenses: P1A-External works within the Plot Curtilage 71872
- DUKHCONP1AZ3WEEX5060: Expenses: P1A-External works within the Plot Curtilage 45463
- DUKHCONP1AZ3WEEX5065: Expenses: P1A-Plumbing and Drainage works 122349

| ID | WBS | Activity | Duration | Start | Finish | Predecessors | Total float | Free float | Resources | Cost | CODE | P3 ACTID | P6 ID (old) | NP61D | PROJECT | PHASES | PACKAGE | PART | ELEMENTS | STEP | BILL NOS | BILL DIVISION | RES PACK | FLOORS | rem |
| --- | --- | --- | --- | --- | --- | --- | --- | --- | --- | --- | --- | --- | --- | --- | --- | --- | --- | --- | --- | --- | --- | --- | --- | --- | --- |
|  | 20 | **HARD LANDSCAPING** |  | 2014-03-29 | 2014-05-08 |  |  |  |  |  |  |  |  |  |  |  |  |  |  |  |  |  |  |  |  |
| DUKHCONP1AZ3HDEX5090 |  | kerb works | 20d | 2014-03-29 | 2014-04-20 | DUKHCONP1AZ3MSEX5020 SS+7d, DUKHCONP1AZ3MSEX5020 FF+7d, DUKHCONP1AZ2HDEX5090 | -8d | 0d | KERBSTONE MASON SK [224 h]; LABOR- SUBCONTRACTOR [120 h]; KERBSTONE QTY [288 lm] | 13,284 | 10 | 1AP3HDEX10 | DUKHCON1AP3HD005090 | DUKHCONP1AZ3HDEX5090 | DH | CON | 1A | Z3 | EX | HD | B02 | B02-D12 | RES-1A |  |  |
| DUKHCONP1AZ3HDEX5095 |  | Cobble Stone Works | 20d | 2014-04-09 | 2014-05-01 | DUKHCONP1AZ3HDEX5090 SS+10d, DUKHCONP1AZ3HDEX5090 FF+10d | -8d | 0d | TILE MASON SK [128 h]; LABOR- SUBCONTRACTOR [72 h]; COBBLE STONE QTY [88 Sqm] | 12,232 | 15 | 1AP3HDEX15 | DUKHCON1AP3HD005095 | DUKHCONP1AZ3HDEX5095 | DH | CON | 1A | Z3 | EX | HD | B02 | B02-D12 | RES-1A |  |  |
| DUKHCONP1AZ3HDEX5100 |  | Interlock works | 20d | 2014-04-16 | 2014-05-08 | DUKHCONP1AZ3HDEX5095 FF+6d, DUKHCONP1AZ3HDEX5095 SS+6d | -8d | 0d | INTERLOCK MASON SK [160 h]; LABOR- SUBCONTRACTOR [72 h]; INTERLOCK QTY [184 Sqm] | 15,733 | 20 | 1AP3HDEX20 | DUKHCON1AP3HD005100 | DUKHCONP1AZ3HDEX5100 | DH | CON | 1A | Z3 | EX | HD | B02 | B02-D12 | RES-1A |  |  |
|  | 25 | **SOFT LANDSCAPING** |  | 2014-04-22 | 2014-05-27 |  |  |  |  |  |  |  |  |  |  |  |  |  |  |  |  |  |  |  |  |
| DUKHCONP1AZ3SLEX5105 |  | Laying of Grass/ green area | 25d | 2014-04-22 | 2014-05-20 | DUKHCONP1AZ3HDEX5100 SS+5d, DUKHCONP1AZ3HDEX5100 FF+5d | -8d | 0d | LABOR- SUBCONTRACTOR [1176 h]; SWEET SOIL QTY [336 Cum]; GRASS QTY [336 Sqm]; LANDSCAPING SK [1568 h] | 41,328 | 10 | 1AP3SLEX10 | DUKHCON1AP3SL005105 | DUKHCONP1AZ3SLEX5105 | DH | CON | 1A | Z3 | EX | SL | B02 | B02-D12 | RES-1A |  |  |
| DUKHCONP1AZ3SLEX5110 |  | Laying of Palm tree | 25d | 2014-04-29 | 2014-05-27 | DUKHCONP1AZ3SLEX5105 FF+6d, DUKHCONP1AZ3SLEX5105 SS+6d | -8d | 16d | LABOR- SUBCONTRACTOR [72 h]; SWEET SOIL QTY [48 Cum]; PLAM TREES QTY [16 ea]; LANDSCAPING SK [96 h] | 48,672 | 15 | 1AP3SLEX15 | DUKHCON1AP3SL005110 | DUKHCONP1AZ3SLEX5110 | DH | CON | 1A | Z3 | EX | SL | B02 | B02-D12 | RES-1A |  |  |
|  | 30 | **TESTING AND COMMISSIONING** |  | 2014-06-16 | 2014-07-14 |  |  |  |  |  |  |  |  |  |  |  |  |  |  |  |  |  |  |  |  |
| DUKHCONP1AZ3ACTC8000 |  | Pre-Commissioning & Testing of AC Works | 25d | 2014-06-16 | 2014-07-14 | DUKHCONP1AZ3ARRF3660, DUKHCONP1AZ3SLEX5110, DUKHCONP1AZ3ACFF4625, DUKHCONP1AZ3AREL3680, DUKHCONP1AZ3ARRF3620, DUKHCONP1AZ3MSEX5005, DUKHCONP1AZ3ACRF4635, DUKHCONP1AZ3HDEX5100, DUKHCONP1AZ3ARRF3655, DUKHCONP1AZ3ARGF3095, DUKHCONP1AZ3SLEX5105, DUKHCONP1AZ2ACTC8000, DUKHCONP1AZ3ARFF3395 | -24d | 0d | LABOR- SUBCONTRACTOR [500 h]; AC TECHNICIAN SK [1000 h] | 3,168 |  | 1AP3ACU100 | DUKHCON1AP3AC008000 | DUKHCONP1AZ3ACTC8000 | DH | CON | 1A | Z3 | TES |  | B02 | B02-D08 | RES-1A |  |  |
| DUKHCONP1AZ3ELTC8010 |  | Pre-Commissioning & Testing of Electrical Works | 25d | 2014-06-16 | 2014-07-14 | DUKHCONP1AZ3ARRF3660, DUKHCONP1AZ3ARGF3095, DUKHCONP1AZ3ELGF4025, DUKHCONP1AZ3ELGF4015, DUKHCONP1AZ3ELFF4055, DUKHCONP1AZ3ELFF4050, DUKHCONP1AZ3SLEX5105, DUKHCONP1AZ2ELTC8010, DUKHCONP1AZ3ARRF3620, DUKHCONP1AZ3AREL3680, DUKHCONP1AZ3SLEX5110, DUKHCONP1AZ3ELRF4075, DUKHCONP1AZ3ARRF3655, DUKHCONP1AZ3MSEX5005, DUKHCONP1AZ3ELGF4030, DUKHCONP1AZ3ARFF3395, DUKHCONP1AZ3HDEX5100, DUKHCONP1AZ3ELFF4065 | -24d | 0d | LABOR- SUBCONTRACTOR [1000 h]; ELECTRICIANS SK [2000 h] | 40,656 |  | 1AP3ELE100 | DUKHCON1AP3EL008010 | DUKHCONP1AZ3ELTC8010 | DH | CON | 1A | Z3 | TES |  | B02 | B02-D09 | RES-1A |  |  |
| DUKHCONP1AZ3PLTC8005 |  | Pre-Commissioning & Testing of Plumbing Works | 25d | 2014-06-16 | 2014-07-14 | DUKHCONP1AZ3ARGF3095, DUKHCONP1AZ3ARRF3620, DUKHCONP1AZ3SLEX5105, DUKHCONP1AZ3ARFF3395, DUKHCONP1AZ3SLEX5110, DUKHCONP1AZ3PLGF4320, DUKHCONP1AZ3ARRF3660, DUKHCONP1AZ2PLTC8005, DUKHCONP1AZ3PLRF4350, DUKHCONP1AZ3AREL3680, DUKHCONP1AZ3ARRF3655, DUKHCONP1AZ3PLRF4355, DUKHCONP1AZ3WEEX5065, DUKHCONP1AZ3HDEX5100, DUKHCONP1AZ3MSEX5005 | -24d | 0d | LABOR- SUBCONTRACTOR [1000 h]; MECHANICALS SK [2000 h] | 9,008 |  | 1AP3PLU100 | DUKHCON1AP3PL008005 | DUKHCONP1AZ3PLTC8005 | DH | CON | 1A | Z3 | TES |  | B02 | B02-D07 | RES-1A |  |  |
|  | 25 | **ZONE - 4 (4 Twin Villas)** |  | 2013-05-26 | 2014-08-16 |  |  |  |  |  |  |  |  |  |  |  |  |  |  |  |  |  |  |  |  |
|  | 10 | **STRUCTURAL WORKS** |  | 2013-05-26 | 2014-03-22 |  |  |  |  |  |  |  |  |  |  |  |  |  |  |  |  |  |  |  |  |
|  | 10 | **SUB STRUCTURE** |  | 2013-05-26 | 2013-11-09 |  |  |  |  |  |  |  |  |  |  |  |  |  |  |  |  |  |  |  |  |
|  | 10 | **UPTO GRADE SLAB** |  | 2013-05-26 | 2013-11-09 |  |  |  |  |  |  |  |  |  |  |  |  |  |  |  |  |  |  |  |  |
| DUKHCONP1AZ4STUG1000 |  | Footing Excavation | 25d | 2013-05-26 | 2013-06-23 | DUKHCONP1AZ3STUG1000, DUKHCONP1AGNSP005000 | -11d | 0d | LABOR- SUBCONTRACTOR [590 h]; EXCAVATION QTY [984 Cum]; LOADER [131 h]; POCLAIN [262 h]; TRUCK [131 h]; EQUIP OPERATORS [524 h] | 68,256 | 10 | 1AP4SBUG10 | DUKHCON1AP4STUG1000 | DUKHCONP1AZ4STUG1000 | DH | CON | 1A | Z4 | ST | SB | B02 | B02-D01 | RES-1A | UG |  |
| DUKHCONP1AZ4STUG1005 |  | Footing Antitermite | 23d | 2013-06-06 | 2013-07-02 | DUKHCONP1AZ4STUG1000 SS+10d, DUKHCONP1AZ4STUG1000 FF+5d | -11d | 0d | LABOR- SUBCONTRACTOR [432 h]; ANTITERMITE QTY [2880 sqft]; ANTITERMITE SK [1152 h] | 8,640 | 15 | 1AP4SBUG15 | DUKHCON1AP4STUG1005 | DUKHCONP1AZ4STUG1005 | DH | CON | 1A | Z4 | ST | SB | B02 | B02-D01 | RES-1A | UG | REM |
| DUKHCONP1AZ4STUG1010 |  | Footing Blinding | 23d | 2013-06-10 | 2013-07-06 | DUKHCONP1AZ4STUG1005 SS+3d, DUKHCONP1AZ4STUG1005 FF+3d | -11d | 0d | BLINDING MASON SK [454 h]; LABOR- SUBCONTRACTOR [340.5 h]; BLINDING QTY [567 Sqm] | 14,285 | 15 | 1AP4SBUG18 | DUKHCON1AP4STUG1010 | DUKHCONP1AZ4STUG1010 | DH | CON | 1A | Z4 | ST | SB | B02 | B02-D02 | RES-1A | UG | REM |
| DUKHCONP1AZ4STUG1015 |  | Footing Waterproofing & Screed | 25d | 2013-06-16 | 2013-07-14 | DUKHCONP1AZ4STUG1010 SS+5d, DUKHCONP1AZ4STUG1010 FF+5d | -11d | 0d | SCREED MASON SK [418 h]; LABOR- SUBCONTRACTOR [156.75 h]; SCREED QTY [522 Sqm]; WATERPROOFING QTY [1457 Sqm] | 52,596 | 20 | 1AP4SBUG20 | DUKHCON1AP4STUG1015 | DUKHCONP1AZ4STUG1015 | DH | CON | 1A | Z4 | ST | SB | B02 | B02-D02 | RES-1A | UG | REM |
| DUKHCONP1AZ4STUG1020 |  | Construction of foundations | 20d | 2013-07-01 | 2013-07-23 | DUKHCONP1AZ4STUG1015 FF+8d, DUKHCONP1AZ4STUG1015 SS+7d | -11d | 13d | STEEL FIXERS SK [2565 h]; CARPENTERS SK [1160 h]; CONCRETE MASON SK [720 h]; LABOR- SUBCONTRACTOR [3333.75 h]; REINFORCEMENT BARS QTY [32062 kg]; FORMWORK QTY [580 Sqm]; CONCRETE QTY [360 Cum] | 225,546 | 25 | 1AP4SBUG25 | DUKHCON1AP4STUG1020 | DUKHCONP1AZ4STUG1020 | DH | CON | 1A | Z4 | ST | SB | B02 | B02-D02 | RES-1A | UG | REM |
| DUKHCONP1AZ4STUG1025 |  | Construction of neck of columns | 25d | 2013-07-25 | 2013-08-26 | DUKHCONP1AZ4STUG1020 SS+8d, DUKHCONP1AZ3STUG1025, DUKHCONP1AZ4STUG1020 FF+7d | -24d | 0d | STEEL FIXERS SK [214 h]; CARPENTERS SK [656 h]; CONCRETE MASON SK [48 h]; LABOR- SUBCONTRACTOR [688.5 h]; REINFORCEMENT BARS QTY [2669 kg]; FORMWORK QTY [328 Sqm]; CONCRETE QTY [24 Cum] | 35,935 | 30 | 1AP4SBUG30 | DUKHCON1AP4STUG1025 | DUKHCONP1AZ4STUG1025 | DH | CON | 1A | Z4 | ST | SB | B02 | B02-D02 | RES-1A | UG | REM |
| DUKHCONP1AZ4STUG1030 |  | Waterproofing Footing & Neck Column | 25d | 2013-08-04 | 2013-09-04 | DUKHCONP1AZ4STUG1025 SS+8d, DUKHCONP1AZ4STUG1025 FF+8d | -24d | 0d | LABOR- SUBCONTRACTOR [141 h]; WATERPROOFING QTY [468 Sqm]; WATERPROOFING SPECIALIST SK [375 h] | 22,459 | 35 | 1AP4SBUG35 | DUKHCON1AP4STUG1030 | DUKHCONP1AZ4STUG1030 | DH | CON | 1A | Z4 | ST | SB | B02 | B02-D02 | RES-1A | UG | REM |
| DUKHCONP1AZ4STUG1035 |  | Backfilling Upto Grade Beam Bottom | 25d | 2013-08-21 | 2013-09-18 | DUKHCONP1AZ4STUG1030 SS+12d, DUKHCONP1AZ4STUG1030 FF+12d, DUKHCONP1AZ3STUG1035 | -24d | 0d | LABOR- SUBCONTRACTOR [216 h]; BACKFILLING QTY [880 Cum]; BOBCAT [375 h]; PLATE COMPACTOR [375 h]; TRUCK [75 h]; EQUIP OPERATORS [825 h] | 22,363 | 40 | 1AP4SBUG40 | DUKHCON1AP4STUG1035 | DUKHCONP1AZ4STUG1035 | DH | CON | 1A | Z4 | ST | SB | B02 | B02-D01 | RES-1A | UG |  |
| DUKHCONP1AZ4STUG1040 |  | Construction of Grade Beams | 25d | 2013-09-07 | 2013-10-05 | DUKHCONP1AZ4STUG1035 SS+14d, DUKHCONP1AZ4STUG1035 FF+14d | -24d | 0d | BLINDING MASON SK [244 h]; SCREED MASON SK [224 h]; STEEL FIXERS SK [1497 h]; CARPENTERS SK [2152 h]; CONCRETE MASON SK [256 h]; LABOR- SUBCONTRACTOR [3195.75 h]; BLINDING QTY [304 Sqm]; SCREED QTY [280 Sqm]; REINFORCEMENT BARS QTY [18709 kg]; FORMWORK QTY [1076 Sqm]; CONCRETE QTY [128 Cum] | 326,110 | 45 | 1AP4SBUG45 | DUKHCON1AP4STUG1040 | DUKHCONP1AZ4STUG1040 | DH | CON | 1A | Z4 | ST | SB | B02 | B02-D02 | RES-1A | UG | REM |
| DUKHCONP1AZ4STUG1045 |  | Construction of slab on grade | 25d | 2013-10-09 | 2013-11-09 | DUKHCONP1AZ3STUG1045, DUKHCONP1AZ4PLUG4300 SS+8d, DUKHCONP1AZ4STUG1040 FF+10d, DUKHCONP1AZ4STUG1040 SS+10d, DUKHCONP1AZ4PLUG4300 FF+8d | -24d | 0d | BLINDING MASON SK [923 h]; SCREED MASON SK [850 h]; STEEL FIXERS SK [536 h]; CONCRETE MASON SK [400 h]; LABOR- SUBCONTRACTOR [1713 h]; BLINDING QTY [1153 Sqm]; SCREED QTY [1062 Sqm]; CONCRETE QTY [200 Cum]; WELDED WIRE MESH [2008 Sqm] | 239,062 | 50 | 1AP4SBUG50 | DUKHCON1AP4STUG1045 | DUKHCONP1AZ4STUG1045 | DH | CON | 1A | Z4 | ST | SB | B02 | B02-D02 | RES-1A | UG | REM |

Notes:
- DUKHCONP1AZ3HDEX5090: Expenses: P1A-External works within the Plot Curtilage 13284
- DUKHCONP1AZ3HDEX5095: Expenses: P1A-External works within the Plot Curtilage 12232
- DUKHCONP1AZ3HDEX5100: Expenses: P1A-External works within the Plot Curtilage 15733
- DUKHCONP1AZ3SLEX5105: Expenses: P1A-External works within the Plot Curtilage 41328
- DUKHCONP1AZ3SLEX5110: Expenses: P1A-External works within the Plot Curtilage 48672
- DUKHCONP1AZ3ACTC8000: Expenses: P1A-Air-conditioning and Ventilation works 3168
- DUKHCONP1AZ3ELTC8010: Expenses: P1A-Electrical Installations 40656
- DUKHCONP1AZ3PLTC8005: Expenses: P1A-Plumbing and Drainage works 9008
- DUKHCONP1AZ4STUG1000: Expenses: P1A-Excavation and Earth Works 68256
- DUKHCONP1AZ4STUG1005: Expenses: P1A-Excavation and Earth Works 8640
- DUKHCONP1AZ4STUG1010: Expenses: P1A-Concrete Works 14285
- DUKHCONP1AZ4STUG1015: Expenses: P1A-Concrete Works 52596
- DUKHCONP1AZ4STUG1020: Expenses: P1A-Concrete Works 225546
- DUKHCONP1AZ4STUG1025: Expenses: P1A-Concrete Works 35935
- DUKHCONP1AZ4STUG1030: Expenses: P1A-Concrete Works 22459
- DUKHCONP1AZ4STUG1035: Expenses: P1A-Excavation and Earth Works 22363
- DUKHCONP1AZ4STUG1040: Expenses: P1A-Concrete Works 326110
- DUKHCONP1AZ4STUG1045: Expenses: P1A-Concrete Works 239062

| ID | WBS | Activity | Duration | Start | Finish | Predecessors | Total float | Free float | Resources | Cost | CODE | rem | P3 ACTID | P6 ID (old) | NP61D | PROJECT | PHASES | PACKAGE | PART | ELEMENTS | STEP | FLOORS | BILL NOS | BILL DIVISION | RES PACK | EXECUTER |
| --- | --- | --- | --- | --- | --- | --- | --- | --- | --- | --- | --- | --- | --- | --- | --- | --- | --- | --- | --- | --- | --- | --- | --- | --- | --- | --- |
|  | 15 | **SUPERSTRUCTURE** |  | 2013-10-28 | 2014-03-22 |  |  |  |  |  |  |  |  |  |  |  |  |  |  |  |  |  |  |  |  |  |
|  | 10 | **GROUND FLOOR** |  | 2013-10-28 | 2013-12-23 |  |  |  |  |  |  |  |  |  |  |  |  |  |  |  |  |  |  |  |  |  |
| DUKHCONP1AZ4STGF2000 |  | Column-Rebar & Formwork | 25d | 2013-10-28 | 2013-11-25 | DUKHCONP1AZ3STGF2000, DUKHCONP1AZ4STUG1045 SS+14d, DUKHCONP1AZ4STUG1045 FF+7d | -24d | 0d | STEEL FIXERS SK [656 h]; CARPENTERS SK [1656 h]; LABOR- SUBCONTRACTOR [1734 h]; REINFORCEMENT BARS QTY [8198 kg]; FORMWORK QTY [828 Sqm] | 73,433 | 10 | REM | 1AP4SPGF10 | DUKHCON1AP4STGF2000 | DUKHCONP1AZ4STGF2000 | DH | CON | 1A | Z4 | ST | SP | GF | B02 | B02-D02 | RES-1A |  |
| DUKHCONP1AZ4STGF2005 |  | Column-Concrete | 24d | 2013-11-05 | 2013-12-02 | DUKHCONP1AZ4STGF2000 SS+7d, DUKHCONP1AZ4STGF2000 FF+2d | -22d | 0d | CONCRETE MASON SK [146 h]; LABOR- SUBCONTRACTOR [109.5 h]; CONCRETE QTY [73 Cum] | 20,945 | 15 | REM | 1AP4SPGF15 | DUKHCON1AP4STGF2005 | DUKHCONP1AZ4STGF2005 | DH | CON | 1A | Z4 | ST | SP | GF | B02 | B02-D02 | RES-1A |  |
| DUKHCONP1AZ4STGF2010 |  | Beam, Stairs ,Slab-Rebar & Formwork | 25d | 2013-11-20 | 2013-12-19 | DUKHCONP1AZ4STGF2005 SS+2d, DUKHCONP1AZ4STGF2005 FF+14d | -22d | 0d | STEEL FIXERS SK [4091 h]; CARPENTERS SK [5526 h]; LABOR- SUBCONTRACTOR [7212.75 h]; REINFORCEMENT BARS QTY [51136 kg]; FORMWORK QTY [2763 Sqm] | 326,549 | 20 | REM | 1AP4SPGF20 | DUKHCON1AP4STGF2010 | DUKHCONP1AZ4STGF2010 | DH | CON | 1A | Z4 | ST | SP | GF | B02 | B02-D02 | RES-1A |  |
| DUKHCONP1AZ4STGF2015 |  | Beam, Stairs ,Slab-Concrete | 14d | 2013-12-07 | 2013-12-23 | DUKHCONP1AZ4STGF2010 FF+3d, DUKHCONP1AZ4STGF2010 SS+10d, DUKHCONP1AZ3STGF2015 | -22d | 0d | CONCRETE MASON SK [740 h]; LABOR- SUBCONTRACTOR [555 h]; CONCRETE QTY [370 Cum] | 131,494 | 25 | REM | 1AP4SPGF25 | DUKHCON1AP4STGF2015 | DUKHCONP1AZ4STGF2015 | DH | CON | 1A | Z4 | ST | SP | GF | B02 | B02-D02 | RES-1A |  |
|  | 15 | **FIRST FLOORS** |  | 2013-12-09 | 2014-02-04 |  |  |  |  |  |  |  |  |  |  |  |  |  |  |  |  |  |  |  |  |  |
| DUKHCONP1AZ4STFF2020 |  | Column-Rebar & Formwork | 25d | 2013-12-09 | 2014-01-07 | DUKHCONP1AZ4STGF2015 FF+5d, DUKHCONP1AZ4STGF2015 SS+2d, DUKHCONP1AZ3STFF2020 | -22d | 0d | STEEL FIXERS SK [574 h]; CARPENTERS SK [1472 h]; LABOR- SUBCONTRACTOR [1534.5 h]; REINFORCEMENT BARS QTY [7175 kg]; FORMWORK QTY [736 Sqm] | 64,915 | 10 | REM | 1AP4SPFF10 | DUKHCON1AP4STFF2020 | DUKHCONP1AZ4STFF2020 | DH | CON | 1A | Z4 | ST | SP | FF | B02 | B02-D02 | RES-1A |  |
| DUKHCONP1AZ4STFF2025 |  | Column-Concrete | 24d | 2013-12-19 | 2014-01-15 | DUKHCONP1AZ4STFF2020 FF+2d, DUKHCONP1AZ4STFF2020 SS+8d | -20d | 0d | CONCRETE MASON SK [128 h]; LABOR- SUBCONTRACTOR [96 h]; CONCRETE QTY [64 Cum] | 18,331 | 15 | REM | 1AP4SPFF15 | DUKHCON1AP4STFF2025 | DUKHCONP1AZ4STFF2025 | DH | CON | 1A | Z4 | ST | SP | FF | B02 | B02-D02 | RES-1A |  |
| DUKHCONP1AZ4STFF2030 |  | Beam, Stairs ,Slab-Rebar & Formwork | 25d | 2014-01-04 | 2014-02-01 | DUKHCONP1AZ4STFF2025 SS+2d, DUKHCONP1AZ4STFF2025 FF+14d | -20d | 0d | STEEL FIXERS SK [3685 h]; CARPENTERS SK [5526 h]; LABOR- SUBCONTRACTOR [6908.25 h]; REINFORCEMENT BARS QTY [46062 kg]; FORMWORK QTY [2763 Sqm] | 310,154 | 20 | REM | 1AP4SPFF20 | DUKHCON1AP4STFF2030 | DUKHCONP1AZ4STFF2030 | DH | CON | 1A | Z4 | ST | SP | FF | B02 | B02-D02 | RES-1A |  |
| DUKHCONP1AZ4STFF2035 |  | Beam, Stairs ,Slab-Concrete | 14d | 2014-01-20 | 2014-02-04 | DUKHCONP1AZ3STFF2035, DUKHCONP1AZ4STFF2030 FF+3d, DUKHCONP1AZ4STFF2030 SS+10d | -20d | 0d | CONCRETE MASON SK [652 h]; LABOR- SUBCONTRACTOR [489 h]; CONCRETE QTY [326 Cum] | 119,102 | 25 | REM | 1AP4SPFF25 | DUKHCON1AP4STFF2035 | DUKHCONP1AZ4STFF2035 | DH | CON | 1A | Z4 | ST | SP | FF | B02 | B02-D02 | RES-1A |  |
|  | 20 | **ROOF** |  | 2014-01-22 | 2014-03-22 |  |  |  |  |  |  |  |  |  |  |  |  |  |  |  |  |  |  |  |  |  |
| DUKHCONP1AZ4STRF2040 |  | Column-Rebar & Formwork | 18d | 2014-01-22 | 2014-02-12 | DUKHCONP1AZ4STFF2035 SS+2d, DUKHCONP1AZ3STRF2040, DUKHCONP1AZ4STFF2035 FF+3d | -16d | 0d | STEEL FIXERS SK [137 h]; CARPENTERS SK [552 h]; LABOR- SUBCONTRACTOR [516.75 h]; REINFORCEMENT BARS QTY [1707 kg]; FORMWORK QTY [276 Sqm] | 21,168 | 10 | REM | 1AP4SPRF10 | DUKHCON1AP4STRF2040 | DUKHCONP1AZ4STRF2040 | DH | CON | 1A | Z4 | ST | SP | RF | B02 | B02-D02 | RES-1A |  |
| DUKHCONP1AZ4STRF2045 |  | Column-Concrete | 17d | 2014-01-26 | 2014-02-15 | DUKHCONP1AZ4STRF2040 FF+1d, DUKHCONP1AZ4STRF2040 SS+3d | -16d | 0d | CONCRETE MASON SK [30 h]; LABOR- SUBCONTRACTOR [22.5 h]; CONCRETE QTY [15 Cum] | 4,363 | 15 | REM | 1AP4SPRF15 | DUKHCON1AP4STRF2045 | DUKHCONP1AZ4STRF2045 | DH | CON | 1A | Z4 | ST | SP | RF | B02 | B02-D02 | RES-1A |  |
| DUKHCONP1AZ4STRF2050 |  | Slab-Rebar & Formwork - Head Room | 20d | 2014-01-28 | 2014-02-20 | DUKHCONP1AZ4STRF2045 FF+5d, DUKHCONP1AZ4STRF2045 SS+2d | -16d | 0d | STEEL FIXERS SK [869 h]; CARPENTERS SK [694 h]; LABOR- SUBCONTRACTOR [1172.25 h]; REINFORCEMENT BARS QTY [10859 kg]; FORMWORK QTY [347 Sqm] | 61,496 | 20 | REM | 1AP4SPRF20 | DUKHCON1AP4STRF2050 | DUKHCONP1AZ4STRF2050 | DH | CON | 1A | Z4 | ST | SP | RF | B02 | B02-D02 | RES-1A |  |
| DUKHCONP1AZ4STRF2055 |  | Slab-Concrete-Head room | 13d | 2014-02-08 | 2014-02-23 | DUKHCONP1AZ4STRF2050 FF+2d, DUKHCONP1AZ3STRF2055, DUKHCONP1AZ4STRF2050 SS+5d | -16d | 0d | CONCRETE MASON SK [144 h]; LABOR- SUBCONTRACTOR [108 h]; CONCRETE QTY [72 Cum] | 22,960 | 25 | REM | 1AP4SPRF25 | DUKHCON1AP4STRF2055 | DUKHCONP1AZ4STRF2055 | DH | CON | 1A | Z4 | ST | SP | RF | B02 | B02-D02 | RES-1A |  |
| DUKHCONP1AZ4STRF2060 |  | Construction of Parapets | 25d | 2014-02-10 | 2014-03-11 | DUKHCONP1AZ4STRF2055 SS+2d, DUKHCONP1AZ4STRF2055 FF+14d | 32d | 4d | BLOCK MASON SK [1408 h]; LABOR- SUBCONTRACTOR [792 h]; BLOCK QTY [704 Sqm] | 43,648 | 30 | REM | 1AP4SPRF30 | DUKHCON1AP4STRF2060 | DUKHCONP1AZ4STRF2060 | DH | CON | 1A | Z4 | ST | SP | RF | B02 | B02-D03 | RES-1A |  |
| DUKHCONP1AZ4STRF2065 |  | Construction of up stands/Plinth | 25d | 2014-02-22 | 2014-03-22 | DUKHCONP1AZ3STRF2065, DUKHCONP1AZ4STRF2060 FF+5d, DUKHCONP1AZ4STRF2060 SS+5d | 28d | 0d | STEEL FIXERS SK [45 h]; CARPENTERS SK [256 h]; CONCRETE MASON SK [16 h]; LABOR- SUBCONTRACTOR [237.75 h]; REINFORCEMENT BARS QTY [559 kg]; FORMWORK QTY [128 Sqm]; CONCRETE QTY [8 Cum] | 12,624 | 35 | REM | 1AP4SPRF35 | DUKHCON1AP4STRF2065 | DUKHCONP1AZ4STRF2065 | DH | CON | 1A | Z4 | ST | SP | RF | B02 | B02-D02 | RES-1A |  |
|  | 15 | **FINISHING WORKS** |  | 2014-01-07 | 2014-07-14 |  |  |  |  |  |  |  |  |  |  |  |  |  |  |  |  |  |  |  |  |  |
|  | 10 | **INTERNAL FINISHES** |  | 2014-01-07 | 2014-07-14 |  |  |  |  |  |  |  |  |  |  |  |  |  |  |  |  |  |  |  |  |  |
|  | 10 | **GROUND FLOOR** |  | 2014-01-07 | 2014-06-19 |  |  |  |  |  |  |  |  |  |  |  |  |  |  |  |  |  |  |  |  |  |
| DUKHCONP1AZ4ARGF3000 |  | Block work | 25d | 2014-01-07 | 2014-02-04 | DUKHCONP1AZ4STGF2015 SS+21d, DUKHCONP1AZ3ARGF3000, DUKHCONP1AZ4STGF2015 FF+21d | -6d | 0d | BLOCK MASON SK [6232 h]; LABOR- SUBCONTRACTOR [3505.5 h]; BLOCK QTY [3116 Sqm] | 225,562 | 10 | REM | 1AP4IFGF10 | DUKHCON1AP4ARGF3000 | DUKHCONP1AZ4ARGF3000 | DH | CON | 1A | Z4 | FIN | IF | GF | B02 | B02-D03 | RES-1A |  |
| DUKHCONP1AZ4ARGF3005 |  | Plastering work | 25d | 2014-01-29 | 2014-02-27 | DUKHCONP1AZ4ELGF4000 FF+5d, DUKHCONP1AZ4ARGF3000 SS+7d, DUKHCONP1AZ4ARGF3000 FF+7d, DUKHCONP1AZ4PLGF4305 FF+5d, DUKHCONP1AZ4PLGF4305 SS+5d, DUKHCONP1AZ3ARGF3005, DUKHCONP1AZ4ELGF4000 SS+5d | -6d | 0d | PLASTER MASON SK [8728 h]; LABOR- SUBCONTRACTOR [4909.5 h]; PLASTER QTY [5455 Sqm] | 71,593 | 12 | REM | 1AP4IFGF12 | DUKHCON1AP4ARGF3005 | DUKHCONP1AZ4ARGF3005 | DH | CON | 1A | Z4 | FIN | IF | GF | B02 | B02-D10 | RES-1A |  |
| DUKHCONP1AZ4ARGF3010 |  | Flooring screed | 21d | 2014-02-06 | 2014-03-03 | DUKHCONP1AZ4ARGF3005 SS+7d, DUKHCONP1AZ4ARGF3005 FF+3d | 2d | 8d | SCREED MASON SK [1149 h]; LABOR- SUBCONTRACTOR [431.25 h]; FLOORING SCREED QTY [1436 Sqm] | 48,008 | 15 | REM | 1AP4IFGF15 | DUKHCON1AP4ARGF3010 | DUKHCONP1AZ4ARGF3010 | DH | CON | 1A | Z4 | FIN | IF | GF | B02 | B02-D10 | RES-1A |  |
| DUKHCONP1AZ4ARGF3015 |  | Wet area waterproofing & Protection Screed | 15d | 2014-02-17 | 2014-03-05 | DUKHCONP1AZ3ARGF3015, DUKHCONP1AZ4ARGF3005 SS+7d, DUKHCONP1AZ4ARGF3005 FF+5d | -6d | 0d | LABOR- SUBCONTRACTOR [67.5 h]; WETAREA WATERPROOFING QTY [224 Sqm]; WATERPROOFING SPECIALIST SK [180 h] | 7,616 | 18 | REM | 1AP4IFGF18 | DUKHCON1AP4ARGF3015 | DUKHCONP1AZ4ARGF3015 | DH | CON | 1A | Z4 | FIN | IF | GF | B02 | B02-D10 | RES-1A |  |
| DUKHCONP1AZ4ARGF3030 |  | Paint First coat | 25d | 2014-02-19 | 2014-03-19 | DUKHCONP1AZ3ARGF3030, DUKHCONP1AZ4ARGF3005 FF+14d, DUKHCONP1AZ4ARGF3005 SS+14d | 5d | 0d | LABOR- SUBCONTRACTOR [1479.75 h]; FIRSTCOAT PAINT QTY [4932 Sqm]; PAINTERS SK [3946 h] | 26,608 | 21 | REM | 1AP4IFGF21 | DUKHCON1AP4ARGF3030 | DUKHCONP1AZ4ARGF3030 | DH | CON | 1A | Z4 | FIN | IF | GF | B02 | B02-D11 | RES-1A | ENT |
| DUKHCONP1AZ4ARGF3020 |  | Ceramic Wall Tiling | 25d | 2014-02-23 | 2014-03-23 | DUKHCONP1AZ4ARGF3015 FF+5d, DUKHCONP1AZ4ARGF3015 SS+5d, DUKHCONP1AZ4PLGF4310 SS+4d, DUKHCONP1AZ4PLGF4305 FF+4d, DUKHCONP1AZ3ARGF3020, DUKHCONP1AZ4PLGF4305 SS+4d, DUKHCONP1AZ4PLGF4310 FF+4d | -6d | 0d | CERAMIC WALL TILE QTY [1417 Sqm]; TILE MASON SK [2834 h]; LABOR- SUBCONTRACTOR [1594.5 h] | 92,597 | 24 | REM | 1AP4IFGF24 | DUKHCON1AP4ARGF3020 | DUKHCONP1AZ4ARGF3020 | DH | CON | 1A | Z4 | FIN | IF | GF | B02 | B02-D10 | RES-1A |  |
| DUKHCONP1AZ4ARGF3025 |  | Porcelain Tile flooring | 25d | 2014-03-01 | 2014-03-29 | DUKHCONP1AZ4ARGF3010 SS+10d, DUKHCONP1AZ4ARGF3020 SS+5d, DUKHCONP1AZ3ARGF3025, DUKHCONP1AZ4ARGF3010 FF+10d, DUKHCONP1AZ4ARGF3020 FF+5d | -6d | 0d | TILE MASON SK [1116 h]; LABOR- SUBCONTRACTOR [627.75 h]; PORCELAIN FLOORING QTY [976 Sqm] | 74,919 | 27 | REM | 1AP4IFGF27 | DUKHCON1AP4ARGF3025 | DUKHCONP1AZ4ARGF3025 | DH | CON | 1A | Z4 | FIN | IF | GF | B02 | B02-D10 | RES-1A |  |
| DUKHCONP1AZ4ARGF3045 |  | Fixing of Suspension systems | 20d | 2014-03-18 | 2014-04-09 | DUKHCONP1AZ4ARGF3030 FF+7d, DUKHCONP1AZ4ARGF3025 SS+10d, DUKHCONP1AZ4ELGF4010 FF+5d, DUKHCONP1AZ4ELGF4010 SS+5d, DUKHCONP1AZ4ARGF3030 SS+7d, DUKHCONP1AZ4ARGF3025 FF+10d, DUKHCONP1AZ3ARGF3045 | -6d | 0d | LABOR- SUBCONTRACTOR [523.82 h]; SUSPENSION QTY [1164.04 Sqm]; FALSE CEILING SKILLED SK [931.23 h] | 22,840 | 39 | REM | 1AP4IFGF39 | DUKHCON1AP4ARGF3045 | DUKHCONP1AZ4ARGF3045 | DH | CON | 1A | Z4 | FIN | IF | GF | B02 | B02-D10 | RES-1A | SUS |
| DUKHCONP1AZ4ARGF3035 |  | Slate Tile Flooring & Skirting | 15d | 2014-03-20 | 2014-04-06 | DUKHCONP1AZ4ARGF3025 FF+7d, DUKHCONP1AZ4ARGF3010 FF+13d, DUKHCONP1AZ4ARGF3010 SS+13d, DUKHCONP1AZ4ARGF3025 SS+13d | -1d | 2d | TILE MASON SK [487 h]; LABOR- SUBCONTRACTOR [274.5 h]; SLATE TILE QTY [304 Sqm] | 65,885 | 33 | REM | 1AP4IFGF33 | DUKHCON1AP4ARGF3035 | DUKHCONP1AZ4ARGF3035 | DH | CON | 1A | Z4 | FIN | IF | GF | B02 | B02-D10 | RES-1A |  |
| DUKHCONP1AZ4ARGF3055 |  | Aluminum tile false ceiling | 25d | 2014-03-26 | 2014-04-23 | DUKHCONP1AZ4ACGF4600 SS+7d, DUKHCONP1AZ4ARGF3045 FF+7d, DUKHCONP1AZ4ACGF4600 FF+7d, DUKHCONP1AZ4ARGF3045 SS+7d | -3d | 3d | FALSE CEILING SKILLED SK [96 h]; LABOR- SUBCONTRACTOR [54 h]; FALSE CEILING QTY [120 Sqm] | 7,661 | 42 | REM | 1AP4IFGF42 | DUKHCON1AP4ARGF3055 | DUKHCONP1AZ4ARGF3055 | DH | CON | 1A | Z4 | FIN | IF | GF | B02 | B02-D10 | RES-1A | ALU |
| DUKHCONP1AZ4ARGF3040 |  | Cobble Tile flooring | 15d | 2014-03-27 | 2014-04-13 | DUKHCONP1AZ4ARGF3025 FF+13d, DUKHCONP1AZ4ARGF3010 SS+13d, DUKHCONP1AZ4ARGF3025 SS+13d, DUKHCONP1AZ4ARGF3035 SS+4d, DUKHCONP1AZ4ARGF3035 FF+4d, DUKHCONP1AZ4ARGF3010 FF+13d | -3d | 0d | TILE MASON SK [474 h]; LABOR- SUBCONTRACTOR [267 h]; COBBLE STONE QTY [296 Sqm] | 24,687 | 30 | REM | 1AP4IFGF30 | DUKHCON1AP4ARGF3040 | DUKHCONP1AZ4ARGF3040 | DH | CON | 1A | Z4 | FIN | IF | GF | B02 | B02-D10 | RES-1A |  |
| DUKHCONP1AZ4ARGF3060 |  | Gypsum board false ceiling | 25d | 2014-03-30 | 2014-04-27 | DUKHCONP1AZ4ARGF3045 FF+10d, DUKHCONP1AZ4ACGF4600 FF+7d, DUKHCONP1AZ3ARGF3060, DUKHCONP1AZ4ARGF3045 SS+10d, DUKHCONP1AZ4ACGF4600 SS+7d | -6d | 0d | LABOR- SUBCONTRACTOR [480.75 h]; FALSE CEILING QTY [1068.04 Sqm]; FALSE CEILING SKILLED SK [854.4 h] | 60,827 | 45 | REM | 1AP4IFGF45 | DUKHCON1AP4ARGF3060 | DUKHCONP1AZ4ARGF3060 | DH | CON | 1A | Z4 | FIN | IF | GF | B02 | B02-D10 | RES-1A | GYP |
| DUKHCONP1AZ4ARGF3050 |  | Granite - Stair case flooring & Skirting | 20d | 2014-04-05 | 2014-04-27 | DUKHCONP1AZ4ARGF3040 FF+7d, DUKHCONP1AZ4ARGF3025 FF+13d, DUKHCONP1AZ4ARGF3025 SS+13d, DUKHCONP1AZ4ARGF3040 SS+7d | -3d | 0d | GRANITE MASON SK [560 h]; LABOR- SUBCONTRACTOR [315 h]; GRANITE QTY [140 Sqm] | 93,589 | 36 | REM | 1AP4IFGF36 | DUKHCON1AP4ARGF3050 | DUKHCONP1AZ4ARGF3050 | DH | CON | 1A | Z4 | FIN | IF | GF | B02 | B02-D10 | RES-1A |  |
| DUKHCONP1AZ4ARGF3065 |  | Wooden door & PVC Door | 15d | 2014-04-19 | 2014-05-05 | DUKHCONP1AZ3ARGF3065, DUKHCONP1AZ4ARGF3035 SS+7d, DUKHCONP1AZ4ARGF3050 FF+7d, DUKHCONP1AZ4ARGF3035 FF+7d, DUKHCONP1AZ4ARGF3050 SS+7d | -3d | 0d | LABOR- SUBCONTRACTOR [84 h]; WOODEN DOOR QTY [56 ea]; DOOR ERECTOR SK [224 h] | 233,577 | 48 | REM | 1AP4IFGF48 | DUKHCON1AP4ARGF3065 | DUKHCONP1AZ4ARGF3065 | DH | CON | 1A | Z4 | FIN | IF | GF | B02 | B02-D05 | RES-1A |  |
| DUKHCONP1AZ4ARGF3070 |  | Aluminum doors | 15d | 2014-04-24 | 2014-05-11 | DUKHCONP1AZ3ARGF3070, DUKHCONP1AZ4ARGF3065 SS+5d, DUKHCONP1AZ4ARGF3065 FF+5d | -3d | 0d | LABOR- SUBCONTRACTOR [48 h]; ALUMINIUM DOOR QTY [32 ea]; DOOR ERECTOR SK [128 h] | 83,208 | 51 | REM | 1AP4IFGF51 | DUKHCON1AP4ARGF3070 | DUKHCONP1AZ4ARGF3070 | DH | CON | 1A | Z4 | FIN | IF | GF | B02 | B02-D06 | RES-1A |  |
| DUKHCONP1AZ4ARGF3075 |  | Carpentry & Joinery Works | 20d | 2014-04-30 | 2014-05-22 | DUKHCONP1AZ4ARGF3070 FF+7d, DUKHCONP1AZ3ARGF3075, DUKHCONP1AZ4ARGF3070 SS+5d | -3d | 0d | LABOR- SUBCONTRACTOR [156 h]; CABINET QTY [48 ea]; COUNTER QTY [8 ea]; JOINERY WORK SK [384 h]; COUNTER SK [32 h] | 114,072 | 57 | REM | 1AP4IFGF57 | DUKHCON1AP4ARGF3075 | DUKHCONP1AZ4ARGF3075 | DH | CON | 1A | Z4 | FIN | IF | GF | B02 | B02-D05 | RES-1A |  |
| DUKHCONP1AZ4ARGF3080 |  | Aluminum windows | 20d | 2014-05-01 | 2014-05-24 | DUKHCONP1AZ4ARGF3070 SS+6d, DUKHCONP1AZ3ARGF3080, DUKHCONP1AZ4ARGF3070 FF+6d | 7d | 5d | LABOR- SUBCONTRACTOR [44.25 h]; ALUMINIUM WINDOWS QTY [44 ea]; WINDOW ERECTOR SK [118 h] | 36,283 | 54 | REM | 1AP4IFGF54 | DUKHCON1AP4ARGF3080 | DUKHCONP1AZ4ARGF3080 | DH | CON | 1A | Z4 | FIN | IF | GF | B02 | B02-D06 | RES-1A |  |
| DUKHCONP1AZ4ARGF3085 |  | S.S.Balustrade | 20d | 2014-05-08 | 2014-05-31 | DUKHCONP1AZ4ARGF3050 SS+7d, DUKHCONP1AZ4ARGF3050 FF+7d, DUKHCONP1AZ4ARGF3075 SS+7d, DUKHCONP1AZ4ARGF3075 FF+7d | 2d | 5d | LABOR- SUBCONTRACTOR [94.5 h]; S.S.BALUSTRADE QTY [84 lm]; HANDRAIL ERECTOR SKILLED [168 h] | 121,464 | 63 | REM | 1AP4IFGF63 | DUKHCON1AP4ARGF3085 | DUKHCONP1AZ4ARGF3085 | DH | CON | 1A | Z4 | FIN | IF | GF | B02 | B02-D06 | RES-1A |  |
| DUKHCONP1AZ4ARGF3090 |  | Installation of Granite Counter Top | 15d | 2014-05-13 | 2014-05-29 | DUKHCONP1AZ4ARGF3075 FF+6d, DUKHCONP1AZ4ARGF3075 SS+7d | -3d | 0d | GRANITE MASON SK [128 h]; LABOR- SUBCONTRACTOR [48 h]; GRANITE COUNTER TOP QTY [32 ea] | 34,847 | 60 | REM | 1AP4IFGF60 | DUKHCON1AP4ARGF3090 | DUKHCONP1AZ4ARGF3090 | DH | CON | 1A | Z4 | FIN | IF | GF | B02 | B02-D10 | RES-1A |  |
| DUKHCONP1AZ4ARGF3095 |  | Final Painting | 25d | 2014-05-22 | 2014-06-19 | DUKHCONP1AZ4ARGF3070 SS+5d, DUKHCONP1AZ4ARGF3080 FF+8d, DUKHCONP1AZ4ARGF3085 FF+7d, DUKHCONP1AZ4ARGF3090 SS+8d, DUKHCONP1AZ4ACGF4610 FF+10d, DUKHCONP1AZ4ARGF3040 SS+13d, DUKHCONP1AZ4ARGF3070 FF+5d, DUKHCONP1AZ4ARGF3080 SS+8d, DUKHCONP1AZ4ARGF3085 SS+7d, DUKHCONP1AZ4ARGF3030 SS+10d, DUKHCONP1AZ4ARGF3030 FF+10d, DUKHCONP1AZ4ARGF3035 FF+13d, DUKHCONP1AZ4ARGF3060 SS+8d, DUKHCONP1AZ4ACGF4610 SS+10d, DUKHCONP1AZ3ARGF3095, DUKHCONP1AZ4ARGF3040 FF+13d, DUKHCONP1AZ4ARGF3035 SS+13d, DUKHCONP1AZ4ARGF3060 FF+8d, DUKHCONP1AZ4ARGF3090 FF+8d | -3d | 0d | LABOR- SUBCONTRACTOR [1479.75 h]; PAINT QTY [4932 Sqm]; PAINTERS SK [3946 h] | 61,805 | 66 | REM | 1AP4IFGF66 | DUKHCON1AP4ARGF3095 | DUKHCONP1AZ4ARGF3095 | DH | CON | 1A | Z4 | FIN | IF | GF | B02 | B02-D11 | RES-1A | PNT |

Notes:
- DUKHCONP1AZ4STGF2000: Expenses: P1A-Concrete Works 73433
- DUKHCONP1AZ4STGF2005: Expenses: P1A-Concrete Works 20945
- DUKHCONP1AZ4STGF2010: Expenses: P1A-Concrete Works 326549
- DUKHCONP1AZ4STGF2015: Expenses: P1A-Concrete Works 131494
- DUKHCONP1AZ4STFF2020: Expenses: P1A-Concrete Works 64915
- DUKHCONP1AZ4STFF2025: Expenses: P1A-Concrete Works 18331
- DUKHCONP1AZ4STFF2030: Expenses: P1A-Concrete Works 310154
- DUKHCONP1AZ4STFF2035: Expenses: P1A-Concrete Works 119102
- DUKHCONP1AZ4STRF2040: Expenses: P1A-Concrete Works 21168
- DUKHCONP1AZ4STRF2045: Expenses: P1A-Concrete Works 4363
- DUKHCONP1AZ4STRF2050: Expenses: P1A-Concrete Works 61496
- DUKHCONP1AZ4STRF2055: Expenses: P1A-Concrete Works 22960
- DUKHCONP1AZ4STRF2060: Expenses: P1A-Block work 43648
- DUKHCONP1AZ4STRF2065: Expenses: P1A-Concrete Works 12624
- DUKHCONP1AZ4ARGF3000: Expenses: P1A-Block work 225562
- DUKHCONP1AZ4ARGF3005: Expenses: P1A-Finishes 71593
- DUKHCONP1AZ4ARGF3010: Expenses: P1A-Finishes 48008
- DUKHCONP1AZ4ARGF3015: Expenses: P1A-Finishes 7616
- DUKHCONP1AZ4ARGF3030: Expenses: P1A-Painting and Decorating 26608
- DUKHCONP1AZ4ARGF3020: Expenses: P1A-Finishes 92597
- DUKHCONP1AZ4ARGF3025: Expenses: P1A-Finishes 74919
- DUKHCONP1AZ4ARGF3045: Expenses: P1A-Finishes 22840
- DUKHCONP1AZ4ARGF3035: Expenses: P1A-Finishes 65885
- DUKHCONP1AZ4ARGF3055: Expenses: P1A-Finishes 7661
- DUKHCONP1AZ4ARGF3040: Expenses: P1A-Finishes 24687
- DUKHCONP1AZ4ARGF3060: Expenses: P1A-Finishes 60827
- DUKHCONP1AZ4ARGF3050: Expenses: P1A-Finishes 93589
- DUKHCONP1AZ4ARGF3065: Expenses: P1A-Carpentry and Joinery 233577
- DUKHCONP1AZ4ARGF3070: Expenses: P1A-Metal work 83208
- DUKHCONP1AZ4ARGF3075: Expenses: P1A-Carpentry and Joinery 114072
- DUKHCONP1AZ4ARGF3080: Expenses: P1A-Metal work 36283
- DUKHCONP1AZ4ARGF3085: Expenses: P1A-Metal work 121464
- DUKHCONP1AZ4ARGF3090: Expenses: P1A-Finishes 34847
- DUKHCONP1AZ4ARGF3095: Expenses: P1A-Painting and Decorating 61805

| ID | WBS | Activity | Duration | Start | Finish | Predecessors | Total float | Free float | Resources | Cost | CODE | rem | P3 ACTID | P6 ID (old) | NP61D | PROJECT | PHASES | PACKAGE | PART | ELEMENTS | STEP | FLOORS | BILL NOS | BILL DIVISION | RES PACK | EXECUTER |
| --- | --- | --- | --- | --- | --- | --- | --- | --- | --- | --- | --- | --- | --- | --- | --- | --- | --- | --- | --- | --- | --- | --- | --- | --- | --- | --- |
|  | 15 | **FIRST FLOORS** |  | 2014-02-19 | 2014-07-14 |  |  |  |  |  |  |  |  |  |  |  |  |  |  |  |  |  |  |  |  |  |
| DUKHCONP1AZ4ARFF3300 |  | Block work | 25d | 2014-02-19 | 2014-03-19 | DUKHCONP1AZ4STFF2020 SS+21d, DUKHCONP1AZ4STFF2020 FF+21d, DUKHCONP1AZ3ARFF3300, DUKHCONP1AZ4STFF2035 FF+21d, DUKHCONP1AZ4STFF2035 SS+21d | -24d | 0d | BLOCK MASON SK [4088 h]; LABOR- SUBCONTRACTOR [2299.5 h]; BLOCK QTY [2044 Sqm] | 127,687 | 10 | REM | 1AP4IFFF10 | DUKHCON1AP4ARFF3300 | DUKHCONP1AZ4ARFF3300 | DH | CON | 1A | Z4 | FIN | IF | FF | B02 | B02-D03 | RES-1A |  |
| DUKHCONP1AZ4ARFF3305 |  | Plastering work | 25d | 2014-03-16 | 2014-04-13 | DUKHCONP1AZ4ARFF3300 FF+7d, DUKHCONP1AZ4ELFF4035 SS+5d, DUKHCONP1AZ3ARFF3305, DUKHCONP1AZ4ARFF3300 SS+7d, DUKHCONP1AZ4PLFF4325 SS+6d, DUKHCONP1AZ4ELFF4035 FF+5d, DUKHCONP1AZ4PLFF4325 FF+6d | -24d | 0d | PLASTER MASON SK [5695 h]; LABOR- SUBCONTRACTOR [3204 h]; PLASTER QTY [3559 Sqm] | 46,951 | 12 | REM | 1AP4IFFF12 | DUKHCON1AP4ARFF3305 | DUKHCONP1AZ4ARFF3305 | DH | CON | 1A | Z4 | FIN | IF | FF | B02 | B02-D10 | RES-1A |  |
| DUKHCONP1AZ4ARFF3310 |  | Flooring screed | 21d | 2014-03-24 | 2014-04-16 | DUKHCONP1AZ4ARFF3305 SS+7d, DUKHCONP1AZ4ARFF3305 FF+3d | -12d | 12d | SCREED MASON SK [884 h]; LABOR- SUBCONTRACTOR [331.5 h]; FLOORING SCREED QTY [1105 Sqm] | 36,472 | 15 | REM | 1AP4IFFF15 | DUKHCON1AP4ARFF3310 | DUKHCONP1AZ4ARFF3310 | DH | CON | 1A | Z4 | FIN | IF | FF | B02 | B02-D10 | RES-1A |  |
| DUKHCONP1AZ4ARFF3330 |  | Paint First coat | 25d | 2014-04-01 | 2014-04-29 | DUKHCONP1AZ4ARFF3305 SS+14d, DUKHCONP1AZ4ARFF3305 FF+14d | -10d | 14d | LABOR- SUBCONTRACTOR [1293.75 h]; FIRSTCOAT PAINT QTY [4311.37 Sqm]; PAINTERS SK [3449 h] | 26,608 | 21 | REM | 1AP4IFFF21 | DUKHCON1AP4ARFF3330 | DUKHCONP1AZ4ARFF3330 | DH | CON | 1A | Z4 | FIN | IF | FF | B02 | B02-D11 | RES-1A | ENT |
| DUKHCONP1AZ4ARFF3315 |  | Wet area waterproofing | 15d | 2014-04-05 | 2014-04-21 | DUKHCONP1AZ3ARFF3315, DUKHCONP1AZ4ARFF3305 FF+7d, DUKHCONP1AZ4ARFF3305 SS+7d | -24d | 0d | LABOR- SUBCONTRACTOR [331.5 h]; WETAREA WATERPROOFING QTY [1104 Sqm]; WATERPROOFING SPECIALIST SK [884 h] | 36,704 | 18 | REM | 1AP4IFFF18 | DUKHCON1AP4ARFF3315 | DUKHCONP1AZ4ARFF3315 | DH | CON | 1A | Z4 | FIN | IF | FF | B02 | B02-D10 | RES-1A |  |
| DUKHCONP1AZ4ARFF3320 |  | Ceramic Wall Tiling | 25d | 2014-04-12 | 2014-05-10 | DUKHCONP1AZ4ARFF3315 FF+6d, DUKHCONP1AZ3ARFF3320, DUKHCONP1AZ4PLFF4325 FF+4d, DUKHCONP1AZ4PLFF4325 SS+4d, DUKHCONP1AZ4PLFF4330 FF+7d, DUKHCONP1AZ4ARFF3315 SS+6d, DUKHCONP1AZ4PLFF4330 SS+7d | -24d | 0d | TILE MASON SK [1214 h]; LABOR- SUBCONTRACTOR [683.25 h]; CERAMIC WALL TILE QTY [607 Sqm] | 42,941 | 24 | REM | 1AP4IFFF24 | DUKHCON1AP4ARFF3320 | DUKHCONP1AZ4ARFF3320 | DH | CON | 1A | Z4 | FIN | IF | FF | B02 | B02-D10 | RES-1A |  |
| DUKHCONP1AZ4ARFF3325 |  | Porcelain Tile flooring | 25d | 2014-04-19 | 2014-05-17 | DUKHCONP1AZ4ARFF3320 SS+6d, DUKHCONP1AZ4ARFF3320 FF+6d, DUKHCONP1AZ4ARFF3310 FF+10d, DUKHCONP1AZ4ARFF3310 SS+10d, DUKHCONP1AZ3ARFF3325 | -24d | 0d | TILE MASON SK [1116 h]; LABOR- SUBCONTRACTOR [627.75 h]; PORCELAIN FLOORING QTY [976 Sqm] | 74,923 | 27 | REM | 1AP4IFFF27 | DUKHCON1AP4ARFF3325 | DUKHCONP1AZ4ARFF3325 | DH | CON | 1A | Z4 | FIN | IF | FF | B02 | B02-D10 | RES-1A |  |
| DUKHCONP1AZ4ARFF3345 |  | Fixing of Suspension systems | 20d | 2014-05-01 | 2014-05-24 | DUKHCONP1AZ4ARFF3325 SS+6d, DUKHCONP1AZ4ELFF4045 SS+5d, DUKHCONP1AZ4ELFF4045 FF+5d, DUKHCONP1AZ4ARFF3325 FF+6d, DUKHCONP1AZ4ARFF3330 FF+7d, DUKHCONP1AZ4ARFF3330 SS+7d, DUKHCONP1AZ3ARFF3345 | -24d | 0d | LABOR- SUBCONTRACTOR [469.8 h]; SUSPENSION QTY [1044 Sqm]; FALSE CEILING SKILLED SK [835.2 h] | 19,648 | 36 | REM | 1AP4IFFF36 | DUKHCON1AP4ARFF3345 | DUKHCONP1AZ4ARFF3345 | DH | CON | 1A | Z4 | FIN | IF | FF | B02 | B02-D10 | RES-1A | SUS |
| DUKHCONP1AZ4ARFF3335 |  | Slate Tile Flooring & Skirting | 15d | 2014-05-06 | 2014-05-22 | DUKHCONP1AZ4ARFF3310 SS+13d, DUKHCONP1AZ4ARFF3325 FF+5d, DUKHCONP1AZ4ARFF3325 SS+13d, DUKHCONP1AZ4ARFF3310 FF+13d | -16d | 8d | TILE MASON SK [167 h]; LABOR- SUBCONTRACTOR [94.5 h]; SLATE TILE QTY [104 Sqm] | 20,405 | 30 | REM | 1AP4IFFF30 | DUKHCON1AP4ARFF3335 | DUKHCONP1AZ4ARFF3335 | DH | CON | 1A | Z4 | FIN | IF | FF | B02 | B02-D10 | RES-1A |  |
| DUKHCONP1AZ4ARFF3360 |  | Gypsum board false ceiling | 25d | 2014-05-08 | 2014-06-05 | DUKHCONP1AZ4ACFF4615 FF+7d, DUKHCONP1AZ4ARFF3345 SS+6d, DUKHCONP1AZ4ARFF3345 FF+6d, DUKHCONP1AZ4ACFF4615 SS+7d, DUKHCONP1AZ3ARFF3360 | -24d | 0d | LABOR- SUBCONTRACTOR [469.8 h]; FALSE CEILING QTY [1044 Sqm]; FALSE CEILING SKILLED SK [835.2 h] | 60,821 | 39 | REM | 1AP4IFFF39 | DUKHCON1AP4ARFF3360 | DUKHCONP1AZ4ARFF3360 | DH | CON | 1A | Z4 | FIN | IF | FF | B02 | B02-D10 | RES-1A | GYP |
| DUKHCONP1AZ4ARFF3350 |  | Granite - Stair case flooring & Skirting | 20d | 2014-05-10 | 2014-06-01 | DUKHCONP1AZ4ARFF3325 SS+13d, DUKHCONP1AZ4ARFF3325 FF+13d | -22d | 2d | GRANITE MASON SK [560 h]; LABOR- SUBCONTRACTOR [315 h]; GRANITE QTY [140 Sqm] | 93,598 | 33 | REM | 1AP4IFFF33 | DUKHCON1AP4ARFF3350 | DUKHCONP1AZ4ARFF3350 | DH | CON | 1A | Z4 | FIN | IF | FF | B02 | B02-D10 | RES-1A |  |
| DUKHCONP1AZ4ARFF3365 |  | Wooden door | 15d | 2014-05-24 | 2014-06-09 | DUKHCONP1AZ4ARFF3360 SS+3d, DUKHCONP1AZ4ARFF3350 SS+5d, DUKHCONP1AZ4ARFF3335 SS+7d, DUKHCONP1AZ4ARFF3350 FF+5d, DUKHCONP1AZ4ARFF3360 FF+3d, DUKHCONP1AZ4ARFF3335 FF+7d, DUKHCONP1AZ3ARFF3365 | -24d | 0d | LABOR- SUBCONTRACTOR [84 h]; WOODEN DOOR QTY [56 ea]; DOOR ERECTOR SK [224 h] | 152,394 | 42 | REM | 1AP4IFFF42 | DUKHCON1AP4ARFF3365 | DUKHCONP1AZ4ARFF3365 | DH | CON | 1A | Z4 | FIN | IF | FF | B02 | B02-D05 | RES-1A |  |
| DUKHCONP1AZ4ARFF3370 |  | Aluminum Door | 20d | 2014-05-24 | 2014-06-15 | DUKHCONP1AZ4ARFF3365 SS, DUKHCONP1AZ4ARFF3365 FF, DUKHCONP1AZ3ARFF3370 | -24d | 0d | LABOR- SUBCONTRACTOR [60 h]; ALUMINIUM DOOR QTY [40 ea]; DOOR ERECTOR SK [160 h] | 122,026 | 45 | REM | 1AP4IFFF45 | DUKHCON1AP4ARFF3370 | DUKHCONP1AZ4ARFF3370 | DH | CON | 1A | Z4 | FIN | IF | FF | B02 | B02-D06 | RES-1A |  |
| DUKHCONP1AZ4ARFF3375 |  | Carpentry & Joinery Works | 25d | 2014-05-29 | 2014-06-26 | DUKHCONP1AZ3ARFF3375, DUKHCONP1AZ4ARFF3370 SS+5d, DUKHCONP1AZ4ARFF3370 FF+5d | -24d | 0d | LABOR- SUBCONTRACTOR [300 h]; CABINET QTY [24 ea]; COUNTER QTY [24 ea]; WARDROBE QTY [40 ea]; SHELVES QTY [24 ea]; JOINERY WORK SK [704 h]; COUNTER SK [96 h] | 231,933 | 51 | REM | 1AP4IFFF51 | DUKHCON1AP4ARFF3375 | DUKHCONP1AZ4ARFF3375 | DH | CON | 1A | Z4 | FIN | IF | FF | B02 | B02-D05 | RES-1A |  |
| DUKHCONP1AZ4ARFF3380 |  | Aluminum windows | 20d | 2014-05-31 | 2014-06-22 | DUKHCONP1AZ4ARFF3370 SS+6d, DUKHCONP1AZ4ARFF3370 FF+6d | -20d | 4d | LABOR- SUBCONTRACTOR [44.25 h]; ALUMINIUM WINDOWS QTY [44 ea]; WINDOW ERECTOR SK [118 h] | 55,776 | 48 | REM | 1AP4IFFF48 | DUKHCON1AP4ARFF3380 | DUKHCONP1AZ4ARFF3380 | DH | CON | 1A | Z4 | FIN | IF | FF | B02 | B02-D06 | RES-1A |  |
| DUKHCONP1AZ4ARFF3385 |  | Handrail & Balustrade | 20d | 2014-06-10 | 2014-07-02 | DUKHCONP1AZ4ARFF3350 SS+7d, DUKHCONP1AZ4ARFF3375 FF+5d, DUKHCONP1AZ4ARFF3350 FF+7d, DUKHCONP1AZ4ARFF3375 SS+5d | -24d | 0d | LABOR- SUBCONTRACTOR [283.5 h]; S.S.BALUSTRADE QTY [252 lm]; HANDRAIL ERECTOR SKILLED [504 h] | 308,447 | 57 | REM | 1AP4IFFF57 | DUKHCON1AP4ARFF3385 | DUKHCONP1AZ4ARFF3385 | DH | CON | 1A | Z4 | FIN | IF | FF | B02 | B02-D06 | RES-1A |  |
| DUKHCONP1AZ4ARFF3390 |  | Installation of Granite Counter Top | 20d | 2014-06-10 | 2014-07-02 | DUKHCONP1AZ4ARFF3375 FF+5d, DUKHCONP1AZ4ARFF3375 SS+6d | -23d | 1d | GRANITE MASON SK [64 h]; LABOR- SUBCONTRACTOR [24 h]; GRANITE COUNTER TOP QTY [16 ea] | 7,594 | 54 | REM | 1AP4IFFF54 | DUKHCON1AP4ARFF3390 | DUKHCONP1AZ4ARFF3390 | DH | CON | 1A | Z4 | FIN | IF | FF | B02 | B02-D10 | RES-1A |  |
| DUKHCONP1AZ4ARFF3395 |  | Final Painting | 25d | 2014-06-16 | 2014-07-14 | DUKHCONP1AZ4ARFF3350 FF+8d, DUKHCONP1AZ4ARFF3350 SS+8d, DUKHCONP1AZ4ARFF3365 SS+8d, DUKHCONP1AZ4ARFF3375 FF+8d, DUKHCONP1AZ4ARFF3335 SS+8d, DUKHCONP1AZ4ARFF3390 SS+4d, DUKHCONP1AZ4ARFF3365 FF+8d, DUKHCONP1AZ4ARFF3385 SS+5d, DUKHCONP1AZ4ARFF3335 FF+8d, DUKHCONP1AZ4ARFF3380 SS+10d, DUKHCONP1AZ3ARFF3395, DUKHCONP1AZ4ARFF3330 SS+10d, DUKHCONP1AZ4ARFF3380 FF+10d, DUKHCONP1AZ4ARFF3375 SS+8d, DUKHCONP1AZ4ARFF3390 FF+6d, DUKHCONP1AZ4ACFF4625 SS+6d, DUKHCONP1AZ4ARFF3330 FF+10d, DUKHCONP1AZ4ARFF3360 FF+10d, DUKHCONP1AZ4ARFF3385 FF+5d, DUKHCONP1AZ4ACFF4625 FF+6d, DUKHCONP1AZ4ARFF3360 SS+10d | -24d | 0d | LABOR- SUBCONTRACTOR [1293.75 h]; PAINT QTY [4311.37 Sqm]; PAINTERS SK [3449 h] | 50,803 | 60 | REM | 1AP4IFFF60 | DUKHCON1AP4ARFF3395 | DUKHCONP1AZ4ARFF3395 | DH | CON | 1A | Z4 | FIN | IF | FF | B02 | B02-D11 | RES-1A | PNT |
|  | 20 | **ROOF** |  | 2014-03-05 | 2014-05-08 |  |  |  |  |  |  |  |  |  |  |  |  |  |  |  |  |  |  |  |  |  |
| DUKHCONP1AZ4ARRF3600 |  | Block work | 20d | 2014-03-05 | 2014-03-27 | DUKHCONP1AZ3ARRF3600, DUKHCONP1AZ4STRF2055 SS+21d, DUKHCONP1AZ4STRF2055 FF+21d | 28d | 0d | BLOCK MASON SK [448 h]; LABOR- SUBCONTRACTOR [252 h]; BLOCK QTY [224 Sqm] | 17,789 | 10 | REM | 1AP4IFRF10 | DUKHCON1AP4ARRF3600 | DUKHCONP1AZ4ARRF3600 | DH | CON | 1A | Z4 | FIN | IF | RF | B02 | B02-D03 | RES-1A |  |
| DUKHCONP1AZ4ARRF3605 |  | Plastering work | 20d | 2014-03-13 | 2014-04-05 | DUKHCONP1AZ4ARRF3600 SS+7d, DUKHCONP1AZ4ARRF3600 FF+7d | 28d | 0d | PLASTER MASON SK [1143 h]; LABOR- SUBCONTRACTOR [643.5 h]; PLASTER QTY [714 Sqm] | 9,277 | 20 | REM | 1AP4IFRF20 | DUKHCON1AP4ARRF3605 | DUKHCONP1AZ4ARRF3605 | DH | CON | 1A | Z4 | FIN | IF | RF | B02 | B02-D10 | RES-1A |  |
| DUKHCONP1AZ4ARRF3610 |  | Flooring screed | 15d | 2014-03-27 | 2014-04-13 | DUKHCONP1AZ4ARRF3605 FF+7d, DUKHCONP1AZ4ARRF3605 SS+7d | 33d | 0d | SCREED MASON SK [99 h]; LABOR- SUBCONTRACTOR [37.5 h]; FLOORING SCREED QTY [123 Sqm] | 4,056 | 30 | REM | 1AP4IFRF30 | DUKHCON1AP4ARRF3610 | DUKHCONP1AZ4ARRF3610 | DH | CON | 1A | Z4 | FIN | IF | RF | B02 | B02-D10 | RES-1A |  |
| DUKHCONP1AZ4ARRF3695 |  | Painting -Storage area | 20d | 2014-04-05 | 2014-04-27 | DUKHCONP1AZ4ARRF3610 SS+7d, DUKHCONP1AZ4ARRF3610 FF+7d | 33d | 0d | LABOR- SUBCONTRACTOR [456 h]; PAINT QTY [1472 Sqm]; PAINTERS SK [1184 h] | 7,956 | 40 |  | 1AP4IFRF40 | DUKHCON1AP4ARRF3695 | DUKHCONP1AZ4ARRF3695 | DH | CON | 1A | Z4 | FIN | IF | RF | B02 | B02-D11 | RES-1A |  |
| DUKHCONP1AZ4ARRF3620 |  | Epoxy Painting -Storage area | 15d | 2014-04-22 | 2014-05-08 | DUKHCONP1AZ4ARRF3695 SS+10d, DUKHCONP1AZ4ARRF3695 FF+10d | 33d | 57d | LABOR- SUBCONTRACTOR [13.5 h]; EPOXY QTY [64 Sqm]; EPOXY SK [35 h] | 3,216 | 50 | REM | 1AP4IFRF50 | DUKHCON1AP4ARRF3620 | DUKHCONP1AZ4ARRF3620 | DH | CON | 1A | Z4 | FIN | IF | RF | B02 | B02-D11 | RES-1A |  |

Notes:
- DUKHCONP1AZ4ARFF3300: Expenses: P1A-Block work 127687
- DUKHCONP1AZ4ARFF3305: Expenses: P1A-Finishes 46951
- DUKHCONP1AZ4ARFF3310: Expenses: P1A-Finishes 36472
- DUKHCONP1AZ4ARFF3330: Expenses: P1A-Painting and Decorating 26608
- DUKHCONP1AZ4ARFF3315: Expenses: P1A-Finishes 36704
- DUKHCONP1AZ4ARFF3320: Expenses: P1A-Finishes 42941
- DUKHCONP1AZ4ARFF3325: Expenses: P1A-Finishes 74923
- DUKHCONP1AZ4ARFF3345: Expenses: P1A-Finishes 19648
- DUKHCONP1AZ4ARFF3335: Expenses: P1A-Finishes 20405
- DUKHCONP1AZ4ARFF3360: Expenses: P1A-Finishes 60821
- DUKHCONP1AZ4ARFF3350: Expenses: P1A-Finishes 93598
- DUKHCONP1AZ4ARFF3365: Expenses: P1A-Carpentry and Joinery 152394
- DUKHCONP1AZ4ARFF3370: Expenses: P1A-Metal work 122026
- DUKHCONP1AZ4ARFF3375: Expenses: P1A-Carpentry and Joinery 231933
- DUKHCONP1AZ4ARFF3380: Expenses: P1A-Metal work 55776
- DUKHCONP1AZ4ARFF3385: Expenses: P1A-Metal work 308447
- DUKHCONP1AZ4ARFF3390: Expenses: P1A-Finishes 7594
- DUKHCONP1AZ4ARFF3395: Expenses: P1A-Painting and Decorating 50803
- DUKHCONP1AZ4ARRF3600: Expenses: P1A-Block work 17789
- DUKHCONP1AZ4ARRF3605: Expenses: P1A-Finishes 9277
- DUKHCONP1AZ4ARRF3610: Expenses: P1A-Finishes 4056
- DUKHCONP1AZ4ARRF3695: Expenses: P1A-Painting and Decorating 7956
- DUKHCONP1AZ4ARRF3620: Expenses: P1A-Painting and Decorating 3216

| ID | WBS | Activity | Duration | Start | Finish | Predecessors | Total float | Free float | Resources | Cost | CODE | rem | P3 ACTID | P6 ID (old) | NP61D | PROJECT | PHASES | PACKAGE | PART | ELEMENTS | STEP | FLOORS | BILL NOS | BILL DIVISION | RES PACK |
| --- | --- | --- | --- | --- | --- | --- | --- | --- | --- | --- | --- | --- | --- | --- | --- | --- | --- | --- | --- | --- | --- | --- | --- | --- | --- |
|  | 15 | **EXTERNAL FINISHES** |  | 2014-03-27 | 2014-06-14 |  |  |  |  |  |  |  |  |  |  |  |  |  |  |  |  |  |  |  |  |
|  | 10 | **ROOF** |  | 2014-04-10 | 2014-06-14 |  |  |  |  |  |  |  |  |  |  |  |  |  |  |  |  |  |  |  |  |
| DUKHCONP1AZ4ARRF3630 |  | Leveling Screed for Waterproofing | 25d | 2014-04-10 | 2014-05-08 | DUKHCONP1AZ4STRF2065 SS+10d, DUKHCONP1AZ3ARRF3630, DUKHCONP1AZ4STRF2065 FF+10d, DUKHCONP1AZ4STRF2060 FF+10d, DUKHCONP1AZ4STRF2060 SS+10d | -3d | 0d | SCREED MASON SK [512 h]; LABOR- SUBCONTRACTOR [288 h]; ROOF WP SCREED QTY [1280 Sqm] | 56,792 | 10 | REM | 1AP4EFRF10 | DUKHCON1AP4ARRF3630 | DUKHCONP1AZ4ARRF3630 | DH | CON | 1A | Z4 | FIN | EF | RF | B02 | B02-D04 | RES-1A |
| DUKHCONP1AZ4ARRF3635 |  | Laying of Waterproofing Membrane | 25d | 2014-04-14 | 2014-05-12 | DUKHCONP1AZ4ARRF3630 FF+3d, DUKHCONP1AZ4ARRF3630 SS+3d | -3d | 0d | LABOR- SUBCONTRACTOR [310.5 h]; ROOF WP MEMBRANE QTY [1552 Sqm]; WATERPROOFING SPECIALIST SK [828 h] | 43,994 | 15 | REM | 1AP4EFRF15 | DUKHCON1AP4ARRF3635 | DUKHCONP1AZ4ARRF3635 | DH | CON | 1A | Z4 | FIN | EF | RF | B02 | B02-D04 | RES-1A |
| DUKHCONP1AZ4ARRF3640 |  | Installation of Insulation & Protection | 25d | 2014-04-19 | 2014-05-17 | DUKHCONP1AZ4ARRF3635 FF+4d, DUKHCONP1AZ4ARRF3635 SS+4d | -3d | 0d | LABOR- SUBCONTRACTOR [384 h]; ROOF WP INSULATION QTY [2560 Sqm]; WATERPROOFING SPECIALIST SK [1024 h] | 55,936 | 20 | REM | 1AP4EFRF20 | DUKHCON1AP4ARRF3640 | DUKHCONP1AZ4ARRF3640 | DH | CON | 1A | Z4 | FIN | EF | RF | B02 | B02-D04 | RES-1A |
| DUKHCONP1AZ4ARRF3645 |  | Lime Stone Chips & Paving slab Installation | 25d | 2014-04-23 | 2014-05-21 | DUKHCONP1AZ4ARRF3640 FF+4d, DUKHCONP1AZ4ARRF3640 SS+4d | -3d | 0d | TILE MASON SK [45 h]; LABOR- SUBCONTRACTOR [188.25 h]; LIME STONE QTY [112 Sqm]; PRECAST PAVING SLAB QTY [1136 Sqm]; PRE CAST CONCRETE SK [455 h] | 83,344 | 25 | REM | 1AP4EFRF25 | DUKHCON1AP4ARRF3645 | DUKHCONP1AZ4ARRF3645 | DH | CON | 1A | Z4 | FIN | EF | RF | B02 | B02-D04 | RES-1A |
| DUKHCONP1AZ4ARRF3650 |  | Install. of Gal. Frame & Aluminum Slat Screen | 25d | 2014-05-01 | 2014-05-29 | DUKHCONP1AZ4ARRF3645 SS+7d, DUKHCONP1AZ4ARRF3645 FF+7d | -3d | 0d | ALUMINIUM SCREEN QTY [224 Sqm]; DOOR ERECTOR SK [598 h]; LABOR- SUBCONTRACTOR [448.5 h] | 63,347 | 35 | REM | 1AP4EFRF35 | DUKHCON1AP4ARRF3650 | DUKHCONP1AZ4ARRF3650 | DH | CON | 1A | Z4 | FIN | EF | RF | B02 | B02-D06 | RES-1A |
| DUKHCONP1AZ4ARRF3655 |  | Installation of Pumps Protection cabinets | 20d | 2014-05-17 | 2014-06-08 | DUKHCONP1AZ4ARRF3645 SS+7d, DUKHCONP1AZ4ARRF3650 FF+8d, DUKHCONP1AZ3ARRF3655, DUKHCONP1AZ4ARRF3650 SS+8d, DUKHCONP1AZ4ARRF3645 FF+7d | -3d | 0d | LABOR- SUBCONTRACTOR [168 h]; CABINET QTY [56 ea]; JOINERY WORK SK [448 h] | 26,600 | 30 | REM | 1AP4EFRF30 | DUKHCON1AP4ARRF3655 | DUKHCONP1AZ4ARRF3655 | DH | CON | 1A | Z4 | FIN | EF | RF | B02 | B02-D04 | RES-1A |
| DUKHCONP1AZ4ARRF3660 |  | Installation of Access Ladder | 15d | 2014-05-28 | 2014-06-14 | DUKHCONP1AZ4ARRF3655 SS+5d, DUKHCONP1AZ4ARRF3655 FF+5d | 2d | 26d | LABOR- SUBCONTRACTOR [48 h]; LADDER QTY [16 ea]; LADDER ERECTOR SK [128 h] | 53,206 | 40 | REM | 1AP4EFRF40 | DUKHCON1AP4ARRF3660 | DUKHCONP1AZ4ARRF3660 | DH | CON | 1A | Z4 | FIN | EF | RF | B02 | B02-D06 | RES-1A |
|  | 15 | **ELEVATION** |  | 2014-03-27 | 2014-05-18 |  |  |  |  |  |  |  |  |  |  |  |  |  |  |  |  |  |  |  |  |
| DUKHCONP1AZ4AREL3665 |  | External Plastering | 25d | 2014-03-27 | 2014-04-24 | DUKHCONP1AZ4ARRF3605 SS+7d, DUKHCONP1AZ4ARFF3305 SS+7d, DUKHCONP1AZ4STRF2065 SS+7d, DUKHCONP1AZ4STRF2065 FF+7d, DUKHCONP1AZ3AREL3665, DUKHCONP1AZ4ARFF3305 FF+7d | 23d | 0d | PLASTER MASON SK [9136 h]; LABOR- SUBCONTRACTOR [5139 h]; EXTERNAL PLASTER QTY [4568 Sqm] | 108,894 | 10 | REM | 1AP4EFEL10 | DUKHCON1AP4AREL3665 | DUKHCONP1AZ4AREL3665 | DH | CON | 1A | Z4 | FIN | EF | EL | B02 | B02-D10 | RES-1A |
| DUKHCONP1AZ4AREL3670 |  | External stone cladding works | 20d | 2014-04-14 | 2014-05-06 | DUKHCONP1AZ4AREL3665 FF+10d, DUKHCONP1AZ4AREL3665 SS+10d, DUKHCONP1AZ3AREL3670 | 25d | 0d | TILE MASON SK [720 h]; LABOR- SUBCONTRACTOR [270 h]; STONE CLADDING QTY [360 Sqm] | 71,820 | 15 | REM | 1AP4EFEL15 | DUKHCON1AP4AREL3670 | DUKHCONP1AZ4AREL3670 | DH | CON | 1A | Z4 | FIN | EF | EL | B02 | B02-D10 | RES-1A |
| DUKHCONP1AZ4AREL3680 |  | External Painting | 20d | 2014-04-26 | 2014-05-18 | DUKHCONP1AZ4AREL3670 SS+10d, DUKHCONP1AZ4AREL3670 FF+10d, DUKHCONP1AZ4ARRF3695 SS+4d, DUKHCONP1AZ4ARRF3695 FF+4d, DUKHCONP1AZ3AREL3680 | 25d | 5d | LABOR- SUBCONTRACTOR [1032 h]; PAINT QTY [3424 Sqm]; PAINTERS SK [2752 h] | 86,006 | 20 |  | 1AP4EFEL20 | DUKHCON1AP4AREL3680 | DUKHCONP1AZ4AREL3680 | DH | CON | 1A | Z4 | FIN | EF | EL | B02 | B02-D11 | RES-1A |
|  | 20 | **MEP WORKS** |  | 2013-09-30 | 2014-07-13 |  |  |  |  |  |  |  |  |  |  |  |  |  |  |  |  |  |  |  |  |
|  | 10 | **ELECTRICAL WORKS** |  | 2014-01-13 | 2014-07-13 |  |  |  |  |  |  |  |  |  |  |  |  |  |  |  |  |  |  |  |  |
|  | 10 | **GROUND FLOOR** |  | 2014-01-13 | 2014-05-22 |  |  |  |  |  |  |  |  |  |  |  |  |  |  |  |  |  |  |  |  |
| DUKHCONP1AZ4ELGF4000 |  | Fixing of wall conduits & switch socket boxes | 25d | 2014-01-13 | 2014-02-10 | DUKHCONP1AZ4ARGF3000 FF+5d, DUKHCONP1AZ4ARGF3000 SS+5d | 3d | 0d | LABOR- SUBCONTRACTOR [192 h]; ELECTRICIANS SK [1030.4 h]; SOCKET BOXES QTY [724 ea]; CODUITS QTY [184 lm] | 33,077 | 10 |  | 1AP4EWGF10 | DUKHCON1AP4ELGF4000 | DUKHCONP1AZ4ELGF4000 | DH | CON | 1A | Z4 | MEP | EW | GF | B02 | B02-D09 | RES-1A |
| DUKHCONP1AZ4ELGF4005 |  | Cable tray & trunking installation | 20d | 2014-01-25 | 2014-02-17 | DUKHCONP1AZ4ELGF4000 FF+5d, DUKHCONP1AZ4ELGF4000 SS+5d, DUKHCONP1AZ3ELGF4005 | 21d | 0d | LABOR- SUBCONTRACTOR [288 h]; ELECTRICIANS SK [1030.4 h]; CABLE TRAY QTY [184 lm] | 7,536 | 15 |  | 1AP4EWGF15 | DUKHCON1AP4ELGF4005 | DUKHCONP1AZ4ELGF4005 | DH | CON | 1A | Z4 | MEP | EW | GF | B02 | B02-D09 | RES-1A |
| DUKHCONP1AZ4ELGF4010 |  | Installation of wiring & Main Cabling | 25d | 2014-02-02 | 2014-03-03 | DUKHCONP1AZ4ELGF4005 SS+7d, DUKHCONP1AZ4ELGF4005 FF+7d | 21d | 27d | LABOR- SUBCONTRACTOR [72 h]; ELECTRICIANS SK [224 h]; CABLE QTY [184 lm] | 112,018 | 20 |  | 1AP4EWGF20 | DUKHCON1AP4ELGF4010 | DUKHCONP1AZ4ELGF4010 | DH | CON | 1A | Z4 | MEP | EW | GF | B02 | B02-D09 | RES-1A |
| DUKHCONP1AZ4ELGF4015 |  | Install. of CAMS & Fire Fighting Accessories | 25d | 2014-04-07 | 2014-05-05 | DUKHCONP1AZ4ARGF3055 FF+7d, DUKHCONP1AZ4ARGF3060 SS+7d, DUKHCONP1AZ4ARGF3060 FF+7d, DUKHCONP1AZ4ARGF3055 SS+7d, DUKHCONP1AZ3ELGF4015 | 6d | 0d | LABOR- SUBCONTRACTOR [384 h]; MECHANICALS SK [691.2 h]; SMOKE DETECTOR POINTS QTY [92 ea]; FIRE EXTINGUISHER QTY [28 ea] | 71,164 | 35 |  | 1AP4EWGF35 | DUKHCON1AP4ELGF4015 | DUKHCONP1AZ4ELGF4015 | DH | CON | 1A | Z4 | MEP | EW | GF | B02 | B02-D09 | RES-1A |
| DUKHCONP1AZ4ELGF4020 |  | Installation of DBS,MCCB Accessories. | 20d | 2014-04-13 | 2014-05-05 | DUKHCONP1AZ4ELGF4010 SS+5d, DUKHCONP1AZ4ARGF3055 SS+7d, DUKHCONP1AZ4ARGF3055 FF+7d, DUKHCONP1AZ4ARGF3060 FF+7d, DUKHCONP1AZ4ARGF3060 SS+7d, DUKHCONP1AZ4ELGF4010 FF+5d | -6d | 0d | LABOR- SUBCONTRACTOR [48 h]; ELECTRICIANS SK [179.2 h]; MCCB QTY [64 ea]; DB QTY [8 ea] | 26,049 | 25 |  | 1AP4EWGF25 | DUKHCON1AP4ELGF4020 | DUKHCONP1AZ4ELGF4020 | DH | CON | 1A | Z4 | MEP | EW | GF | B02 | B02-D09 | RES-1A |
| DUKHCONP1AZ4ELGF4025 |  | Installation of Lighting fixtures & Accessories | 25d | 2014-04-24 | 2014-05-22 | DUKHCONP1AZ4ELGF4020 SS+10d, DUKHCONP1AZ4ARGF3060 FF+10d, DUKHCONP1AZ4ELGF4020 FF+10d, DUKHCONP1AZ3ELGF4025, DUKHCONP1AZ4ARGF3055 FF+10d, DUKHCONP1AZ4ARGF3055 SS+10d, DUKHCONP1AZ4ARGF3060 SS+10d | 1d | 0d | LABOR- SUBCONTRACTOR [576 h]; ELECTRICIANS SK [1075.2 h]; LIGHTS QTY [480 ea] | 154,315 | 30 |  | 1AP4EWGF30 | DUKHCON1AP4ELGF4025 | DUKHCONP1AZ4ELGF4025 | DH | CON | 1A | Z4 | MEP | EW | GF | B02 | B02-D09 | RES-1A |
| DUKHCONP1AZ4ELGF4030 |  | Installation of Telephone System | 20d | 2014-04-24 | 2014-05-17 | DUKHCONP1AZ4ELGF4020 SS+10d, DUKHCONP1AZ4ARGF3060 SS+5d, DUKHCONP1AZ4ARGF3060 FF+5d, DUKHCONP1AZ3ELGF4030, DUKHCONP1AZ4ELGF4020 FF+10d | -6d | 5d | LABOR- SUBCONTRACTOR [72 h]; ELECTRICIANS SK [448 h]; TELEPHONE SOCKETS QTY [40 ea] | 38,162 | 40 |  | 1AP4EWGF40 | DUKHCON1AP4ELGF4030 | DUKHCONP1AZ4ELGF4030 | DH | CON | 1A | Z4 | MEP | EW | GF | B02 | B02-D09 | RES-1A |
|  | 15 | **FIRST FLOORS** |  | 2014-02-25 | 2014-06-25 |  |  |  |  |  |  |  |  |  |  |  |  |  |  |  |  |  |  |  |  |
| DUKHCONP1AZ4ELFF4035 |  | Fixing of wall conduits & switch socket boxes | 25d | 2014-02-25 | 2014-03-25 | DUKHCONP1AZ4ARFF3300 FF+5d, DUKHCONP1AZ4ARFF3300 SS+5d | -13d | 0d | LABOR- SUBCONTRACTOR [192 h]; ELECTRICIANS SK [1030.4 h]; SOCKET BOXES QTY [724 ea]; CODUITS QTY [184 lm] | 32,659 | 10 |  | 1AP4EWFF10 | DUKHCON1AP4ELFF4035 | DUKHCONP1AZ4ELFF4035 | DH | CON | 1A | Z4 | MEP | EW | FF | B02 | B02-D09 | RES-1A |
| DUKHCONP1AZ4ELFF4040 |  | Cable tray & trunking installation | 20d | 2014-03-09 | 2014-03-31 | DUKHCONP1AZ4ELFF4035 FF+5d, DUKHCONP1AZ4ELFF4035 SS+5d | 5d | 2d | LABOR- SUBCONTRACTOR [288 h]; ELECTRICIANS SK [1030.4 h]; CABLE TRAY QTY [184 lm] | 7,520 | 15 |  | 1AP4EWFF15 | DUKHCON1AP4ELFF4040 | DUKHCONP1AZ4ELFF4040 | DH | CON | 1A | Z4 | MEP | EW | FF | B02 | B02-D09 | RES-1A |
| DUKHCONP1AZ4ELFF4045 |  | Installation of wiring & Main Cabling | 25d | 2014-03-19 | 2014-04-16 | DUKHCONP1AZ4ELFF4040 FF+7d, DUKHCONP1AZ4ELFF4040 SS+7d, DUKHCONP1AZ3ELFF4045 | 3d | 0d | LABOR- SUBCONTRACTOR [72 h]; ELECTRICIANS SK [224 h]; CABLE QTY [184 lm] | 110,383 | 20 |  | 1AP4EWFF20 | DUKHCON1AP4ELFF4045 | DUKHCONP1AZ4ELFF4045 | DH | CON | 1A | Z4 | MEP | EW | FF | B02 | B02-D09 | RES-1A |
| DUKHCONP1AZ4ELFF4055 |  | Install. of CAMS & Fire Fighting Accessories | 25d | 2014-05-17 | 2014-06-14 | DUKHCONP1AZ4ARFF3360 FF+7d, DUKHCONP1AZ4ARFF3360 SS+7d, DUKHCONP1AZ3ELFF4055, DUKHCONP1AZ4ELGF4015 SS+5d, DUKHCONP1AZ4ELGF4015 FF+5d | -23d | 0d | LABOR- SUBCONTRACTOR [360 h]; MECHANICALS SK [648 h]; SMOKE DETECTOR POINTS QTY [92 ea]; FIRE EXTINGUISHER QTY [24 ea] | 71,142 | 35 |  | 1AP4EWFF35 | DUKHCON1AP4ELFF4055 | DUKHCONP1AZ4ELFF4055 | DH | CON | 1A | Z4 | MEP | EW | FF | B02 | B02-D09 | RES-1A |
| DUKHCONP1AZ4ELFF4050 |  | Installation of Telephone System | 25d | 2014-05-18 | 2014-06-15 | DUKHCONP1AZ4MSEX5010, DUKHCONP1AZ4ARFF3360 SS+5d, DUKHCONP1AZ4ELGF4030 SS+10d, DUKHCONP1AZ4ARFF3360 FF+5d, DUKHCONP1AZ4ELGF4030 FF+10d | -16d | 7d | LABOR- SUBCONTRACTOR [48 h]; ELECTRICIANS SK [403.2 h]; TELEPHONE SOCKETS QTY [36 ea] | 36,523 | 40 |  | 1AP4EWFF40 | DUKHCON1AP4ELFF4050 | DUKHCONP1AZ4ELFF4050 | DH | CON | 1A | Z4 | MEP | EW | FF | B02 | B02-D09 | RES-1A |
| DUKHCONP1AZ4ELFF4060 |  | Installation of DBS,MCCB Accessories. | 20d | 2014-05-20 | 2014-06-11 | DUKHCONP1AZ4ARFF3360 FF+5d, DUKHCONP1AZ4ELFF4045 FF+5d, DUKHCONP1AZ3ELFF4060, DUKHCONP1AZ4ARFF3360 SS+8d, DUKHCONP1AZ4ELFF4045 SS+5d | -21d | 2d | LABOR- SUBCONTRACTOR [48 h]; ELECTRICIANS SK [179.2 h]; MCCB QTY [64 ea]; DB QTY [8 ea] | 26,040 | 25 |  | 1AP4EWFF25 | DUKHCON1AP4ELFF4060 | DUKHCONP1AZ4ELFF4060 | DH | CON | 1A | Z4 | MEP | EW | FF | B02 | B02-D09 | RES-1A |
| DUKHCONP1AZ4ELFF4065 |  | Installation of Lighting fixtures & Accessories | 25d | 2014-05-28 | 2014-06-25 | DUKHCONP1AZ4ELFF4060 SS+5d, DUKHCONP1AZ3ELFF4065, DUKHCONP1AZ4ARFF3360 FF+10d, DUKHCONP1AZ4ELGF4025 FF+5d, DUKHCONP1AZ4ELFF4060 FF+5d, DUKHCONP1AZ4ELGF4025 SS+5d, DUKHCONP1AZ4ARFF3360 SS+10d | -23d | 0d | LABOR- SUBCONTRACTOR [576 h]; ELECTRICIANS SK [1075.2 h]; LIGHTS QTY [480 ea] | 154,301 | 30 |  | 1AP4EWFF30 | DUKHCON1AP4ELFF4065 | DUKHCONP1AZ4ELFF4065 | DH | CON | 1A | Z4 | MEP | EW | FF | B02 | B02-D09 | RES-1A |

Notes:
- DUKHCONP1AZ4ARRF3630: Expenses: P1A-Roofing 56792
- DUKHCONP1AZ4ARRF3635: Expenses: P1A-Roofing 43994
- DUKHCONP1AZ4ARRF3640: Expenses: P1A-Roofing 55936
- DUKHCONP1AZ4ARRF3645: Expenses: P1A-Roofing 83344
- DUKHCONP1AZ4ARRF3650: Expenses: P1A-Metal work 63347
- DUKHCONP1AZ4ARRF3655: Expenses: P1A-Roofing 26600
- DUKHCONP1AZ4ARRF3660: Expenses: P1A-Metal work 53206
- DUKHCONP1AZ4AREL3665: Expenses: P1A-Finishes 108894
- DUKHCONP1AZ4AREL3670: Expenses: P1A-Finishes 71820
- DUKHCONP1AZ4AREL3680: Expenses: P1A-Painting and Decorating 86006
- DUKHCONP1AZ4ELGF4000: Expenses: P1A-Electrical Installations 33077
- DUKHCONP1AZ4ELGF4005: Expenses: P1A-Electrical Installations 7536
- DUKHCONP1AZ4ELGF4010: Expenses: P1A-Electrical Installations 112018
- DUKHCONP1AZ4ELGF4015: Expenses: P1A-Electrical Installations 71164
- DUKHCONP1AZ4ELGF4020: Expenses: P1A-Electrical Installations 26049
- DUKHCONP1AZ4ELGF4025: Expenses: P1A-Electrical Installations 154315
- DUKHCONP1AZ4ELGF4030: Expenses: P1A-Electrical Installations 38162
- DUKHCONP1AZ4ELFF4035: Expenses: P1A-Electrical Installations 32659
- DUKHCONP1AZ4ELFF4040: Expenses: P1A-Electrical Installations 7520
- DUKHCONP1AZ4ELFF4045: Expenses: P1A-Electrical Installations 110383
- DUKHCONP1AZ4ELFF4055: Expenses: P1A-Electrical Installations 71142
- DUKHCONP1AZ4ELFF4050: Expenses: P1A-Electrical Installations 36523
- DUKHCONP1AZ4ELFF4060: Expenses: P1A-Electrical Installations 26040
- DUKHCONP1AZ4ELFF4065: Expenses: P1A-Electrical Installations 154301

| ID | WBS | Activity | Duration | Start | Finish | Predecessors | Total float | Free float | Resources | Cost | CODE | P3 ACTID | P6 ID (old) | NP61D | PROJECT | PHASES | PACKAGE | PART | ELEMENTS | STEP | FLOORS | BILL NOS | BILL DIVISION | RES PACK |
| --- | --- | --- | --- | --- | --- | --- | --- | --- | --- | --- | --- | --- | --- | --- | --- | --- | --- | --- | --- | --- | --- | --- | --- | --- |
|  | 20 | **ROOF** |  | 2014-06-11 | 2014-07-13 |  |  |  |  |  |  |  |  |  |  |  |  |  |  |  |  |  |  |  |
| DUKHCONP1AZ4ELRF4070 |  | Installation of Isolator | 18d | 2014-06-11 | 2014-07-01 | DUKHCONP1AZ4ARRF3645 SS+7d, DUKHCONP1AZ4ELFF4045 SS+10d, DUKHCONP1AZ4ELFF4045 FF+10d, DUKHCONP1AZ4ELFF4065 FF+5d, DUKHCONP1AZ4ELFF4050 FF+7d, DUKHCONP1AZ4ARRF3645 FF+7d, DUKHCONP1AZ4ELFF4065 SS+5d, DUKHCONP1AZ4ELFF4050 SS+5d | -23d | 0d | LABOR- SUBCONTRACTOR [144 h]; ELECTRICIANS SK [268.8 h]; ISOLATOR QTY [44 ea] | 54,690 | 10 | 1AP4EWRF10 | DUKHCON1AP4ELRF4070 | DUKHCONP1AZ4ELRF4070 | DH | CON | 1A | Z4 | MEP | EW | RF | B02 | B02-D09 | RES-1A |
| DUKHCONP1AZ4ELRF4075 |  | Installation of TV Dish Antenna | 23d | 2014-06-17 | 2014-07-13 | DUKHCONP1AZ4ELRF4070 SS+5d, DUKHCONP1AZ4ELRF4070 FF+5d | -23d | 1d | LABOR- SUBCONTRACTOR [240 h]; ELECTRICIANS SK [492.8 h]; CONTROL BOX QTY [12 ea]; SWITCHING BOX QTY [32 ea] | 40,597 | 15 | 1AP4EWRF15 | DUKHCON1AP4ELRF4075 | DUKHCONP1AZ4ELRF4075 | DH | CON | 1A | Z4 | MEP | EW | RF | B02 | B02-D09 | RES-1A |
|  | 15 | **PLUMBING, DRAINAGE & FIRE FIGHTING WORKS** |  | 2013-09-30 | 2014-07-13 |  |  |  |  |  |  |  |  |  |  |  |  |  |  |  |  |  |  |  |
|  | 10 | **GROUND FLOOR** |  | 2013-09-30 | 2014-05-22 |  |  |  |  |  |  |  |  |  |  |  |  |  |  |  |  |  |  |  |
| DUKHCONP1AZ4PLUG4300 |  | Drainage / Storm Pipes in Grade Slab | 16d | 2013-09-30 | 2013-10-20 | DUKHCONP1AZ4STUG1040 SS+11d, DUKHCONP1AZ4STUG1040 FF+11d | -24d | 0d | LABOR- SUBCONTRACTOR [24 h]; MECHANICALS SK [43.2 h]; DRAINAGE PIPES QTY [80 lm] | 35,465 | 10 | 1AP4PLUG10 | DUKHCON1AP4PLUG4300 | DUKHCONP1AZ4PLUG4300 | DH | CON | 1A | Z4 | ST | SB | UG | B02 | B02-D07 | RES-1A |
| DUKHCONP1AZ4PLGF4305 |  | Installation of Plumbing pipes & testing | 18d | 2014-01-23 | 2014-02-13 | DUKHCONP1AZ4ARGF3000 FF+7d, DUKHCONP1AZ3PLGF4305, DUKHCONP1AZ4ARGF3000 SS+7d | -6d | 0d | LABOR- SUBCONTRACTOR [96 h]; MECHANICALS SK [345.6 h]; PLUMB PIPES QTY [328 lm] | 85,973 | 10 | 1AP4PLGF10 | DUKHCON1AP4PLGF4305 | DUKHCONP1AZ4PLGF4305 | DH | CON | 1A | Z4 | MEP | PL | GF | B02 | B02-D07 | RES-1A |
| DUKHCONP1AZ4PLGF4310 |  | Installation of Drainage pipes &testing | 18d | 2014-01-23 | 2014-02-13 | DUKHCONP1AZ4PLGF4305 SS, DUKHCONP1AZ4ARGF3000 FF+7d, DUKHCONP1AZ4PLGF4305 FF, DUKHCONP1AZ4ARGF3000 SS+7d | -3d | 13d | LABOR- SUBCONTRACTOR [48 h]; MECHANICALS SK [129.6 h]; DRAINAGE PIPES QTY [248 lm] | 2,966 | 15 | 1AP4PLGF15 | DUKHCON1AP4PLGF4310 | DUKHCONP1AZ4PLGF4310 | DH | CON | 1A | Z4 | MEP | PL | GF | B02 | B02-D07 | RES-1A |
| DUKHCONP1AZ4PLGF4315 |  | Sanitary Fittings & Accessories | 20d | 2014-04-24 | 2014-05-17 | DUKHCONP1AZ4ARGF3065 FF+5d, DUKHCONP1AZ3PLGF4315, DUKHCONP1AZ4ARGF3065 SS+5d, DUKHCONP1AZ4PLGF4310 SS+5d, DUKHCONP1AZ4PLGF4310 FF+5d | 21d | 0d | LABOR- SUBCONTRACTOR [48 h]; MECHANICALS SK [86.4 h]; SANITARY ACC QTY [60 ea] | 104,291 | 20 | 1AP4PLGF20 | DUKHCON1AP4PLGF4315 | DUKHCONP1AZ4PLGF4315 | DH | CON | 1A | Z4 | MEP | PL | GF | B02 | B02-D07 | RES-1A |
| DUKHCONP1AZ4PLGF4320 |  | Installation of Water Heater | 15d | 2014-05-06 | 2014-05-22 | DUKHCONP1AZ4PLGF4315 FF+5d, DUKHCONP1AZ4ARGF3060 FF+5d, DUKHCONP1AZ4ARGF3060 SS+5d, DUKHCONP1AZ3PLGF4320, DUKHCONP1AZ4PLGF4315 SS+5d | 21d | 10d | LABOR- SUBCONTRACTOR [48 h]; MECHANICALS SK [86.4 h]; WATER HEATER QTY [12 ea] | 8,932 | 25 | 1AP4PLGF25 | DUKHCON1AP4PLGF4320 | DUKHCONP1AZ4PLGF4320 | DH | CON | 1A | Z4 | MEP | PL | GF | B02 | B02-D07 | RES-1A |
|  | 15 | **FIRST FLOORS** |  | 2014-03-08 | 2014-06-21 |  |  |  |  |  |  |  |  |  |  |  |  |  |  |  |  |  |  |  |
| DUKHCONP1AZ4PLFF4325 |  | Installation of Plumbing pipes & testing | 18d | 2014-03-08 | 2014-03-27 | DUKHCONP1AZ4ARFF3300 SS+7d, DUKHCONP1AZ4ARFF3300 FF+7d | -23d | 0d | LABOR- SUBCONTRACTOR [96 h]; MECHANICALS SK [345.6 h]; PLUMB PIPES QTY [328 lm] | 83,745 | 10 | 1AP4PLFF10 | DUKHCON1AP4PLFF4325 | DUKHCONP1AZ4PLFF4325 | DH | CON | 1A | Z4 | MEP | PL | FF | B02 | B02-D07 | RES-1A |
| DUKHCONP1AZ4PLFF4330 |  | Installation of Drainage pipes & testing | 18d | 2014-03-08 | 2014-03-27 | DUKHCONP1AZ4PLFF4325 FF, DUKHCONP1AZ4PLFF4325 SS, DUKHCONP1AZ3PLFF4330, DUKHCONP1AZ4ARFF3300 SS+7d, DUKHCONP1AZ4ARFF3300 FF+7d | -1d | 8d | LABOR- SUBCONTRACTOR [48 h]; MECHANICALS SK [129.6 h]; DRAINAGE PIPES QTY [248 lm] | 2,542 | 15 | 1AP4PLFF15 | DUKHCON1AP4PLFF4330 | DUKHCONP1AZ4PLFF4330 | DH | CON | 1A | Z4 | MEP | PL | FF | B02 | B02-D07 | RES-1A |
| DUKHCONP1AZ4PLFF4335 |  | Sanitary Fittings & Accessories | 20d | 2014-05-24 | 2014-06-15 | DUKHCONP1AZ4ARFF3365 SS, DUKHCONP1AZ4ARFF3365 FF+5d, DUKHCONP1AZ4PLFF4330 FF+5d, DUKHCONP1AZ4PLFF4330 SS+5d | -19d | 0d | SANITARY ACC QTY [56 ea]; LABOR- SUBCONTRACTOR [24 h]; MECHANICALS SK [43.2 h] | 113,094 | 20 | 1AP4PLFF20 | DUKHCON1AP4PLFF4335 | DUKHCONP1AZ4PLFF4335 | DH | CON | 1A | Z4 | MEP | PL | FF | B02 | B02-D07 | RES-1A |
| DUKHCONP1AZ4PLFF4340 |  | Installation of Water Heater | 15d | 2014-06-04 | 2014-06-21 | DUKHCONP1AZ4PLFF4335 FF+5d, DUKHCONP1AZ3PLFF4340, DUKHCONP1AZ4ARFF3360 SS+5d, DUKHCONP1AZ4ARFF3360 FF+5d, DUKHCONP1AZ4PLFF4335 SS+5d | -19d | 4d | LABOR- SUBCONTRACTOR [24 h]; MECHANICALS SK [43.2 h]; WATER HEATER QTY [8 ea] | 7,006 | 25 | 1AP4PLFF25 | DUKHCON1AP4PLFF4340 | DUKHCONP1AZ4PLFF4340 | DH | CON | 1A | Z4 | MEP | PL | FF | B02 | B02-D07 | RES-1A |
|  | 20 | **ROOF** |  | 2014-03-27 | 2014-07-13 |  |  |  |  |  |  |  |  |  |  |  |  |  |  |  |  |  |  |  |
| DUKHCONP1AZ4PLRF4345 |  | Installation of Plumbing pipes & fittings | 15d | 2014-03-27 | 2014-04-13 | DUKHCONP1AZ4ARRF3605 SS+7d, DUKHCONP1AZ4ARRF3605 FF+7d | 32d | 30d | LABOR- SUBCONTRACTOR [24 h]; MECHANICALS SK [86.4 h]; PLUMB PIPES QTY [96 lm] | 12,902 | 10 | 1AP4PLRF10 | DUKHCON1AP4PLRF4345 | DUKHCONP1AZ4PLRF4345 | DH | CON | 1A | Z4 | MEP | PL | RF | B02 | B02-D07 | RES-1A |
| DUKHCONP1AZ4PLRF4350 |  | Installation of Rain water Pipes | 15d | 2014-05-11 | 2014-05-27 | DUKHCONP1AZ4ARRF3645 SS+5d, DUKHCONP1AZ4PLRF4345 FF+8d, DUKHCONP1AZ4PLFF4330 SS+5d, DUKHCONP1AZ4ARRF3645 FF+5d, DUKHCONP1AZ4PLFF4330 FF+5d, DUKHCONP1AZ4AREL3665 FF+7d, DUKHCONP1AZ3PLRF4350, DUKHCONP1AZ4PLRF4345 SS+8d, DUKHCONP1AZ4AREL3665 SS+7d | 2d | 10d | LABOR- SUBCONTRACTOR [24 h]; MECHANICALS SK [43.2 h]; DRAINAGE PIPES QTY [80 lm] | 93,917 | 15 | 1AP4PLRF15 | DUKHCON1AP4PLRF4350 | DUKHCONP1AZ4PLRF4350 | DH | CON | 1A | Z4 | MEP | PL | RF | B02 | B02-D07 | RES-1A |
| DUKHCONP1AZ4PLRF4355 |  | Roof Water Tank Installation & Connections | 25d | 2014-06-15 | 2014-07-13 | DUKHCONP1AZ3PLRF4355, DUKHCONP1AZ4PLRF4350 FF+5d, DUKHCONP1AZ4ARRF3655 SS+5d, DUKHCONP1AZ4PLFF4340 SS+5d, DUKHCONP1AZ4PLRF4350 SS+5d, DUKHCONP1AZ4ARRF3655 FF+5d, DUKHCONP1AZ4PLFF4340 FF+5d, DUKHCONP1AZ4PLRF4345 SS+8d, DUKHCONP1AZ4PLRF4345 FF+8d | -23d | 0d | LABOR- SUBCONTRACTOR [120 h]; MECHANICALS SK [216 h]; WATER TANK QTY [20 ea] | 592,597 | 20 | 1AP4PLRF20 | DUKHCON1AP4PLRF4355 | DUKHCONP1AZ4PLRF4355 | DH | CON | 1A | Z4 | MEP | PL | RF | B02 | B02-D07 | RES-1A |
|  | 20 | **AC WORKS** |  | 2014-02-13 | 2014-07-10 |  |  |  |  |  |  |  |  |  |  |  |  |  |  |  |  |  |  |  |
|  | 10 | **GROUND FLOOR** |  | 2014-02-13 | 2014-05-20 |  |  |  |  |  |  |  |  |  |  |  |  |  |  |  |  |  |  |  |
| DUKHCONP1AZ4ACGF4600 |  | Installation AC Pipes | 20d | 2014-02-13 | 2014-03-08 | DUKHCONP1AZ4ARGF3005 SS+7d, DUKHCONP1AZ4ARGF3005 FF+7d, DUKHCONP1AZ3ACGF4600 | 25d | 5d | LABOR- SUBCONTRACTOR [216 h]; AC TECHNICIAN SK [761.6 h]; AC PIPES QTY [2008 lm] | 8,069 | 10 | 1AP4ACGF10 | DUKHCON1AP4ACGF4600 | DUKHCONP1AZ4ACGF4600 | DH | CON | 1A | Z4 | MEP | AC | GF | B02 | B02-D08 | RES-1A |
| DUKHCONP1AZ4ACGF4605 |  | Fixing of Ventilation Equipments | 25d | 2014-04-07 | 2014-05-05 | DUKHCONP1AZ4ARGF3055 FF+7d, DUKHCONP1AZ4ACGF4600 SS+10d, DUKHCONP1AZ4ARGF3055 SS+7d, DUKHCONP1AZ4ARGF3060 SS+7d, DUKHCONP1AZ4ACGF4600 FF+10d, DUKHCONP1AZ4ARGF3060 FF+7d, DUKHCONP1AZ3ACGF4605 | 8d | 0d | LABOR- SUBCONTRACTOR [48 h]; AC TECHNICIAN SK [134.4 h]; VENTILIATION EQP QTY [40 ea] | 17,289 | 15 | 1AP4ACGF15 | DUKHCON1AP4ACGF4605 | DUKHCONP1AZ4ACGF4605 | DH | CON | 1A | Z4 | MEP | AC | GF | B02 | B02-D08 | RES-1A |
| DUKHCONP1AZ4ACGF4610 |  | Fixing of Split AC | 20d | 2014-04-28 | 2014-05-20 | DUKHCONP1AZ4ACGF4605 SS+13d, DUKHCONP1AZ4ACGF4605 FF+13d, DUKHCONP1AZ3ACGF4610 | 8d | 5d | LABOR- SUBCONTRACTOR [72 h]; AC TECHNICIAN SK [224 h]; SPLIT UNIT QTY [40 ea] | 48,894 | 20 | 1AP4ACGF20 | DUKHCON1AP4ACGF4610 | DUKHCONP1AZ4ACGF4610 | DH | CON | 1A | Z4 | MEP | AC | GF | B02 | B02-D08 | RES-1A |

Notes:
- DUKHCONP1AZ4ELRF4070: Expenses: P1A-Electrical Installations 54690
- DUKHCONP1AZ4ELRF4075: Expenses: P1A-Electrical Installations 40597
- DUKHCONP1AZ4PLUG4300: Expenses: P1A-Plumbing and Drainage works 35465
- DUKHCONP1AZ4PLGF4305: Expenses: P1A-Plumbing and Drainage works 85973
- DUKHCONP1AZ4PLGF4310: Expenses: P1A-Plumbing and Drainage works 2966
- DUKHCONP1AZ4PLGF4315: Expenses: P1A-Plumbing and Drainage works 104291
- DUKHCONP1AZ4PLGF4320: Expenses: P1A-Plumbing and Drainage works 8932
- DUKHCONP1AZ4PLFF4325: Expenses: P1A-Plumbing and Drainage works 83745
- DUKHCONP1AZ4PLFF4330: Expenses: P1A-Plumbing and Drainage works 2542
- DUKHCONP1AZ4PLFF4335: Expenses: P1A-Plumbing and Drainage works 113094
- DUKHCONP1AZ4PLFF4340: Expenses: P1A-Plumbing and Drainage works 7006
- DUKHCONP1AZ4PLRF4345: Expenses: P1A-Plumbing and Drainage works 12902
- DUKHCONP1AZ4PLRF4350: Expenses: P1A-Plumbing and Drainage works 93917
- DUKHCONP1AZ4PLRF4355: Expenses: P1A-Plumbing and Drainage works 592597
- DUKHCONP1AZ4ACGF4600: Expenses: P1A-Air-conditioning and Ventilation works 8069
- DUKHCONP1AZ4ACGF4605: Expenses: P1A-Air-conditioning and Ventilation works 17289
- DUKHCONP1AZ4ACGF4610: Expenses: P1A-Air-conditioning and Ventilation works 48894

| ID | WBS | Activity | Duration | Start | Finish | Predecessors | Total float | Free float | Resources | Cost | CODE | P3 ACTID | P6 ID (old) | NP61D | PROJECT | PHASES | PACKAGE | PART | ELEMENTS | STEP | FLOORS | BILL NOS | BILL DIVISION | RES PACK |
| --- | --- | --- | --- | --- | --- | --- | --- | --- | --- | --- | --- | --- | --- | --- | --- | --- | --- | --- | --- | --- | --- | --- | --- | --- |
|  | 15 | **FIRST FLOORS** |  | 2014-03-30 | 2014-06-29 |  |  |  |  |  |  |  |  |  |  |  |  |  |  |  |  |  |  |  |
| DUKHCONP1AZ4ACFF4615 |  | Installation AC Pipes | 20d | 2014-03-30 | 2014-04-21 | DUKHCONP1AZ4ARFF3305 SS+7d, DUKHCONP1AZ4ARFF3305 FF+7d, DUKHCONP1AZ3ACFF4615 | 3d | 5d | LABOR- SUBCONTRACTOR [216 h]; AC TECHNICIAN SK [761.6 h]; AC PIPES QTY [2008 lm] | 7,555 | 10 | 1AP4ACFF10 | DUKHCON1AP4ACFF4615 | DUKHCONP1AZ4ACFF4615 | DH | CON | 1A | Z4 | MEP | AC | FF | B02 | B02-D08 | RES-1A |
| DUKHCONP1AZ4ACFF4620 |  | Fixing of Ventilation Equipments | 25d | 2014-05-17 | 2014-06-14 | DUKHCONP1AZ4ACFF4615 FF+10d, DUKHCONP1AZ4ARFF3360 FF+7d, DUKHCONP1AZ4ARFF3360 SS+7d, DUKHCONP1AZ3ACFF4620, DUKHCONP1AZ4ACFF4615 SS+10d | -22d | 0d | LABOR- SUBCONTRACTOR [24 h]; AC TECHNICIAN SK [89.6 h]; VENTILIATION EQP QTY [24 ea] | 17,083 | 15 | 1AP4ACFF15 | DUKHCON1AP4ACFF4620 | DUKHCONP1AZ4ACFF4620 | DH | CON | 1A | Z4 | MEP | AC | FF | B02 | B02-D08 | RES-1A |
| DUKHCONP1AZ4ACFF4625 |  | Fixing of Split AC | 20d | 2014-06-07 | 2014-06-29 | DUKHCONP1AZ4ACFF4620 SS+13d, DUKHCONP1AZ3ACFF4625, DUKHCONP1AZ4ACFF4620 FF+13d | -22d | 0d | LABOR- SUBCONTRACTOR [72 h]; AC TECHNICIAN SK [224 h]; SPLIT UNIT QTY [40 ea] | 54,090 | 20 | 1AP4ACFF20 | DUKHCON1AP4ACFF4625 | DUKHCONP1AZ4ACFF4625 | DH | CON | 1A | Z4 | MEP | AC | FF | B02 | B02-D08 | RES-1A |
|  | 20 | **ROOF** |  | 2014-05-01 | 2014-07-10 |  |  |  |  |  |  |  |  |  |  |  |  |  |  |  |  |  |  |  |
| DUKHCONP1AZ4ACRF4630 |  | Installation of Refrigerant Pipes | 25d | 2014-05-01 | 2014-05-29 | DUKHCONP1AZ4ACGF4600 FF+7d, DUKHCONP1AZ4ACFF4615 FF+7d, DUKHCONP1AZ4ACFF4615 SS+7d, DUKHCONP1AZ3ACRF4630, DUKHCONP1AZ4ARRF3645 FF+7d, DUKHCONP1AZ4ARRF3645 SS+7d, DUKHCONP1AZ4ACGF4600 SS+7d | 10d | 0d | LABOR- SUBCONTRACTOR [96 h]; AC TECHNICIAN SK [313.6 h]; AC PIPES QTY [848 lm] | 24,880 | 10 | 1AP4ACRF10 | DUKHCON1AP4ACRF4630 | DUKHCONP1AZ4ACRF4630 | DH | CON | 1A | Z4 | MEP | AC | RF | B02 | B02-D08 | RES-1A |
| DUKHCONP1AZ4ACRF4635 |  | Installation of Condensing Unit | 25d | 2014-06-12 | 2014-07-10 | DUKHCONP1AZ4ACGF4610 FF+5d, DUKHCONP1AZ4ACGF4610 SS+5d, DUKHCONP1AZ4ACRF4630 SS+5d, DUKHCONP1AZ4ACFF4625 SS+5d, DUKHCONP1AZ4ACRF4630 FF+5d, DUKHCONP1AZ4ACFF4625 FF+5d, DUKHCONP1AZ3ACRF4635 | -21d | 0d | LABOR- SUBCONTRACTOR [120 h]; AC TECHNICIAN SK [448 h]; AC UNITS QTY [80 ea] | 134,618 | 15 | 1AP4ACRF15 | DUKHCON1AP4ACRF4635 | DUKHCONP1AZ4ACRF4635 | DH | CON | 1A | Z4 | MEP | AC | RF | B02 | B02-D08 | RES-1A |
|  | 25 | **EXTERNAL WORKS** |  | 2014-02-20 | 2014-07-16 |  |  |  |  |  |  |  |  |  |  |  |  |  |  |  |  |  |  |  |
|  | 10 | **MISCELLANEOUS** |  | 2014-02-20 | 2014-07-16 |  |  |  |  |  |  |  |  |  |  |  |  |  |  |  |  |  |  |  |
| DUKHCONP1AZ4MSEX5000 |  | Construction of Manholes | 25d | 2014-02-20 | 2014-03-20 | DUKHCONP1AZ4STRF2055 FF+10d, DUKHCONP1AZ4PLGF4310 SS+10d, DUKHCONP1AZ4STRF2055 SS+10d, DUKHCONP1AZ4PLGF4310 FF+10d | -16d | 0d | MANHOLES SK [384 h]; LABOR- SUBCONTRACTOR [144 h]; MANHOLES QTY [48 ea] | 56,173 | 25 | 1AP4MSEX25 | DUKHCON1AP4MS005000 | DUKHCONP1AZ4MSEX5000 | DH | CON | 1A | Z4 | EX | MS |  | B02 | B02-D12 | RES-1A |
| DUKHCONP1AZ4MSEX5005 |  | Construction of Soak pit, Chambers | 25d | 2014-03-06 | 2014-04-03 | DUKHCONP1AZ4MSEX5000 FF+12d, DUKHCONP1AZ4MSEX5000 SS+12d | -16d | 0d | MANHOLES SK [128 h]; LABOR- SUBCONTRACTOR [48 h]; SOAKPIT QTY [16 ea] | 33,032 | 30 | 1AP4MSEX30 | DUKHCON1AP4MS005005 | DUKHCONP1AZ4MSEX5005 | DH | CON | 1A | Z4 | EX | MS |  | B02 | B02-D12 | RES-1A |
| DUKHCONP1AZ4MSEX5015 |  | Construction of grease Trap | 20d | 2014-03-26 | 2014-04-17 | DUKHCONP1AZ4MSEX5005 SS+12d, DUKHCONP1AZ4MSEX5005 FF+12d | -16d | 0d | LABOR- SUBCONTRACTOR [24 h]; GREASE TRAP QTY [16 lm]; HANDRAIL ERECTOR SKILLED [32 h] | 22,696 | 20 | 1AP4MSEX20 | DUKHCON1AP4MS005015 | DUKHCONP1AZ4MSEX5015 | DH | CON | 1A | Z4 | EX | MS |  | B02 | B02-D07 | RES-1A |
| DUKHCONP1AZ4MSEX5020 |  | Construction Entrance Ramp | 25d | 2014-04-13 | 2014-05-11 | DUKHCONP1AZ3MSEX5020, DUKHCONP1AZ4STRF2055 FF, DUKHCONP1AZ4STRF2055 SS | -8d | 0d | SCREED MASON SK [96 h]; CONCRETE MASON SK [192 h]; INTERLOCK MASON SK [128 h]; LABOR- SUBCONTRACTOR [192 h]; LABOR- SUBCONTRACTOR [48 h]; SCREED QTY [112 Sqm]; CONCRETE QTY [96 Cum]; INTERLOCK QTY [152 Sqm] | 31,768 | 10 | 1AP4MSEX10 | DUKHCON1AP4MS005020 | DUKHCONP1AZ4MSEX5020 | DH | CON | 1A | Z4 | EX | MS |  | B02 | B02-D12 | RES-1A |
| DUKHCONP1AZ4MSEX5010 |  | Telephone cable laying | 25d | 2014-04-19 | 2014-05-17 | DUKHCONP1AZ4MSEX5015 | -16d | 0d | LABOR- SUBCONTRACTOR [125 h]; ELECTRICIANS SK [125 h]; CONCRETE MASON SK [125 h] | 3,557 |  | 1AP4MSEX40 | DUKHCON1AP4MS005010 | DUKHCONP1AZ4MSEX5010 | DH | CON | 1A | Z4 | EX | MS |  | B02 | B02-D12 | RES-1A |
| DUKHCONP1AZ4MSEX5025 |  | SS.Handrails and Balustrades | 20d | 2014-04-30 | 2014-05-22 | DUKHCONP1AZ4MSEX5020 SS+10d, DUKHCONP1AZ4MSEX5020 FF+10d | -5d | 0d | LABOR- SUBCONTRACTOR [24 h]; S.S.BALUSTRADE QTY [16 lm]; HANDRAIL ERECTOR SKILLED [32 h] | 81,420 | 15 | 1AP4MSEX15 | DUKHCON1AP4MS005025 | DUKHCONP1AZ4MSEX5025 | DH | CON | 1A | Z4 | EX | MS |  | B02 | B02-D12 | RES-1A |
| DUKHCONP1AZ4MSEX5335 |  | Aluminum Roll-up Shutter with 2m Wall | 25d | 2014-06-18 | 2014-07-16 | DUKHCONP1AZ3MSEX5335 SS+7d, DUKHCONI1AZ2BWGL5325 | 71d | 3d | LABOR- SUBCONTRACTOR [200 h]; DOOR ERECTOR SK [200 h]; ROLLING SHUTTER QTY [8 ea] | 59,528 | 25 | 1AP4BWFR25 | DUKHCON1AP4MS005335 | DUKHCONP1AZ4MSEX5335 | DH | CON | 1A | Z4 | EX | MS |  | B02 | B02-D12 | RES-1A |
|  | 15 | **WATER TANK ENCLOSURE** |  | 2014-04-02 | 2014-07-03 |  |  |  |  |  |  |  |  |  |  |  |  |  |  |  |  |  |  |  |
| DUKHCONP1AZ4WEEX5030 |  | Excavation | 20d | 2014-04-02 | 2014-04-24 | DUKHCONP1AZ4STRF2055 FF+5d, DUKHCONP1AZ3WEEX5030, DUKHCONP1AZ4STRF2055 SS+5d | -1d | 0d | LABOR- SUBCONTRACTOR [24 h]; EXCAVATION QTY [40 Cum]; LOADER [10 h]; POCLAIN [20 h]; TRUCK [10 h]; EQUIP OPERATORS [40 h] | 896 | 10 | 1AP4WEEX10 | DUKHCON1AP4WE005030 | DUKHCONP1AZ4WEEX5030 | DH | CON | 1A | Z4 | EX | WE |  | B02 | B02-D12 | RES-1A |
| DUKHCONP1AZ4WEEX5035 |  | Construction of Raft | 25d | 2014-04-08 | 2014-05-06 | DUKHCONP1AZ4WEEX5030 FF+10d, DUKHCONP1AZ4WEEX5030 SS+5d | -1d | 0d | STEEL FIXERS SK [64 h]; CARPENTERS SK [384 h]; CONCRETE MASON SK [32 h]; LABOR- SUBCONTRACTOR [360 h]; REINFORCEMENT BARS QTY [624 kg]; FORMWORK QTY [184 Sqm]; CONCRETE QTY [20 Cum] | 15,216 | 15 | 1AP4WEEX15 | DUKHCON1AP4WE005035 | DUKHCONP1AZ4WEEX5035 | DH | CON | 1A | Z4 | EX | WE |  | B02 | B02-D12 | RES-1A |
| DUKHCONP1AZ4WEEX5040 |  | Block works & Plastering | 25d | 2014-04-17 | 2014-05-15 | DUKHCONP1AZ4WEEX5035 FF+8d, DUKHCONP1AZ4WEEX5035 SS+8d | -1d | 0d | BLOCK MASON SK [128 h]; PLASTER MASON SK [192 h]; LABOR- SUBCONTRACTOR [192 h]; BLOCK QTY [56 Sqm]; PLASTER QTY [112 Sqm] | 13,582 | 20 | 1AP4WEEX20 | DUKHCON1AP4WE005040 | DUKHCONP1AZ4WEEX5040 | DH | CON | 1A | Z4 | EX | WE |  | B02 | B02-D12 | RES-1A |
| DUKHCONP1AZ4WEEX5045 |  | Flooring & Painting | 25d | 2014-04-24 | 2014-05-22 | DUKHCONP1AZ4WEEX5040 SS+6d, DUKHCONP1AZ4WEEX5040 FF+6d | -1d | 4d | LABOR- SUBCONTRACTOR [72 h]; PAINT QTY [156 Sqm]; EPOXY QTY [44 Sqm]; PAINTERS SK [128 h]; EPOXY SK [32 h] | 12,744 | 25 | 1AP4WEEX25 | DUKHCON1AP4WE005045 | DUKHCONP1AZ4WEEX5045 | DH | CON | 1A | Z4 | EX | WE |  | B02 | B02-D12 | RES-1A |
| DUKHCONP1AZ4WEEX5050 |  | Installation of Steel Gate | 20d | 2014-05-12 | 2014-06-03 | DUKHCONP1AZ4WEEX5045 SS+5d, DUKHCONP1AZ4WEEX5045 FF+6d, DUKHCONP1AZ4MSEX5025 FF+10d | -5d | 9d | LABOR- SUBCONTRACTOR [24 h]; GATE QTY [4 ea]; GATE ERECTOR SK [32 h] | 71,872 | 30 | 1AP4WEEX30 | DUKHCON1AP4WE005050 | DUKHCONP1AZ4WEEX5050 | DH | CON | 1A | Z4 | EX | WE |  | B02 | B02-D12 | RES-1A |
| DUKHCONP1AZ4WEEX5060 |  | Structural steel & SS Shed cover installation | 25d | 2014-05-28 | 2014-06-25 | DUKHCONP1AZ4WEEX5050 SS+5d, DUKHCONP1AZ4MSEX5025 FF+10d, DUKHCONP1AZ3WEEX5060, DUKHCONP1AZ4WEEX5050 FF+10d | -14d | 0d | LABOR- SUBCONTRACTOR [144 h]; STRUCTURAL STEEL QTY [128 kg]; SS SHED COVER QTY [40 Sqm]; STEEL ERECTOR SK [192 h] | 45,463 | 35 | 1AP4WEEX35 | DUKHCON1AP4WE005060 | DUKHCONP1AZ4WEEX5060 | DH | CON | 1A | Z4 | EX | WE |  | B02 | B02-D12 | RES-1A |
| DUKHCONP1AZ4WEEX5065 |  | Install. of Water Tank,Chiller,Pump & Meter | 25d | 2014-06-05 | 2014-07-03 | DUKHCONP1AZ4MSEX5015 SS+5d, DUKHCONP1AZ4MSEX5015 FF+5d, DUKHCONP1AZ4WEEX5060 SS+6d, DUKHCONP1AZ4WEEX5060 FF+6d, DUKHCONP1AZ4PLRF4350 SS+5d, DUKHCONP1AZ3WEEX5065, DUKHCONP1AZ4PLRF4350 FF+5d | -15d | 0d | PUMP QTY [4 ea]; LABOR- SUBCONTRACTOR [72 h]; AC TECHNICIAN SK [44.8 h]; MECHANICALS SK [86.4 h]; WATER TANK QTY [4 ea]; CHILLER QTY [40 ea] | 122,349 | 40 | 1AP4WEEX40 | DUKHCON1AP4WE005065 | DUKHCONP1AZ4WEEX5065 | DH | CON | 1A | Z4 | EX | WE |  | B02 | B02-D07 | RES-1A |

Notes:
- DUKHCONP1AZ4ACFF4615: Expenses: P1A-Air-conditioning and Ventilation works 7555
- DUKHCONP1AZ4ACFF4620: Expenses: P1A-Air-conditioning and Ventilation works 17083
- DUKHCONP1AZ4ACFF4625: Expenses: P1A-Air-conditioning and Ventilation works 54090
- DUKHCONP1AZ4ACRF4630: Expenses: P1A-Air-conditioning and Ventilation works 24880
- DUKHCONP1AZ4ACRF4635: Expenses: P1A-Air-conditioning and Ventilation works 134618
- DUKHCONP1AZ4MSEX5000: Expenses: P1A-External works within the Plot Curtilage 56173
- DUKHCONP1AZ4MSEX5005: Expenses: P1A-External works within the Plot Curtilage 33032
- DUKHCONP1AZ4MSEX5015: Expenses: P1A-Plumbing and Drainage works 22696
- DUKHCONP1AZ4MSEX5020: Expenses: P1A-External works within the Plot Curtilage 31768
- DUKHCONP1AZ4MSEX5010: Expenses: P1A-External works within the Plot Curtilage 3557
- DUKHCONP1AZ4MSEX5025: Expenses: P1A-External works within the Plot Curtilage 81420
- DUKHCONP1AZ4MSEX5335: Expenses: P1A-External works within the Plot Curtilage 59528
- DUKHCONP1AZ4WEEX5030: Expenses: P1A-External works within the Plot Curtilage 896
- DUKHCONP1AZ4WEEX5035: Expenses: P1A-External works within the Plot Curtilage 15216
- DUKHCONP1AZ4WEEX5040: Expenses: P1A-External works within the Plot Curtilage 13582
- DUKHCONP1AZ4WEEX5045: Expenses: P1A-External works within the Plot Curtilage 12744
- DUKHCONP1AZ4WEEX5050: Expenses: P1A-External works within the Plot Curtilage 71872
- DUKHCONP1AZ4WEEX5060: Expenses: P1A-External works within the Plot Curtilage 45463
- DUKHCONP1AZ4WEEX5065: Expenses: P1A-Plumbing and Drainage works 122349

| ID | WBS | Activity | Duration | Start | Finish | Predecessors | Total float | Free float | Resources | Cost | CODE | P3 ACTID | P6 ID (old) | NP61D | PROJECT | PHASES | PACKAGE | PART | ELEMENTS | STEP | BILL NOS | BILL DIVISION | RES PACK | FLOORS | rem |
| --- | --- | --- | --- | --- | --- | --- | --- | --- | --- | --- | --- | --- | --- | --- | --- | --- | --- | --- | --- | --- | --- | --- | --- | --- | --- |
|  | 20 | **HARD LANDSCAPING** |  | 2014-04-27 | 2014-06-07 |  |  |  |  |  |  |  |  |  |  |  |  |  |  |  |  |  |  |  |  |
| DUKHCONP1AZ4HDEX5090 |  | kerb works | 20d | 2014-04-27 | 2014-05-19 | DUKHCONP1AZ4MSEX5020 FF+7d, DUKHCONP1AZ3HDEX5090, DUKHCONP1AZ4MSEX5020 SS+7d | -8d | 0d | KERBSTONE MASON SK [224 h]; LABOR- SUBCONTRACTOR [120 h]; KERBSTONE QTY [288 lm] | 13,284 | 10 | 1AP4HDEX10 | DUKHCON1AP4HD005090 | DUKHCONP1AZ4HDEX5090 | DH | CON | 1A | Z4 | EX | HD | B02 | B02-D12 | RES-1A |  |  |
| DUKHCONP1AZ4HDEX5095 |  | Cobble Stone Works | 20d | 2014-05-08 | 2014-05-31 | DUKHCONP1AZ4HDEX5090 SS+10d, DUKHCONP1AZ4HDEX5090 FF+10d | -8d | 0d | TILE MASON SK [128 h]; LABOR- SUBCONTRACTOR [72 h]; COBBLE STONE QTY [88 Sqm] | 12,232 | 15 | 1AP4HDEX15 | DUKHCON1AP4HD005095 | DUKHCONP1AZ4HDEX5095 | DH | CON | 1A | Z4 | EX | HD | B02 | B02-D12 | RES-1A |  |  |
| DUKHCONP1AZ4HDEX5100 |  | Interlock works | 20d | 2014-05-15 | 2014-06-07 | DUKHCONP1AZ4HDEX5095 FF+6d, DUKHCONP1AZ4HDEX5095 SS+6d | -8d | 0d | INTERLOCK MASON SK [160 h]; LABOR- SUBCONTRACTOR [72 h]; INTERLOCK QTY [184 Sqm] | 15,733 | 20 | 1AP4HDEX20 | DUKHCON1AP4HD005100 | DUKHCONP1AZ4HDEX5100 | DH | CON | 1A | Z4 | EX | HD | B02 | B02-D12 | RES-1A |  |  |
|  | 25 | **SOFT LANDSCAPING** |  | 2014-05-21 | 2014-06-25 |  |  |  |  |  |  |  |  |  |  |  |  |  |  |  |  |  |  |  |  |
| DUKHCONP1AZ4SLEX5105 |  | Laying of Grass/ green area | 25d | 2014-05-21 | 2014-06-18 | DUKHCONP1AZ4HDEX5100 FF+5d, DUKHCONP1AZ4HDEX5100 SS+5d | -8d | 0d | LABOR- SUBCONTRACTOR [1176 h]; SWEET SOIL QTY [336 Cum]; GRASS QTY [336 Sqm]; LANDSCAPING SK [1568 h] | 41,328 | 10 | 1AP4SLEX10 | DUKHCON1AP4SL005105 | DUKHCONP1AZ4SLEX5105 | DH | CON | 1A | Z4 | EX | SL | B02 | B02-D12 | RES-1A |  |  |
| DUKHCONP1AZ4SLEX5110 |  | Laying of Palm tree | 25d | 2014-05-28 | 2014-06-25 | DUKHCONP1AZ4SLEX5105 FF+6d, DUKHCONP1AZ4SLEX5105 SS+6d | -8d | 16d | LABOR- SUBCONTRACTOR [72 h]; SWEET SOIL QTY [48 Cum]; PLAM TREES QTY [16 ea]; LANDSCAPING SK [96 h] | 48,672 | 15 | 1AP4SLEX15 | DUKHCON1AP4SL005110 | DUKHCONP1AZ4SLEX5110 | DH | CON | 1A | Z4 | EX | SL | B02 | B02-D12 | RES-1A |  |  |
|  | 30 | **TESTING AND COMMISSIONING** |  | 2014-07-15 | 2014-08-16 |  |  |  |  |  |  |  |  |  |  |  |  |  |  |  |  |  |  |  |  |
| DUKHCONP1AZ4ACTC8000 |  | Pre-Commissioning & Testing of AC Works | 25d | 2014-07-15 | 2014-08-16 | DUKHCONP1AZ4HDEX5100, DUKHCONP1AZ4AREL3680, DUKHCONP1AZ4ARRF3620, DUKHCONP1AZ4ACRF4635, DUKHCONP1AZ4ARRF3660, DUKHCONP1AZ4SLEX5105, DUKHCONP1AZ4SLEX5110, DUKHCONP1AZ3ACTC8000, DUKHCONP1AZ4ARFF3395, DUKHCONP1AZ4MSEX5005, DUKHCONP1AZ4ACFF4625, DUKHCONP1AZ4ARGF3095 | -24d | 0d | LABOR- SUBCONTRACTOR [500 h]; AC TECHNICIAN SK [1000 h] | 3,168 |  | 1AP4ACU100 | DUKHCON1AP4AC008000 | DUKHCONP1AZ4ACTC8000 | DH | CON | 1A | Z4 | TES |  | B02 | B02-D08 | RES-1A |  |  |
| DUKHCONP1AZ4ELTC8010 |  | Pre-Commissioning & Testing of Electrical Works | 25d | 2014-07-15 | 2014-08-16 | DUKHCONP1AZ4ARRF3655, DUKHCONP1AZ4ARRF3620, DUKHCONP1AZ4HDEX5100, DUKHCONP1AZ4MSEX5005, DUKHCONP1AZ4ELGF4025, DUKHCONP1AZ3ELTC8010, DUKHCONP1AZ4ARRF3660, DUKHCONP1AZ4ARFF3395, DUKHCONP1AZ4SLEX5110, DUKHCONP1AZ4ELFF4065, DUKHCONP1AZ4ELRF4075, DUKHCONP1AZ4SLEX5105, DUKHCONP1AZ4ELGF4015, DUKHCONP1AZ4ELGF4030, DUKHCONP1AZ4ELFF4050, DUKHCONP1AZ4AREL3680, DUKHCONP1AZ4ELFF4055, DUKHCONP1AZ4ARGF3095 | -24d | 0d | LABOR- SUBCONTRACTOR [1000 h]; ELECTRICIANS SK [2000 h] | 40,656 |  | 1AP4ELE100 | DUKHCON1AP4EL008010 | DUKHCONP1AZ4ELTC8010 | DH | CON | 1A | Z4 | TES |  | B02 | B02-D09 | RES-1A |  |  |
| DUKHCONP1AZ4PLTC8005 |  | Pre-Commissioning & Testing of Plumbing Works | 25d | 2014-07-15 | 2014-08-16 | DUKHCONP1AZ4ARFF3395, DUKHCONP1AZ4HDEX5100, DUKHCONP1AZ4ARGF3095, DUKHCONP1AZ4ARRF3655, DUKHCONP1AZ4MSEX5005, DUKHCONP1AZ3PLTC8005, DUKHCONP1AZ4SLEX5110, DUKHCONP1AZ4WEEX5065, DUKHCONP1AZ4PLRF4355, DUKHCONP1AZ4ARRF3660, DUKHCONP1AZ4ARRF3620, DUKHCONP1AZ4SLEX5105, DUKHCONP1AZ4PLGF4320, DUKHCONP1AZ4AREL3680, DUKHCONP1AZ4PLRF4350 | -24d | 0d | LABOR- SUBCONTRACTOR [1000 h]; MECHANICALS SK [2000 h] | 9,008 |  | 1AP4PLU100 | DUKHCON1AP4PL008005 | DUKHCONP1AZ4PLTC8005 | DH | CON | 1A | Z4 | TES |  | B02 | B02-D07 | RES-1A |  |  |
|  | 30 | **ZONE - 5 (4 Twin Villas)** |  | 2013-06-24 | 2014-09-14 |  |  |  |  |  |  |  |  |  |  |  |  |  |  |  |  |  |  |  |  |
|  | 10 | **STRUCTURAL WORKS** |  | 2013-06-24 | 2014-04-20 |  |  |  |  |  |  |  |  |  |  |  |  |  |  |  |  |  |  |  |  |
|  | 10 | **SUB STRUCTURE** |  | 2013-06-24 | 2013-12-08 |  |  |  |  |  |  |  |  |  |  |  |  |  |  |  |  |  |  |  |  |
|  | 10 | **UPTO GRADE SLAB** |  | 2013-06-24 | 2013-12-08 |  |  |  |  |  |  |  |  |  |  |  |  |  |  |  |  |  |  |  |  |
| DUKHCONP1AZ5STUG1000 |  | Footing Excavation | 25d | 2013-06-24 | 2013-07-22 | DUKHCONP1AGNSP005000, DUKHCONP1AZ4STUG1000 | -11d | 0d | LABOR- SUBCONTRACTOR [590 h]; EXCAVATION QTY [984 Cum]; LOADER [131 h]; POCLAIN [262 h]; TRUCK [131 h]; EQUIP OPERATORS [524 h] | 68,256 | 10 | 1AP5SBUG10 | DUKHCON1AP5STUG1000 | DUKHCONP1AZ5STUG1000 | DH | CON | 1A | Z5 | ST | SB | B02 | B02-D01 | RES-1A | UG |  |
| DUKHCONP1AZ5STUG1005 |  | Footing Antitermite | 23d | 2013-07-06 | 2013-07-31 | DUKHCONP1AZ5STUG1000 SS+10d, DUKHCONP1AZ5STUG1000 FF+5d | -11d | 0d | LABOR- SUBCONTRACTOR [432 h]; ANTITERMITE QTY [2880 sqft]; ANTITERMITE SK [1152 h] | 8,640 | 15 | 1AP5SBUG15 | DUKHCON1AP5STUG1005 | DUKHCONP1AZ5STUG1005 | DH | CON | 1A | Z5 | ST | SB | B02 | B02-D01 | RES-1A | UG | REM |
| DUKHCONP1AZ5STUG1010 |  | Footing Blinding | 23d | 2013-07-09 | 2013-08-04 | DUKHCONP1AZ5STUG1005 FF+3d, DUKHCONP1AZ5STUG1005 SS+3d | -11d | 0d | BLINDING MASON SK [454 h]; LABOR- SUBCONTRACTOR [340.5 h]; BLINDING QTY [567 Sqm] | 14,285 | 15 | 1AP5SBUG18 | DUKHCON1AP5STUG1010 | DUKHCONP1AZ5STUG1010 | DH | CON | 1A | Z5 | ST | SB | B02 | B02-D02 | RES-1A | UG | REM |
| DUKHCONP1AZ5STUG1015 |  | Footing Waterproofing & Screed | 25d | 2013-07-15 | 2013-08-15 | DUKHCONP1AZ5STUG1010 FF+5d, DUKHCONP1AZ5STUG1010 SS+5d | -11d | 0d | SCREED MASON SK [418 h]; LABOR- SUBCONTRACTOR [156.75 h]; SCREED QTY [522 Sqm]; WATERPROOFING QTY [1457 Sqm] | 52,596 | 20 | 1AP5SBUG20 | DUKHCON1AP5STUG1015 | DUKHCONP1AZ5STUG1015 | DH | CON | 1A | Z5 | ST | SB | B02 | B02-D02 | RES-1A | UG | REM |
| DUKHCONP1AZ5STUG1020 |  | Construction of foundations | 20d | 2013-07-30 | 2013-08-25 | DUKHCONP1AZ5STUG1015 FF+8d, DUKHCONP1AZ5STUG1015 SS+7d | -11d | 13d | STEEL FIXERS SK [2565 h]; CARPENTERS SK [1160 h]; CONCRETE MASON SK [720 h]; LABOR- SUBCONTRACTOR [3333.75 h]; REINFORCEMENT BARS QTY [32062 kg]; FORMWORK QTY [580 Sqm]; CONCRETE QTY [360 Cum] | 225,546 | 25 | 1AP5SBUG25 | DUKHCON1AP5STUG1020 | DUKHCONP1AZ5STUG1020 | DH | CON | 1A | Z5 | ST | SB | B02 | B02-D02 | RES-1A | UG | REM |
| DUKHCONP1AZ5STUG1025 |  | Construction of neck of columns | 25d | 2013-08-27 | 2013-09-24 | DUKHCONP1AZ5STUG1020 FF+7d, DUKHCONP1AZ5STUG1020 SS+8d, DUKHCONP1AZ4STUG1025 | -24d | 0d | STEEL FIXERS SK [214 h]; CARPENTERS SK [656 h]; CONCRETE MASON SK [48 h]; LABOR- SUBCONTRACTOR [688.5 h]; REINFORCEMENT BARS QTY [2669 kg]; FORMWORK QTY [328 Sqm]; CONCRETE QTY [24 Cum] | 35,935 | 30 | 1AP5SBUG30 | DUKHCON1AP5STUG1025 | DUKHCONP1AZ5STUG1025 | DH | CON | 1A | Z5 | ST | SB | B02 | B02-D02 | RES-1A | UG | REM |
| DUKHCONP1AZ5STUG1030 |  | Waterproofing Footing & Neck Column | 25d | 2013-09-05 | 2013-10-03 | DUKHCONP1AZ5STUG1025 FF+8d, DUKHCONP1AZ5STUG1025 SS+8d | -24d | 0d | LABOR- SUBCONTRACTOR [141 h]; WATERPROOFING QTY [468 Sqm]; WATERPROOFING SPECIALIST SK [375 h] | 22,459 | 35 | 1AP5SBUG35 | DUKHCON1AP5STUG1030 | DUKHCONP1AZ5STUG1030 | DH | CON | 1A | Z5 | ST | SB | B02 | B02-D02 | RES-1A | UG | REM |
| DUKHCONP1AZ5STUG1035 |  | Backfilling Upto Grade Beam Bottom | 25d | 2013-09-19 | 2013-10-20 | DUKHCONP1AZ5STUG1030 FF+12d, DUKHCONP1AZ4STUG1035, DUKHCONP1AZ5STUG1030 SS+12d | -24d | 0d | LABOR- SUBCONTRACTOR [216 h]; BACKFILLING QTY [880 Cum]; BOBCAT [375 h]; PLATE COMPACTOR [375 h]; TRUCK [75 h]; EQUIP OPERATORS [825 h] | 22,363 | 40 | 1AP5SBUG40 | DUKHCON1AP5STUG1035 | DUKHCONP1AZ5STUG1035 | DH | CON | 1A | Z5 | ST | SB | B02 | B02-D01 | RES-1A | UG |  |
| DUKHCONP1AZ5STUG1040 |  | Construction of Grade Beams | 25d | 2013-10-06 | 2013-11-05 | DUKHCONP1AZ5STUG1035 SS+14d, DUKHCONP1AZ5STUG1035 FF+14d | -24d | 0d | BLINDING MASON SK [244 h]; SCREED MASON SK [224 h]; STEEL FIXERS SK [1497 h]; CARPENTERS SK [2152 h]; CONCRETE MASON SK [256 h]; LABOR- SUBCONTRACTOR [3195.75 h]; BLINDING QTY [304 Sqm]; SCREED QTY [280 Sqm]; REINFORCEMENT BARS QTY [18709 kg]; FORMWORK QTY [1076 Sqm]; CONCRETE QTY [128 Cum] | 326,110 | 45 | 1AP5SBUG45 | DUKHCON1AP5STUG1040 | DUKHCONP1AZ5STUG1040 | DH | CON | 1A | Z5 | ST | SB | B02 | B02-D02 | RES-1A | UG | REM |
| DUKHCONP1AZ5STUG1045 |  | Construction of slab on grade | 25d | 2013-11-10 | 2013-12-08 | DUKHCONP1AZ5STUG1040 SS+10d, DUKHCONP1AZ4STUG1045, DUKHCONP1AZ5PLUG4300 FF+8d, DUKHCONP1AZ5PLUG4300 SS+8d, DUKHCONP1AZ5STUG1040 FF+10d | -24d | 0d | BLINDING MASON SK [923 h]; SCREED MASON SK [850 h]; STEEL FIXERS SK [536 h]; CONCRETE MASON SK [400 h]; LABOR- SUBCONTRACTOR [1713 h]; BLINDING QTY [1153 Sqm]; SCREED QTY [1062 Sqm]; CONCRETE QTY [200 Cum]; WELDED WIRE MESH [2008 Sqm] | 239,062 | 50 | 1AP5SBUG50 | DUKHCON1AP5STUG1045 | DUKHCONP1AZ5STUG1045 | DH | CON | 1A | Z5 | ST | SB | B02 | B02-D02 | RES-1A | UG | REM |

Notes:
- DUKHCONP1AZ4HDEX5090: Expenses: P1A-External works within the Plot Curtilage 13284
- DUKHCONP1AZ4HDEX5095: Expenses: P1A-External works within the Plot Curtilage 12232
- DUKHCONP1AZ4HDEX5100: Expenses: P1A-External works within the Plot Curtilage 15733
- DUKHCONP1AZ4SLEX5105: Expenses: P1A-External works within the Plot Curtilage 41328
- DUKHCONP1AZ4SLEX5110: Expenses: P1A-External works within the Plot Curtilage 48672
- DUKHCONP1AZ4ACTC8000: Expenses: P1A-Air-conditioning and Ventilation works 3168
- DUKHCONP1AZ4ELTC8010: Expenses: P1A-Electrical Installations 40656
- DUKHCONP1AZ4PLTC8005: Expenses: P1A-Plumbing and Drainage works 9008
- DUKHCONP1AZ5STUG1000: Expenses: P1A-Excavation and Earth Works 68256
- DUKHCONP1AZ5STUG1005: Expenses: P1A-Excavation and Earth Works 8640
- DUKHCONP1AZ5STUG1010: Expenses: P1A-Concrete Works 14285
- DUKHCONP1AZ5STUG1015: Expenses: P1A-Concrete Works 52596
- DUKHCONP1AZ5STUG1020: Expenses: P1A-Concrete Works 225546
- DUKHCONP1AZ5STUG1025: Expenses: P1A-Concrete Works 35935
- DUKHCONP1AZ5STUG1030: Expenses: P1A-Concrete Works 22459
- DUKHCONP1AZ5STUG1035: Expenses: P1A-Excavation and Earth Works 22363
- DUKHCONP1AZ5STUG1040: Expenses: P1A-Concrete Works 326110
- DUKHCONP1AZ5STUG1045: Expenses: P1A-Concrete Works 239062

| ID | WBS | Activity | Duration | Start | Finish | Predecessors | Total float | Free float | Resources | Cost | CODE | rem | P3 ACTID | P6 ID (old) | NP61D | PROJECT | PHASES | PACKAGE | PART | ELEMENTS | STEP | FLOORS | BILL NOS | BILL DIVISION | RES PACK | EXECUTER |
| --- | --- | --- | --- | --- | --- | --- | --- | --- | --- | --- | --- | --- | --- | --- | --- | --- | --- | --- | --- | --- | --- | --- | --- | --- | --- | --- |
|  | 15 | **SUPERSTRUCTURE** |  | 2013-11-26 | 2014-04-20 |  |  |  |  |  |  |  |  |  |  |  |  |  |  |  |  |  |  |  |  |  |
|  | 10 | **GROUND FLOOR** |  | 2013-11-26 | 2014-01-21 |  |  |  |  |  |  |  |  |  |  |  |  |  |  |  |  |  |  |  |  |  |
| DUKHCONP1AZ5STGF2000 |  | Column-Rebar & Formwork | 25d | 2013-11-26 | 2013-12-25 | DUKHCONP1AZ5STUG1045 FF+7d, DUKHCONP1AZ4STGF2000, DUKHCONP1AZ5STUG1045 SS+14d | -24d | 0d | STEEL FIXERS SK [656 h]; CARPENTERS SK [1656 h]; LABOR- SUBCONTRACTOR [1734 h]; REINFORCEMENT BARS QTY [8198 kg]; FORMWORK QTY [828 Sqm] | 73,433 | 10 | REM | 1AP5SPGF10 | DUKHCON1AP5STGF2000 | DUKHCONP1AZ5STGF2000 | DH | CON | 1A | Z5 | ST | SP | GF | B02 | B02-D02 | RES-1A |  |
| DUKHCONP1AZ5STGF2005 |  | Column-Concrete | 24d | 2013-12-04 | 2014-01-01 | DUKHCONP1AZ5STGF2000 FF+2d, DUKHCONP1AZ5STGF2000 SS+7d | -22d | 0d | CONCRETE MASON SK [146 h]; LABOR- SUBCONTRACTOR [109.5 h]; CONCRETE QTY [73 Cum] | 20,945 | 15 | REM | 1AP5SPGF15 | DUKHCON1AP5STGF2005 | DUKHCONP1AZ5STGF2005 | DH | CON | 1A | Z5 | ST | SP | GF | B02 | B02-D02 | RES-1A |  |
| DUKHCONP1AZ5STGF2010 |  | Beam, Stairs ,Slab-Rebar & Formwork | 25d | 2013-12-21 | 2014-01-18 | DUKHCONP1AZ5STGF2005 FF+14d, DUKHCONP1AZ5STGF2005 SS+2d | -22d | 0d | STEEL FIXERS SK [4091 h]; CARPENTERS SK [5526 h]; LABOR- SUBCONTRACTOR [7212.75 h]; REINFORCEMENT BARS QTY [51136 kg]; FORMWORK QTY [2763 Sqm] | 326,549 | 20 | REM | 1AP5SPGF20 | DUKHCON1AP5STGF2010 | DUKHCONP1AZ5STGF2010 | DH | CON | 1A | Z5 | ST | SP | GF | B02 | B02-D02 | RES-1A |  |
| DUKHCONP1AZ5STGF2015 |  | Beam, Stairs ,Slab-Concrete | 14d | 2014-01-06 | 2014-01-21 | DUKHCONP1AZ4STGF2015, DUKHCONP1AZ5STGF2010 FF+3d, DUKHCONP1AZ5STGF2010 SS+10d | -22d | 0d | CONCRETE MASON SK [740 h]; LABOR- SUBCONTRACTOR [555 h]; CONCRETE QTY [370 Cum] | 131,494 | 25 | REM | 1AP5SPGF25 | DUKHCON1AP5STGF2015 | DUKHCONP1AZ5STGF2015 | DH | CON | 1A | Z5 | ST | SP | GF | B02 | B02-D02 | RES-1A |  |
|  | 15 | **FIRST FLOORS** |  | 2014-01-08 | 2014-03-06 |  |  |  |  |  |  |  |  |  |  |  |  |  |  |  |  |  |  |  |  |  |
| DUKHCONP1AZ5STFF2020 |  | Column-Rebar & Formwork | 25d | 2014-01-08 | 2014-02-05 | DUKHCONP1AZ4STFF2020, DUKHCONP1AZ5STGF2015 SS+2d, DUKHCONP1AZ5STGF2015 FF+5d | -22d | 0d | STEEL FIXERS SK [574 h]; CARPENTERS SK [1472 h]; LABOR- SUBCONTRACTOR [1534.5 h]; REINFORCEMENT BARS QTY [7175 kg]; FORMWORK QTY [736 Sqm] | 64,915 | 10 | REM | 1AP5SPFF10 | DUKHCON1AP5STFF2020 | DUKHCONP1AZ5STFF2020 | DH | CON | 1A | Z5 | ST | SP | FF | B02 | B02-D02 | RES-1A |  |
| DUKHCONP1AZ5STFF2025 |  | Column-Concrete | 24d | 2014-01-18 | 2014-02-15 | DUKHCONP1AZ5STFF2020 FF+2d, DUKHCONP1AZ5STFF2020 SS+8d | -20d | 0d | CONCRETE MASON SK [128 h]; LABOR- SUBCONTRACTOR [96 h]; CONCRETE QTY [64 Cum] | 18,331 | 15 | REM | 1AP5SPFF15 | DUKHCON1AP5STFF2025 | DUKHCONP1AZ5STFF2025 | DH | CON | 1A | Z5 | ST | SP | FF | B02 | B02-D02 | RES-1A |  |
| DUKHCONP1AZ5STFF2030 |  | Beam, Stairs ,Slab-Rebar & Formwork | 25d | 2014-02-02 | 2014-03-03 | DUKHCONP1AZ5STFF2025 FF+14d, DUKHCONP1AZ5STFF2025 SS+2d | -20d | 0d | STEEL FIXERS SK [3685 h]; CARPENTERS SK [5526 h]; LABOR- SUBCONTRACTOR [6908.25 h]; REINFORCEMENT BARS QTY [46062 kg]; FORMWORK QTY [2763 Sqm] | 310,154 | 20 | REM | 1AP5SPFF20 | DUKHCON1AP5STFF2030 | DUKHCONP1AZ5STFF2030 | DH | CON | 1A | Z5 | ST | SP | FF | B02 | B02-D02 | RES-1A |  |
| DUKHCONP1AZ5STFF2035 |  | Beam, Stairs ,Slab-Concrete | 14d | 2014-02-19 | 2014-03-06 | DUKHCONP1AZ4STFF2035, DUKHCONP1AZ5STFF2030 FF+3d, DUKHCONP1AZ5STFF2030 SS+10d | -20d | 0d | CONCRETE MASON SK [652 h]; LABOR- SUBCONTRACTOR [489 h]; CONCRETE QTY [326 Cum] | 119,102 | 25 | REM | 1AP5SPFF25 | DUKHCON1AP5STFF2035 | DUKHCONP1AZ5STFF2035 | DH | CON | 1A | Z5 | ST | SP | FF | B02 | B02-D02 | RES-1A |  |
|  | 20 | **ROOF** |  | 2014-02-22 | 2014-04-20 |  |  |  |  |  |  |  |  |  |  |  |  |  |  |  |  |  |  |  |  |  |
| DUKHCONP1AZ5STRF2040 |  | Column-Rebar & Formwork | 18d | 2014-02-22 | 2014-03-13 | DUKHCONP1AZ4STRF2040, DUKHCONP1AZ5STFF2035 FF+3d, DUKHCONP1AZ5STFF2035 SS+2d | -16d | 0d | STEEL FIXERS SK [137 h]; CARPENTERS SK [552 h]; LABOR- SUBCONTRACTOR [516.75 h]; REINFORCEMENT BARS QTY [1707 kg]; FORMWORK QTY [276 Sqm] | 21,168 | 10 | REM | 1AP5SPRF10 | DUKHCON1AP5STRF2040 | DUKHCONP1AZ5STRF2040 | DH | CON | 1A | Z5 | ST | SP | RF | B02 | B02-D02 | RES-1A |  |
| DUKHCONP1AZ5STRF2045 |  | Column-Concrete | 17d | 2014-02-25 | 2014-03-16 | DUKHCONP1AZ5STRF2040 SS+3d, DUKHCONP1AZ5STRF2040 FF+1d | -16d | 0d | CONCRETE MASON SK [30 h]; LABOR- SUBCONTRACTOR [22.5 h]; CONCRETE QTY [15 Cum] | 4,363 | 15 | REM | 1AP5SPRF15 | DUKHCON1AP5STRF2045 | DUKHCONP1AZ5STRF2045 | DH | CON | 1A | Z5 | ST | SP | RF | B02 | B02-D02 | RES-1A |  |
| DUKHCONP1AZ5STRF2050 |  | Slab-Rebar & Formwork - Head Room | 20d | 2014-02-27 | 2014-03-22 | DUKHCONP1AZ5STRF2045 SS+2d, DUKHCONP1AZ5STRF2045 FF+5d | -16d | 0d | STEEL FIXERS SK [869 h]; CARPENTERS SK [694 h]; LABOR- SUBCONTRACTOR [1172.25 h]; REINFORCEMENT BARS QTY [10859 kg]; FORMWORK QTY [347 Sqm] | 61,496 | 20 | REM | 1AP5SPRF20 | DUKHCON1AP5STRF2050 | DUKHCONP1AZ5STRF2050 | DH | CON | 1A | Z5 | ST | SP | RF | B02 | B02-D02 | RES-1A |  |
| DUKHCONP1AZ5STRF2055 |  | Slab-Concrete-Head room | 13d | 2014-03-10 | 2014-03-24 | DUKHCONP1AZ5STRF2050 SS+5d, DUKHCONP1AZ5STRF2050 FF+2d, DUKHCONP1AZ4STRF2055 | -16d | 0d | CONCRETE MASON SK [144 h]; LABOR- SUBCONTRACTOR [108 h]; CONCRETE QTY [72 Cum] | 22,960 | 25 | REM | 1AP5SPRF25 | DUKHCON1AP5STRF2055 | DUKHCONP1AZ5STRF2055 | DH | CON | 1A | Z5 | ST | SP | RF | B02 | B02-D02 | RES-1A |  |
| DUKHCONP1AZ5STRF2060 |  | Construction of Parapets | 25d | 2014-03-12 | 2014-04-09 | DUKHCONP1AZ5STRF2055 SS+2d, DUKHCONP1AZ5STRF2055 FF+14d | 32d | 4d | BLOCK MASON SK [1408 h]; LABOR- SUBCONTRACTOR [792 h]; BLOCK QTY [704 Sqm] | 43,648 | 30 | REM | 1AP5SPRF30 | DUKHCON1AP5STRF2060 | DUKHCONP1AZ5STRF2060 | DH | CON | 1A | Z5 | ST | SP | RF | B02 | B02-D03 | RES-1A |  |
| DUKHCONP1AZ5STRF2065 |  | Construction of up stands/Plinth | 25d | 2014-03-23 | 2014-04-20 | DUKHCONP1AZ4STRF2065, DUKHCONP1AZ5STRF2060 SS+5d, DUKHCONP1AZ5STRF2060 FF+5d | 28d | 0d | STEEL FIXERS SK [45 h]; CARPENTERS SK [256 h]; CONCRETE MASON SK [16 h]; LABOR- SUBCONTRACTOR [237.75 h]; REINFORCEMENT BARS QTY [559 kg]; FORMWORK QTY [128 Sqm]; CONCRETE QTY [8 Cum] | 12,624 | 35 | REM | 1AP5SPRF35 | DUKHCON1AP5STRF2065 | DUKHCONP1AZ5STRF2065 | DH | CON | 1A | Z5 | ST | SP | RF | B02 | B02-D02 | RES-1A |  |
|  | 15 | **FINISHING WORKS** |  | 2014-02-05 | 2014-08-16 |  |  |  |  |  |  |  |  |  |  |  |  |  |  |  |  |  |  |  |  |  |
|  | 10 | **INTERNAL FINISHES** |  | 2014-02-05 | 2014-08-16 |  |  |  |  |  |  |  |  |  |  |  |  |  |  |  |  |  |  |  |  |  |
|  | 10 | **GROUND FLOOR** |  | 2014-02-05 | 2014-07-19 |  |  |  |  |  |  |  |  |  |  |  |  |  |  |  |  |  |  |  |  |  |
| DUKHCONP1AZ5ARGF3000 |  | Block work | 25d | 2014-02-05 | 2014-03-06 | DUKHCONP1AZ5STGF2015 FF+21d, DUKHCONP1AZ4ARGF3000, DUKHCONP1AZ5STGF2015 SS+21d | -6d | 0d | BLOCK MASON SK [6232 h]; LABOR- SUBCONTRACTOR [3505.5 h]; BLOCK QTY [3116 Sqm] | 225,562 | 10 | REM | 1AP5IFGF10 | DUKHCON1AP5ARGF3000 | DUKHCONP1AZ5ARGF3000 | DH | CON | 1A | Z5 | FIN | IF | GF | B02 | B02-D03 | RES-1A |  |
| DUKHCONP1AZ5ARGF3005 |  | Plastering work | 25d | 2014-03-01 | 2014-03-29 | DUKHCONP1AZ5PLGF4305 FF+5d, DUKHCONP1AZ5ARGF3000 FF+7d, DUKHCONP1AZ4ARGF3005, DUKHCONP1AZ5ELGF4000 SS+5d, DUKHCONP1AZ5ARGF3000 SS+7d, DUKHCONP1AZ5ELGF4000 FF+5d, DUKHCONP1AZ5PLGF4305 SS+5d | -6d | 0d | PLASTER MASON SK [8728 h]; LABOR- SUBCONTRACTOR [4909.5 h]; PLASTER QTY [5455 Sqm] | 71,593 | 12 | REM | 1AP5IFGF12 | DUKHCON1AP5ARGF3005 | DUKHCONP1AZ5ARGF3005 | DH | CON | 1A | Z5 | FIN | IF | GF | B02 | B02-D10 | RES-1A |  |
| DUKHCONP1AZ5ARGF3010 |  | Flooring screed | 21d | 2014-03-09 | 2014-04-01 | DUKHCONP1AZ5ARGF3005 FF+3d, DUKHCONP1AZ5ARGF3005 SS+7d | 2d | 8d | SCREED MASON SK [1149 h]; LABOR- SUBCONTRACTOR [431.25 h]; FLOORING SCREED QTY [1436 Sqm] | 48,008 | 15 | REM | 1AP5IFGF15 | DUKHCON1AP5ARGF3010 | DUKHCONP1AZ5ARGF3010 | DH | CON | 1A | Z5 | FIN | IF | GF | B02 | B02-D10 | RES-1A |  |
| DUKHCONP1AZ5ARGF3015 |  | Wet area waterproofing & Protection Screed | 15d | 2014-03-18 | 2014-04-03 | DUKHCONP1AZ5ARGF3005 FF+5d, DUKHCONP1AZ4ARGF3015, DUKHCONP1AZ5ARGF3005 SS+7d | -6d | 0d | LABOR- SUBCONTRACTOR [67.5 h]; WETAREA WATERPROOFING QTY [224 Sqm]; WATERPROOFING SPECIALIST SK [180 h] | 7,616 | 18 | REM | 1AP5IFGF18 | DUKHCON1AP5ARGF3015 | DUKHCONP1AZ5ARGF3015 | DH | CON | 1A | Z5 | FIN | IF | GF | B02 | B02-D10 | RES-1A |  |
| DUKHCONP1AZ5ARGF3030 |  | Paint First coat | 25d | 2014-03-20 | 2014-04-17 | DUKHCONP1AZ5ARGF3005 SS+14d, DUKHCONP1AZ5ARGF3005 FF+14d, DUKHCONP1AZ4ARGF3030 | 5d | 0d | LABOR- SUBCONTRACTOR [1479.75 h]; FIRSTCOAT PAINT QTY [4932 Sqm]; PAINTERS SK [3946 h] | 26,608 | 21 | REM | 1AP5IFGF21 | DUKHCON1AP5ARGF3030 | DUKHCONP1AZ5ARGF3030 | DH | CON | 1A | Z5 | FIN | IF | GF | B02 | B02-D11 | RES-1A | ENT |
| DUKHCONP1AZ5ARGF3020 |  | Ceramic Wall Tiling | 25d | 2014-03-24 | 2014-04-21 | DUKHCONP1AZ5PLGF4305 SS+4d, DUKHCONP1AZ5PLGF4310 SS+4d, DUKHCONP1AZ5ARGF3015 FF+5d, DUKHCONP1AZ4ARGF3020, DUKHCONP1AZ5PLGF4305 FF+4d, DUKHCONP1AZ5PLGF4310 FF+4d, DUKHCONP1AZ5ARGF3015 SS+5d | -6d | 0d | TILE MASON SK [2834 h]; LABOR- SUBCONTRACTOR [1594.5 h]; CERAMIC WALL TILE QTY [1417 Sqm] | 92,597 | 24 | REM | 1AP5IFGF24 | DUKHCON1AP5ARGF3020 | DUKHCONP1AZ5ARGF3020 | DH | CON | 1A | Z5 | FIN | IF | GF | B02 | B02-D10 | RES-1A |  |
| DUKHCONP1AZ5ARGF3025 |  | Porcelain Tile flooring | 25d | 2014-03-30 | 2014-04-27 | DUKHCONP1AZ5ARGF3010 SS+10d, DUKHCONP1AZ5ARGF3020 SS+5d, DUKHCONP1AZ5ARGF3010 FF+10d, DUKHCONP1AZ4ARGF3025, DUKHCONP1AZ5ARGF3020 FF+5d | -6d | 0d | TILE MASON SK [1116 h]; LABOR- SUBCONTRACTOR [627.75 h]; PORCELAIN FLOORING QTY [976 Sqm] | 74,919 | 27 | REM | 1AP5IFGF27 | DUKHCON1AP5ARGF3025 | DUKHCONP1AZ5ARGF3025 | DH | CON | 1A | Z5 | FIN | IF | GF | B02 | B02-D10 | RES-1A |  |
| DUKHCONP1AZ5ARGF3045 |  | Fixing of Suspension systems | 20d | 2014-04-16 | 2014-05-08 | DUKHCONP1AZ4ARGF3045, DUKHCONP1AZ5ARGF3030 SS+7d, DUKHCONP1AZ5ARGF3025 FF+10d, DUKHCONP1AZ5ELGF4010 FF+5d, DUKHCONP1AZ5ELGF4010 SS+5d, DUKHCONP1AZ5ARGF3025 SS+10d, DUKHCONP1AZ5ARGF3030 FF+7d | -6d | 0d | LABOR- SUBCONTRACTOR [523.82 h]; SUSPENSION QTY [1164.04 Sqm]; FALSE CEILING SKILLED SK [931.23 h] | 22,840 | 39 | REM | 1AP5IFGF39 | DUKHCON1AP5ARGF3045 | DUKHCONP1AZ5ARGF3045 | DH | CON | 1A | Z5 | FIN | IF | GF | B02 | B02-D10 | RES-1A | SUS |
| DUKHCONP1AZ5ARGF3035 |  | Slate Tile Flooring & Skirting | 15d | 2014-04-19 | 2014-05-05 | DUKHCONP1AZ5ARGF3010 FF+13d, DUKHCONP1AZ5ARGF3010 SS+13d, DUKHCONP1AZ5ARGF3025 FF+7d, DUKHCONP1AZ5ARGF3025 SS+13d | -1d | 2d | TILE MASON SK [487 h]; LABOR- SUBCONTRACTOR [274.5 h]; SLATE TILE QTY [304 Sqm] | 65,885 | 33 | REM | 1AP5IFGF33 | DUKHCON1AP5ARGF3035 | DUKHCONP1AZ5ARGF3035 | DH | CON | 1A | Z5 | FIN | IF | GF | B02 | B02-D10 | RES-1A |  |
| DUKHCONP1AZ5ARGF3055 |  | Aluminum tile false ceiling | 25d | 2014-04-24 | 2014-05-22 | DUKHCONP1AZ5ACGF4600 FF+7d, DUKHCONP1AZ5ACGF4600 SS+7d, DUKHCONP1AZ5ARGF3045 FF+7d, DUKHCONP1AZ5ARGF3045 SS+7d | -3d | 3d | LABOR- SUBCONTRACTOR [54 h]; FALSE CEILING QTY [120 Sqm]; FALSE CEILING SKILLED SK [96 h] | 7,661 | 42 | REM | 1AP5IFGF42 | DUKHCON1AP5ARGF3055 | DUKHCONP1AZ5ARGF3055 | DH | CON | 1A | Z5 | FIN | IF | GF | B02 | B02-D10 | RES-1A | ALU |
| DUKHCONP1AZ5ARGF3040 |  | Cobble Tile flooring | 15d | 2014-04-26 | 2014-05-12 | DUKHCONP1AZ5ARGF3010 SS+13d, DUKHCONP1AZ5ARGF3035 FF+4d, DUKHCONP1AZ5ARGF3025 SS+13d, DUKHCONP1AZ5ARGF3025 FF+13d, DUKHCONP1AZ5ARGF3035 SS+4d, DUKHCONP1AZ5ARGF3010 FF+13d | -3d | 0d | TILE MASON SK [474 h]; LABOR- SUBCONTRACTOR [267 h]; COBBLE STONE QTY [296 Sqm] | 24,687 | 30 | REM | 1AP5IFGF30 | DUKHCON1AP5ARGF3040 | DUKHCONP1AZ5ARGF3040 | DH | CON | 1A | Z5 | FIN | IF | GF | B02 | B02-D10 | RES-1A |  |
| DUKHCONP1AZ5ARGF3060 |  | Gypsum board false ceiling | 25d | 2014-04-28 | 2014-05-26 | DUKHCONP1AZ5ARGF3045 FF+10d, DUKHCONP1AZ4ARGF3060, DUKHCONP1AZ5ACGF4600 FF+7d, DUKHCONP1AZ5ARGF3045 SS+10d, DUKHCONP1AZ5ACGF4600 SS+7d | -6d | 0d | LABOR- SUBCONTRACTOR [480.75 h]; FALSE CEILING QTY [1068.04 Sqm]; FALSE CEILING SKILLED SK [854.4 h] | 60,827 | 45 | REM | 1AP5IFGF45 | DUKHCON1AP5ARGF3060 | DUKHCONP1AZ5ARGF3060 | DH | CON | 1A | Z5 | FIN | IF | GF | B02 | B02-D10 | RES-1A | GYP |
| DUKHCONP1AZ5ARGF3050 |  | Granite - Stair case flooring & Skirting | 20d | 2014-05-04 | 2014-05-26 | DUKHCONP1AZ5ARGF3040 SS+7d, DUKHCONP1AZ5ARGF3025 SS+13d, DUKHCONP1AZ5ARGF3040 FF+7d, DUKHCONP1AZ5ARGF3025 FF+13d | -3d | 0d | GRANITE MASON SK [560 h]; LABOR- SUBCONTRACTOR [315 h]; GRANITE QTY [140 Sqm] | 93,589 | 36 | REM | 1AP5IFGF36 | DUKHCON1AP5ARGF3050 | DUKHCONP1AZ5ARGF3050 | DH | CON | 1A | Z5 | FIN | IF | GF | B02 | B02-D10 | RES-1A |  |
| DUKHCONP1AZ5ARGF3065 |  | Wooden door & PVC Door | 15d | 2014-05-18 | 2014-06-03 | DUKHCONP1AZ5ARGF3050 SS+7d, DUKHCONP1AZ4ARGF3065, DUKHCONP1AZ5ARGF3050 FF+7d, DUKHCONP1AZ5ARGF3035 SS+7d, DUKHCONP1AZ5ARGF3035 FF+7d | -3d | 0d | WOODEN DOOR QTY [56 ea]; DOOR ERECTOR SK [224 h]; LABOR- SUBCONTRACTOR [84 h] | 233,577 | 48 | REM | 1AP5IFGF48 | DUKHCON1AP5ARGF3065 | DUKHCONP1AZ5ARGF3065 | DH | CON | 1A | Z5 | FIN | IF | GF | B02 | B02-D05 | RES-1A |  |
| DUKHCONP1AZ5ARGF3070 |  | Aluminum doors | 15d | 2014-05-24 | 2014-06-09 | DUKHCONP1AZ5ARGF3065 FF+5d, DUKHCONP1AZ4ARGF3070, DUKHCONP1AZ5ARGF3065 SS+5d | -3d | 0d | LABOR- SUBCONTRACTOR [48 h]; ALUMINIUM DOOR QTY [32 ea]; DOOR ERECTOR SK [128 h] | 83,208 | 51 | REM | 1AP5IFGF51 | DUKHCON1AP5ARGF3070 | DUKHCONP1AZ5ARGF3070 | DH | CON | 1A | Z5 | FIN | IF | GF | B02 | B02-D06 | RES-1A |  |
| DUKHCONP1AZ5ARGF3075 |  | Carpentry & Joinery Works | 20d | 2014-05-29 | 2014-06-21 | DUKHCONP1AZ5ARGF3070 SS+5d, DUKHCONP1AZ4ARGF3075, DUKHCONP1AZ5ARGF3070 FF+7d | -3d | 0d | LABOR- SUBCONTRACTOR [156 h]; CABINET QTY [48 ea]; COUNTER QTY [8 ea]; JOINERY WORK SK [384 h]; COUNTER SK [32 h] | 114,072 | 57 | REM | 1AP5IFGF57 | DUKHCON1AP5ARGF3075 | DUKHCONP1AZ5ARGF3075 | DH | CON | 1A | Z5 | FIN | IF | GF | B02 | B02-D05 | RES-1A |  |
| DUKHCONP1AZ5ARGF3080 |  | Aluminum windows | 20d | 2014-05-31 | 2014-06-22 | DUKHCONP1AZ4ARGF3080, DUKHCONP1AZ5ARGF3070 FF+6d, DUKHCONP1AZ5ARGF3070 SS+6d | 7d | 5d | LABOR- SUBCONTRACTOR [44.25 h]; ALUMINIUM WINDOWS QTY [44 ea]; WINDOW ERECTOR SK [118 h] | 36,283 | 54 | REM | 1AP5IFGF54 | DUKHCON1AP5ARGF3080 | DUKHCONP1AZ5ARGF3080 | DH | CON | 1A | Z5 | FIN | IF | GF | B02 | B02-D06 | RES-1A |  |
| DUKHCONP1AZ5ARGF3085 |  | S.S.Balustrade | 20d | 2014-06-07 | 2014-06-29 | DUKHCONP1AZ5ARGF3050 SS+7d, DUKHCONP1AZ5ARGF3075 SS+7d, DUKHCONP1AZ5ARGF3050 FF+7d, DUKHCONP1AZ5ARGF3075 FF+7d | 2d | 5d | LABOR- SUBCONTRACTOR [94.5 h]; S.S.BALUSTRADE QTY [84 lm]; HANDRAIL ERECTOR SKILLED [168 h] | 121,464 | 63 | REM | 1AP5IFGF63 | DUKHCON1AP5ARGF3085 | DUKHCONP1AZ5ARGF3085 | DH | CON | 1A | Z5 | FIN | IF | GF | B02 | B02-D06 | RES-1A |  |
| DUKHCONP1AZ5ARGF3090 |  | Installation of Granite Counter Top | 15d | 2014-06-11 | 2014-06-28 | DUKHCONP1AZ5ARGF3075 FF+6d, DUKHCONP1AZ5ARGF3075 SS+7d | -3d | 0d | GRANITE MASON SK [128 h]; LABOR- SUBCONTRACTOR [48 h]; GRANITE COUNTER TOP QTY [32 ea] | 34,847 | 60 | REM | 1AP5IFGF60 | DUKHCON1AP5ARGF3090 | DUKHCONP1AZ5ARGF3090 | DH | CON | 1A | Z5 | FIN | IF | GF | B02 | B02-D10 | RES-1A |  |
| DUKHCONP1AZ5ARGF3095 |  | Final Painting | 25d | 2014-06-21 | 2014-07-19 | DUKHCONP1AZ5ARGF3040 SS+13d, DUKHCONP1AZ5ARGF3035 FF+13d, DUKHCONP1AZ5ARGF3060 SS+8d, DUKHCONP1AZ5ARGF3085 FF+7d, DUKHCONP1AZ5ACGF4610 FF+10d, DUKHCONP1AZ5ARGF3030 FF+10d, DUKHCONP1AZ5ARGF3070 SS+5d, DUKHCONP1AZ4ARGF3095, DUKHCONP1AZ5ARGF3060 FF+8d, DUKHCONP1AZ5ARGF3090 SS+8d, DUKHCONP1AZ5ARGF3040 FF+13d, DUKHCONP1AZ5ARGF3085 SS+7d, DUKHCONP1AZ5ARGF3030 SS+10d, DUKHCONP1AZ5ARGF3080 FF+8d, DUKHCONP1AZ5ARGF3090 FF+8d, DUKHCONP1AZ5ARGF3035 SS+13d, DUKHCONP1AZ5ACGF4610 SS+10d, DUKHCONP1AZ5ARGF3070 FF+5d, DUKHCONP1AZ5ARGF3080 SS+8d | -3d | 0d | LABOR- SUBCONTRACTOR [1479.75 h]; PAINT QTY [4932 Sqm]; PAINTERS SK [3946 h] | 61,805 | 66 | REM | 1AP5IFGF66 | DUKHCON1AP5ARGF3095 | DUKHCONP1AZ5ARGF3095 | DH | CON | 1A | Z5 | FIN | IF | GF | B02 | B02-D11 | RES-1A | PNT |

Notes:
- DUKHCONP1AZ5STGF2000: Expenses: P1A-Concrete Works 73433
- DUKHCONP1AZ5STGF2005: Expenses: P1A-Concrete Works 20945
- DUKHCONP1AZ5STGF2010: Expenses: P1A-Concrete Works 326549
- DUKHCONP1AZ5STGF2015: Expenses: P1A-Concrete Works 131494
- DUKHCONP1AZ5STFF2020: Expenses: P1A-Concrete Works 64915
- DUKHCONP1AZ5STFF2025: Expenses: P1A-Concrete Works 18331
- DUKHCONP1AZ5STFF2030: Expenses: P1A-Concrete Works 310154
- DUKHCONP1AZ5STFF2035: Expenses: P1A-Concrete Works 119102
- DUKHCONP1AZ5STRF2040: Expenses: P1A-Concrete Works 21168
- DUKHCONP1AZ5STRF2045: Expenses: P1A-Concrete Works 4363
- DUKHCONP1AZ5STRF2050: Expenses: P1A-Concrete Works 61496
- DUKHCONP1AZ5STRF2055: Expenses: P1A-Concrete Works 22960
- DUKHCONP1AZ5STRF2060: Expenses: P1A-Block work 43648
- DUKHCONP1AZ5STRF2065: Expenses: P1A-Concrete Works 12624
- DUKHCONP1AZ5ARGF3000: Expenses: P1A-Block work 225562
- DUKHCONP1AZ5ARGF3005: Expenses: P1A-Finishes 71593
- DUKHCONP1AZ5ARGF3010: Expenses: P1A-Finishes 48008
- DUKHCONP1AZ5ARGF3015: Expenses: P1A-Finishes 7616
- DUKHCONP1AZ5ARGF3030: Expenses: P1A-Painting and Decorating 26608
- DUKHCONP1AZ5ARGF3020: Expenses: P1A-Finishes 92597
- DUKHCONP1AZ5ARGF3025: Expenses: P1A-Finishes 74919
- DUKHCONP1AZ5ARGF3045: Expenses: P1A-Finishes 22840
- DUKHCONP1AZ5ARGF3035: Expenses: P1A-Finishes 65885
- DUKHCONP1AZ5ARGF3055: Expenses: P1A-Finishes 7661
- DUKHCONP1AZ5ARGF3040: Expenses: P1A-Finishes 24687
- DUKHCONP1AZ5ARGF3060: Expenses: P1A-Finishes 60827
- DUKHCONP1AZ5ARGF3050: Expenses: P1A-Finishes 93589
- DUKHCONP1AZ5ARGF3065: Expenses: P1A-Carpentry and Joinery 233577
- DUKHCONP1AZ5ARGF3070: Expenses: P1A-Metal work 83208
- DUKHCONP1AZ5ARGF3075: Expenses: P1A-Carpentry and Joinery 114072
- DUKHCONP1AZ5ARGF3080: Expenses: P1A-Metal work 36283
- DUKHCONP1AZ5ARGF3085: Expenses: P1A-Metal work 121464
- DUKHCONP1AZ5ARGF3090: Expenses: P1A-Finishes 34847
- DUKHCONP1AZ5ARGF3095: Expenses: P1A-Painting and Decorating 61805

| ID | WBS | Activity | Duration | Start | Finish | Predecessors | Total float | Free float | Resources | Cost | CODE | rem | P3 ACTID | P6 ID (old) | NP61D | PROJECT | PHASES | PACKAGE | PART | ELEMENTS | STEP | FLOORS | BILL NOS | BILL DIVISION | RES PACK | EXECUTER |
| --- | --- | --- | --- | --- | --- | --- | --- | --- | --- | --- | --- | --- | --- | --- | --- | --- | --- | --- | --- | --- | --- | --- | --- | --- | --- | --- |
|  | 15 | **FIRST FLOORS** |  | 2014-03-20 | 2014-08-16 |  |  |  |  |  |  |  |  |  |  |  |  |  |  |  |  |  |  |  |  |  |
| DUKHCONP1AZ5ARFF3300 |  | Block work | 25d | 2014-03-20 | 2014-04-17 | DUKHCONP1AZ5STFF2020 FF+21d, DUKHCONP1AZ5STFF2020 SS+21d, DUKHCONP1AZ5STFF2035 SS+21d, DUKHCONP1AZ5STFF2035 FF+21d, DUKHCONP1AZ4ARFF3300 | -24d | 0d | BLOCK MASON SK [4088 h]; LABOR- SUBCONTRACTOR [2299.5 h]; BLOCK QTY [2044 Sqm] | 127,687 | 10 | REM | 1AP5IFFF10 | DUKHCON1AP5ARFF3300 | DUKHCONP1AZ5ARFF3300 | DH | CON | 1A | Z5 | FIN | IF | FF | B02 | B02-D03 | RES-1A |  |
| DUKHCONP1AZ5ARFF3305 |  | Plastering work | 25d | 2014-04-14 | 2014-05-12 | DUKHCONP1AZ5ARFF3300 FF+7d, DUKHCONP1AZ4ARFF3305, DUKHCONP1AZ5PLFF4325 FF+6d, DUKHCONP1AZ5ELFF4035 FF+5d, DUKHCONP1AZ5ARFF3300 SS+7d, DUKHCONP1AZ5ELFF4035 SS+5d, DUKHCONP1AZ5PLFF4325 SS+6d | -24d | 0d | PLASTER MASON SK [5695 h]; LABOR- SUBCONTRACTOR [3204 h]; PLASTER QTY [3559 Sqm] | 46,951 | 12 | REM | 1AP5IFFF12 | DUKHCON1AP5ARFF3305 | DUKHCONP1AZ5ARFF3305 | DH | CON | 1A | Z5 | FIN | IF | FF | B02 | B02-D10 | RES-1A |  |
| DUKHCONP1AZ5ARFF3310 |  | Flooring screed | 21d | 2014-04-22 | 2014-05-15 | DUKHCONP1AZ5ARFF3305 SS+7d, DUKHCONP1AZ5ARFF3305 FF+3d | -12d | 12d | SCREED MASON SK [884 h]; LABOR- SUBCONTRACTOR [331.5 h]; FLOORING SCREED QTY [1105 Sqm] | 36,472 | 15 | REM | 1AP5IFFF15 | DUKHCON1AP5ARFF3310 | DUKHCONP1AZ5ARFF3310 | DH | CON | 1A | Z5 | FIN | IF | FF | B02 | B02-D10 | RES-1A |  |
| DUKHCONP1AZ5ARFF3330 |  | Paint First coat | 25d | 2014-04-30 | 2014-05-28 | DUKHCONP1AZ5ARFF3305 SS+14d, DUKHCONP1AZ5ARFF3305 FF+14d | -10d | 14d | LABOR- SUBCONTRACTOR [1293.75 h]; FIRSTCOAT PAINT QTY [4311.37 Sqm]; PAINTERS SK [3449 h] | 26,608 | 21 | REM | 1AP5IFFF21 | DUKHCON1AP5ARFF3330 | DUKHCONP1AZ5ARFF3330 | DH | CON | 1A | Z5 | FIN | IF | FF | B02 | B02-D11 | RES-1A | ENT |
| DUKHCONP1AZ5ARFF3315 |  | Wet area waterproofing | 15d | 2014-05-04 | 2014-05-20 | DUKHCONP1AZ4ARFF3315, DUKHCONP1AZ5ARFF3305 SS+7d, DUKHCONP1AZ5ARFF3305 FF+7d | -24d | 0d | LABOR- SUBCONTRACTOR [331.5 h]; WETAREA WATERPROOFING QTY [1104 Sqm]; WATERPROOFING SPECIALIST SK [884 h] | 36,704 | 18 | REM | 1AP5IFFF18 | DUKHCON1AP5ARFF3315 | DUKHCONP1AZ5ARFF3315 | DH | CON | 1A | Z5 | FIN | IF | FF | B02 | B02-D10 | RES-1A |  |
| DUKHCONP1AZ5ARFF3320 |  | Ceramic Wall Tiling | 25d | 2014-05-11 | 2014-06-08 | DUKHCONP1AZ5PLFF4330 FF+7d, DUKHCONP1AZ5PLFF4325 SS+4d, DUKHCONP1AZ4ARFF3320, DUKHCONP1AZ5ARFF3315 FF+6d, DUKHCONP1AZ5PLFF4325 FF+4d, DUKHCONP1AZ5PLFF4330 SS+7d, DUKHCONP1AZ5ARFF3315 SS+6d | -24d | 0d | TILE MASON SK [1214 h]; LABOR- SUBCONTRACTOR [683.25 h]; CERAMIC WALL TILE QTY [607 Sqm] | 42,941 | 24 | REM | 1AP5IFFF24 | DUKHCON1AP5ARFF3320 | DUKHCONP1AZ5ARFF3320 | DH | CON | 1A | Z5 | FIN | IF | FF | B02 | B02-D10 | RES-1A |  |
| DUKHCONP1AZ5ARFF3325 |  | Porcelain Tile flooring | 25d | 2014-05-18 | 2014-06-15 | DUKHCONP1AZ4ARFF3325, DUKHCONP1AZ5ARFF3310 FF+10d, DUKHCONP1AZ5ARFF3320 SS+6d, DUKHCONP1AZ5ARFF3320 FF+6d, DUKHCONP1AZ5ARFF3310 SS+10d | -24d | 0d | TILE MASON SK [1116 h]; LABOR- SUBCONTRACTOR [627.75 h]; PORCELAIN FLOORING QTY [976 Sqm] | 74,923 | 27 | REM | 1AP5IFFF27 | DUKHCON1AP5ARFF3325 | DUKHCONP1AZ5ARFF3325 | DH | CON | 1A | Z5 | FIN | IF | FF | B02 | B02-D10 | RES-1A |  |
| DUKHCONP1AZ5ARFF3345 |  | Fixing of Suspension systems | 20d | 2014-05-31 | 2014-06-22 | DUKHCONP1AZ5ARFF3330 FF+7d, DUKHCONP1AZ4ARFF3345, DUKHCONP1AZ5ARFF3325 SS+6d, DUKHCONP1AZ5ARFF3325 FF+6d, DUKHCONP1AZ5ELFF4045 FF+5d, DUKHCONP1AZ5ELFF4045 SS+5d, DUKHCONP1AZ5ARFF3330 SS+7d | -24d | 0d | LABOR- SUBCONTRACTOR [469.8 h]; SUSPENSION QTY [1044 Sqm]; FALSE CEILING SKILLED SK [835.2 h] | 19,648 | 36 | REM | 1AP5IFFF36 | DUKHCON1AP5ARFF3345 | DUKHCONP1AZ5ARFF3345 | DH | CON | 1A | Z5 | FIN | IF | FF | B02 | B02-D10 | RES-1A | SUS |
| DUKHCONP1AZ5ARFF3335 |  | Slate Tile Flooring & Skirting | 15d | 2014-06-04 | 2014-06-21 | DUKHCONP1AZ5ARFF3325 FF+5d, DUKHCONP1AZ5ARFF3310 FF+13d, DUKHCONP1AZ5ARFF3325 SS+13d, DUKHCONP1AZ5ARFF3310 SS+13d | -16d | 8d | TILE MASON SK [167 h]; LABOR- SUBCONTRACTOR [94.5 h]; SLATE TILE QTY [104 Sqm] | 20,405 | 30 | REM | 1AP5IFFF30 | DUKHCON1AP5ARFF3335 | DUKHCONP1AZ5ARFF3335 | DH | CON | 1A | Z5 | FIN | IF | FF | B02 | B02-D10 | RES-1A |  |
| DUKHCONP1AZ5ARFF3360 |  | Gypsum board false ceiling | 25d | 2014-06-07 | 2014-07-05 | DUKHCONP1AZ5ARFF3345 FF+6d, DUKHCONP1AZ5ACFF4615 SS+7d, DUKHCONP1AZ5ACFF4615 FF+7d, DUKHCONP1AZ4ARFF3360, DUKHCONP1AZ5ARFF3345 SS+6d | -24d | 0d | LABOR- SUBCONTRACTOR [469.8 h]; FALSE CEILING QTY [1044 Sqm]; FALSE CEILING SKILLED SK [835.2 h] | 60,821 | 39 | REM | 1AP5IFFF39 | DUKHCON1AP5ARFF3360 | DUKHCONP1AZ5ARFF3360 | DH | CON | 1A | Z5 | FIN | IF | FF | B02 | B02-D10 | RES-1A | GYP |
| DUKHCONP1AZ5ARFF3350 |  | Granite - Stair case flooring & Skirting | 20d | 2014-06-08 | 2014-06-30 | DUKHCONP1AZ5ARFF3325 FF+13d, DUKHCONP1AZ5ARFF3325 SS+13d | -22d | 2d | GRANITE MASON SK [560 h]; LABOR- SUBCONTRACTOR [315 h]; GRANITE QTY [140 Sqm] | 93,598 | 33 | REM | 1AP5IFFF33 | DUKHCON1AP5ARFF3350 | DUKHCONP1AZ5ARFF3350 | DH | CON | 1A | Z5 | FIN | IF | FF | B02 | B02-D10 | RES-1A |  |
| DUKHCONP1AZ5ARFF3365 |  | Wooden door | 15d | 2014-06-22 | 2014-07-08 | DUKHCONP1AZ4ARFF3365, DUKHCONP1AZ5ARFF3335 FF+7d, DUKHCONP1AZ5ARFF3350 FF+5d, DUKHCONP1AZ5ARFF3360 FF+3d, DUKHCONP1AZ5ARFF3350 SS+5d, DUKHCONP1AZ5ARFF3335 SS+7d, DUKHCONP1AZ5ARFF3360 SS+3d | -24d | 0d | LABOR- SUBCONTRACTOR [84 h]; WOODEN DOOR QTY [56 ea]; DOOR ERECTOR SK [224 h] | 152,394 | 42 | REM | 1AP5IFFF42 | DUKHCON1AP5ARFF3365 | DUKHCONP1AZ5ARFF3365 | DH | CON | 1A | Z5 | FIN | IF | FF | B02 | B02-D05 | RES-1A |  |
| DUKHCONP1AZ5ARFF3370 |  | Aluminum Door | 20d | 2014-06-22 | 2014-07-14 | DUKHCONP1AZ5ARFF3365 FF, DUKHCONP1AZ4ARFF3370, DUKHCONP1AZ5ARFF3365 SS | -24d | 0d | LABOR- SUBCONTRACTOR [60 h]; ALUMINIUM DOOR QTY [40 ea]; DOOR ERECTOR SK [160 h] | 122,026 | 45 | REM | 1AP5IFFF45 | DUKHCON1AP5ARFF3370 | DUKHCONP1AZ5ARFF3370 | DH | CON | 1A | Z5 | FIN | IF | FF | B02 | B02-D06 | RES-1A |  |
| DUKHCONP1AZ5ARFF3375 |  | Carpentry & Joinery Works | 25d | 2014-06-28 | 2014-07-26 | DUKHCONP1AZ5ARFF3370 FF+5d, DUKHCONP1AZ5ARFF3370 SS+5d, DUKHCONP1AZ4ARFF3375 | -24d | 0d | LABOR- SUBCONTRACTOR [300 h]; CABINET QTY [24 ea]; COUNTER QTY [24 ea]; WARDROBE QTY [40 ea]; SHELVES QTY [24 ea]; JOINERY WORK SK [704 h]; COUNTER SK [96 h] | 231,933 | 51 | REM | 1AP5IFFF51 | DUKHCON1AP5ARFF3375 | DUKHCONP1AZ5ARFF3375 | DH | CON | 1A | Z5 | FIN | IF | FF | B02 | B02-D05 | RES-1A |  |
| DUKHCONP1AZ5ARFF3380 |  | Aluminum windows | 20d | 2014-06-29 | 2014-07-21 | DUKHCONP1AZ5ARFF3370 SS+6d, DUKHCONP1AZ5ARFF3370 FF+6d | -20d | 4d | LABOR- SUBCONTRACTOR [44.25 h]; ALUMINIUM WINDOWS QTY [44 ea]; WINDOW ERECTOR SK [118 h] | 55,776 | 48 | REM | 1AP5IFFF48 | DUKHCON1AP5ARFF3380 | DUKHCONP1AZ5ARFF3380 | DH | CON | 1A | Z5 | FIN | IF | FF | B02 | B02-D06 | RES-1A |  |
| DUKHCONP1AZ5ARFF3385 |  | Handrail & Balustrade | 20d | 2014-07-09 | 2014-07-31 | DUKHCONP1AZ5ARFF3350 SS+7d, DUKHCONP1AZ5ARFF3350 FF+7d, DUKHCONP1AZ5ARFF3375 FF+5d, DUKHCONP1AZ5ARFF3375 SS+5d | -24d | 0d | LABOR- SUBCONTRACTOR [283.5 h]; S.S.BALUSTRADE QTY [252 lm]; HANDRAIL ERECTOR SKILLED [504 h] | 308,447 | 57 | REM | 1AP5IFFF57 | DUKHCON1AP5ARFF3385 | DUKHCONP1AZ5ARFF3385 | DH | CON | 1A | Z5 | FIN | IF | FF | B02 | B02-D06 | RES-1A |  |
| DUKHCONP1AZ5ARFF3390 |  | Installation of Granite Counter Top | 20d | 2014-07-09 | 2014-07-31 | DUKHCONP1AZ5ARFF3375 SS+6d, DUKHCONP1AZ5ARFF3375 FF+5d | -23d | 1d | GRANITE MASON SK [64 h]; LABOR- SUBCONTRACTOR [24 h]; GRANITE COUNTER TOP QTY [16 ea] | 7,594 | 54 | REM | 1AP5IFFF54 | DUKHCON1AP5ARFF3390 | DUKHCONP1AZ5ARFF3390 | DH | CON | 1A | Z5 | FIN | IF | FF | B02 | B02-D10 | RES-1A |  |
| DUKHCONP1AZ5ARFF3395 |  | Final Painting | 25d | 2014-07-15 | 2014-08-16 | DUKHCONP1AZ5ARFF3390 FF+6d, DUKHCONP1AZ5ARFF3360 SS+10d, DUKHCONP1AZ5ARFF3380 SS+10d, DUKHCONP1AZ5ARFF3390 SS+4d, DUKHCONP1AZ5ACFF4625 FF+6d, DUKHCONP1AZ5ARFF3335 FF+8d, DUKHCONP1AZ5ARFF3375 SS+8d, DUKHCONP1AZ5ARFF3330 SS+10d, DUKHCONP1AZ5ARFF3335 SS+8d, DUKHCONP1AZ5ARFF3350 FF+8d, DUKHCONP1AZ5ARFF3385 SS+5d, DUKHCONP1AZ5ARFF3365 SS+8d, DUKHCONP1AZ5ARFF3375 FF+8d, DUKHCONP1AZ5ARFF3385 FF+5d, DUKHCONP1AZ4ARFF3395, DUKHCONP1AZ5ACFF4625 SS+6d, DUKHCONP1AZ5ARFF3330 FF+10d, DUKHCONP1AZ5ARFF3350 SS+8d, DUKHCONP1AZ5ARFF3360 FF+10d, DUKHCONP1AZ5ARFF3365 FF+8d, DUKHCONP1AZ5ARFF3380 FF+10d | -24d | 0d | LABOR- SUBCONTRACTOR [1293.75 h]; PAINT QTY [4311.37 Sqm]; PAINTERS SK [3449 h] | 50,803 | 60 | REM | 1AP5IFFF60 | DUKHCON1AP5ARFF3395 | DUKHCONP1AZ5ARFF3395 | DH | CON | 1A | Z5 | FIN | IF | FF | B02 | B02-D11 | RES-1A | PNT |
|  | 20 | **ROOF** |  | 2014-04-03 | 2014-06-07 |  |  |  |  |  |  |  |  |  |  |  |  |  |  |  |  |  |  |  |  |  |
| DUKHCONP1AZ5ARRF3600 |  | Block work | 20d | 2014-04-03 | 2014-04-26 | DUKHCONP1AZ5STRF2055 FF+21d, DUKHCONP1AZ5STRF2055 SS+21d, DUKHCONP1AZ4ARRF3600 | 28d | 0d | BLOCK MASON SK [448 h]; LABOR- SUBCONTRACTOR [252 h]; BLOCK QTY [224 Sqm] | 17,789 | 10 | REM | 1AP5IFRF10 | DUKHCON1AP5ARRF3600 | DUKHCONP1AZ5ARRF3600 | DH | CON | 1A | Z5 | FIN | IF | RF | B02 | B02-D03 | RES-1A |  |
| DUKHCONP1AZ5ARRF3605 |  | Plastering work | 20d | 2014-04-12 | 2014-05-04 | DUKHCONP1AZ5ARRF3600 SS+7d, DUKHCONP1AZ5ARRF3600 FF+7d | 28d | 0d | PLASTER QTY [714 Sqm]; PLASTER MASON SK [1143 h]; LABOR- SUBCONTRACTOR [643.5 h] | 9,277 | 20 | REM | 1AP5IFRF20 | DUKHCON1AP5ARRF3605 | DUKHCONP1AZ5ARRF3605 | DH | CON | 1A | Z5 | FIN | IF | RF | B02 | B02-D10 | RES-1A |  |
| DUKHCONP1AZ5ARRF3610 |  | Flooring screed | 15d | 2014-04-26 | 2014-05-12 | DUKHCONP1AZ5ARRF3605 FF+7d, DUKHCONP1AZ5ARRF3605 SS+7d | 33d | 0d | SCREED MASON SK [99 h]; LABOR- SUBCONTRACTOR [37.5 h]; FLOORING SCREED QTY [123 Sqm] | 4,056 | 30 | REM | 1AP5IFRF30 | DUKHCON1AP5ARRF3610 | DUKHCONP1AZ5ARRF3610 | DH | CON | 1A | Z5 | FIN | IF | RF | B02 | B02-D10 | RES-1A |  |
| DUKHCONP1AZ5ARRF3695 |  | Painting -Storage area | 20d | 2014-05-04 | 2014-05-26 | DUKHCONP1AZ5ARRF3610 FF+7d, DUKHCONP1AZ5ARRF3610 SS+7d | 33d | 0d | LABOR- SUBCONTRACTOR [456 h]; PAINT QTY [1472 Sqm]; PAINTERS SK [1184 h] | 7,956 | 40 |  | 1AP5IFRF40 | DUKHCON1AP5ARRF3695 | DUKHCONP1AZ5ARRF3695 | DH | CON | 1A | Z5 | FIN | IF | RF | B02 | B02-D11 | RES-1A |  |
| DUKHCONP1AZ5ARRF3620 |  | Epoxy Painting -Storage area | 15d | 2014-05-21 | 2014-06-07 | DUKHCONP1AZ5ARRF3695 SS+10d, DUKHCONP1AZ5ARRF3695 FF+10d | 33d | 57d | LABOR- SUBCONTRACTOR [13.5 h]; EPOXY QTY [64 Sqm]; EPOXY SK [35 h] | 3,216 | 50 | REM | 1AP5IFRF50 | DUKHCON1AP5ARRF3620 | DUKHCONP1AZ5ARRF3620 | DH | CON | 1A | Z5 | FIN | IF | RF | B02 | B02-D11 | RES-1A |  |

Notes:
- DUKHCONP1AZ5ARFF3300: Expenses: P1A-Block work 127687
- DUKHCONP1AZ5ARFF3305: Expenses: P1A-Finishes 46951
- DUKHCONP1AZ5ARFF3310: Expenses: P1A-Finishes 36472
- DUKHCONP1AZ5ARFF3330: Expenses: P1A-Painting and Decorating 26608
- DUKHCONP1AZ5ARFF3315: Expenses: P1A-Finishes 36704
- DUKHCONP1AZ5ARFF3320: Expenses: P1A-Finishes 42941
- DUKHCONP1AZ5ARFF3325: Expenses: P1A-Finishes 74923
- DUKHCONP1AZ5ARFF3345: Expenses: P1A-Finishes 19648
- DUKHCONP1AZ5ARFF3335: Expenses: P1A-Finishes 20405
- DUKHCONP1AZ5ARFF3360: Expenses: P1A-Finishes 60821
- DUKHCONP1AZ5ARFF3350: Expenses: P1A-Finishes 93598
- DUKHCONP1AZ5ARFF3365: Expenses: P1A-Carpentry and Joinery 152394
- DUKHCONP1AZ5ARFF3370: Expenses: P1A-Metal work 122026
- DUKHCONP1AZ5ARFF3375: Expenses: P1A-Carpentry and Joinery 231933
- DUKHCONP1AZ5ARFF3380: Expenses: P1A-Metal work 55776
- DUKHCONP1AZ5ARFF3385: Expenses: P1A-Metal work 308447
- DUKHCONP1AZ5ARFF3390: Expenses: P1A-Finishes 7594
- DUKHCONP1AZ5ARFF3395: Expenses: P1A-Painting and Decorating 50803
- DUKHCONP1AZ5ARRF3600: Expenses: P1A-Block work 17789
- DUKHCONP1AZ5ARRF3605: Expenses: P1A-Finishes 9277
- DUKHCONP1AZ5ARRF3610: Expenses: P1A-Finishes 4056
- DUKHCONP1AZ5ARRF3695: Expenses: P1A-Painting and Decorating 7956
- DUKHCONP1AZ5ARRF3620: Expenses: P1A-Painting and Decorating 3216

| ID | WBS | Activity | Duration | Start | Finish | Predecessors | Total float | Free float | Resources | Cost | CODE | rem | P3 ACTID | P6 ID (old) | NP61D | PROJECT | PHASES | PACKAGE | PART | ELEMENTS | STEP | FLOORS | BILL NOS | BILL DIVISION | RES PACK |
| --- | --- | --- | --- | --- | --- | --- | --- | --- | --- | --- | --- | --- | --- | --- | --- | --- | --- | --- | --- | --- | --- | --- | --- | --- | --- |
|  | 15 | **EXTERNAL FINISHES** |  | 2014-04-26 | 2014-07-13 |  |  |  |  |  |  |  |  |  |  |  |  |  |  |  |  |  |  |  |  |
|  | 10 | **ROOF** |  | 2014-05-10 | 2014-07-13 |  |  |  |  |  |  |  |  |  |  |  |  |  |  |  |  |  |  |  |  |
| DUKHCONP1AZ5ARRF3630 |  | Leveling Screed for Waterproofing | 25d | 2014-05-10 | 2014-06-07 | DUKHCONP1AZ5STRF2065 SS+10d, DUKHCONP1AZ5STRF2060 SS+10d, DUKHCONP1AZ5STRF2060 FF+10d, DUKHCONP1AZ5STRF2065 FF+10d, DUKHCONP1AZ4ARRF3630 | -3d | 0d | SCREED MASON SK [512 h]; LABOR- SUBCONTRACTOR [288 h]; ROOF WP SCREED QTY [1280 Sqm] | 56,792 | 10 | REM | 1AP5EFRF10 | DUKHCON1AP5ARRF3630 | DUKHCONP1AZ5ARRF3630 | DH | CON | 1A | Z5 | FIN | EF | RF | B02 | B02-D04 | RES-1A |
| DUKHCONP1AZ5ARRF3635 |  | Laying of Waterproofing Membrane | 25d | 2014-05-13 | 2014-06-10 | DUKHCONP1AZ5ARRF3630 FF+3d, DUKHCONP1AZ5ARRF3630 SS+3d | -3d | 0d | LABOR- SUBCONTRACTOR [310.5 h]; ROOF WP MEMBRANE QTY [1552 Sqm]; WATERPROOFING SPECIALIST SK [828 h] | 43,994 | 15 | REM | 1AP5EFRF15 | DUKHCON1AP5ARRF3635 | DUKHCONP1AZ5ARRF3635 | DH | CON | 1A | Z5 | FIN | EF | RF | B02 | B02-D04 | RES-1A |
| DUKHCONP1AZ5ARRF3640 |  | Installation of Insulation & Protection | 25d | 2014-05-18 | 2014-06-15 | DUKHCONP1AZ5ARRF3635 FF+4d, DUKHCONP1AZ5ARRF3635 SS+4d | -3d | 0d | LABOR- SUBCONTRACTOR [384 h]; ROOF WP INSULATION QTY [2560 Sqm]; WATERPROOFING SPECIALIST SK [1024 h] | 55,936 | 20 | REM | 1AP5EFRF20 | DUKHCON1AP5ARRF3640 | DUKHCONP1AZ5ARRF3640 | DH | CON | 1A | Z5 | FIN | EF | RF | B02 | B02-D04 | RES-1A |
| DUKHCONP1AZ5ARRF3645 |  | Lime Stone Chips & Paving slab Installation | 25d | 2014-05-22 | 2014-06-19 | DUKHCONP1AZ5ARRF3640 FF+4d, DUKHCONP1AZ5ARRF3640 SS+4d | -3d | 0d | TILE MASON SK [45 h]; LABOR- SUBCONTRACTOR [188.25 h]; LIME STONE QTY [112 Sqm]; PRECAST PAVING SLAB QTY [1136 Sqm]; PRE CAST CONCRETE SK [455 h] | 83,344 | 25 | REM | 1AP5EFRF25 | DUKHCON1AP5ARRF3645 | DUKHCONP1AZ5ARRF3645 | DH | CON | 1A | Z5 | FIN | EF | RF | B02 | B02-D04 | RES-1A |
| DUKHCONP1AZ5ARRF3650 |  | Install. of Gal. Frame & Aluminum Slat Screen | 25d | 2014-05-31 | 2014-06-28 | DUKHCONP1AZ5ARRF3645 SS+7d, DUKHCONP1AZ5ARRF3645 FF+7d | -3d | 0d | LABOR- SUBCONTRACTOR [448.5 h]; ALUMINIUM SCREEN QTY [224 Sqm]; DOOR ERECTOR SK [598 h] | 63,347 | 35 | REM | 1AP5EFRF35 | DUKHCON1AP5ARRF3650 | DUKHCONP1AZ5ARRF3650 | DH | CON | 1A | Z5 | FIN | EF | RF | B02 | B02-D06 | RES-1A |
| DUKHCONP1AZ5ARRF3655 |  | Installation of Pumps Protection cabinets | 20d | 2014-06-15 | 2014-07-07 | DUKHCONP1AZ5ARRF3645 FF+7d, DUKHCONP1AZ5ARRF3645 SS+7d, DUKHCONP1AZ4ARRF3655, DUKHCONP1AZ5ARRF3650 SS+8d, DUKHCONP1AZ5ARRF3650 FF+8d | -3d | 0d | LABOR- SUBCONTRACTOR [168 h]; CABINET QTY [56 ea]; JOINERY WORK SK [448 h] | 26,600 | 30 | REM | 1AP5EFRF30 | DUKHCON1AP5ARRF3655 | DUKHCONP1AZ5ARRF3655 | DH | CON | 1A | Z5 | FIN | EF | RF | B02 | B02-D04 | RES-1A |
| DUKHCONP1AZ5ARRF3660 |  | Installation of Access Ladder | 15d | 2014-06-26 | 2014-07-13 | DUKHCONP1AZ5ARRF3655 SS+5d, DUKHCONP1AZ5ARRF3655 FF+5d | 2d | 26d | LADDER ERECTOR SK [128 h]; LABOR- SUBCONTRACTOR [48 h]; LADDER QTY [16 ea] | 53,206 | 40 | REM | 1AP5EFRF40 | DUKHCON1AP5ARRF3660 | DUKHCONP1AZ5ARRF3660 | DH | CON | 1A | Z5 | FIN | EF | RF | B02 | B02-D06 | RES-1A |
|  | 15 | **ELEVATION** |  | 2014-04-26 | 2014-06-16 |  |  |  |  |  |  |  |  |  |  |  |  |  |  |  |  |  |  |  |  |
| DUKHCONP1AZ5AREL3665 |  | External Plastering | 25d | 2014-04-26 | 2014-05-24 | DUKHCONP1AZ5ARRF3605 SS+7d, DUKHCONP1AZ4AREL3665, DUKHCONP1AZ5STRF2065 FF+7d, DUKHCONP1AZ5STRF2065 SS+7d, DUKHCONP1AZ5ARFF3305 FF+7d, DUKHCONP1AZ5ARFF3305 SS+7d | 23d | 0d | PLASTER MASON SK [9136 h]; LABOR- SUBCONTRACTOR [5139 h]; EXTERNAL PLASTER QTY [4568 Sqm] | 108,894 | 10 | REM | 1AP5EFEL10 | DUKHCON1AP5AREL3665 | DUKHCONP1AZ5AREL3665 | DH | CON | 1A | Z5 | FIN | EF | EL | B02 | B02-D10 | RES-1A |
| DUKHCONP1AZ5AREL3670 |  | External stone cladding works | 20d | 2014-05-13 | 2014-06-04 | DUKHCONP1AZ4AREL3670, DUKHCONP1AZ5AREL3665 SS+10d, DUKHCONP1AZ5AREL3665 FF+10d | 25d | 0d | TILE MASON SK [720 h]; LABOR- SUBCONTRACTOR [270 h]; STONE CLADDING QTY [360 Sqm] | 71,820 | 15 | REM | 1AP5EFEL15 | DUKHCON1AP5AREL3670 | DUKHCONP1AZ5AREL3670 | DH | CON | 1A | Z5 | FIN | EF | EL | B02 | B02-D10 | RES-1A |
| DUKHCONP1AZ5AREL3680 |  | External Painting | 20d | 2014-05-25 | 2014-06-16 | DUKHCONP1AZ5AREL3670 FF+10d, DUKHCONP1AZ5ARRF3695 SS+4d, DUKHCONP1AZ4AREL3680, DUKHCONP1AZ5ARRF3695 FF+4d, DUKHCONP1AZ5AREL3670 SS+10d | 25d | 5d | LABOR- SUBCONTRACTOR [1032 h]; PAINT QTY [3424 Sqm]; PAINTERS SK [2752 h] | 86,006 | 20 |  | 1AP5EFEL20 | DUKHCON1AP5AREL3680 | DUKHCONP1AZ5AREL3680 | DH | CON | 1A | Z5 | FIN | EF | EL | B02 | B02-D11 | RES-1A |
|  | 20 | **MEP WORKS** |  | 2013-10-31 | 2014-08-14 |  |  |  |  |  |  |  |  |  |  |  |  |  |  |  |  |  |  |  |  |
|  | 10 | **ELECTRICAL WORKS** |  | 2014-02-12 | 2014-08-14 |  |  |  |  |  |  |  |  |  |  |  |  |  |  |  |  |  |  |  |  |
|  | 10 | **GROUND FLOOR** |  | 2014-02-12 | 2014-06-21 |  |  |  |  |  |  |  |  |  |  |  |  |  |  |  |  |  |  |  |  |
| DUKHCONP1AZ5ELGF4000 |  | Fixing of wall conduits & switch socket boxes | 25d | 2014-02-12 | 2014-03-12 | DUKHCONP1AZ5ARGF3000 FF+5d, DUKHCONP1AZ5ARGF3000 SS+5d | 3d | 0d | LABOR- SUBCONTRACTOR [192 h]; ELECTRICIANS SK [1030.4 h]; SOCKET BOXES QTY [724 ea]; CODUITS QTY [184 lm] | 33,077 | 10 |  | 1AP5EWGF10 | DUKHCON1AP5ELGF4000 | DUKHCONP1AZ5ELGF4000 | DH | CON | 1A | Z5 | MEP | EW | GF | B02 | B02-D09 | RES-1A |
| DUKHCONP1AZ5ELGF4005 |  | Cable tray & trunking installation | 20d | 2014-02-24 | 2014-03-18 | DUKHCONP1AZ5ELGF4000 SS+5d, DUKHCONP1AZ4ELGF4005, DUKHCONP1AZ5ELGF4000 FF+5d | 21d | 0d | LABOR- SUBCONTRACTOR [288 h]; ELECTRICIANS SK [1030.4 h]; CABLE TRAY QTY [184 lm] | 7,536 | 15 |  | 1AP5EWGF15 | DUKHCON1AP5ELGF4005 | DUKHCONP1AZ5ELGF4005 | DH | CON | 1A | Z5 | MEP | EW | GF | B02 | B02-D09 | RES-1A |
| DUKHCONP1AZ5ELGF4010 |  | Installation of wiring & Main Cabling | 25d | 2014-03-04 | 2014-04-01 | DUKHCONP1AZ5ELGF4005 SS+7d, DUKHCONP1AZ5ELGF4005 FF+7d | 21d | 27d | LABOR- SUBCONTRACTOR [72 h]; ELECTRICIANS SK [224 h]; CABLE QTY [184 lm] | 112,018 | 20 |  | 1AP5EWGF20 | DUKHCON1AP5ELGF4010 | DUKHCONP1AZ5ELGF4010 | DH | CON | 1A | Z5 | MEP | EW | GF | B02 | B02-D09 | RES-1A |
| DUKHCONP1AZ5ELGF4015 |  | Install. of CAMS & Fire Fighting Accessories | 25d | 2014-05-06 | 2014-06-03 | DUKHCONP1AZ5ARGF3055 FF+7d, DUKHCONP1AZ5ARGF3060 SS+7d, DUKHCONP1AZ5ARGF3055 SS+7d, DUKHCONP1AZ5ARGF3060 FF+7d, DUKHCONP1AZ4ELGF4015 | 6d | 0d | LABOR- SUBCONTRACTOR [384 h]; MECHANICALS SK [691.2 h]; SMOKE DETECTOR POINTS QTY [92 ea]; FIRE EXTINGUISHER QTY [28 ea] | 71,164 | 35 |  | 1AP5EWGF35 | DUKHCON1AP5ELGF4015 | DUKHCONP1AZ5ELGF4015 | DH | CON | 1A | Z5 | MEP | EW | GF | B02 | B02-D09 | RES-1A |
| DUKHCONP1AZ5ELGF4020 |  | Installation of DBS,MCCB Accessories. | 20d | 2014-05-12 | 2014-06-03 | DUKHCONP1AZ5ELGF4010 SS+5d, DUKHCONP1AZ5ELGF4010 FF+5d, DUKHCONP1AZ5ARGF3055 FF+7d, DUKHCONP1AZ5ARGF3060 FF+7d, DUKHCONP1AZ5ARGF3055 SS+7d, DUKHCONP1AZ5ARGF3060 SS+7d | -6d | 0d | LABOR- SUBCONTRACTOR [48 h]; ELECTRICIANS SK [179.2 h]; MCCB QTY [64 ea]; DB QTY [8 ea] | 26,049 | 25 |  | 1AP5EWGF25 | DUKHCON1AP5ELGF4020 | DUKHCONP1AZ5ELGF4020 | DH | CON | 1A | Z5 | MEP | EW | GF | B02 | B02-D09 | RES-1A |
| DUKHCONP1AZ5ELGF4025 |  | Installation of Lighting fixtures & Accessories | 25d | 2014-05-24 | 2014-06-21 | DUKHCONP1AZ5ELGF4020 SS+10d, DUKHCONP1AZ5ELGF4020 FF+10d, DUKHCONP1AZ5ARGF3055 SS+10d, DUKHCONP1AZ5ARGF3060 FF+10d, DUKHCONP1AZ4ELGF4025, DUKHCONP1AZ5ARGF3060 SS+10d, DUKHCONP1AZ5ARGF3055 FF+10d | 1d | 0d | LABOR- SUBCONTRACTOR [576 h]; ELECTRICIANS SK [1075.2 h]; LIGHTS QTY [480 ea] | 154,315 | 30 |  | 1AP5EWGF30 | DUKHCON1AP5ELGF4025 | DUKHCONP1AZ5ELGF4025 | DH | CON | 1A | Z5 | MEP | EW | GF | B02 | B02-D09 | RES-1A |
| DUKHCONP1AZ5ELGF4030 |  | Installation of Telephone System | 20d | 2014-05-24 | 2014-06-15 | DUKHCONP1AZ4ELGF4030, DUKHCONP1AZ5ELGF4020 SS+10d, DUKHCONP1AZ5ELGF4020 FF+10d, DUKHCONP1AZ5ARGF3060 SS+5d, DUKHCONP1AZ5ARGF3060 FF+5d | -6d | 5d | LABOR- SUBCONTRACTOR [72 h]; ELECTRICIANS SK [448 h]; TELEPHONE SOCKETS QTY [40 ea] | 38,162 | 40 |  | 1AP5EWGF40 | DUKHCON1AP5ELGF4030 | DUKHCONP1AZ5ELGF4030 | DH | CON | 1A | Z5 | MEP | EW | GF | B02 | B02-D09 | RES-1A |
|  | 15 | **FIRST FLOORS** |  | 2014-03-26 | 2014-07-24 |  |  |  |  |  |  |  |  |  |  |  |  |  |  |  |  |  |  |  |  |
| DUKHCONP1AZ5ELFF4035 |  | Fixing of wall conduits & switch socket boxes | 25d | 2014-03-26 | 2014-04-23 | DUKHCONP1AZ5ARFF3300 SS+5d, DUKHCONP1AZ5ARFF3300 FF+5d | -13d | 0d | LABOR- SUBCONTRACTOR [192 h]; ELECTRICIANS SK [1030.4 h]; SOCKET BOXES QTY [724 ea]; CODUITS QTY [184 lm] | 32,659 | 10 |  | 1AP5EWFF10 | DUKHCON1AP5ELFF4035 | DUKHCONP1AZ5ELFF4035 | DH | CON | 1A | Z5 | MEP | EW | FF | B02 | B02-D09 | RES-1A |
| DUKHCONP1AZ5ELFF4040 |  | Cable tray & trunking installation | 20d | 2014-04-07 | 2014-04-29 | DUKHCONP1AZ5ELFF4035 SS+5d, DUKHCONP1AZ5ELFF4035 FF+5d | 5d | 2d | LABOR- SUBCONTRACTOR [288 h]; ELECTRICIANS SK [1030.4 h]; CABLE TRAY QTY [184 lm] | 7,520 | 15 |  | 1AP5EWFF15 | DUKHCON1AP5ELFF4040 | DUKHCONP1AZ5ELFF4040 | DH | CON | 1A | Z5 | MEP | EW | FF | B02 | B02-D09 | RES-1A |
| DUKHCONP1AZ5ELFF4045 |  | Installation of wiring & Main Cabling | 25d | 2014-04-17 | 2014-05-15 | DUKHCONP1AZ4ELFF4045, DUKHCONP1AZ5ELFF4040 SS+7d, DUKHCONP1AZ5ELFF4040 FF+7d | 3d | 0d | LABOR- SUBCONTRACTOR [72 h]; ELECTRICIANS SK [224 h]; CABLE QTY [184 lm] | 110,383 | 20 |  | 1AP5EWFF20 | DUKHCON1AP5ELFF4045 | DUKHCONP1AZ5ELFF4045 | DH | CON | 1A | Z5 | MEP | EW | FF | B02 | B02-D09 | RES-1A |
| DUKHCONP1AZ5ELFF4055 |  | Install. of CAMS & Fire Fighting Accessories | 25d | 2014-06-15 | 2014-07-13 | DUKHCONP1AZ4ELFF4055, DUKHCONP1AZ5ARFF3360 FF+7d, DUKHCONP1AZ5ELGF4015 SS+5d, DUKHCONP1AZ5ELGF4015 FF+5d, DUKHCONP1AZ5ARFF3360 SS+7d | -23d | 0d | LABOR- SUBCONTRACTOR [360 h]; MECHANICALS SK [648 h]; SMOKE DETECTOR POINTS QTY [92 ea]; FIRE EXTINGUISHER QTY [24 ea] | 71,142 | 35 |  | 1AP5EWFF35 | DUKHCON1AP5ELFF4055 | DUKHCONP1AZ5ELFF4055 | DH | CON | 1A | Z5 | MEP | EW | FF | B02 | B02-D09 | RES-1A |
| DUKHCONP1AZ5ELFF4050 |  | Installation of Telephone System | 25d | 2014-06-16 | 2014-07-14 | DUKHCONP1AZ5ELGF4030 FF+10d, DUKHCONP1AZ5ARFF3360 FF+5d, DUKHCONP1AZ5MSEX5010, DUKHCONP1AZ5ARFF3360 SS+5d, DUKHCONP1AZ5ELGF4030 SS+10d | -16d | 7d | LABOR- SUBCONTRACTOR [48 h]; ELECTRICIANS SK [403.2 h]; TELEPHONE SOCKETS QTY [36 ea] | 36,523 | 40 |  | 1AP5EWFF40 | DUKHCON1AP5ELFF4050 | DUKHCONP1AZ5ELFF4050 | DH | CON | 1A | Z5 | MEP | EW | FF | B02 | B02-D09 | RES-1A |
| DUKHCONP1AZ5ELFF4060 |  | Installation of DBS,MCCB Accessories. | 20d | 2014-06-18 | 2014-07-10 | DUKHCONP1AZ4ELFF4060, DUKHCONP1AZ5ARFF3360 SS+8d, DUKHCONP1AZ5ARFF3360 FF+5d, DUKHCONP1AZ5ELFF4045 SS+5d, DUKHCONP1AZ5ELFF4045 FF+5d | -21d | 2d | LABOR- SUBCONTRACTOR [48 h]; ELECTRICIANS SK [179.2 h]; MCCB QTY [64 ea]; DB QTY [8 ea] | 26,040 | 25 |  | 1AP5EWFF25 | DUKHCON1AP5ELFF4060 | DUKHCONP1AZ5ELFF4060 | DH | CON | 1A | Z5 | MEP | EW | FF | B02 | B02-D09 | RES-1A |
| DUKHCONP1AZ5ELFF4065 |  | Installation of Lighting fixtures & Accessories | 25d | 2014-06-26 | 2014-07-24 | DUKHCONP1AZ4ELFF4065, DUKHCONP1AZ5ELGF4025 FF+5d, DUKHCONP1AZ5ARFF3360 FF+10d, DUKHCONP1AZ5ELFF4060 FF+5d, DUKHCONP1AZ5ELFF4060 SS+5d, DUKHCONP1AZ5ARFF3360 SS+10d, DUKHCONP1AZ5ELGF4025 SS+5d | -23d | 0d | LABOR- SUBCONTRACTOR [576 h]; ELECTRICIANS SK [1075.2 h]; LIGHTS QTY [480 ea] | 154,301 | 30 |  | 1AP5EWFF30 | DUKHCON1AP5ELFF4065 | DUKHCONP1AZ5ELFF4065 | DH | CON | 1A | Z5 | MEP | EW | FF | B02 | B02-D09 | RES-1A |

Notes:
- DUKHCONP1AZ5ARRF3630: Expenses: P1A-Roofing 56792
- DUKHCONP1AZ5ARRF3635: Expenses: P1A-Roofing 43994
- DUKHCONP1AZ5ARRF3640: Expenses: P1A-Roofing 55936
- DUKHCONP1AZ5ARRF3645: Expenses: P1A-Roofing 83344
- DUKHCONP1AZ5ARRF3650: Expenses: P1A-Metal work 63347
- DUKHCONP1AZ5ARRF3655: Expenses: P1A-Roofing 26600
- DUKHCONP1AZ5ARRF3660: Expenses: P1A-Metal work 53206
- DUKHCONP1AZ5AREL3665: Expenses: P1A-Finishes 108894
- DUKHCONP1AZ5AREL3670: Expenses: P1A-Finishes 71820
- DUKHCONP1AZ5AREL3680: Expenses: P1A-Painting and Decorating 86006
- DUKHCONP1AZ5ELGF4000: Expenses: P1A-Electrical Installations 33077
- DUKHCONP1AZ5ELGF4005: Expenses: P1A-Electrical Installations 7536
- DUKHCONP1AZ5ELGF4010: Expenses: P1A-Electrical Installations 112018
- DUKHCONP1AZ5ELGF4015: Expenses: P1A-Electrical Installations 71164
- DUKHCONP1AZ5ELGF4020: Expenses: P1A-Electrical Installations 26049
- DUKHCONP1AZ5ELGF4025: Expenses: P1A-Electrical Installations 154315
- DUKHCONP1AZ5ELGF4030: Expenses: P1A-Electrical Installations 38162
- DUKHCONP1AZ5ELFF4035: Expenses: P1A-Electrical Installations 32659
- DUKHCONP1AZ5ELFF4040: Expenses: P1A-Electrical Installations 7520
- DUKHCONP1AZ5ELFF4045: Expenses: P1A-Electrical Installations 110383
- DUKHCONP1AZ5ELFF4055: Expenses: P1A-Electrical Installations 71142
- DUKHCONP1AZ5ELFF4050: Expenses: P1A-Electrical Installations 36523
- DUKHCONP1AZ5ELFF4060: Expenses: P1A-Electrical Installations 26040
- DUKHCONP1AZ5ELFF4065: Expenses: P1A-Electrical Installations 154301

| ID | WBS | Activity | Duration | Start | Finish | Predecessors | Total float | Free float | Resources | Cost | CODE | P3 ACTID | P6 ID (old) | NP61D | PROJECT | PHASES | PACKAGE | PART | ELEMENTS | STEP | FLOORS | BILL NOS | BILL DIVISION | RES PACK |
| --- | --- | --- | --- | --- | --- | --- | --- | --- | --- | --- | --- | --- | --- | --- | --- | --- | --- | --- | --- | --- | --- | --- | --- | --- |
|  | 20 | **ROOF** |  | 2014-07-10 | 2014-08-14 |  |  |  |  |  |  |  |  |  |  |  |  |  |  |  |  |  |  |  |
| DUKHCONP1AZ5ELRF4070 |  | Installation of Isolator | 18d | 2014-07-10 | 2014-07-30 | DUKHCONP1AZ5ELFF4045 SS+10d, DUKHCONP1AZ5ARRF3645 FF+7d, DUKHCONP1AZ5ELFF4045 FF+10d, DUKHCONP1AZ5ARRF3645 SS+7d, DUKHCONP1AZ5ELFF4050 SS+5d, DUKHCONP1AZ5ELFF4065 SS+5d, DUKHCONP1AZ5ELFF4065 FF+5d, DUKHCONP1AZ5ELFF4050 FF+7d | -23d | 0d | LABOR- SUBCONTRACTOR [144 h]; ELECTRICIANS SK [268.8 h]; ISOLATOR QTY [44 ea] | 54,690 | 10 | 1AP5EWRF10 | DUKHCON1AP5ELRF4070 | DUKHCONP1AZ5ELRF4070 | DH | CON | 1A | Z5 | MEP | EW | RF | B02 | B02-D09 | RES-1A |
| DUKHCONP1AZ5ELRF4075 |  | Installation of TV Dish Antenna | 23d | 2014-07-16 | 2014-08-14 | DUKHCONP1AZ5ELRF4070 SS+5d, DUKHCONP1AZ5ELRF4070 FF+5d | -23d | 1d | LABOR- SUBCONTRACTOR [240 h]; ELECTRICIANS SK [492.8 h]; CONTROL BOX QTY [12 ea]; SWITCHING BOX QTY [32 ea] | 40,597 | 15 | 1AP5EWRF15 | DUKHCON1AP5ELRF4075 | DUKHCONP1AZ5ELRF4075 | DH | CON | 1A | Z5 | MEP | EW | RF | B02 | B02-D09 | RES-1A |
|  | 15 | **PLUMBING, DRAINAGE & FIRE FIGHTING WORKS** |  | 2013-10-31 | 2014-08-14 |  |  |  |  |  |  |  |  |  |  |  |  |  |  |  |  |  |  |  |
|  | 10 | **GROUND FLOOR** |  | 2013-10-31 | 2014-06-21 |  |  |  |  |  |  |  |  |  |  |  |  |  |  |  |  |  |  |  |
| DUKHCONP1AZ5PLUG4300 |  | Drainage / Storm Pipes in Grade Slab | 16d | 2013-10-31 | 2013-11-18 | DUKHCONP1AZ5STUG1040 SS+11d, DUKHCONP1AZ5STUG1040 FF+11d | -24d | 0d | LABOR- SUBCONTRACTOR [24 h]; MECHANICALS SK [43.2 h]; DRAINAGE PIPES QTY [80 lm] | 35,465 | 10 | 1AP5PLUG10 | DUKHCON1AP5PLUG4300 | DUKHCONP1AZ5PLUG4300 | DH | CON | 1A | Z5 | ST | SB | UG | B02 | B02-D07 | RES-1A |
| DUKHCONP1AZ5PLGF4305 |  | Installation of Plumbing pipes & testing | 18d | 2014-02-23 | 2014-03-15 | DUKHCONP1AZ5ARGF3000 SS+7d, DUKHCONP1AZ5ARGF3000 FF+7d, DUKHCONP1AZ4PLGF4305 | -6d | 0d | LABOR- SUBCONTRACTOR [96 h]; MECHANICALS SK [345.6 h]; PLUMB PIPES QTY [328 lm] | 85,973 | 10 | 1AP5PLGF10 | DUKHCON1AP5PLGF4305 | DUKHCONP1AZ5PLGF4305 | DH | CON | 1A | Z5 | MEP | PL | GF | B02 | B02-D07 | RES-1A |
| DUKHCONP1AZ5PLGF4310 |  | Installation of Drainage pipes &testing | 18d | 2014-02-23 | 2014-03-15 | DUKHCONP1AZ5PLGF4305 SS, DUKHCONP1AZ5ARGF3000 FF+7d, DUKHCONP1AZ5ARGF3000 SS+7d, DUKHCONP1AZ5PLGF4305 FF | -3d | 13d | LABOR- SUBCONTRACTOR [48 h]; MECHANICALS SK [129.6 h]; DRAINAGE PIPES QTY [248 lm] | 2,966 | 15 | 1AP5PLGF15 | DUKHCON1AP5PLGF4310 | DUKHCONP1AZ5PLGF4310 | DH | CON | 1A | Z5 | MEP | PL | GF | B02 | B02-D07 | RES-1A |
| DUKHCONP1AZ5PLGF4315 |  | Sanitary Fittings & Accessories | 20d | 2014-05-24 | 2014-06-15 | DUKHCONP1AZ5PLGF4310 FF+5d, DUKHCONP1AZ5PLGF4310 SS+5d, DUKHCONP1AZ5ARGF3065 SS+5d, DUKHCONP1AZ4PLGF4315, DUKHCONP1AZ5ARGF3065 FF+5d | 21d | 0d | LABOR- SUBCONTRACTOR [48 h]; MECHANICALS SK [86.4 h]; SANITARY ACC QTY [60 ea] | 104,291 | 20 | 1AP5PLGF20 | DUKHCON1AP5PLGF4315 | DUKHCONP1AZ5PLGF4315 | DH | CON | 1A | Z5 | MEP | PL | GF | B02 | B02-D07 | RES-1A |
| DUKHCONP1AZ5PLGF4320 |  | Installation of Water Heater | 15d | 2014-06-04 | 2014-06-21 | DUKHCONP1AZ5PLGF4315 FF+5d, DUKHCONP1AZ5PLGF4315 SS+5d, DUKHCONP1AZ5ARGF3060 FF+5d, DUKHCONP1AZ4PLGF4320, DUKHCONP1AZ5ARGF3060 SS+5d | 21d | 10d | LABOR- SUBCONTRACTOR [48 h]; MECHANICALS SK [86.4 h]; WATER HEATER QTY [12 ea] | 8,932 | 25 | 1AP5PLGF25 | DUKHCON1AP5PLGF4320 | DUKHCONP1AZ5PLGF4320 | DH | CON | 1A | Z5 | MEP | PL | GF | B02 | B02-D07 | RES-1A |
|  | 15 | **FIRST FLOORS** |  | 2014-04-07 | 2014-07-20 |  |  |  |  |  |  |  |  |  |  |  |  |  |  |  |  |  |  |  |
| DUKHCONP1AZ5PLFF4325 |  | Installation of Plumbing pipes & testing | 18d | 2014-04-07 | 2014-04-27 | DUKHCONP1AZ5ARFF3300 SS+7d, DUKHCONP1AZ5ARFF3300 FF+8d | -24d | 0d | LABOR- SUBCONTRACTOR [96 h]; MECHANICALS SK [345.6 h]; PLUMB PIPES QTY [328 lm] | 83,745 | 10 | 1AP5PLFF10 | DUKHCON1AP5PLFF4325 | DUKHCONP1AZ5PLFF4325 | DH | CON | 1A | Z5 | MEP | PL | FF | B02 | B02-D07 | RES-1A |
| DUKHCONP1AZ5PLFF4330 |  | Installation of Drainage pipes & testing | 18d | 2014-04-07 | 2014-04-27 | DUKHCONP1AZ5ARFF3300 FF+7d, DUKHCONP1AZ4PLFF4330, DUKHCONP1AZ5PLFF4325 FF, DUKHCONP1AZ5ARFF3300 SS+7d, DUKHCONP1AZ5PLFF4325 SS | -2d | 7d | LABOR- SUBCONTRACTOR [48 h]; MECHANICALS SK [129.6 h]; DRAINAGE PIPES QTY [248 lm] | 2,542 | 15 | 1AP5PLFF15 | DUKHCON1AP5PLFF4330 | DUKHCONP1AZ5PLFF4330 | DH | CON | 1A | Z5 | MEP | PL | FF | B02 | B02-D07 | RES-1A |
| DUKHCONP1AZ5PLFF4335 |  | Sanitary Fittings & Accessories | 20d | 2014-06-22 | 2014-07-14 | DUKHCONP1AZ5PLFF4330 FF+5d, DUKHCONP1AZ5PLFF4330 SS+5d, DUKHCONP1AZ5ARFF3365 SS, DUKHCONP1AZ5ARFF3365 FF+5d | -19d | 0d | LABOR- SUBCONTRACTOR [24 h]; MECHANICALS SK [43.2 h]; SANITARY ACC QTY [56 ea] | 113,094 | 20 | 1AP5PLFF20 | DUKHCON1AP5PLFF4335 | DUKHCONP1AZ5PLFF4335 | DH | CON | 1A | Z5 | MEP | PL | FF | B02 | B02-D07 | RES-1A |
| DUKHCONP1AZ5PLFF4340 |  | Installation of Water Heater | 15d | 2014-07-03 | 2014-07-20 | DUKHCONP1AZ5ARFF3360 FF+5d, DUKHCONP1AZ4PLFF4340, DUKHCONP1AZ5PLFF4335 FF+5d, DUKHCONP1AZ5PLFF4335 SS+5d, DUKHCONP1AZ5ARFF3360 SS+5d | -19d | 4d | LABOR- SUBCONTRACTOR [24 h]; MECHANICALS SK [43.2 h]; WATER HEATER QTY [8 ea] | 7,006 | 25 | 1AP5PLFF25 | DUKHCON1AP5PLFF4340 | DUKHCONP1AZ5PLFF4340 | DH | CON | 1A | Z5 | MEP | PL | FF | B02 | B02-D07 | RES-1A |
|  | 20 | **ROOF** |  | 2014-04-26 | 2014-08-14 |  |  |  |  |  |  |  |  |  |  |  |  |  |  |  |  |  |  |  |
| DUKHCONP1AZ5PLRF4345 |  | Installation of Plumbing pipes & fittings | 15d | 2014-04-26 | 2014-05-12 | DUKHCONP1AZ5ARRF3605 SS+7d, DUKHCONP1AZ5ARRF3605 FF+7d | 32d | 30d | LABOR- SUBCONTRACTOR [24 h]; MECHANICALS SK [86.4 h]; PLUMB PIPES QTY [96 lm] | 12,902 | 10 | 1AP5PLRF10 | DUKHCON1AP5PLRF4345 | DUKHCONP1AZ5PLRF4345 | DH | CON | 1A | Z5 | MEP | PL | RF | B02 | B02-D07 | RES-1A |
| DUKHCONP1AZ5PLRF4350 |  | Installation of Rain water Pipes | 15d | 2014-06-09 | 2014-06-25 | DUKHCONP1AZ5PLFF4330 SS+5d, DUKHCONP1AZ5PLRF4345 SS+8d, DUKHCONP1AZ5AREL3665 SS+7d, DUKHCONP1AZ5ARRF3645 SS+5d, DUKHCONP1AZ5PLRF4345 FF+8d, DUKHCONP1AZ4PLRF4350, DUKHCONP1AZ5PLFF4330 FF+5d, DUKHCONP1AZ5ARRF3645 FF+5d, DUKHCONP1AZ5AREL3665 FF+7d | 2d | 10d | LABOR- SUBCONTRACTOR [24 h]; MECHANICALS SK [43.2 h]; DRAINAGE PIPES QTY [80 lm] | 93,917 | 15 | 1AP5PLRF15 | DUKHCON1AP5PLRF4350 | DUKHCONP1AZ5PLRF4350 | DH | CON | 1A | Z5 | MEP | PL | RF | B02 | B02-D07 | RES-1A |
| DUKHCONP1AZ5PLRF4355 |  | Roof Water Tank Installation & Connections | 25d | 2014-07-14 | 2014-08-14 | DUKHCONP1AZ5PLRF4345 FF+8d, DUKHCONP1AZ5PLFF4340 SS+5d, DUKHCONP1AZ5ARRF3655 SS+5d, DUKHCONP1AZ4PLRF4355, DUKHCONP1AZ5PLFF4340 FF+5d, DUKHCONP1AZ5ARRF3655 FF+5d, DUKHCONP1AZ5PLRF4345 SS+8d, DUKHCONP1AZ5PLRF4350 SS+5d, DUKHCONP1AZ5PLRF4350 FF+5d | -23d | 0d | LABOR- SUBCONTRACTOR [120 h]; MECHANICALS SK [216 h]; WATER TANK QTY [20 ea] | 592,597 | 20 | 1AP5PLRF20 | DUKHCON1AP5PLRF4355 | DUKHCONP1AZ5PLRF4355 | DH | CON | 1A | Z5 | MEP | PL | RF | B02 | B02-D07 | RES-1A |
|  | 20 | **AC WORKS** |  | 2014-03-15 | 2014-08-12 |  |  |  |  |  |  |  |  |  |  |  |  |  |  |  |  |  |  |  |
|  | 10 | **GROUND FLOOR** |  | 2014-03-15 | 2014-06-18 |  |  |  |  |  |  |  |  |  |  |  |  |  |  |  |  |  |  |  |
| DUKHCONP1AZ5ACGF4600 |  | Installation AC Pipes | 20d | 2014-03-15 | 2014-04-06 | DUKHCONP1AZ5ARGF3005 FF+7d, DUKHCONP1AZ5ARGF3005 SS+7d, DUKHCONP1AZ4ACGF4600 | 25d | 5d | LABOR- SUBCONTRACTOR [216 h]; AC TECHNICIAN SK [761.6 h]; AC PIPES QTY [2008 lm] | 8,069 | 10 | 1AP5ACGF10 | DUKHCON1AP5ACGF4600 | DUKHCONP1AZ5ACGF4600 | DH | CON | 1A | Z5 | MEP | AC | GF | B02 | B02-D08 | RES-1A |
| DUKHCONP1AZ5ACGF4605 |  | Fixing of Ventilation Equipments | 25d | 2014-05-06 | 2014-06-03 | DUKHCONP1AZ4ACGF4605, DUKHCONP1AZ5ACGF4600 SS+10d, DUKHCONP1AZ5ARGF3060 SS+7d, DUKHCONP1AZ5ARGF3060 FF+7d, DUKHCONP1AZ5ARGF3055 FF+7d, DUKHCONP1AZ5ACGF4600 FF+10d, DUKHCONP1AZ5ARGF3055 SS+7d | 8d | 0d | LABOR- SUBCONTRACTOR [48 h]; AC TECHNICIAN SK [134.4 h]; VENTILIATION EQP QTY [40 ea] | 17,289 | 15 | 1AP5ACGF15 | DUKHCON1AP5ACGF4605 | DUKHCONP1AZ5ACGF4605 | DH | CON | 1A | Z5 | MEP | AC | GF | B02 | B02-D08 | RES-1A |
| DUKHCONP1AZ5ACGF4610 |  | Fixing of Split AC | 20d | 2014-05-27 | 2014-06-18 | DUKHCONP1AZ5ACGF4605 FF+13d, DUKHCONP1AZ4ACGF4610, DUKHCONP1AZ5ACGF4605 SS+13d | 8d | 5d | LABOR- SUBCONTRACTOR [72 h]; AC TECHNICIAN SK [224 h]; SPLIT UNIT QTY [40 ea] | 48,894 | 20 | 1AP5ACGF20 | DUKHCON1AP5ACGF4610 | DUKHCONP1AZ5ACGF4610 | DH | CON | 1A | Z5 | MEP | AC | GF | B02 | B02-D08 | RES-1A |

Notes:
- DUKHCONP1AZ5ELRF4070: Expenses: P1A-Electrical Installations 54690
- DUKHCONP1AZ5ELRF4075: Expenses: P1A-Electrical Installations 40597
- DUKHCONP1AZ5PLUG4300: Expenses: P1A-Plumbing and Drainage works 35465
- DUKHCONP1AZ5PLGF4305: Expenses: P1A-Plumbing and Drainage works 85973
- DUKHCONP1AZ5PLGF4310: Expenses: P1A-Plumbing and Drainage works 2966
- DUKHCONP1AZ5PLGF4315: Expenses: P1A-Plumbing and Drainage works 104291
- DUKHCONP1AZ5PLGF4320: Expenses: P1A-Plumbing and Drainage works 8932
- DUKHCONP1AZ5PLFF4325: Expenses: P1A-Plumbing and Drainage works 83745
- DUKHCONP1AZ5PLFF4330: Expenses: P1A-Plumbing and Drainage works 2542
- DUKHCONP1AZ5PLFF4335: Expenses: P1A-Plumbing and Drainage works 113094
- DUKHCONP1AZ5PLFF4340: Expenses: P1A-Plumbing and Drainage works 7006
- DUKHCONP1AZ5PLRF4345: Expenses: P1A-Plumbing and Drainage works 12902
- DUKHCONP1AZ5PLRF4350: Expenses: P1A-Plumbing and Drainage works 93917
- DUKHCONP1AZ5PLRF4355: Expenses: P1A-Plumbing and Drainage works 592597
- DUKHCONP1AZ5ACGF4600: Expenses: P1A-Air-conditioning and Ventilation works 8069
- DUKHCONP1AZ5ACGF4605: Expenses: P1A-Air-conditioning and Ventilation works 17289
- DUKHCONP1AZ5ACGF4610: Expenses: P1A-Air-conditioning and Ventilation works 48894

| ID | WBS | Activity | Duration | Start | Finish | Predecessors | Total float | Free float | Resources | Cost | CODE | P3 ACTID | P6 ID (old) | NP61D | PROJECT | PHASES | PACKAGE | PART | ELEMENTS | STEP | FLOORS | BILL NOS | BILL DIVISION | RES PACK |
| --- | --- | --- | --- | --- | --- | --- | --- | --- | --- | --- | --- | --- | --- | --- | --- | --- | --- | --- | --- | --- | --- | --- | --- | --- |
|  | 15 | **FIRST FLOORS** |  | 2014-04-28 | 2014-07-28 |  |  |  |  |  |  |  |  |  |  |  |  |  |  |  |  |  |  |  |
| DUKHCONP1AZ5ACFF4615 |  | Installation AC Pipes | 20d | 2014-04-28 | 2014-05-20 | DUKHCONP1AZ4ACFF4615, DUKHCONP1AZ5ARFF3305 FF+7d, DUKHCONP1AZ5ARFF3305 SS+7d | 3d | 5d | LABOR- SUBCONTRACTOR [216 h]; AC TECHNICIAN SK [761.6 h]; AC PIPES QTY [2008 lm] | 7,555 | 10 | 1AP5ACFF10 | DUKHCON1AP5ACFF4615 | DUKHCONP1AZ5ACFF4615 | DH | CON | 1A | Z5 | MEP | AC | FF | B02 | B02-D08 | RES-1A |
| DUKHCONP1AZ5ACFF4620 |  | Fixing of Ventilation Equipments | 25d | 2014-06-15 | 2014-07-13 | DUKHCONP1AZ5ACFF4615 SS+10d, DUKHCONP1AZ5ACFF4615 FF+10d, DUKHCONP1AZ5ARFF3360 FF+7d, DUKHCONP1AZ4ACFF4620, DUKHCONP1AZ5ARFF3360 SS+7d | -22d | 0d | LABOR- SUBCONTRACTOR [24 h]; AC TECHNICIAN SK [89.6 h]; VENTILIATION EQP QTY [24 ea] | 17,083 | 15 | 1AP5ACFF15 | DUKHCON1AP5ACFF4620 | DUKHCONP1AZ5ACFF4620 | DH | CON | 1A | Z5 | MEP | AC | FF | B02 | B02-D08 | RES-1A |
| DUKHCONP1AZ5ACFF4625 |  | Fixing of Split AC | 20d | 2014-07-06 | 2014-07-28 | DUKHCONP1AZ5ACFF4620 SS+13d, DUKHCONP1AZ5ACFF4620 FF+13d, DUKHCONP1AZ4ACFF4625 | -22d | 0d | LABOR- SUBCONTRACTOR [72 h]; AC TECHNICIAN SK [224 h]; SPLIT UNIT QTY [40 ea] | 54,090 | 20 | 1AP5ACFF20 | DUKHCON1AP5ACFF4625 | DUKHCONP1AZ5ACFF4625 | DH | CON | 1A | Z5 | MEP | AC | FF | B02 | B02-D08 | RES-1A |
|  | 20 | **ROOF** |  | 2014-05-31 | 2014-08-12 |  |  |  |  |  |  |  |  |  |  |  |  |  |  |  |  |  |  |  |
| DUKHCONP1AZ5ACRF4630 |  | Installation of Refrigerant Pipes | 25d | 2014-05-31 | 2014-06-28 | DUKHCONP1AZ5ARRF3645 SS+7d, DUKHCONP1AZ5ACFF4615 SS+7d, DUKHCONP1AZ4ACRF4630, DUKHCONP1AZ5ARRF3645 FF+7d, DUKHCONP1AZ5ACGF4600 FF+7d, DUKHCONP1AZ5ACFF4615 FF+7d, DUKHCONP1AZ5ACGF4600 SS+7d | 10d | 0d | LABOR- SUBCONTRACTOR [96 h]; AC TECHNICIAN SK [313.6 h]; AC PIPES QTY [848 lm] | 24,880 | 10 | 1AP5ACRF10 | DUKHCON1AP5ACRF4630 | DUKHCONP1AZ5ACRF4630 | DH | CON | 1A | Z5 | MEP | AC | RF | B02 | B02-D08 | RES-1A |
| DUKHCONP1AZ5ACRF4635 |  | Installation of Condensing Unit | 25d | 2014-07-12 | 2014-08-12 | DUKHCONP1AZ5ACGF4610 SS+5d, DUKHCONP1AZ5ACGF4610 FF+5d, DUKHCONP1AZ5ACFF4625 SS+5d, DUKHCONP1AZ4ACRF4635, DUKHCONP1AZ5ACFF4625 FF+5d, DUKHCONP1AZ5ACRF4630 FF+5d, DUKHCONP1AZ5ACRF4630 SS+5d | -21d | 0d | LABOR- SUBCONTRACTOR [120 h]; AC TECHNICIAN SK [448 h]; AC UNITS QTY [80 ea] | 134,618 | 15 | 1AP5ACRF15 | DUKHCON1AP5ACRF4635 | DUKHCONP1AZ5ACRF4635 | DH | CON | 1A | Z5 | MEP | AC | RF | B02 | B02-D08 | RES-1A |
|  | 25 | **EXTERNAL WORKS** |  | 2014-03-22 | 2014-08-21 |  |  |  |  |  |  |  |  |  |  |  |  |  |  |  |  |  |  |  |
|  | 10 | **MISCELLANEOUS** |  | 2014-03-22 | 2014-08-21 |  |  |  |  |  |  |  |  |  |  |  |  |  |  |  |  |  |  |  |
| DUKHCONP1AZ5MSEX5000 |  | Construction of Manholes | 25d | 2014-03-22 | 2014-04-19 | DUKHCONP1AZ5PLGF4310 SS+10d, DUKHCONP1AZ5STRF2055 FF+10d, DUKHCONP1AZ5PLGF4310 FF+10d, DUKHCONP1AZ5STRF2055 SS+10d | -16d | 0d | MANHOLES SK [384 h]; LABOR- SUBCONTRACTOR [144 h]; MANHOLES QTY [48 ea] | 56,173 | 25 | 1AP5MSEX25 | DUKHCON1AP5MS005000 | DUKHCONP1AZ5MSEX5000 | DH | CON | 1A | Z5 | EX | MS |  | B02 | B02-D12 | RES-1A |
| DUKHCONP1AZ5MSEX5005 |  | Construction of Soak pit, Chambers | 25d | 2014-04-05 | 2014-05-03 | DUKHCONP1AZ5MSEX5000 SS+12d, DUKHCONP1AZ5MSEX5000 FF+12d | -16d | 0d | MANHOLES SK [128 h]; LABOR- SUBCONTRACTOR [48 h]; SOAKPIT QTY [16 ea] | 33,032 | 30 | 1AP5MSEX30 | DUKHCON1AP5MS005005 | DUKHCONP1AZ5MSEX5005 | DH | CON | 1A | Z5 | EX | MS |  | B02 | B02-D12 | RES-1A |
| DUKHCONP1AZ5MSEX5015 |  | Construction of grease Trap | 20d | 2014-04-24 | 2014-05-17 | DUKHCONP1AZ5MSEX5005 FF+12d, DUKHCONP1AZ5MSEX5005 SS+12d | -16d | 0d | LABOR- SUBCONTRACTOR [24 h]; GREASE TRAP QTY [16 lm]; HANDRAIL ERECTOR SKILLED [32 h] | 22,696 | 20 | 1AP5MSEX20 | DUKHCON1AP5MS005015 | DUKHCONP1AZ5MSEX5015 | DH | CON | 1A | Z5 | EX | MS |  | B02 | B02-D07 | RES-1A |
| DUKHCONP1AZ5MSEX5020 |  | Construction Entrance Ramp | 25d | 2014-05-12 | 2014-06-09 | DUKHCONP1AZ5STRF2055 FF, DUKHCONP1AZ4MSEX5020, DUKHCONP1AZ5STRF2055 SS | -8d | 0d | SCREED MASON SK [96 h]; CONCRETE MASON SK [192 h]; INTERLOCK MASON SK [128 h]; LABOR- SUBCONTRACTOR [192 h]; LABOR- SUBCONTRACTOR [48 h]; SCREED QTY [112 Sqm]; CONCRETE QTY [96 Cum]; INTERLOCK QTY [152 Sqm] | 31,768 | 10 | 1AP5MSEX10 | DUKHCON1AP5MS005020 | DUKHCONP1AZ5MSEX5020 | DH | CON | 1A | Z5 | EX | MS |  | B02 | B02-D12 | RES-1A |
| DUKHCONP1AZ5MSEX5010 |  | Telephone cable laying | 25d | 2014-05-18 | 2014-06-15 | DUKHCONP1AZ5MSEX5015 | -16d | 0d | LABOR- SUBCONTRACTOR [125 h]; ELECTRICIANS SK [125 h]; CONCRETE MASON SK [125 h] | 3,557 |  | 1AP5MSEX40 | DUKHCON1AP5MS005010 | DUKHCONP1AZ5MSEX5010 | DH | CON | 1A | Z5 | EX | MS |  | B02 | B02-D12 | RES-1A |
| DUKHCONP1AZ5MSEX5025 |  | SS.Handrails and Balustrades | 20d | 2014-05-29 | 2014-06-21 | DUKHCONP1AZ5MSEX5020 SS+10d, DUKHCONP1AZ5MSEX5020 FF+10d | -5d | 0d | LABOR- SUBCONTRACTOR [24 h]; S.S.BALUSTRADE QTY [16 lm]; HANDRAIL ERECTOR SKILLED [32 h] | 81,420 | 15 | 1AP5MSEX15 | DUKHCON1AP5MS005025 | DUKHCONP1AZ5MSEX5025 | DH | CON | 1A | Z5 | EX | MS |  | B02 | B02-D12 | RES-1A |
| DUKHCONP1AZ5MSEX5335 |  | Aluminum Roll-up Shutter with 2m Wall | 25d | 2014-07-21 | 2014-08-21 | DUKHCONI1AZ3BWGL5325 SS+10d, DUKHCONP1AZ4MSEX5335 | 68d | 8d | LABOR- SUBCONTRACTOR [200 h]; DOOR ERECTOR SK [200 h]; ROLLING SHUTTER QTY [8 ea] | 59,528 | 25 | 1AP5BWFR25 | DUKHCON1AP5MS005335 | DUKHCONP1AZ5MSEX5335 | DH | CON | 1A | Z5 | EX | MS |  | B02 | B02-D12 | RES-1A |
|  | 15 | **WATER TANK ENCLOSURE** |  | 2014-04-26 | 2014-08-05 |  |  |  |  |  |  |  |  |  |  |  |  |  |  |  |  |  |  |  |
| DUKHCONP1AZ5WEEX5030 |  | Excavation | 20d | 2014-04-26 | 2014-05-18 | DUKHCONP1AZ4WEEX5030, DUKHCONP1AZ5STRF2055 SS+5d, DUKHCONP1AZ5STRF2055 FF+5d | 4d | 0d | LABOR- SUBCONTRACTOR [24 h]; EXCAVATION QTY [40 Cum]; LOADER [10 h]; POCLAIN [20 h]; TRUCK [10 h]; EQUIP OPERATORS [40 h] | 896 | 10 | 1AP5WEEX10 | DUKHCON1AP5WE005030 | DUKHCONP1AZ5WEEX5030 | DH | CON | 1A | Z5 | EX | WE |  | B02 | B02-D12 | RES-1A |
| DUKHCONP1AZ5WEEX5035 |  | Construction of Raft | 25d | 2014-05-01 | 2014-05-29 | DUKHCONP1AZ5WEEX5030 SS+5d, DUKHCONP1AZ5WEEX5030 FF+10d | 4d | 0d | STEEL FIXERS SK [64 h]; CARPENTERS SK [384 h]; CONCRETE MASON SK [32 h]; LABOR- SUBCONTRACTOR [360 h]; REINFORCEMENT BARS QTY [624 kg]; FORMWORK QTY [184 Sqm]; CONCRETE QTY [20 Cum] | 15,216 | 15 | 1AP5WEEX15 | DUKHCON1AP5WE005035 | DUKHCONP1AZ5WEEX5035 | DH | CON | 1A | Z5 | EX | WE |  | B02 | B02-D12 | RES-1A |
| DUKHCONP1AZ5WEEX5040 |  | Block works & Plastering | 25d | 2014-05-11 | 2014-06-08 | DUKHCONP1AZ5WEEX5035 SS+8d, DUKHCONP1AZ5WEEX5035 FF+8d | 4d | 0d | BLOCK MASON SK [128 h]; PLASTER MASON SK [192 h]; LABOR- SUBCONTRACTOR [192 h]; BLOCK QTY [56 Sqm]; PLASTER QTY [112 Sqm] | 13,582 | 20 | 1AP5WEEX20 | DUKHCON1AP5WE005040 | DUKHCONP1AZ5WEEX5040 | DH | CON | 1A | Z5 | EX | WE |  | B02 | B02-D12 | RES-1A |
| DUKHCONP1AZ5WEEX5045 |  | Flooring & Painting | 25d | 2014-05-18 | 2014-06-15 | DUKHCONP1AZ5WEEX5040 FF+6d, DUKHCONP1AZ5WEEX5040 SS+6d | 4d | 9d | LABOR- SUBCONTRACTOR [72 h]; PAINT QTY [156 Sqm]; EPOXY QTY [44 Sqm]; PAINTERS SK [128 h]; EPOXY SK [32 h] | 12,744 | 25 | 1AP5WEEX25 | DUKHCON1AP5WE005045 | DUKHCONP1AZ5WEEX5045 | DH | CON | 1A | Z5 | EX | WE |  | B02 | B02-D12 | RES-1A |
| DUKHCONP1AZ5WEEX5050 |  | Installation of Steel Gate | 20d | 2014-06-10 | 2014-07-02 | DUKHCONP1AZ5WEEX5045 SS+5d, DUKHCONP1AZ5WEEX5045 FF+6d, DUKHCONP1AZ5MSEX5025 FF+10d | -5d | 9d | LABOR- SUBCONTRACTOR [24 h]; GATE QTY [4 ea]; GATE ERECTOR SK [32 h] | 71,872 | 30 | 1AP5WEEX30 | DUKHCON1AP5WE005050 | DUKHCONP1AZ5WEEX5050 | DH | CON | 1A | Z5 | EX | WE |  | B02 | B02-D12 | RES-1A |
| DUKHCONP1AZ5WEEX5060 |  | Structural steel & SS Shed cover installation | 25d | 2014-06-26 | 2014-07-24 | DUKHCONP1AZ5MSEX5025 FF+10d, DUKHCONP1AZ4WEEX5060, DUKHCONP1AZ5WEEX5050 FF+10d, DUKHCONP1AZ5WEEX5050 SS+5d | -14d | 0d | LABOR- SUBCONTRACTOR [144 h]; STRUCTURAL STEEL QTY [128 kg]; SS SHED COVER QTY [40 Sqm]; STEEL ERECTOR SK [192 h] | 45,463 | 35 | 1AP5WEEX35 | DUKHCON1AP5WE005060 | DUKHCONP1AZ5WEEX5060 | DH | CON | 1A | Z5 | EX | WE |  | B02 | B02-D12 | RES-1A |
| DUKHCONP1AZ5WEEX5065 |  | Install. of Water Tank,Chiller,Pump & Meter | 25d | 2014-07-05 | 2014-08-05 | DUKHCONP1AZ5MSEX5015 SS+5d, DUKHCONP1AZ4WEEX5065, DUKHCONP1AZ5MSEX5015 FF+5d, DUKHCONP1AZ5WEEX5060 FF+6d, DUKHCONP1AZ5PLRF4350 FF+5d, DUKHCONP1AZ5WEEX5060 SS+6d, DUKHCONP1AZ5PLRF4350 SS+5d | -15d | 0d | LABOR- SUBCONTRACTOR [72 h]; AC TECHNICIAN SK [44.8 h]; MECHANICALS SK [86.4 h]; WATER TANK QTY [4 ea]; CHILLER QTY [40 ea]; PUMP QTY [4 ea] | 122,349 | 40 | 1AP5WEEX40 | DUKHCON1AP5WE005065 | DUKHCONP1AZ5WEEX5065 | DH | CON | 1A | Z5 | EX | WE |  | B02 | B02-D07 | RES-1A |

Notes:
- DUKHCONP1AZ5ACFF4615: Expenses: P1A-Air-conditioning and Ventilation works 7555
- DUKHCONP1AZ5ACFF4620: Expenses: P1A-Air-conditioning and Ventilation works 17083
- DUKHCONP1AZ5ACFF4625: Expenses: P1A-Air-conditioning and Ventilation works 54090
- DUKHCONP1AZ5ACRF4630: Expenses: P1A-Air-conditioning and Ventilation works 24880
- DUKHCONP1AZ5ACRF4635: Expenses: P1A-Air-conditioning and Ventilation works 134618
- DUKHCONP1AZ5MSEX5000: Expenses: P1A-External works within the Plot Curtilage 56173
- DUKHCONP1AZ5MSEX5005: Expenses: P1A-External works within the Plot Curtilage 33032
- DUKHCONP1AZ5MSEX5015: Expenses: P1A-Plumbing and Drainage works 22696
- DUKHCONP1AZ5MSEX5020: Expenses: P1A-External works within the Plot Curtilage 31768
- DUKHCONP1AZ5MSEX5010: Expenses: P1A-External works within the Plot Curtilage 3557
- DUKHCONP1AZ5MSEX5025: Expenses: P1A-External works within the Plot Curtilage 81420
- DUKHCONP1AZ5MSEX5335: Expenses: P1A-External works within the Plot Curtilage 59528
- DUKHCONP1AZ5WEEX5030: Expenses: P1A-External works within the Plot Curtilage 896
- DUKHCONP1AZ5WEEX5035: Expenses: P1A-External works within the Plot Curtilage 15216
- DUKHCONP1AZ5WEEX5040: Expenses: P1A-External works within the Plot Curtilage 13582
- DUKHCONP1AZ5WEEX5045: Expenses: P1A-External works within the Plot Curtilage 12744
- DUKHCONP1AZ5WEEX5050: Expenses: P1A-External works within the Plot Curtilage 71872
- DUKHCONP1AZ5WEEX5060: Expenses: P1A-External works within the Plot Curtilage 45463
- DUKHCONP1AZ5WEEX5065: Expenses: P1A-Plumbing and Drainage works 122349

| ID | WBS | Activity | Duration | Start | Finish | Predecessors | Total float | Free float | Resources | Cost | CODE | P3 ACTID | P6 ID (old) | NP61D | PROJECT | PHASES | PACKAGE | PART | ELEMENTS | STEP | BILL NOS | BILL DIVISION | RES PACK | FLOORS | rem |
| --- | --- | --- | --- | --- | --- | --- | --- | --- | --- | --- | --- | --- | --- | --- | --- | --- | --- | --- | --- | --- | --- | --- | --- | --- | --- |
|  | 20 | **HARD LANDSCAPING** |  | 2014-05-26 | 2014-07-06 |  |  |  |  |  |  |  |  |  |  |  |  |  |  |  |  |  |  |  |  |
| DUKHCONP1AZ5HDEX5090 |  | kerb works | 20d | 2014-05-26 | 2014-06-17 | DUKHCONP1AZ4HDEX5090, DUKHCONP1AZ5MSEX5020 SS+7d, DUKHCONP1AZ5MSEX5020 FF+7d | -8d | 0d | KERBSTONE MASON SK [224 h]; LABOR- SUBCONTRACTOR [120 h]; KERBSTONE QTY [288 lm] | 13,284 | 10 | 1AP5HDEX10 | DUKHCON1AP5HD005090 | DUKHCONP1AZ5HDEX5090 | DH | CON | 1A | Z5 | EX | HD | B02 | B02-D12 | RES-1A |  |  |
| DUKHCONP1AZ5HDEX5095 |  | Cobble Stone Works | 20d | 2014-06-07 | 2014-06-29 | DUKHCONP1AZ5HDEX5090 FF+10d, DUKHCONP1AZ5HDEX5090 SS+10d | -8d | 0d | TILE MASON SK [128 h]; LABOR- SUBCONTRACTOR [72 h]; COBBLE STONE QTY [88 Sqm] | 12,232 | 15 | 1AP5HDEX15 | DUKHCON1AP5HD005095 | DUKHCONP1AZ5HDEX5095 | DH | CON | 1A | Z5 | EX | HD | B02 | B02-D12 | RES-1A |  |  |
| DUKHCONP1AZ5HDEX5100 |  | Interlock works | 20d | 2014-06-14 | 2014-07-06 | DUKHCONP1AZ5HDEX5095 FF+6d, DUKHCONP1AZ5HDEX5095 SS+6d | -8d | 0d | INTERLOCK MASON SK [160 h]; LABOR- SUBCONTRACTOR [72 h]; INTERLOCK QTY [184 Sqm] | 15,733 | 20 | 1AP5HDEX20 | DUKHCON1AP5HD005100 | DUKHCONP1AZ5HDEX5100 | DH | CON | 1A | Z5 | EX | HD | B02 | B02-D12 | RES-1A |  |  |
|  | 25 | **SOFT LANDSCAPING** |  | 2014-06-19 | 2014-07-24 |  |  |  |  |  |  |  |  |  |  |  |  |  |  |  |  |  |  |  |  |
| DUKHCONP1AZ5SLEX5105 |  | Laying of Grass/ green area | 25d | 2014-06-19 | 2014-07-17 | DUKHCONP1AZ5HDEX5100 FF+5d, DUKHCONP1AZ5HDEX5100 SS+5d | -8d | 0d | LABOR- SUBCONTRACTOR [1176 h]; SWEET SOIL QTY [336 Cum]; GRASS QTY [336 Sqm]; LANDSCAPING SK [1568 h] | 41,328 | 10 | 1AP5SLEX10 | DUKHCON1AP5SL005105 | DUKHCONP1AZ5SLEX5105 | DH | CON | 1A | Z5 | EX | SL | B02 | B02-D12 | RES-1A |  |  |
| DUKHCONP1AZ5SLEX5110 |  | Laying of Palm tree | 25d | 2014-06-26 | 2014-07-24 | DUKHCONP1AZ5SLEX5105 SS+6d, DUKHCONP1AZ5SLEX5105 FF+6d | -8d | 16d | LABOR- SUBCONTRACTOR [72 h]; SWEET SOIL QTY [48 Cum]; PLAM TREES QTY [16 ea]; LANDSCAPING SK [96 h] | 48,672 | 15 | 1AP5SLEX15 | DUKHCON1AP5SL005110 | DUKHCONP1AZ5SLEX5110 | DH | CON | 1A | Z5 | EX | SL | B02 | B02-D12 | RES-1A |  |  |
|  | 30 | **TESTING AND COMMISSIONING** |  | 2014-08-17 | 2014-09-14 |  |  |  |  |  |  |  |  |  |  |  |  |  |  |  |  |  |  |  |  |
| DUKHCONP1AZ5ACTC8000 |  | Pre-Commissioning & Testing of AC Works | 25d | 2014-08-17 | 2014-09-14 | DUKHCONP1AZ5SLEX5110, DUKHCONP1AZ4ACTC8000, DUKHCONP1AZ5HDEX5100, DUKHCONP1AZ5ARRF3660, DUKHCONP1AZ5SLEX5105, DUKHCONP1AZ5ACFF4625, DUKHCONP1AZ5ARGF3095, DUKHCONP1AZ5ARRF3620, DUKHCONP1AZ5ARFF3395, DUKHCONP1AZ5MSEX5005, DUKHCONP1AZ5AREL3680, DUKHCONP1AZ5ACRF4635 | -24d | 0d | LABOR- SUBCONTRACTOR [500 h]; AC TECHNICIAN SK [1000 h] | 3,168 |  | 1AP5ACU100 | DUKHCON1AP5AC008000 | DUKHCONP1AZ5ACTC8000 | DH | CON | 1A | Z5 | TES |  | B02 | B02-D08 | RES-1A |  |  |
| DUKHCONP1AZ5ELTC8010 |  | Pre-Commissioning & Testing of Electrical Works | 25d | 2014-08-17 | 2014-09-14 | DUKHCONP1AZ5SLEX5105, DUKHCONP1AZ5ELRF4075, DUKHCONP1AZ5ARRF3655, DUKHCONP1AZ5ELFF4050, DUKHCONP1AZ4ELTC8010, DUKHCONP1AZ5ELGF4015, DUKHCONP1AZ5ELFF4055, DUKHCONP1AZ5ARRF3660, DUKHCONP1AZ5ARGF3095, DUKHCONP1AZ5SLEX5110, DUKHCONP1AZ5ELGF4025, DUKHCONP1AZ5HDEX5100, DUKHCONP1AZ5ARRF3620, DUKHCONP1AZ5MSEX5005, DUKHCONP1AZ5ELGF4030, DUKHCONP1AZ5ELFF4065, DUKHCONP1AZ5AREL3680, DUKHCONP1AZ5ARFF3395 | -24d | 0d | LABOR- SUBCONTRACTOR [1000 h]; ELECTRICIANS SK [2000 h] | 40,656 |  | 1AP5ELE100 | DUKHCON1AP5EL008010 | DUKHCONP1AZ5ELTC8010 | DH | CON | 1A | Z5 | TES |  | B02 | B02-D09 | RES-1A |  |  |
| DUKHCONP1AZ5PLTC8005 |  | Pre-Commissioning & Testing of Plumbing Works | 25d | 2014-08-17 | 2014-09-14 | DUKHCONP1AZ4PLTC8005, DUKHCONP1AZ5PLRF4355, DUKHCONP1AZ5SLEX5105, DUKHCONP1AZ5PLRF4350, DUKHCONP1AZ5MSEX5005, DUKHCONP1AZ5PLGF4320, DUKHCONP1AZ5AREL3680, DUKHCONP1AZ5ARFF3395, DUKHCONP1AZ5SLEX5110, DUKHCONP1AZ5WEEX5065, DUKHCONP1AZ5ARRF3655, DUKHCONP1AZ5ARRF3660, DUKHCONP1AZ5ARGF3095, DUKHCONP1AZ5HDEX5100, DUKHCONP1AZ5ARRF3620 | -24d | 0d | LABOR- SUBCONTRACTOR [1000 h]; MECHANICALS SK [2000 h] | 9,008 |  | 1AP5PLU100 | DUKHCON1AP5PL008005 | DUKHCONP1AZ5PLTC8005 | DH | CON | 1A | Z5 | TES |  | B02 | B02-D07 | RES-1A |  |  |
|  | 35 | **ZONE - 6 (4 Twin Villas)** |  | 2013-07-23 | 2014-10-15 |  |  |  |  |  |  |  |  |  |  |  |  |  |  |  |  |  |  |  |  |
|  | 10 | **STRUCTURAL WORKS** |  | 2013-07-23 | 2014-05-19 |  |  |  |  |  |  |  |  |  |  |  |  |  |  |  |  |  |  |  |  |
|  | 10 | **SUB STRUCTURE** |  | 2013-07-23 | 2014-01-07 |  |  |  |  |  |  |  |  |  |  |  |  |  |  |  |  |  |  |  |  |
|  | 10 | **UPTO GRADE SLAB** |  | 2013-07-23 | 2014-01-07 |  |  |  |  |  |  |  |  |  |  |  |  |  |  |  |  |  |  |  |  |
| DUKHCONP1AZ6STUG1000 |  | Footing Excavation | 25d | 2013-07-23 | 2013-08-24 | DUKHCONP1AGNSP005000, DUKHCONP1AZ5STUG1000 | -11d | 0d | LABOR- SUBCONTRACTOR [590 h]; EXCAVATION QTY [984 Cum]; LOADER [131 h]; POCLAIN [262 h]; TRUCK [131 h]; EQUIP OPERATORS [524 h] | 68,256 | 10 | 1AP6SBUG10 | DUKHCON1AP6STUG1000 | DUKHCONP1AZ6STUG1000 | DH | CON | 1A | Z6 | ST | SB | B02 | B02-D01 | RES-1A | UG |  |
| DUKHCONP1AZ6STUG1005 |  | Footing Antitermite | 23d | 2013-08-04 | 2013-09-02 | DUKHCONP1AZ6STUG1000 SS+10d, DUKHCONP1AZ6STUG1000 FF+5d | -11d | 0d | LABOR- SUBCONTRACTOR [432 h]; ANTITERMITE QTY [2880 sqft]; ANTITERMITE SK [1152 h] | 8,640 | 15 | 1AP6SBUG15 | DUKHCON1AP6STUG1005 | DUKHCONP1AZ6STUG1005 | DH | CON | 1A | Z6 | ST | SB | B02 | B02-D01 | RES-1A | UG | REM |
| DUKHCONP1AZ6STUG1010 |  | Footing Blinding | 23d | 2013-08-07 | 2013-09-05 | DUKHCONP1AZ6STUG1005 FF+3d, DUKHCONP1AZ6STUG1005 SS+3d | -11d | 0d | BLINDING MASON SK [454 h]; LABOR- SUBCONTRACTOR [340.5 h]; BLINDING QTY [567 Sqm] | 14,285 | 15 | 1AP6SBUG18 | DUKHCON1AP6STUG1010 | DUKHCONP1AZ6STUG1010 | DH | CON | 1A | Z6 | ST | SB | B02 | B02-D02 | RES-1A | UG | REM |
| DUKHCONP1AZ6STUG1015 |  | Footing Waterproofing & Screed | 25d | 2013-08-17 | 2013-09-14 | DUKHCONP1AZ6STUG1010 FF+5d, DUKHCONP1AZ6STUG1010 SS+5d | -11d | 0d | SCREED MASON SK [418 h]; LABOR- SUBCONTRACTOR [156.75 h]; SCREED QTY [522 Sqm]; WATERPROOFING QTY [1457 Sqm] | 52,596 | 20 | 1AP6SBUG20 | DUKHCON1AP6STUG1015 | DUKHCONP1AZ6STUG1015 | DH | CON | 1A | Z6 | ST | SB | B02 | B02-D02 | RES-1A | UG | REM |
| DUKHCONP1AZ6STUG1020 |  | Construction of foundations | 20d | 2013-09-01 | 2013-09-23 | DUKHCONP1AZ6STUG1015 SS+7d, DUKHCONP1AZ6STUG1015 FF+8d | -11d | 13d | STEEL FIXERS SK [2565 h]; CARPENTERS SK [1160 h]; CONCRETE MASON SK [720 h]; LABOR- SUBCONTRACTOR [3333.75 h]; REINFORCEMENT BARS QTY [32062 kg]; FORMWORK QTY [580 Sqm]; CONCRETE QTY [360 Cum] | 225,546 | 25 | 1AP6SBUG25 | DUKHCON1AP6STUG1020 | DUKHCONP1AZ6STUG1020 | DH | CON | 1A | Z6 | ST | SB | B02 | B02-D02 | RES-1A | UG | REM |
| DUKHCONP1AZ6STUG1025 |  | Construction of neck of columns | 25d | 2013-09-25 | 2013-10-26 | DUKHCONP1AZ6STUG1020 SS+8d, DUKHCONP1AZ5STUG1025, DUKHCONP1AZ6STUG1020 FF+7d | -24d | 0d | STEEL FIXERS SK [214 h]; CARPENTERS SK [656 h]; CONCRETE MASON SK [48 h]; LABOR- SUBCONTRACTOR [688.5 h]; REINFORCEMENT BARS QTY [2669 kg]; FORMWORK QTY [328 Sqm]; CONCRETE QTY [24 Cum] | 35,935 | 30 | 1AP6SBUG30 | DUKHCON1AP6STUG1025 | DUKHCONP1AZ6STUG1025 | DH | CON | 1A | Z6 | ST | SB | B02 | B02-D02 | RES-1A | UG | REM |
| DUKHCONP1AZ6STUG1030 |  | Waterproofing Footing & Neck Column | 25d | 2013-10-05 | 2013-11-04 | DUKHCONP1AZ6STUG1025 SS+8d, DUKHCONP1AZ6STUG1025 FF+8d | -24d | 0d | LABOR- SUBCONTRACTOR [141 h]; WATERPROOFING QTY [468 Sqm]; WATERPROOFING SPECIALIST SK [375 h] | 22,459 | 35 | 1AP6SBUG35 | DUKHCON1AP6STUG1030 | DUKHCONP1AZ6STUG1030 | DH | CON | 1A | Z6 | ST | SB | B02 | B02-D02 | RES-1A | UG | REM |
| DUKHCONP1AZ6STUG1035 |  | Backfilling Upto Grade Beam Bottom | 25d | 2013-10-21 | 2013-11-18 | DUKHCONP1AZ6STUG1030 SS+12d, DUKHCONP1AZ5STUG1035, DUKHCONP1AZ6STUG1030 FF+12d | -24d | 0d | LABOR- SUBCONTRACTOR [216 h]; BACKFILLING QTY [880 Cum]; BOBCAT [375 h]; PLATE COMPACTOR [375 h]; TRUCK [75 h]; EQUIP OPERATORS [825 h] | 22,363 | 40 | 1AP6SBUG40 | DUKHCON1AP6STUG1035 | DUKHCONP1AZ6STUG1035 | DH | CON | 1A | Z6 | ST | SB | B02 | B02-D01 | RES-1A | UG |  |
| DUKHCONP1AZ6STUG1040 |  | Construction of Grade Beams | 25d | 2013-11-06 | 2013-12-04 | DUKHCONP1AZ6STUG1035 SS+14d, DUKHCONP1AZ6STUG1035 FF+14d | -24d | 0d | BLINDING MASON SK [244 h]; SCREED MASON SK [224 h]; STEEL FIXERS SK [1497 h]; CARPENTERS SK [2152 h]; CONCRETE MASON SK [256 h]; LABOR- SUBCONTRACTOR [3195.75 h]; BLINDING QTY [304 Sqm]; SCREED QTY [280 Sqm]; REINFORCEMENT BARS QTY [18709 kg]; FORMWORK QTY [1076 Sqm]; CONCRETE QTY [128 Cum] | 326,110 | 45 | 1AP6SBUG45 | DUKHCON1AP6STUG1040 | DUKHCONP1AZ6STUG1040 | DH | CON | 1A | Z6 | ST | SB | B02 | B02-D02 | RES-1A | UG | REM |
| DUKHCONP1AZ6STUG1045 |  | Construction of slab on grade | 25d | 2013-12-09 | 2014-01-07 | DUKHCONP1AZ5STUG1045, DUKHCONP1AZ6STUG1040 FF+10d, DUKHCONP1AZ6PLUG4300 SS+8d, DUKHCONP1AZ6STUG1040 SS+10d, DUKHCONP1AZ6PLUG4300 FF+8d | -24d | 0d | BLINDING MASON SK [923 h]; SCREED MASON SK [850 h]; STEEL FIXERS SK [536 h]; CONCRETE MASON SK [400 h]; LABOR- SUBCONTRACTOR [1713 h]; BLINDING QTY [1153 Sqm]; SCREED QTY [1062 Sqm]; CONCRETE QTY [200 Cum]; WELDED WIRE MESH [2008 Sqm] | 239,062 | 50 | 1AP6SBUG50 | DUKHCON1AP6STUG1045 | DUKHCONP1AZ6STUG1045 | DH | CON | 1A | Z6 | ST | SB | B02 | B02-D02 | RES-1A | UG | REM |

Notes:
- DUKHCONP1AZ5HDEX5090: Expenses: P1A-External works within the Plot Curtilage 13284
- DUKHCONP1AZ5HDEX5095: Expenses: P1A-External works within the Plot Curtilage 12232
- DUKHCONP1AZ5HDEX5100: Expenses: P1A-External works within the Plot Curtilage 15733
- DUKHCONP1AZ5SLEX5105: Expenses: P1A-External works within the Plot Curtilage 41328
- DUKHCONP1AZ5SLEX5110: Expenses: P1A-External works within the Plot Curtilage 48672
- DUKHCONP1AZ5ACTC8000: Expenses: P1A-Air-conditioning and Ventilation works 3168
- DUKHCONP1AZ5ELTC8010: Expenses: P1A-Electrical Installations 40656
- DUKHCONP1AZ5PLTC8005: Expenses: P1A-Plumbing and Drainage works 9008
- DUKHCONP1AZ6STUG1000: Expenses: P1A-Excavation and Earth Works 68256
- DUKHCONP1AZ6STUG1005: Expenses: P1A-Excavation and Earth Works 8640
- DUKHCONP1AZ6STUG1010: Expenses: P1A-Concrete Works 14285
- DUKHCONP1AZ6STUG1015: Expenses: P1A-Concrete Works 52596
- DUKHCONP1AZ6STUG1020: Expenses: P1A-Concrete Works 225546
- DUKHCONP1AZ6STUG1025: Expenses: P1A-Concrete Works 35935
- DUKHCONP1AZ6STUG1030: Expenses: P1A-Concrete Works 22459
- DUKHCONP1AZ6STUG1035: Expenses: P1A-Excavation and Earth Works 22363
- DUKHCONP1AZ6STUG1040: Expenses: P1A-Concrete Works 326110
- DUKHCONP1AZ6STUG1045: Expenses: P1A-Concrete Works 239062

| ID | WBS | Activity | Duration | Start | Finish | Predecessors | Total float | Free float | Resources | Cost | CODE | rem | P3 ACTID | P6 ID (old) | NP61D | PROJECT | PHASES | PACKAGE | PART | ELEMENTS | STEP | FLOORS | BILL NOS | BILL DIVISION | RES PACK | EXECUTER |
| --- | --- | --- | --- | --- | --- | --- | --- | --- | --- | --- | --- | --- | --- | --- | --- | --- | --- | --- | --- | --- | --- | --- | --- | --- | --- | --- |
|  | 15 | **SUPERSTRUCTURE** |  | 2013-12-26 | 2014-05-19 |  |  |  |  |  |  |  |  |  |  |  |  |  |  |  |  |  |  |  |  |  |
|  | 10 | **GROUND FLOOR** |  | 2013-12-26 | 2014-02-20 |  |  |  |  |  |  |  |  |  |  |  |  |  |  |  |  |  |  |  |  |  |
| DUKHCONP1AZ6STGF2000 |  | Column-Rebar & Formwork | 25d | 2013-12-26 | 2014-01-23 | DUKHCONP1AZ6STUG1045 FF+7d, DUKHCONP1AZ5STGF2000, DUKHCONP1AZ6STUG1045 SS+14d | -24d | 0d | STEEL FIXERS SK [656 h]; CARPENTERS SK [1656 h]; LABOR- SUBCONTRACTOR [1734 h]; REINFORCEMENT BARS QTY [8198 kg]; FORMWORK QTY [828 Sqm] | 73,433 | 10 | REM | 1AP6SPGF10 | DUKHCON1AP6STGF2000 | DUKHCONP1AZ6STGF2000 | DH | CON | 1A | Z6 | ST | SP | GF | B02 | B02-D02 | RES-1A |  |
| DUKHCONP1AZ6STGF2005 |  | Column-Concrete | 24d | 2014-01-04 | 2014-01-30 | DUKHCONP1AZ6STGF2000 FF+2d, DUKHCONP1AZ6STGF2000 SS+7d | -22d | 0d | CONCRETE MASON SK [146 h]; LABOR- SUBCONTRACTOR [109.5 h]; CONCRETE QTY [73 Cum] | 20,945 | 15 | REM | 1AP6SPGF15 | DUKHCON1AP6STGF2005 | DUKHCONP1AZ6STGF2005 | DH | CON | 1A | Z6 | ST | SP | GF | B02 | B02-D02 | RES-1A |  |
| DUKHCONP1AZ6STGF2010 |  | Beam, Stairs ,Slab-Rebar & Formwork | 25d | 2014-01-19 | 2014-02-17 | DUKHCONP1AZ6STGF2005 FF+14d, DUKHCONP1AZ6STGF2005 SS+2d | -22d | 0d | STEEL FIXERS SK [4091 h]; CARPENTERS SK [5526 h]; LABOR- SUBCONTRACTOR [7212.75 h]; REINFORCEMENT BARS QTY [51136 kg]; FORMWORK QTY [2763 Sqm] | 326,549 | 20 | REM | 1AP6SPGF20 | DUKHCON1AP6STGF2010 | DUKHCONP1AZ6STGF2010 | DH | CON | 1A | Z6 | ST | SP | GF | B02 | B02-D02 | RES-1A |  |
| DUKHCONP1AZ6STGF2015 |  | Beam, Stairs ,Slab-Concrete | 14d | 2014-02-04 | 2014-02-20 | DUKHCONP1AZ6STGF2010 FF+3d, DUKHCONP1AZ6STGF2010 SS+10d, DUKHCONP1AZ5STGF2015 | -22d | 0d | CONCRETE MASON SK [740 h]; LABOR- SUBCONTRACTOR [555 h]; CONCRETE QTY [370 Cum] | 131,494 | 25 | REM | 1AP6SPGF25 | DUKHCON1AP6STGF2015 | DUKHCONP1AZ6STGF2015 | DH | CON | 1A | Z6 | ST | SP | GF | B02 | B02-D02 | RES-1A |  |
|  | 15 | **FIRST FLOORS** |  | 2014-02-06 | 2014-04-05 |  |  |  |  |  |  |  |  |  |  |  |  |  |  |  |  |  |  |  |  |  |
| DUKHCONP1AZ6STFF2020 |  | Column-Rebar & Formwork | 25d | 2014-02-06 | 2014-03-08 | DUKHCONP1AZ6STGF2015 FF+5d, DUKHCONP1AZ5STFF2020, DUKHCONP1AZ6STGF2015 SS+2d | -22d | 0d | STEEL FIXERS SK [574 h]; CARPENTERS SK [1472 h]; REINFORCEMENT BARS QTY [7175 kg]; FORMWORK QTY [736 Sqm]; LABOR- SUBCONTRACTOR [1534.5 h] | 64,915 | 10 | REM | 1AP6SPFF10 | DUKHCON1AP6STFF2020 | DUKHCONP1AZ6STFF2020 | DH | CON | 1A | Z6 | ST | SP | FF | B02 | B02-D02 | RES-1A |  |
| DUKHCONP1AZ6STFF2025 |  | Column-Concrete | 24d | 2014-02-17 | 2014-03-16 | DUKHCONP1AZ6STFF2020 FF+2d, DUKHCONP1AZ6STFF2020 SS+8d | -20d | 0d | CONCRETE MASON SK [128 h]; LABOR- SUBCONTRACTOR [96 h]; CONCRETE QTY [64 Cum] | 18,331 | 15 | REM | 1AP6SPFF15 | DUKHCON1AP6STFF2025 | DUKHCONP1AZ6STFF2025 | DH | CON | 1A | Z6 | ST | SP | FF | B02 | B02-D02 | RES-1A |  |
| DUKHCONP1AZ6STFF2030 |  | Beam, Stairs ,Slab-Rebar & Formwork | 25d | 2014-03-04 | 2014-04-01 | DUKHCONP1AZ6STFF2025 SS+2d, DUKHCONP1AZ6STFF2025 FF+14d | -20d | 0d | STEEL FIXERS SK [3685 h]; CARPENTERS SK [5526 h]; LABOR- SUBCONTRACTOR [6908.25 h]; REINFORCEMENT BARS QTY [46062 kg]; FORMWORK QTY [2763 Sqm] | 310,154 | 20 | REM | 1AP6SPFF20 | DUKHCON1AP6STFF2030 | DUKHCONP1AZ6STFF2030 | DH | CON | 1A | Z6 | ST | SP | FF | B02 | B02-D02 | RES-1A |  |
| DUKHCONP1AZ6STFF2035 |  | Beam, Stairs ,Slab-Concrete | 14d | 2014-03-20 | 2014-04-05 | DUKHCONP1AZ5STFF2035, DUKHCONP1AZ6STFF2030 SS+10d, DUKHCONP1AZ6STFF2030 FF+3d | -20d | 0d | CONCRETE MASON SK [652 h]; LABOR- SUBCONTRACTOR [489 h]; CONCRETE QTY [326 Cum] | 119,102 | 25 | REM | 1AP6SPFF25 | DUKHCON1AP6STFF2035 | DUKHCONP1AZ6STFF2035 | DH | CON | 1A | Z6 | ST | SP | FF | B02 | B02-D02 | RES-1A |  |
|  | 20 | **ROOF** |  | 2014-03-23 | 2014-05-19 |  |  |  |  |  |  |  |  |  |  |  |  |  |  |  |  |  |  |  |  |  |
| DUKHCONP1AZ6STRF2040 |  | Column-Rebar & Formwork | 18d | 2014-03-23 | 2014-04-12 | DUKHCONP1AZ5STRF2040, DUKHCONP1AZ6STFF2035 SS+2d, DUKHCONP1AZ6STFF2035 FF+3d | -16d | 0d | STEEL FIXERS SK [137 h]; CARPENTERS SK [552 h]; LABOR- SUBCONTRACTOR [516.75 h]; REINFORCEMENT BARS QTY [1707 kg]; FORMWORK QTY [276 Sqm] | 21,168 | 10 | REM | 1AP6SPRF10 | DUKHCON1AP6STRF2040 | DUKHCONP1AZ6STRF2040 | DH | CON | 1A | Z6 | ST | SP | RF | B02 | B02-D02 | RES-1A |  |
| DUKHCONP1AZ6STRF2045 |  | Column-Concrete | 17d | 2014-03-26 | 2014-04-14 | DUKHCONP1AZ6STRF2040 SS+3d, DUKHCONP1AZ6STRF2040 FF+1d | -16d | 0d | CONCRETE MASON SK [30 h]; LABOR- SUBCONTRACTOR [22.5 h]; CONCRETE QTY [15 Cum] | 4,363 | 15 | REM | 1AP6SPRF15 | DUKHCON1AP6STRF2045 | DUKHCONP1AZ6STRF2045 | DH | CON | 1A | Z6 | ST | SP | RF | B02 | B02-D02 | RES-1A |  |
| DUKHCONP1AZ6STRF2050 |  | Slab-Rebar & Formwork - Head Room | 20d | 2014-03-29 | 2014-04-20 | DUKHCONP1AZ6STRF2045 SS+2d, DUKHCONP1AZ6STRF2045 FF+5d | -16d | 0d | STEEL FIXERS SK [869 h]; CARPENTERS SK [694 h]; LABOR- SUBCONTRACTOR [1172.25 h]; REINFORCEMENT BARS QTY [10859 kg]; FORMWORK QTY [347 Sqm] | 61,496 | 20 | REM | 1AP6SPRF20 | DUKHCON1AP6STRF2050 | DUKHCONP1AZ6STRF2050 | DH | CON | 1A | Z6 | ST | SP | RF | B02 | B02-D02 | RES-1A |  |
| DUKHCONP1AZ6STRF2055 |  | Slab-Concrete-Head room | 13d | 2014-04-08 | 2014-04-22 | DUKHCONP1AZ6STRF2050 SS+5d, DUKHCONP1AZ5STRF2055, DUKHCONP1AZ6STRF2050 FF+2d | -16d | 0d | CONCRETE MASON SK [144 h]; LABOR- SUBCONTRACTOR [108 h]; CONCRETE QTY [72 Cum] | 22,960 | 25 | REM | 1AP6SPRF25 | DUKHCON1AP6STRF2055 | DUKHCONP1AZ6STRF2055 | DH | CON | 1A | Z6 | ST | SP | RF | B02 | B02-D02 | RES-1A |  |
| DUKHCONP1AZ6STRF2060 |  | Construction of Parapets | 25d | 2014-04-10 | 2014-05-08 | DUKHCONP1AZ6STRF2055 SS+2d, DUKHCONP1AZ6STRF2055 FF+14d | 32d | 4d | BLOCK MASON SK [1408 h]; LABOR- SUBCONTRACTOR [792 h]; BLOCK QTY [704 Sqm] | 43,648 | 30 | REM | 1AP6SPRF30 | DUKHCON1AP6STRF2060 | DUKHCONP1AZ6STRF2060 | DH | CON | 1A | Z6 | ST | SP | RF | B02 | B02-D03 | RES-1A |  |
| DUKHCONP1AZ6STRF2065 |  | Construction of up stands/Plinth | 25d | 2014-04-21 | 2014-05-19 | DUKHCONP1AZ6STRF2060 FF+5d, DUKHCONP1AZ6STRF2060 SS+5d, DUKHCONP1AZ5STRF2065 | 28d | 0d | STEEL FIXERS SK [45 h]; CARPENTERS SK [256 h]; CONCRETE MASON SK [16 h]; LABOR- SUBCONTRACTOR [237.75 h]; REINFORCEMENT BARS QTY [559 kg]; FORMWORK QTY [128 Sqm]; CONCRETE QTY [8 Cum] | 12,624 | 35 | REM | 1AP6SPRF35 | DUKHCON1AP6STRF2065 | DUKHCONP1AZ6STRF2065 | DH | CON | 1A | Z6 | ST | SP | RF | B02 | B02-D02 | RES-1A |  |
|  | 15 | **FINISHING WORKS** |  | 2014-03-08 | 2014-09-14 |  |  |  |  |  |  |  |  |  |  |  |  |  |  |  |  |  |  |  |  |  |
|  | 10 | **INTERNAL FINISHES** |  | 2014-03-08 | 2014-09-14 |  |  |  |  |  |  |  |  |  |  |  |  |  |  |  |  |  |  |  |  |  |
|  | 10 | **GROUND FLOOR** |  | 2014-03-08 | 2014-08-20 |  |  |  |  |  |  |  |  |  |  |  |  |  |  |  |  |  |  |  |  |  |
| DUKHCONP1AZ6ARGF3000 |  | Block work | 25d | 2014-03-08 | 2014-04-05 | DUKHCONP1AZ6STGF2015 SS+21d, DUKHCONP1AZ6STGF2015 FF+21d, DUKHCONP1AZ5ARGF3000 | -6d | 0d | BLOCK MASON SK [6232 h]; LABOR- SUBCONTRACTOR [3505.5 h]; BLOCK QTY [3116 Sqm] | 225,562 | 10 | REM | 1AP6IFGF10 | DUKHCON1AP6ARGF3000 | DUKHCONP1AZ6ARGF3000 | DH | CON | 1A | Z6 | FIN | IF | GF | B02 | B02-D03 | RES-1A |  |
| DUKHCONP1AZ6ARGF3005 |  | Plastering work | 25d | 2014-03-30 | 2014-04-27 | DUKHCONP1AZ6ELGF4000 SS+5d, DUKHCONP1AZ6ARGF3000 SS+7d, DUKHCONP1AZ5ARGF3005, DUKHCONP1AZ6ELGF4000 FF+5d, DUKHCONP1AZ6PLGF4305 FF+5d, DUKHCONP1AZ6ARGF3000 FF+7d, DUKHCONP1AZ6PLGF4305 SS+5d | -6d | 0d | PLASTER MASON SK [8728 h]; LABOR- SUBCONTRACTOR [4909.5 h]; PLASTER QTY [5455 Sqm] | 71,593 | 12 | REM | 1AP6IFGF12 | DUKHCON1AP6ARGF3005 | DUKHCONP1AZ6ARGF3005 | DH | CON | 1A | Z6 | FIN | IF | GF | B02 | B02-D10 | RES-1A |  |
| DUKHCONP1AZ6ARGF3010 |  | Flooring screed | 21d | 2014-04-07 | 2014-04-30 | DUKHCONP1AZ6ARGF3005 FF+3d, DUKHCONP1AZ6ARGF3005 SS+7d | 2d | 8d | SCREED MASON SK [1149 h]; LABOR- SUBCONTRACTOR [431.25 h]; FLOORING SCREED QTY [1436 Sqm] | 48,008 | 15 | REM | 1AP6IFGF15 | DUKHCON1AP6ARGF3010 | DUKHCONP1AZ6ARGF3010 | DH | CON | 1A | Z6 | FIN | IF | GF | B02 | B02-D10 | RES-1A |  |
| DUKHCONP1AZ6ARGF3015 |  | Wet area waterproofing & Protection Screed | 15d | 2014-04-16 | 2014-05-03 | DUKHCONP1AZ5ARGF3015, DUKHCONP1AZ6ARGF3005 FF+5d, DUKHCONP1AZ6ARGF3005 SS+7d | -6d | 0d | LABOR- SUBCONTRACTOR [67.5 h]; WETAREA WATERPROOFING QTY [224 Sqm]; WATERPROOFING SPECIALIST SK [180 h] | 7,616 | 18 | REM | 1AP6IFGF18 | DUKHCON1AP6ARGF3015 | DUKHCONP1AZ6ARGF3015 | DH | CON | 1A | Z6 | FIN | IF | GF | B02 | B02-D10 | RES-1A |  |
| DUKHCONP1AZ6ARGF3030 |  | Paint First coat | 25d | 2014-04-19 | 2014-05-17 | DUKHCONP1AZ6ARGF3005 FF+14d, DUKHCONP1AZ6ARGF3005 SS+14d, DUKHCONP1AZ5ARGF3030 | 5d | 0d | LABOR- SUBCONTRACTOR [1479.75 h]; FIRSTCOAT PAINT QTY [4932 Sqm]; PAINTERS SK [3946 h] | 26,608 | 21 | REM | 1AP6IFGF21 | DUKHCON1AP6ARGF3030 | DUKHCONP1AZ6ARGF3030 | DH | CON | 1A | Z6 | FIN | IF | GF | B02 | B02-D11 | RES-1A | ENT |
| DUKHCONP1AZ6ARGF3020 |  | Ceramic Wall Tiling | 25d | 2014-04-22 | 2014-05-20 | DUKHCONP1AZ6PLGF4310 SS+4d, DUKHCONP1AZ6PLGF4305 SS+4d, DUKHCONP1AZ6PLGF4310 FF+4d, DUKHCONP1AZ5ARGF3020, DUKHCONP1AZ6ARGF3015 SS+5d, DUKHCONP1AZ6PLGF4305 FF+4d, DUKHCONP1AZ6ARGF3015 FF+5d | -6d | 0d | TILE MASON SK [2834 h]; LABOR- SUBCONTRACTOR [1594.5 h]; CERAMIC WALL TILE QTY [1417 Sqm] | 92,597 | 24 | REM | 1AP6IFGF24 | DUKHCON1AP6ARGF3020 | DUKHCONP1AZ6ARGF3020 | DH | CON | 1A | Z6 | FIN | IF | GF | B02 | B02-D10 | RES-1A |  |
| DUKHCONP1AZ6ARGF3025 |  | Porcelain Tile flooring | 25d | 2014-04-28 | 2014-05-26 | DUKHCONP1AZ6ARGF3010 SS+10d, DUKHCONP1AZ6ARGF3010 FF+10d, DUKHCONP1AZ5ARGF3025, DUKHCONP1AZ6ARGF3020 FF+5d, DUKHCONP1AZ6ARGF3020 SS+5d | -6d | 0d | TILE MASON SK [1116 h]; LABOR- SUBCONTRACTOR [627.75 h]; PORCELAIN FLOORING QTY [976 Sqm] | 74,919 | 27 | REM | 1AP6IFGF27 | DUKHCON1AP6ARGF3025 | DUKHCONP1AZ6ARGF3025 | DH | CON | 1A | Z6 | FIN | IF | GF | B02 | B02-D10 | RES-1A |  |
| DUKHCONP1AZ6ARGF3045 |  | Fixing of Suspension systems | 20d | 2014-05-15 | 2014-06-07 | DUKHCONP1AZ6ELGF4010 SS+5d, DUKHCONP1AZ6ARGF3030 FF+7d, DUKHCONP1AZ6ARGF3025 SS+10d, DUKHCONP1AZ5ARGF3045, DUKHCONP1AZ6ELGF4010 FF+5d, DUKHCONP1AZ6ARGF3030 SS+7d, DUKHCONP1AZ6ARGF3025 FF+10d | -6d | 0d | LABOR- SUBCONTRACTOR [523.82 h]; SUSPENSION QTY [1164.04 Sqm]; FALSE CEILING SKILLED SK [931.23 h] | 22,840 | 39 | REM | 1AP6IFGF39 | DUKHCON1AP6ARGF3045 | DUKHCONP1AZ6ARGF3045 | DH | CON | 1A | Z6 | FIN | IF | GF | B02 | B02-D10 | RES-1A | SUS |
| DUKHCONP1AZ6ARGF3035 |  | Slate Tile Flooring & Skirting | 15d | 2014-05-18 | 2014-06-03 | DUKHCONP1AZ6ARGF3025 FF+7d, DUKHCONP1AZ6ARGF3025 SS+13d, DUKHCONP1AZ6ARGF3010 FF+13d, DUKHCONP1AZ6ARGF3010 SS+13d | -1d | 2d | TILE MASON SK [487 h]; LABOR- SUBCONTRACTOR [274.5 h]; SLATE TILE QTY [304 Sqm] | 65,885 | 33 | REM | 1AP6IFGF33 | DUKHCON1AP6ARGF3035 | DUKHCONP1AZ6ARGF3035 | DH | CON | 1A | Z6 | FIN | IF | GF | B02 | B02-D10 | RES-1A |  |
| DUKHCONP1AZ6ARGF3055 |  | Aluminum tile false ceiling | 25d | 2014-05-24 | 2014-06-21 | DUKHCONP1AZ6ARGF3045 FF+7d, DUKHCONP1AZ6ACGF4600 SS+7d, DUKHCONP1AZ6ACGF4600 FF+7d, DUKHCONP1AZ6ARGF3045 SS+7d | -3d | 3d | LABOR- SUBCONTRACTOR [54 h]; FALSE CEILING QTY [120 Sqm]; FALSE CEILING SKILLED SK [96 h] | 7,661 | 42 | REM | 1AP6IFGF42 | DUKHCON1AP6ARGF3055 | DUKHCONP1AZ6ARGF3055 | DH | CON | 1A | Z6 | FIN | IF | GF | B02 | B02-D10 | RES-1A | ALU |
| DUKHCONP1AZ6ARGF3040 |  | Cobble Tile flooring | 15d | 2014-05-25 | 2014-06-10 | DUKHCONP1AZ6ARGF3035 SS+4d, DUKHCONP1AZ6ARGF3010 FF+13d, DUKHCONP1AZ6ARGF3025 FF+13d, DUKHCONP1AZ6ARGF3025 SS+13d, DUKHCONP1AZ6ARGF3035 FF+4d, DUKHCONP1AZ6ARGF3010 SS+13d | -3d | 0d | TILE MASON SK [474 h]; LABOR- SUBCONTRACTOR [267 h]; COBBLE STONE QTY [296 Sqm] | 24,687 | 30 | REM | 1AP6IFGF30 | DUKHCON1AP6ARGF3040 | DUKHCONP1AZ6ARGF3040 | DH | CON | 1A | Z6 | FIN | IF | GF | B02 | B02-D10 | RES-1A |  |
| DUKHCONP1AZ6ARGF3060 |  | Gypsum board false ceiling | 25d | 2014-05-27 | 2014-06-24 | DUKHCONP1AZ6ACGF4600 FF+7d, DUKHCONP1AZ6ACGF4600 SS+7d, DUKHCONP1AZ5ARGF3060, DUKHCONP1AZ6ARGF3045 FF+10d, DUKHCONP1AZ6ARGF3045 SS+10d | -6d | 0d | LABOR- SUBCONTRACTOR [480.75 h]; FALSE CEILING QTY [1068.04 Sqm]; FALSE CEILING SKILLED SK [854.4 h] | 60,827 | 45 | REM | 1AP6IFGF45 | DUKHCON1AP6ARGF3060 | DUKHCONP1AZ6ARGF3060 | DH | CON | 1A | Z6 | FIN | IF | GF | B02 | B02-D10 | RES-1A | GYP |
| DUKHCONP1AZ6ARGF3050 |  | Granite - Stair case flooring & Skirting | 20d | 2014-06-02 | 2014-06-24 | DUKHCONP1AZ6ARGF3025 FF+13d, DUKHCONP1AZ6ARGF3040 FF+7d, DUKHCONP1AZ6ARGF3025 SS+13d, DUKHCONP1AZ6ARGF3040 SS+7d | -3d | 0d | GRANITE MASON SK [560 h]; LABOR- SUBCONTRACTOR [315 h]; GRANITE QTY [140 Sqm] | 93,589 | 36 | REM | 1AP6IFGF36 | DUKHCON1AP6ARGF3050 | DUKHCONP1AZ6ARGF3050 | DH | CON | 1A | Z6 | FIN | IF | GF | B02 | B02-D10 | RES-1A |  |
| DUKHCONP1AZ6ARGF3065 |  | Wooden door & PVC Door | 15d | 2014-06-16 | 2014-07-02 | DUKHCONP1AZ5ARGF3065, DUKHCONP1AZ6ARGF3035 FF+7d, DUKHCONP1AZ6ARGF3050 SS+7d, DUKHCONP1AZ6ARGF3035 SS+7d, DUKHCONP1AZ6ARGF3050 FF+7d | -3d | 0d | LABOR- SUBCONTRACTOR [84 h]; WOODEN DOOR QTY [56 ea]; DOOR ERECTOR SK [224 h] | 233,577 | 48 | REM | 1AP6IFGF48 | DUKHCON1AP6ARGF3065 | DUKHCONP1AZ6ARGF3065 | DH | CON | 1A | Z6 | FIN | IF | GF | B02 | B02-D05 | RES-1A |  |
| DUKHCONP1AZ6ARGF3070 |  | Aluminum doors | 15d | 2014-06-22 | 2014-07-08 | DUKHCONP1AZ6ARGF3065 FF+5d, DUKHCONP1AZ6ARGF3065 SS+5d, DUKHCONP1AZ5ARGF3070 | -3d | 0d | LABOR- SUBCONTRACTOR [48 h]; ALUMINIUM DOOR QTY [32 ea]; DOOR ERECTOR SK [128 h] | 83,208 | 51 | REM | 1AP6IFGF51 | DUKHCON1AP6ARGF3070 | DUKHCONP1AZ6ARGF3070 | DH | CON | 1A | Z6 | FIN | IF | GF | B02 | B02-D06 | RES-1A |  |
| DUKHCONP1AZ6ARGF3075 |  | Carpentry & Joinery Works | 20d | 2014-06-28 | 2014-07-20 | DUKHCONP1AZ5ARGF3075, DUKHCONP1AZ6ARGF3070 FF+7d, DUKHCONP1AZ6ARGF3070 SS+5d | -3d | 0d | LABOR- SUBCONTRACTOR [156 h]; CABINET QTY [48 ea]; COUNTER QTY [8 ea]; JOINERY WORK SK [384 h]; COUNTER SK [32 h] | 114,072 | 57 | REM | 1AP6IFGF57 | DUKHCON1AP6ARGF3075 | DUKHCONP1AZ6ARGF3075 | DH | CON | 1A | Z6 | FIN | IF | GF | B02 | B02-D05 | RES-1A |  |
| DUKHCONP1AZ6ARGF3080 |  | Aluminum windows | 20d | 2014-06-29 | 2014-07-21 | DUKHCONP1AZ6ARGF3070 FF+6d, DUKHCONP1AZ5ARGF3080, DUKHCONP1AZ6ARGF3070 SS+6d | 7d | 5d | LABOR- SUBCONTRACTOR [44.25 h]; ALUMINIUM WINDOWS QTY [44 ea]; WINDOW ERECTOR SK [118 h] | 36,283 | 54 | REM | 1AP6IFGF54 | DUKHCON1AP6ARGF3080 | DUKHCONP1AZ6ARGF3080 | DH | CON | 1A | Z6 | FIN | IF | GF | B02 | B02-D06 | RES-1A |  |
| DUKHCONP1AZ6ARGF3085 |  | S.S.Balustrade | 20d | 2014-07-06 | 2014-07-28 | DUKHCONP1AZ6ARGF3050 FF+7d, DUKHCONP1AZ6ARGF3075 SS+7d, DUKHCONP1AZ6ARGF3050 SS+7d, DUKHCONP1AZ6ARGF3075 FF+7d | 2d | 5d | LABOR- SUBCONTRACTOR [94.5 h]; S.S.BALUSTRADE QTY [84 lm]; HANDRAIL ERECTOR SKILLED [168 h] | 121,464 | 63 | REM | 1AP6IFGF63 | DUKHCON1AP6ARGF3085 | DUKHCONP1AZ6ARGF3085 | DH | CON | 1A | Z6 | FIN | IF | GF | B02 | B02-D06 | RES-1A |  |
| DUKHCONP1AZ6ARGF3090 |  | Installation of Granite Counter Top | 15d | 2014-07-10 | 2014-07-27 | DUKHCONP1AZ6ARGF3075 SS+7d, DUKHCONP1AZ6ARGF3075 FF+6d | -3d | 0d | GRANITE MASON SK [128 h]; LABOR- SUBCONTRACTOR [48 h]; GRANITE COUNTER TOP QTY [32 ea] | 34,847 | 60 | REM | 1AP6IFGF60 | DUKHCON1AP6ARGF3090 | DUKHCONP1AZ6ARGF3090 | DH | CON | 1A | Z6 | FIN | IF | GF | B02 | B02-D10 | RES-1A |  |
| DUKHCONP1AZ6ARGF3095 |  | Final Painting | 25d | 2014-07-20 | 2014-08-20 | DUKHCONP1AZ6ARGF3070 SS+5d, DUKHCONP1AZ6ARGF3035 FF+13d, DUKHCONP1AZ6ARGF3080 FF+8d, DUKHCONP1AZ6ACGF4610 FF+10d, DUKHCONP1AZ6ARGF3040 SS+13d, DUKHCONP1AZ6ARGF3060 SS+8d, DUKHCONP1AZ6ARGF3040 FF+13d, DUKHCONP1AZ6ARGF3060 FF+8d, DUKHCONP1AZ6ARGF3070 FF+5d, DUKHCONP1AZ6ACGF4610 SS+10d, DUKHCONP1AZ6ARGF3035 SS+13d, DUKHCONP1AZ6ARGF3080 SS+8d, DUKHCONP1AZ5ARGF3095, DUKHCONP1AZ6ARGF3090 FF+8d, DUKHCONP1AZ6ARGF3085 FF+7d, DUKHCONP1AZ6ARGF3030 FF+10d, DUKHCONP1AZ6ARGF3030 SS+10d, DUKHCONP1AZ6ARGF3090 SS+8d, DUKHCONP1AZ6ARGF3085 SS+7d | -3d | 0d | LABOR- SUBCONTRACTOR [1479.75 h]; PAINT QTY [4932 Sqm]; PAINTERS SK [3946 h] | 61,805 | 66 | REM | 1AP6IFGF66 | DUKHCON1AP6ARGF3095 | DUKHCONP1AZ6ARGF3095 | DH | CON | 1A | Z6 | FIN | IF | GF | B02 | B02-D11 | RES-1A | PNT |

Notes:
- DUKHCONP1AZ6STGF2000: Expenses: P1A-Concrete Works 73433
- DUKHCONP1AZ6STGF2005: Expenses: P1A-Concrete Works 20945
- DUKHCONP1AZ6STGF2010: Expenses: P1A-Concrete Works 326549
- DUKHCONP1AZ6STGF2015: Expenses: P1A-Concrete Works 131494
- DUKHCONP1AZ6STFF2020: Expenses: P1A-Concrete Works 64915
- DUKHCONP1AZ6STFF2025: Expenses: P1A-Concrete Works 18331
- DUKHCONP1AZ6STFF2030: Expenses: P1A-Concrete Works 310154
- DUKHCONP1AZ6STFF2035: Expenses: P1A-Concrete Works 119102
- DUKHCONP1AZ6STRF2040: Expenses: P1A-Concrete Works 21168
- DUKHCONP1AZ6STRF2045: Expenses: P1A-Concrete Works 4363
- DUKHCONP1AZ6STRF2050: Expenses: P1A-Concrete Works 61496
- DUKHCONP1AZ6STRF2055: Expenses: P1A-Concrete Works 22960
- DUKHCONP1AZ6STRF2060: Expenses: P1A-Block work 43648
- DUKHCONP1AZ6STRF2065: Expenses: P1A-Concrete Works 12624
- DUKHCONP1AZ6ARGF3000: Expenses: P1A-Block work 225562
- DUKHCONP1AZ6ARGF3005: Expenses: P1A-Finishes 71593
- DUKHCONP1AZ6ARGF3010: Expenses: P1A-Finishes 48008
- DUKHCONP1AZ6ARGF3015: Expenses: P1A-Finishes 7616
- DUKHCONP1AZ6ARGF3030: Expenses: P1A-Painting and Decorating 26608
- DUKHCONP1AZ6ARGF3020: Expenses: P1A-Finishes 92597
- DUKHCONP1AZ6ARGF3025: Expenses: P1A-Finishes 74919
- DUKHCONP1AZ6ARGF3045: Expenses: P1A-Finishes 22840
- DUKHCONP1AZ6ARGF3035: Expenses: P1A-Finishes 65885
- DUKHCONP1AZ6ARGF3055: Expenses: P1A-Finishes 7661
- DUKHCONP1AZ6ARGF3040: Expenses: P1A-Finishes 24687
- DUKHCONP1AZ6ARGF3060: Expenses: P1A-Finishes 60827
- DUKHCONP1AZ6ARGF3050: Expenses: P1A-Finishes 93589
- DUKHCONP1AZ6ARGF3065: Expenses: P1A-Carpentry and Joinery 233577
- DUKHCONP1AZ6ARGF3070: Expenses: P1A-Metal work 83208
- DUKHCONP1AZ6ARGF3075: Expenses: P1A-Carpentry and Joinery 114072
- DUKHCONP1AZ6ARGF3080: Expenses: P1A-Metal work 36283
- DUKHCONP1AZ6ARGF3085: Expenses: P1A-Metal work 121464
- DUKHCONP1AZ6ARGF3090: Expenses: P1A-Finishes 34847
- DUKHCONP1AZ6ARGF3095: Expenses: P1A-Painting and Decorating 61805

| ID | WBS | Activity | Duration | Start | Finish | Predecessors | Total float | Free float | Resources | Cost | CODE | rem | P3 ACTID | P6 ID (old) | NP61D | PROJECT | PHASES | PACKAGE | PART | ELEMENTS | STEP | FLOORS | BILL NOS | BILL DIVISION | RES PACK | EXECUTER |
| --- | --- | --- | --- | --- | --- | --- | --- | --- | --- | --- | --- | --- | --- | --- | --- | --- | --- | --- | --- | --- | --- | --- | --- | --- | --- | --- |
|  | 15 | **FIRST FLOORS** |  | 2014-04-19 | 2014-09-14 |  |  |  |  |  |  |  |  |  |  |  |  |  |  |  |  |  |  |  |  |  |
| DUKHCONP1AZ6ARFF3300 |  | Block work | 25d | 2014-04-19 | 2014-05-17 | DUKHCONP1AZ6STFF2020 SS+21d, DUKHCONP1AZ6STFF2035 SS+21d, DUKHCONP1AZ5ARFF3300, DUKHCONP1AZ6STFF2035 FF+21d, DUKHCONP1AZ6STFF2020 FF+21d | -24d | 0d | BLOCK MASON SK [4088 h]; LABOR- SUBCONTRACTOR [2299.5 h]; BLOCK QTY [2044 Sqm] | 127,687 | 10 | REM | 1AP6IFFF10 | DUKHCON1AP6ARFF3300 | DUKHCONP1AZ6ARFF3300 | DH | CON | 1A | Z6 | FIN | IF | FF | B02 | B02-D03 | RES-1A |  |
| DUKHCONP1AZ6ARFF3305 |  | Plastering work | 25d | 2014-05-13 | 2014-06-10 | DUKHCONP1AZ6ARFF3300 SS+7d, DUKHCONP1AZ6ELFF4035 FF+5d, DUKHCONP1AZ6PLFF4325 SS+6d, DUKHCONP1AZ6ELFF4035 SS+5d, DUKHCONP1AZ5ARFF3305, DUKHCONP1AZ6ARFF3300 FF+7d, DUKHCONP1AZ6PLFF4325 FF+6d | -24d | 0d | PLASTER MASON SK [5695 h]; LABOR- SUBCONTRACTOR [3204 h]; PLASTER QTY [3559 Sqm] | 46,951 | 12 | REM | 1AP6IFFF12 | DUKHCON1AP6ARFF3305 | DUKHCONP1AZ6ARFF3305 | DH | CON | 1A | Z6 | FIN | IF | FF | B02 | B02-D10 | RES-1A |  |
| DUKHCONP1AZ6ARFF3310 |  | Flooring screed | 21d | 2014-05-21 | 2014-06-14 | DUKHCONP1AZ6ARFF3305 SS+7d, DUKHCONP1AZ6ARFF3305 FF+3d | -12d | 12d | SCREED MASON SK [884 h]; LABOR- SUBCONTRACTOR [331.5 h]; FLOORING SCREED QTY [1105 Sqm] | 36,472 | 15 | REM | 1AP6IFFF15 | DUKHCON1AP6ARFF3310 | DUKHCONP1AZ6ARFF3310 | DH | CON | 1A | Z6 | FIN | IF | FF | B02 | B02-D10 | RES-1A |  |
| DUKHCONP1AZ6ARFF3330 |  | Paint First coat | 25d | 2014-05-29 | 2014-06-26 | DUKHCONP1AZ6ARFF3305 FF+14d, DUKHCONP1AZ6ARFF3305 SS+14d | -10d | 14d | LABOR- SUBCONTRACTOR [1293.75 h]; FIRSTCOAT PAINT QTY [4311.37 Sqm]; PAINTERS SK [3449 h] | 26,608 | 21 | REM | 1AP6IFFF21 | DUKHCON1AP6ARFF3330 | DUKHCONP1AZ6ARFF3330 | DH | CON | 1A | Z6 | FIN | IF | FF | B02 | B02-D11 | RES-1A | ENT |
| DUKHCONP1AZ6ARFF3315 |  | Wet area waterproofing | 15d | 2014-06-02 | 2014-06-18 | DUKHCONP1AZ5ARFF3315, DUKHCONP1AZ6ARFF3305 FF+7d, DUKHCONP1AZ6ARFF3305 SS+7d | -24d | 0d | LABOR- SUBCONTRACTOR [331.5 h]; WETAREA WATERPROOFING QTY [1104 Sqm]; WATERPROOFING SPECIALIST SK [884 h] | 36,704 | 18 | REM | 1AP6IFFF18 | DUKHCON1AP6ARFF3315 | DUKHCONP1AZ6ARFF3315 | DH | CON | 1A | Z6 | FIN | IF | FF | B02 | B02-D10 | RES-1A |  |
| DUKHCONP1AZ6ARFF3320 |  | Ceramic Wall Tiling | 25d | 2014-06-09 | 2014-07-07 | DUKHCONP1AZ5ARFF3320, DUKHCONP1AZ6PLFF4325 FF+4d, DUKHCONP1AZ6PLFF4330 SS+7d, DUKHCONP1AZ6PLFF4330 FF+7d, DUKHCONP1AZ6PLFF4325 SS+4d, DUKHCONP1AZ6ARFF3315 FF+6d, DUKHCONP1AZ6ARFF3315 SS+6d | -24d | 0d | TILE MASON SK [1214 h]; LABOR- SUBCONTRACTOR [683.25 h]; CERAMIC WALL TILE QTY [607 Sqm] | 42,941 | 24 | REM | 1AP6IFFF24 | DUKHCON1AP6ARFF3320 | DUKHCONP1AZ6ARFF3320 | DH | CON | 1A | Z6 | FIN | IF | FF | B02 | B02-D10 | RES-1A |  |
| DUKHCONP1AZ6ARFF3325 |  | Porcelain Tile flooring | 25d | 2014-06-16 | 2014-07-14 | DUKHCONP1AZ6ARFF3320 SS+6d, DUKHCONP1AZ6ARFF3310 FF+10d, DUKHCONP1AZ6ARFF3310 SS+10d, DUKHCONP1AZ6ARFF3320 FF+6d, DUKHCONP1AZ5ARFF3325 | -24d | 0d | TILE MASON SK [1116 h]; LABOR- SUBCONTRACTOR [627.75 h]; PORCELAIN FLOORING QTY [976 Sqm] | 74,923 | 27 | REM | 1AP6IFFF27 | DUKHCON1AP6ARFF3325 | DUKHCONP1AZ6ARFF3325 | DH | CON | 1A | Z6 | FIN | IF | FF | B02 | B02-D10 | RES-1A |  |
| DUKHCONP1AZ6ARFF3345 |  | Fixing of Suspension systems | 20d | 2014-06-29 | 2014-07-21 | DUKHCONP1AZ5ARFF3345, DUKHCONP1AZ6ARFF3325 SS+6d, DUKHCONP1AZ6ELFF4045 SS+5d, DUKHCONP1AZ6ARFF3330 SS+7d, DUKHCONP1AZ6ARFF3330 FF+7d, DUKHCONP1AZ6ARFF3325 FF+6d, DUKHCONP1AZ6ELFF4045 FF+5d | -24d | 0d | LABOR- SUBCONTRACTOR [469.8 h]; SUSPENSION QTY [1044 Sqm]; FALSE CEILING SKILLED SK [835.2 h] | 19,648 | 36 | REM | 1AP6IFFF36 | DUKHCON1AP6ARFF3345 | DUKHCONP1AZ6ARFF3345 | DH | CON | 1A | Z6 | FIN | IF | FF | B02 | B02-D10 | RES-1A | SUS |
| DUKHCONP1AZ6ARFF3335 |  | Slate Tile Flooring & Skirting | 15d | 2014-07-03 | 2014-07-20 | DUKHCONP1AZ6ARFF3325 SS+13d, DUKHCONP1AZ6ARFF3310 FF+13d, DUKHCONP1AZ6ARFF3310 SS+13d, DUKHCONP1AZ6ARFF3325 FF+5d | -16d | 8d | TILE MASON SK [167 h]; LABOR- SUBCONTRACTOR [94.5 h]; SLATE TILE QTY [104 Sqm] | 20,405 | 30 | REM | 1AP6IFFF30 | DUKHCON1AP6ARFF3335 | DUKHCONP1AZ6ARFF3335 | DH | CON | 1A | Z6 | FIN | IF | FF | B02 | B02-D10 | RES-1A |  |
| DUKHCONP1AZ6ARFF3360 |  | Gypsum board false ceiling | 25d | 2014-07-06 | 2014-08-06 | DUKHCONP1AZ6ARFF3345 FF+6d, DUKHCONP1AZ5ARFF3360, DUKHCONP1AZ6ACFF4615 FF+7d, DUKHCONP1AZ6ARFF3345 SS+6d, DUKHCONP1AZ6ACFF4615 SS+7d | -24d | 0d | LABOR- SUBCONTRACTOR [469.8 h]; FALSE CEILING QTY [1044 Sqm]; FALSE CEILING SKILLED SK [835.2 h] | 60,821 | 39 | REM | 1AP6IFFF39 | DUKHCON1AP6ARFF3360 | DUKHCONP1AZ6ARFF3360 | DH | CON | 1A | Z6 | FIN | IF | FF | B02 | B02-D10 | RES-1A | GYP |
| DUKHCONP1AZ6ARFF3350 |  | Granite - Stair case flooring & Skirting | 20d | 2014-07-07 | 2014-07-29 | DUKHCONP1AZ6ARFF3325 FF+13d, DUKHCONP1AZ6ARFF3325 SS+13d | -22d | 2d | GRANITE MASON SK [560 h]; LABOR- SUBCONTRACTOR [315 h]; GRANITE QTY [140 Sqm] | 93,598 | 33 | REM | 1AP6IFFF33 | DUKHCON1AP6ARFF3350 | DUKHCONP1AZ6ARFF3350 | DH | CON | 1A | Z6 | FIN | IF | FF | B02 | B02-D10 | RES-1A |  |
| DUKHCONP1AZ6ARFF3365 |  | Wooden door | 15d | 2014-07-21 | 2014-08-10 | DUKHCONP1AZ5ARFF3365, DUKHCONP1AZ6ARFF3360 SS+3d, DUKHCONP1AZ6ARFF3335 FF+7d, DUKHCONP1AZ6ARFF3350 SS+5d, DUKHCONP1AZ6ARFF3350 FF+5d, DUKHCONP1AZ6ARFF3360 FF+3d, DUKHCONP1AZ6ARFF3335 SS+7d | -24d | 0d | WOODEN DOOR QTY [56 ea]; DOOR ERECTOR SK [224 h]; LABOR- SUBCONTRACTOR [84 h] | 152,394 | 42 | REM | 1AP6IFFF42 | DUKHCON1AP6ARFF3365 | DUKHCONP1AZ6ARFF3365 | DH | CON | 1A | Z6 | FIN | IF | FF | B02 | B02-D05 | RES-1A |  |
| DUKHCONP1AZ6ARFF3370 |  | Aluminum Door | 20d | 2014-07-21 | 2014-08-16 | DUKHCONP1AZ5ARFF3370, DUKHCONP1AZ6ARFF3365 FF, DUKHCONP1AZ6ARFF3365 SS | -24d | 0d | LABOR- SUBCONTRACTOR [60 h]; ALUMINIUM DOOR QTY [40 ea]; DOOR ERECTOR SK [160 h] | 122,026 | 45 | REM | 1AP6IFFF45 | DUKHCON1AP6ARFF3370 | DUKHCONP1AZ6ARFF3370 | DH | CON | 1A | Z6 | FIN | IF | FF | B02 | B02-D06 | RES-1A |  |
| DUKHCONP1AZ6ARFF3375 |  | Carpentry & Joinery Works | 25d | 2014-07-27 | 2014-08-27 | DUKHCONP1AZ5ARFF3375, DUKHCONP1AZ6ARFF3370 FF+5d, DUKHCONP1AZ6ARFF3370 SS+5d | -24d | 0d | LABOR- SUBCONTRACTOR [300 h]; CABINET QTY [24 ea]; COUNTER QTY [24 ea]; WARDROBE QTY [40 ea]; SHELVES QTY [24 ea]; JOINERY WORK SK [704 h]; COUNTER SK [96 h] | 231,933 | 51 | REM | 1AP6IFFF51 | DUKHCON1AP6ARFF3375 | DUKHCONP1AZ6ARFF3375 | DH | CON | 1A | Z6 | FIN | IF | FF | B02 | B02-D05 | RES-1A |  |
| DUKHCONP1AZ6ARFF3380 |  | Aluminum windows | 20d | 2014-07-28 | 2014-08-23 | DUKHCONP1AZ6ARFF3370 SS+6d, DUKHCONP1AZ6ARFF3370 FF+6d | -20d | 4d | LABOR- SUBCONTRACTOR [44.25 h]; ALUMINIUM WINDOWS QTY [44 ea]; WINDOW ERECTOR SK [118 h] | 55,776 | 48 | REM | 1AP6IFFF48 | DUKHCON1AP6ARFF3380 | DUKHCONP1AZ6ARFF3380 | DH | CON | 1A | Z6 | FIN | IF | FF | B02 | B02-D06 | RES-1A |  |
| DUKHCONP1AZ6ARFF3385 |  | Handrail & Balustrade | 20d | 2014-08-11 | 2014-09-02 | DUKHCONP1AZ6ARFF3375 FF+5d, DUKHCONP1AZ6ARFF3375 SS+5d, DUKHCONP1AZ6ARFF3350 SS+7d, DUKHCONP1AZ6ARFF3350 FF+7d | -24d | 0d | LABOR- SUBCONTRACTOR [283.5 h]; S.S.BALUSTRADE QTY [252 lm]; HANDRAIL ERECTOR SKILLED [504 h] | 308,447 | 57 | REM | 1AP6IFFF57 | DUKHCON1AP6ARFF3385 | DUKHCONP1AZ6ARFF3385 | DH | CON | 1A | Z6 | FIN | IF | FF | B02 | B02-D06 | RES-1A |  |
| DUKHCONP1AZ6ARFF3390 |  | Installation of Granite Counter Top | 20d | 2014-08-11 | 2014-09-02 | DUKHCONP1AZ6ARFF3375 SS+6d, DUKHCONP1AZ6ARFF3375 FF+5d | -23d | 1d | GRANITE MASON SK [64 h]; LABOR- SUBCONTRACTOR [24 h]; GRANITE COUNTER TOP QTY [16 ea] | 7,594 | 54 | REM | 1AP6IFFF54 | DUKHCON1AP6ARFF3390 | DUKHCONP1AZ6ARFF3390 | DH | CON | 1A | Z6 | FIN | IF | FF | B02 | B02-D10 | RES-1A |  |
| DUKHCONP1AZ6ARFF3395 |  | Final Painting | 25d | 2014-08-17 | 2014-09-14 | DUKHCONP1AZ6ACFF4625 FF+6d, DUKHCONP1AZ6ARFF3350 SS+8d, DUKHCONP1AZ6ARFF3330 SS+10d, DUKHCONP1AZ6ARFF3335 SS+8d, DUKHCONP1AZ6ARFF3350 FF+8d, DUKHCONP1AZ6ARFF3365 FF+8d, DUKHCONP1AZ6ARFF3380 SS+10d, DUKHCONP1AZ6ARFF3375 FF+8d, DUKHCONP1AZ6ARFF3385 SS+5d, DUKHCONP1AZ5ARFF3395, DUKHCONP1AZ6ARFF3375 SS+8d, DUKHCONP1AZ6ARFF3360 FF+10d, DUKHCONP1AZ6ARFF3330 FF+10d, DUKHCONP1AZ6ARFF3335 FF+8d, DUKHCONP1AZ6ARFF3365 SS+8d, DUKHCONP1AZ6ARFF3360 SS+10d, DUKHCONP1AZ6ARFF3390 FF+6d, DUKHCONP1AZ6ARFF3390 SS+4d, DUKHCONP1AZ6ACFF4625 SS+6d, DUKHCONP1AZ6ARFF3380 FF+10d, DUKHCONP1AZ6ARFF3385 FF+5d | -24d | 0d | LABOR- SUBCONTRACTOR [1293.75 h]; PAINT QTY [4311.37 Sqm]; PAINTERS SK [3449 h] | 50,803 | 60 | REM | 1AP6IFFF60 | DUKHCON1AP6ARFF3395 | DUKHCONP1AZ6ARFF3395 | DH | CON | 1A | Z6 | FIN | IF | FF | B02 | B02-D11 | RES-1A | PNT |
|  | 20 | **ROOF** |  | 2014-05-03 | 2014-07-06 |  |  |  |  |  |  |  |  |  |  |  |  |  |  |  |  |  |  |  |  |  |
| DUKHCONP1AZ6ARRF3600 |  | Block work | 20d | 2014-05-03 | 2014-05-25 | DUKHCONP1AZ6STRF2055 SS+21d, DUKHCONP1AZ5ARRF3600, DUKHCONP1AZ6STRF2055 FF+21d | 28d | 0d | BLOCK MASON SK [448 h]; LABOR- SUBCONTRACTOR [252 h]; BLOCK QTY [224 Sqm] | 17,789 | 10 | REM | 1AP6IFRF10 | DUKHCON1AP6ARRF3600 | DUKHCONP1AZ6ARRF3600 | DH | CON | 1A | Z6 | FIN | IF | RF | B02 | B02-D03 | RES-1A |  |
| DUKHCONP1AZ6ARRF3605 |  | Plastering work | 20d | 2014-05-11 | 2014-06-02 | DUKHCONP1AZ6ARRF3600 FF+7d, DUKHCONP1AZ6ARRF3600 SS+7d | 28d | 0d | PLASTER MASON SK [1143 h]; LABOR- SUBCONTRACTOR [643.5 h]; PLASTER QTY [714 Sqm] | 9,277 | 20 | REM | 1AP6IFRF20 | DUKHCON1AP6ARRF3605 | DUKHCONP1AZ6ARRF3605 | DH | CON | 1A | Z6 | FIN | IF | RF | B02 | B02-D10 | RES-1A |  |
| DUKHCONP1AZ6ARRF3610 |  | Flooring screed | 15d | 2014-05-25 | 2014-06-10 | DUKHCONP1AZ6ARRF3605 SS+7d, DUKHCONP1AZ6ARRF3605 FF+7d | 33d | 0d | SCREED MASON SK [99 h]; LABOR- SUBCONTRACTOR [37.5 h]; FLOORING SCREED QTY [123 Sqm] | 4,056 | 30 | REM | 1AP6IFRF30 | DUKHCON1AP6ARRF3610 | DUKHCONP1AZ6ARRF3610 | DH | CON | 1A | Z6 | FIN | IF | RF | B02 | B02-D10 | RES-1A |  |
| DUKHCONP1AZ6ARRF3695 |  | Painting -Storage area | 20d | 2014-06-02 | 2014-06-24 | DUKHCONP1AZ6ARRF3610 FF+7d, DUKHCONP1AZ6ARRF3610 SS+7d | 33d | 0d | LABOR- SUBCONTRACTOR [456 h]; PAINT QTY [1472 Sqm]; PAINTERS SK [1184 h] | 7,956 | 40 |  | 1AP6IFRF40 | DUKHCON1AP6ARRF3695 | DUKHCONP1AZ6ARRF3695 | DH | CON | 1A | Z6 | FIN | IF | RF | B02 | B02-D11 | RES-1A |  |
| DUKHCONP1AZ6ARRF3620 |  | Epoxy Painting -Storage area | 15d | 2014-06-19 | 2014-07-06 | DUKHCONP1AZ6ARRF3695 SS+10d, DUKHCONP1AZ6ARRF3695 FF+10d | 33d | 57d | LABOR- SUBCONTRACTOR [13.5 h]; EPOXY QTY [64 Sqm]; EPOXY SK [35 h] | 3,216 | 50 | REM | 1AP6IFRF50 | DUKHCON1AP6ARRF3620 | DUKHCONP1AZ6ARRF3620 | DH | CON | 1A | Z6 | FIN | IF | RF | B02 | B02-D11 | RES-1A |  |

Notes:
- DUKHCONP1AZ6ARFF3300: Expenses: P1A-Block work 127687
- DUKHCONP1AZ6ARFF3305: Expenses: P1A-Finishes 46951
- DUKHCONP1AZ6ARFF3310: Expenses: P1A-Finishes 36472
- DUKHCONP1AZ6ARFF3330: Expenses: P1A-Painting and Decorating 26608
- DUKHCONP1AZ6ARFF3315: Expenses: P1A-Finishes 36704
- DUKHCONP1AZ6ARFF3320: Expenses: P1A-Finishes 42941
- DUKHCONP1AZ6ARFF3325: Expenses: P1A-Finishes 74923
- DUKHCONP1AZ6ARFF3345: Expenses: P1A-Finishes 19648
- DUKHCONP1AZ6ARFF3335: Expenses: P1A-Finishes 20405
- DUKHCONP1AZ6ARFF3360: Expenses: P1A-Finishes 60821
- DUKHCONP1AZ6ARFF3350: Expenses: P1A-Finishes 93598
- DUKHCONP1AZ6ARFF3365: Expenses: P1A-Carpentry and Joinery 152394
- DUKHCONP1AZ6ARFF3370: Expenses: P1A-Metal work 122026
- DUKHCONP1AZ6ARFF3375: Expenses: P1A-Carpentry and Joinery 231933
- DUKHCONP1AZ6ARFF3380: Expenses: P1A-Metal work 55776
- DUKHCONP1AZ6ARFF3385: Expenses: P1A-Metal work 308447
- DUKHCONP1AZ6ARFF3390: Expenses: P1A-Finishes 7594
- DUKHCONP1AZ6ARFF3395: Expenses: P1A-Painting and Decorating 50803
- DUKHCONP1AZ6ARRF3600: Expenses: P1A-Block work 17789
- DUKHCONP1AZ6ARRF3605: Expenses: P1A-Finishes 9277
- DUKHCONP1AZ6ARRF3610: Expenses: P1A-Finishes 4056
- DUKHCONP1AZ6ARRF3695: Expenses: P1A-Painting and Decorating 7956
- DUKHCONP1AZ6ARRF3620: Expenses: P1A-Painting and Decorating 3216

| ID | WBS | Activity | Duration | Start | Finish | Predecessors | Total float | Free float | Resources | Cost | CODE | rem | P3 ACTID | P6 ID (old) | NP61D | PROJECT | PHASES | PACKAGE | PART | ELEMENTS | STEP | FLOORS | BILL NOS | BILL DIVISION | RES PACK |
| --- | --- | --- | --- | --- | --- | --- | --- | --- | --- | --- | --- | --- | --- | --- | --- | --- | --- | --- | --- | --- | --- | --- | --- | --- | --- |
|  | 15 | **EXTERNAL FINISHES** |  | 2014-05-25 | 2014-08-14 |  |  |  |  |  |  |  |  |  |  |  |  |  |  |  |  |  |  |  |  |
|  | 10 | **ROOF** |  | 2014-06-08 | 2014-08-14 |  |  |  |  |  |  |  |  |  |  |  |  |  |  |  |  |  |  |  |  |
| DUKHCONP1AZ6ARRF3630 |  | Leveling Screed for Waterproofing | 25d | 2014-06-08 | 2014-07-06 | DUKHCONP1AZ6STRF2065 SS+10d, DUKHCONP1AZ6STRF2060 FF+10d, DUKHCONP1AZ5ARRF3630, DUKHCONP1AZ6STRF2060 SS+10d, DUKHCONP1AZ6STRF2065 FF+10d | -3d | 0d | SCREED MASON SK [512 h]; LABOR- SUBCONTRACTOR [288 h]; ROOF WP SCREED QTY [1280 Sqm] | 56,792 | 10 | REM | 1AP6EFRF10 | DUKHCON1AP6ARRF3630 | DUKHCONP1AZ6ARRF3630 | DH | CON | 1A | Z6 | FIN | EF | RF | B02 | B02-D04 | RES-1A |
| DUKHCONP1AZ6ARRF3635 |  | Laying of Waterproofing Membrane | 25d | 2014-06-11 | 2014-07-09 | DUKHCONP1AZ6ARRF3630 FF+3d, DUKHCONP1AZ6ARRF3630 SS+3d | -3d | 0d | LABOR- SUBCONTRACTOR [310.5 h]; ROOF WP MEMBRANE QTY [1552 Sqm]; WATERPROOFING SPECIALIST SK [828 h] | 43,994 | 15 | REM | 1AP6EFRF15 | DUKHCON1AP6ARRF3635 | DUKHCONP1AZ6ARRF3635 | DH | CON | 1A | Z6 | FIN | EF | RF | B02 | B02-D04 | RES-1A |
| DUKHCONP1AZ6ARRF3640 |  | Installation of Insulation & Protection | 25d | 2014-06-16 | 2014-07-14 | DUKHCONP1AZ6ARRF3635 SS+4d, DUKHCONP1AZ6ARRF3635 FF+4d | -3d | 0d | LABOR- SUBCONTRACTOR [384 h]; ROOF WP INSULATION QTY [2560 Sqm]; WATERPROOFING SPECIALIST SK [1024 h] | 55,936 | 20 | REM | 1AP6EFRF20 | DUKHCON1AP6ARRF3640 | DUKHCONP1AZ6ARRF3640 | DH | CON | 1A | Z6 | FIN | EF | RF | B02 | B02-D04 | RES-1A |
| DUKHCONP1AZ6ARRF3645 |  | Lime Stone Chips & Paving slab Installation | 25d | 2014-06-21 | 2014-07-19 | DUKHCONP1AZ6ARRF3640 SS+4d, DUKHCONP1AZ6ARRF3640 FF+4d | -3d | 0d | TILE MASON SK [45 h]; LABOR- SUBCONTRACTOR [188.25 h]; LIME STONE QTY [112 Sqm]; PRECAST PAVING SLAB QTY [1136 Sqm]; PRE CAST CONCRETE SK [455 h] | 83,344 | 25 | REM | 1AP6EFRF25 | DUKHCON1AP6ARRF3645 | DUKHCONP1AZ6ARRF3645 | DH | CON | 1A | Z6 | FIN | EF | RF | B02 | B02-D04 | RES-1A |
| DUKHCONP1AZ6ARRF3650 |  | Install. of Gal. Frame & Aluminum Slat Screen | 25d | 2014-06-29 | 2014-07-27 | DUKHCONP1AZ6ARRF3645 SS+7d, DUKHCONP1AZ6ARRF3645 FF+7d | -3d | 0d | LABOR- SUBCONTRACTOR [448.5 h]; ALUMINIUM SCREEN QTY [224 Sqm]; DOOR ERECTOR SK [598 h] | 63,347 | 35 | REM | 1AP6EFRF35 | DUKHCON1AP6ARRF3650 | DUKHCONP1AZ6ARRF3650 | DH | CON | 1A | Z6 | FIN | EF | RF | B02 | B02-D06 | RES-1A |
| DUKHCONP1AZ6ARRF3655 |  | Installation of Pumps Protection cabinets | 20d | 2014-07-14 | 2014-08-09 | DUKHCONP1AZ6ARRF3645 SS+7d, DUKHCONP1AZ5ARRF3655, DUKHCONP1AZ6ARRF3645 FF+7d, DUKHCONP1AZ6ARRF3650 SS+8d, DUKHCONP1AZ6ARRF3650 FF+8d | -3d | 0d | LABOR- SUBCONTRACTOR [168 h]; CABINET QTY [56 ea]; JOINERY WORK SK [448 h] | 26,600 | 30 | REM | 1AP6EFRF30 | DUKHCON1AP6ARRF3655 | DUKHCONP1AZ6ARRF3655 | DH | CON | 1A | Z6 | FIN | EF | RF | B02 | B02-D04 | RES-1A |
| DUKHCONP1AZ6ARRF3660 |  | Installation of Access Ladder | 15d | 2014-07-26 | 2014-08-14 | DUKHCONP1AZ6ARRF3655 SS+5d, DUKHCONP1AZ6ARRF3655 FF+5d | 2d | 26d | LADDER QTY [16 ea]; LADDER ERECTOR SK [128 h]; LABOR- SUBCONTRACTOR [48 h] | 53,206 | 40 | REM | 1AP6EFRF40 | DUKHCON1AP6ARRF3660 | DUKHCONP1AZ6ARRF3660 | DH | CON | 1A | Z6 | FIN | EF | RF | B02 | B02-D06 | RES-1A |
|  | 15 | **ELEVATION** |  | 2014-05-25 | 2014-07-15 |  |  |  |  |  |  |  |  |  |  |  |  |  |  |  |  |  |  |  |  |
| DUKHCONP1AZ6AREL3665 |  | External Plastering | 25d | 2014-05-25 | 2014-06-22 | DUKHCONP1AZ6ARRF3605 SS+7d, DUKHCONP1AZ6STRF2065 FF+7d, DUKHCONP1AZ6ARFF3305 FF+7d, DUKHCONP1AZ6STRF2065 SS+7d, DUKHCONP1AZ6ARFF3305 SS+7d, DUKHCONP1AZ5AREL3665 | 23d | 0d | PLASTER MASON SK [9136 h]; LABOR- SUBCONTRACTOR [5139 h]; EXTERNAL PLASTER QTY [4568 Sqm] | 108,894 | 10 | REM | 1AP6EFEL10 | DUKHCON1AP6AREL3665 | DUKHCONP1AZ6AREL3665 | DH | CON | 1A | Z6 | FIN | EF | EL | B02 | B02-D10 | RES-1A |
| DUKHCONP1AZ6AREL3670 |  | External stone cladding works | 20d | 2014-06-11 | 2014-07-03 | DUKHCONP1AZ6AREL3665 FF+10d, DUKHCONP1AZ6AREL3665 SS+10d, DUKHCONP1AZ5AREL3670 | 25d | 0d | TILE MASON SK [720 h]; LABOR- SUBCONTRACTOR [270 h]; STONE CLADDING QTY [360 Sqm] | 71,820 | 15 | REM | 1AP6EFEL15 | DUKHCON1AP6AREL3670 | DUKHCONP1AZ6AREL3670 | DH | CON | 1A | Z6 | FIN | EF | EL | B02 | B02-D10 | RES-1A |
| DUKHCONP1AZ6AREL3680 |  | External Painting | 20d | 2014-06-23 | 2014-07-15 | DUKHCONP1AZ6AREL3670 SS+10d, DUKHCONP1AZ6AREL3670 FF+10d, DUKHCONP1AZ6ARRF3695 SS+4d, DUKHCONP1AZ5AREL3680, DUKHCONP1AZ6ARRF3695 FF+4d | 25d | 5d | LABOR- SUBCONTRACTOR [1032 h]; PAINT QTY [3424 Sqm]; PAINTERS SK [2752 h] | 86,006 | 20 |  | 1AP6EFEL20 | DUKHCON1AP6AREL3680 | DUKHCONP1AZ6AREL3680 | DH | CON | 1A | Z6 | FIN | EF | EL | B02 | B02-D11 | RES-1A |
|  | 20 | **MEP WORKS** |  | 2013-11-30 | 2014-09-13 |  |  |  |  |  |  |  |  |  |  |  |  |  |  |  |  |  |  |  |  |
|  | 10 | **ELECTRICAL WORKS** |  | 2014-03-13 | 2014-09-13 |  |  |  |  |  |  |  |  |  |  |  |  |  |  |  |  |  |  |  |  |
|  | 10 | **GROUND FLOOR** |  | 2014-03-13 | 2014-07-20 |  |  |  |  |  |  |  |  |  |  |  |  |  |  |  |  |  |  |  |  |
| DUKHCONP1AZ6ELGF4000 |  | Fixing of wall conduits & switch socket boxes | 25d | 2014-03-13 | 2014-04-10 | DUKHCONP1AZ6ARGF3000 FF+5d, DUKHCONP1AZ6ARGF3000 SS+5d | 3d | 0d | LABOR- SUBCONTRACTOR [192 h]; ELECTRICIANS SK [1030.4 h]; SOCKET BOXES QTY [724 ea]; CODUITS QTY [184 lm] | 33,077 | 10 |  | 1AP6EWGF10 | DUKHCON1AP6ELGF4000 | DUKHCONP1AZ6ELGF4000 | DH | CON | 1A | Z6 | MEP | EW | GF | B02 | B02-D09 | RES-1A |
| DUKHCONP1AZ6ELGF4005 |  | Cable tray & trunking installation | 20d | 2014-03-25 | 2014-04-16 | DUKHCONP1AZ6ELGF4000 FF+5d, DUKHCONP1AZ6ELGF4000 SS+5d, DUKHCONP1AZ5ELGF4005 | 21d | 0d | LABOR- SUBCONTRACTOR [288 h]; ELECTRICIANS SK [1030.4 h]; CABLE TRAY QTY [184 lm] | 7,536 | 15 |  | 1AP6EWGF15 | DUKHCON1AP6ELGF4005 | DUKHCONP1AZ6ELGF4005 | DH | CON | 1A | Z6 | MEP | EW | GF | B02 | B02-D09 | RES-1A |
| DUKHCONP1AZ6ELGF4010 |  | Installation of wiring & Main Cabling | 25d | 2014-04-02 | 2014-04-30 | DUKHCONP1AZ6ELGF4005 SS+7d, DUKHCONP1AZ6ELGF4005 FF+7d | 21d | 27d | LABOR- SUBCONTRACTOR [72 h]; ELECTRICIANS SK [224 h]; CABLE QTY [184 lm] | 112,018 | 20 |  | 1AP6EWGF20 | DUKHCON1AP6ELGF4010 | DUKHCONP1AZ6ELGF4010 | DH | CON | 1A | Z6 | MEP | EW | GF | B02 | B02-D09 | RES-1A |
| DUKHCONP1AZ6ELGF4015 |  | Install. of CAMS & Fire Fighting Accessories | 25d | 2014-06-04 | 2014-07-02 | DUKHCONP1AZ6ARGF3055 FF+7d, DUKHCONP1AZ6ARGF3060 FF+7d, DUKHCONP1AZ6ARGF3060 SS+7d, DUKHCONP1AZ5ELGF4015, DUKHCONP1AZ6ARGF3055 SS+7d | 6d | 0d | LABOR- SUBCONTRACTOR [384 h]; MECHANICALS SK [691.2 h]; SMOKE DETECTOR POINTS QTY [92 ea]; FIRE EXTINGUISHER QTY [28 ea] | 71,164 | 35 |  | 1AP6EWGF35 | DUKHCON1AP6ELGF4015 | DUKHCONP1AZ6ELGF4015 | DH | CON | 1A | Z6 | MEP | EW | GF | B02 | B02-D09 | RES-1A |
| DUKHCONP1AZ6ELGF4020 |  | Installation of DBS,MCCB Accessories. | 20d | 2014-06-10 | 2014-07-02 | DUKHCONP1AZ6ELGF4010 SS+5d, DUKHCONP1AZ6ARGF3060 SS+7d, DUKHCONP1AZ6ELGF4010 FF+5d, DUKHCONP1AZ6ARGF3055 FF+7d, DUKHCONP1AZ6ARGF3055 SS+7d, DUKHCONP1AZ6ARGF3060 FF+7d | -6d | 0d | LABOR- SUBCONTRACTOR [48 h]; ELECTRICIANS SK [179.2 h]; MCCB QTY [64 ea]; DB QTY [8 ea] | 26,049 | 25 |  | 1AP6EWGF25 | DUKHCON1AP6ELGF4020 | DUKHCONP1AZ6ELGF4020 | DH | CON | 1A | Z6 | MEP | EW | GF | B02 | B02-D09 | RES-1A |
| DUKHCONP1AZ6ELGF4025 |  | Installation of Lighting fixtures & Accessories | 25d | 2014-06-22 | 2014-07-20 | DUKHCONP1AZ6ARGF3055 SS+10d, DUKHCONP1AZ6ARGF3060 SS+10d, DUKHCONP1AZ5ELGF4025, DUKHCONP1AZ6ELGF4020 FF+10d, DUKHCONP1AZ6ARGF3055 FF+10d, DUKHCONP1AZ6ARGF3060 FF+10d, DUKHCONP1AZ6ELGF4020 SS+10d | 1d | 0d | LABOR- SUBCONTRACTOR [576 h]; ELECTRICIANS SK [1075.2 h]; LIGHTS QTY [480 ea] | 154,315 | 30 |  | 1AP6EWGF30 | DUKHCON1AP6ELGF4025 | DUKHCONP1AZ6ELGF4025 | DH | CON | 1A | Z6 | MEP | EW | GF | B02 | B02-D09 | RES-1A |
| DUKHCONP1AZ6ELGF4030 |  | Installation of Telephone System | 20d | 2014-06-22 | 2014-07-14 | DUKHCONP1AZ5ELGF4030, DUKHCONP1AZ6ELGF4020 SS+10d, DUKHCONP1AZ6ARGF3060 SS+5d, DUKHCONP1AZ6ELGF4020 FF+10d, DUKHCONP1AZ6ARGF3060 FF+5d | -6d | 5d | LABOR- SUBCONTRACTOR [72 h]; ELECTRICIANS SK [448 h]; TELEPHONE SOCKETS QTY [40 ea] | 38,162 | 40 |  | 1AP6EWGF40 | DUKHCON1AP6ELGF4030 | DUKHCONP1AZ6ELGF4030 | DH | CON | 1A | Z6 | MEP | EW | GF | B02 | B02-D09 | RES-1A |
|  | 15 | **FIRST FLOORS** |  | 2014-04-24 | 2014-08-26 |  |  |  |  |  |  |  |  |  |  |  |  |  |  |  |  |  |  |  |  |
| DUKHCONP1AZ6ELFF4035 |  | Fixing of wall conduits & switch socket boxes | 25d | 2014-04-24 | 2014-05-22 | DUKHCONP1AZ6ARFF3300 FF+5d, DUKHCONP1AZ6ARFF3300 SS+5d | -13d | 0d | LABOR- SUBCONTRACTOR [192 h]; ELECTRICIANS SK [1030.4 h]; SOCKET BOXES QTY [724 ea]; CODUITS QTY [184 lm] | 32,659 | 10 |  | 1AP6EWFF10 | DUKHCON1AP6ELFF4035 | DUKHCONP1AZ6ELFF4035 | DH | CON | 1A | Z6 | MEP | EW | FF | B02 | B02-D09 | RES-1A |
| DUKHCONP1AZ6ELFF4040 |  | Cable tray & trunking installation | 20d | 2014-05-06 | 2014-05-28 | DUKHCONP1AZ6ELFF4035 SS+5d, DUKHCONP1AZ6ELFF4035 FF+5d | 5d | 2d | ELECTRICIANS SK [1030.4 h]; CABLE TRAY QTY [184 lm]; LABOR- SUBCONTRACTOR [288 h] | 7,520 | 15 |  | 1AP6EWFF15 | DUKHCON1AP6ELFF4040 | DUKHCONP1AZ6ELFF4040 | DH | CON | 1A | Z6 | MEP | EW | FF | B02 | B02-D09 | RES-1A |
| DUKHCONP1AZ6ELFF4045 |  | Installation of wiring & Main Cabling | 25d | 2014-05-17 | 2014-06-14 | DUKHCONP1AZ6ELFF4040 FF+7d, DUKHCONP1AZ6ELFF4040 SS+7d, DUKHCONP1AZ5ELFF4045 | 3d | 0d | LABOR- SUBCONTRACTOR [72 h]; ELECTRICIANS SK [224 h]; CABLE QTY [184 lm] | 110,383 | 20 |  | 1AP6EWFF20 | DUKHCON1AP6ELFF4045 | DUKHCONP1AZ6ELFF4045 | DH | CON | 1A | Z6 | MEP | EW | FF | B02 | B02-D09 | RES-1A |
| DUKHCONP1AZ6ELFF4055 |  | Install. of CAMS & Fire Fighting Accessories | 25d | 2014-07-14 | 2014-08-14 | DUKHCONP1AZ6ARFF3360 FF+7d, DUKHCONP1AZ6ELGF4015 FF+5d, DUKHCONP1AZ6ELGF4015 SS+5d, DUKHCONP1AZ6ARFF3360 SS+7d, DUKHCONP1AZ5ELFF4055 | -23d | 0d | LABOR- SUBCONTRACTOR [360 h]; MECHANICALS SK [648 h]; SMOKE DETECTOR POINTS QTY [92 ea]; FIRE EXTINGUISHER QTY [24 ea] | 71,142 | 35 |  | 1AP6EWFF35 | DUKHCON1AP6ELFF4055 | DUKHCONP1AZ6ELFF4055 | DH | CON | 1A | Z6 | MEP | EW | FF | B02 | B02-D09 | RES-1A |
| DUKHCONP1AZ6ELFF4050 |  | Installation of Telephone System | 25d | 2014-07-15 | 2014-08-16 | DUKHCONP1AZ6ELGF4030 SS+10d, DUKHCONP1AZ6ARFF3360 SS+5d, DUKHCONP1AZ6MSEX5010, DUKHCONP1AZ6ELGF4030 FF+10d, DUKHCONP1AZ6ARFF3360 FF+5d | -16d | 7d | ELECTRICIANS SK [403.2 h]; TELEPHONE SOCKETS QTY [36 ea]; LABOR- SUBCONTRACTOR [48 h] | 36,523 | 40 |  | 1AP6EWFF40 | DUKHCON1AP6ELFF4050 | DUKHCONP1AZ6ELFF4050 | DH | CON | 1A | Z6 | MEP | EW | FF | B02 | B02-D09 | RES-1A |
| DUKHCONP1AZ6ELFF4060 |  | Installation of DBS,MCCB Accessories. | 20d | 2014-07-17 | 2014-08-12 | DUKHCONP1AZ5ELFF4060, DUKHCONP1AZ6ELFF4045 SS+5d, DUKHCONP1AZ6ARFF3360 SS+8d, DUKHCONP1AZ6ELFF4045 FF+5d, DUKHCONP1AZ6ARFF3360 FF+5d | -21d | 2d | ELECTRICIANS SK [179.2 h]; MCCB QTY [64 ea]; DB QTY [8 ea]; LABOR- SUBCONTRACTOR [48 h] | 26,040 | 25 |  | 1AP6EWFF25 | DUKHCON1AP6ELFF4060 | DUKHCONP1AZ6ELFF4060 | DH | CON | 1A | Z6 | MEP | EW | FF | B02 | B02-D09 | RES-1A |
| DUKHCONP1AZ6ELFF4065 |  | Installation of Lighting fixtures & Accessories | 25d | 2014-07-26 | 2014-08-26 | DUKHCONP1AZ5ELFF4065, DUKHCONP1AZ6ELFF4060 SS+5d, DUKHCONP1AZ6ELGF4025 FF+5d, DUKHCONP1AZ6ARFF3360 FF+10d, DUKHCONP1AZ6ELGF4025 SS+5d, DUKHCONP1AZ6ELFF4060 FF+5d, DUKHCONP1AZ6ARFF3360 SS+10d | -23d | 0d | LABOR- SUBCONTRACTOR [576 h]; ELECTRICIANS SK [1075.2 h]; LIGHTS QTY [480 ea] | 154,301 | 30 |  | 1AP6EWFF30 | DUKHCON1AP6ELFF4065 | DUKHCONP1AZ6ELFF4065 | DH | CON | 1A | Z6 | MEP | EW | FF | B02 | B02-D09 | RES-1A |

Notes:
- DUKHCONP1AZ6ARRF3630: Expenses: P1A-Roofing 56792
- DUKHCONP1AZ6ARRF3635: Expenses: P1A-Roofing 43994
- DUKHCONP1AZ6ARRF3640: Expenses: P1A-Roofing 55936
- DUKHCONP1AZ6ARRF3645: Expenses: P1A-Roofing 83344
- DUKHCONP1AZ6ARRF3650: Expenses: P1A-Metal work 63347
- DUKHCONP1AZ6ARRF3655: Expenses: P1A-Roofing 26600
- DUKHCONP1AZ6ARRF3660: Expenses: P1A-Metal work 53206
- DUKHCONP1AZ6AREL3665: Expenses: P1A-Finishes 108894
- DUKHCONP1AZ6AREL3670: Expenses: P1A-Finishes 71820
- DUKHCONP1AZ6AREL3680: Expenses: P1A-Painting and Decorating 86006
- DUKHCONP1AZ6ELGF4000: Expenses: P1A-Electrical Installations 33077
- DUKHCONP1AZ6ELGF4005: Expenses: P1A-Electrical Installations 7536
- DUKHCONP1AZ6ELGF4010: Expenses: P1A-Electrical Installations 112018
- DUKHCONP1AZ6ELGF4015: Expenses: P1A-Electrical Installations 71164
- DUKHCONP1AZ6ELGF4020: Expenses: P1A-Electrical Installations 26049
- DUKHCONP1AZ6ELGF4025: Expenses: P1A-Electrical Installations 154315
- DUKHCONP1AZ6ELGF4030: Expenses: P1A-Electrical Installations 38162
- DUKHCONP1AZ6ELFF4035: Expenses: P1A-Electrical Installations 32659
- DUKHCONP1AZ6ELFF4040: Expenses: P1A-Electrical Installations 7520
- DUKHCONP1AZ6ELFF4045: Expenses: P1A-Electrical Installations 110383
- DUKHCONP1AZ6ELFF4055: Expenses: P1A-Electrical Installations 71142
- DUKHCONP1AZ6ELFF4050: Expenses: P1A-Electrical Installations 36523
- DUKHCONP1AZ6ELFF4060: Expenses: P1A-Electrical Installations 26040
- DUKHCONP1AZ6ELFF4065: Expenses: P1A-Electrical Installations 154301

| ID | WBS | Activity | Duration | Start | Finish | Predecessors | Total float | Free float | Resources | Cost | CODE | P3 ACTID | P6 ID (old) | NP61D | PROJECT | PHASES | PACKAGE | PART | ELEMENTS | STEP | FLOORS | BILL NOS | BILL DIVISION | RES PACK |
| --- | --- | --- | --- | --- | --- | --- | --- | --- | --- | --- | --- | --- | --- | --- | --- | --- | --- | --- | --- | --- | --- | --- | --- | --- |
|  | 20 | **ROOF** |  | 2014-08-12 | 2014-09-13 |  |  |  |  |  |  |  |  |  |  |  |  |  |  |  |  |  |  |  |
| DUKHCONP1AZ6ELRF4070 |  | Installation of Isolator | 18d | 2014-08-12 | 2014-09-01 | DUKHCONP1AZ6ARRF3645 SS+7d, DUKHCONP1AZ6ELFF4045 SS+10d, DUKHCONP1AZ6ELFF4065 SS+5d, DUKHCONP1AZ6ELFF4050 SS+5d, DUKHCONP1AZ6ELFF4045 FF+10d, DUKHCONP1AZ6ELFF4065 FF+5d, DUKHCONP1AZ6ELFF4050 FF+7d, DUKHCONP1AZ6ARRF3645 FF+7d | -23d | 0d | LABOR- SUBCONTRACTOR [144 h]; ELECTRICIANS SK [268.8 h]; ISOLATOR QTY [44 ea] | 54,690 | 10 | 1AP6EWRF10 | DUKHCON1AP6ELRF4070 | DUKHCONP1AZ6ELRF4070 | DH | CON | 1A | Z6 | MEP | EW | RF | B02 | B02-D09 | RES-1A |
| DUKHCONP1AZ6ELRF4075 |  | Installation of TV Dish Antenna | 23d | 2014-08-18 | 2014-09-13 | DUKHCONP1AZ6ELRF4070 FF+5d, DUKHCONP1AZ6ELRF4070 SS+5d | -23d | 1d | LABOR- SUBCONTRACTOR [240 h]; ELECTRICIANS SK [492.8 h]; CONTROL BOX QTY [12 ea]; SWITCHING BOX QTY [32 ea] | 40,597 | 15 | 1AP6EWRF15 | DUKHCON1AP6ELRF4075 | DUKHCONP1AZ6ELRF4075 | DH | CON | 1A | Z6 | MEP | EW | RF | B02 | B02-D09 | RES-1A |
|  | 15 | **PLUMBING, DRAINAGE & FIRE FIGHTING WORKS** |  | 2013-11-30 | 2014-09-13 |  |  |  |  |  |  |  |  |  |  |  |  |  |  |  |  |  |  |  |
|  | 10 | **GROUND FLOOR** |  | 2013-11-30 | 2014-07-20 |  |  |  |  |  |  |  |  |  |  |  |  |  |  |  |  |  |  |  |
| DUKHCONP1AZ6PLUG4300 |  | Drainage / Storm Pipes in Grade Slab | 16d | 2013-11-30 | 2013-12-17 | DUKHCONP1AZ6STUG1040 FF+11d, DUKHCONP1AZ6STUG1040 SS+11d | -24d | 0d | LABOR- SUBCONTRACTOR [24 h]; MECHANICALS SK [43.2 h]; DRAINAGE PIPES QTY [80 lm] | 35,465 | 10 | 1AP6PLUG10 | DUKHCON1AP6PLUG4300 | DUKHCONP1AZ6PLUG4300 | DH | CON | 1A | Z6 | ST | SB | UG | B02 | B02-D07 | RES-1A |
| DUKHCONP1AZ6PLGF4305 |  | Installation of Plumbing pipes & testing | 18d | 2014-03-24 | 2014-04-13 | DUKHCONP1AZ5PLGF4305, DUKHCONP1AZ6ARGF3000 FF+7d, DUKHCONP1AZ6ARGF3000 SS+7d | -6d | 0d | LABOR- SUBCONTRACTOR [96 h]; MECHANICALS SK [345.6 h]; PLUMB PIPES QTY [328 lm] | 85,973 | 10 | 1AP6PLGF10 | DUKHCON1AP6PLGF4305 | DUKHCONP1AZ6PLGF4305 | DH | CON | 1A | Z6 | MEP | PL | GF | B02 | B02-D07 | RES-1A |
| DUKHCONP1AZ6PLGF4310 |  | Installation of Drainage pipes &testing | 18d | 2014-03-24 | 2014-04-13 | DUKHCONP1AZ6PLGF4305 FF, DUKHCONP1AZ6ARGF3000 SS+7d, DUKHCONP1AZ6ARGF3000 FF+7d, DUKHCONP1AZ6PLGF4305 SS | -3d | 13d | LABOR- SUBCONTRACTOR [48 h]; MECHANICALS SK [129.6 h]; DRAINAGE PIPES QTY [248 lm] | 2,966 | 15 | 1AP6PLGF15 | DUKHCON1AP6PLGF4310 | DUKHCONP1AZ6PLGF4310 | DH | CON | 1A | Z6 | MEP | PL | GF | B02 | B02-D07 | RES-1A |
| DUKHCONP1AZ6PLGF4315 |  | Sanitary Fittings & Accessories | 20d | 2014-06-22 | 2014-07-14 | DUKHCONP1AZ6ARGF3065 FF+5d, DUKHCONP1AZ6PLGF4310 FF+5d, DUKHCONP1AZ6PLGF4310 SS+5d, DUKHCONP1AZ6ARGF3065 SS+5d, DUKHCONP1AZ5PLGF4315 | 21d | 0d | LABOR- SUBCONTRACTOR [48 h]; MECHANICALS SK [86.4 h]; SANITARY ACC QTY [60 ea] | 104,291 | 20 | 1AP6PLGF20 | DUKHCON1AP6PLGF4315 | DUKHCONP1AZ6PLGF4315 | DH | CON | 1A | Z6 | MEP | PL | GF | B02 | B02-D07 | RES-1A |
| DUKHCONP1AZ6PLGF4320 |  | Installation of Water Heater | 15d | 2014-07-03 | 2014-07-20 | DUKHCONP1AZ6PLGF4315 FF+5d, DUKHCONP1AZ6ARGF3060 FF+5d, DUKHCONP1AZ5PLGF4320, DUKHCONP1AZ6PLGF4315 SS+5d, DUKHCONP1AZ6ARGF3060 SS+5d | 21d | 10d | LABOR- SUBCONTRACTOR [48 h]; MECHANICALS SK [86.4 h]; WATER HEATER QTY [12 ea] | 8,932 | 25 | 1AP6PLGF25 | DUKHCON1AP6PLGF4320 | DUKHCONP1AZ6PLGF4320 | DH | CON | 1A | Z6 | MEP | PL | GF | B02 | B02-D07 | RES-1A |
|  | 15 | **FIRST FLOORS** |  | 2014-05-06 | 2014-08-21 |  |  |  |  |  |  |  |  |  |  |  |  |  |  |  |  |  |  |  |
| DUKHCONP1AZ6PLFF4325 |  | Installation of Plumbing pipes & testing | 18d | 2014-05-06 | 2014-05-26 | DUKHCONP1AZ6ARFF3300 FF+8d, DUKHCONP1AZ6ARFF3300 SS+7d | -24d | 0d | LABOR- SUBCONTRACTOR [96 h]; MECHANICALS SK [345.6 h]; PLUMB PIPES QTY [328 lm] | 83,745 | 10 | 1AP6PLFF10 | DUKHCON1AP6PLFF4325 | DUKHCONP1AZ6PLFF4325 | DH | CON | 1A | Z6 | MEP | PL | FF | B02 | B02-D07 | RES-1A |
| DUKHCONP1AZ6PLFF4330 |  | Installation of Drainage pipes & testing | 18d | 2014-05-06 | 2014-05-26 | DUKHCONP1AZ6ARFF3300 FF+7d, DUKHCONP1AZ6PLFF4325 FF, DUKHCONP1AZ6ARFF3300 SS+7d, DUKHCONP1AZ6PLFF4325 SS, DUKHCONP1AZ5PLFF4330 | -2d | 7d | LABOR- SUBCONTRACTOR [48 h]; MECHANICALS SK [129.6 h]; DRAINAGE PIPES QTY [248 lm] | 2,542 | 15 | 1AP6PLFF15 | DUKHCON1AP6PLFF4330 | DUKHCONP1AZ6PLFF4330 | DH | CON | 1A | Z6 | MEP | PL | FF | B02 | B02-D07 | RES-1A |
| DUKHCONP1AZ6PLFF4335 |  | Sanitary Fittings & Accessories | 20d | 2014-07-21 | 2014-08-16 | DUKHCONP1AZ6PLFF4330 FF+5d, DUKHCONP1AZ6ARFF3365 SS, DUKHCONP1AZ6ARFF3365 FF+5d, DUKHCONP1AZ6PLFF4330 SS+5d | -19d | 0d | LABOR- SUBCONTRACTOR [24 h]; MECHANICALS SK [43.2 h]; SANITARY ACC QTY [56 ea] | 113,094 | 20 | 1AP6PLFF20 | DUKHCON1AP6PLFF4335 | DUKHCONP1AZ6PLFF4335 | DH | CON | 1A | Z6 | MEP | PL | FF | B02 | B02-D07 | RES-1A |
| DUKHCONP1AZ6PLFF4340 |  | Installation of Water Heater | 15d | 2014-08-05 | 2014-08-21 | DUKHCONP1AZ6ARFF3360 FF+5d, DUKHCONP1AZ6PLFF4335 FF+5d, DUKHCONP1AZ6PLFF4335 SS+5d, DUKHCONP1AZ6ARFF3360 SS+5d, DUKHCONP1AZ5PLFF4340 | -19d | 4d | LABOR- SUBCONTRACTOR [24 h]; MECHANICALS SK [43.2 h]; WATER HEATER QTY [8 ea] | 7,006 | 25 | 1AP6PLFF25 | DUKHCON1AP6PLFF4340 | DUKHCONP1AZ6PLFF4340 | DH | CON | 1A | Z6 | MEP | PL | FF | B02 | B02-D07 | RES-1A |
|  | 20 | **ROOF** |  | 2014-05-25 | 2014-09-13 |  |  |  |  |  |  |  |  |  |  |  |  |  |  |  |  |  |  |  |
| DUKHCONP1AZ6PLRF4345 |  | Installation of Plumbing pipes & fittings | 15d | 2014-05-25 | 2014-06-10 | DUKHCONP1AZ6ARRF3605 FF+7d, DUKHCONP1AZ6ARRF3605 SS+7d | 32d | 30d | MECHANICALS SK [86.4 h]; PLUMB PIPES QTY [96 lm]; LABOR- SUBCONTRACTOR [24 h] | 12,902 | 10 | 1AP6PLRF10 | DUKHCON1AP6PLRF4345 | DUKHCONP1AZ6PLRF4345 | DH | CON | 1A | Z6 | MEP | PL | RF | B02 | B02-D07 | RES-1A |
| DUKHCONP1AZ6PLRF4350 |  | Installation of Rain water Pipes | 15d | 2014-07-08 | 2014-07-24 | DUKHCONP1AZ6PLFF4330 SS+5d, DUKHCONP1AZ6ARRF3645 SS+5d, DUKHCONP1AZ6ARRF3645 FF+5d, DUKHCONP1AZ6PLFF4330 FF+5d, DUKHCONP1AZ6AREL3665 FF+7d, DUKHCONP1AZ6PLRF4345 FF+8d, DUKHCONP1AZ5PLRF4350, DUKHCONP1AZ6PLRF4345 SS+8d, DUKHCONP1AZ6AREL3665 SS+7d | 2d | 10d | LABOR- SUBCONTRACTOR [24 h]; MECHANICALS SK [43.2 h]; DRAINAGE PIPES QTY [80 lm] | 93,917 | 15 | 1AP6PLRF15 | DUKHCON1AP6PLRF4350 | DUKHCONP1AZ6PLRF4350 | DH | CON | 1A | Z6 | MEP | PL | RF | B02 | B02-D07 | RES-1A |
| DUKHCONP1AZ6PLRF4355 |  | Roof Water Tank Installation & Connections | 25d | 2014-08-16 | 2014-09-13 | DUKHCONP1AZ6PLRF4350 FF+5d, DUKHCONP1AZ5PLRF4355, DUKHCONP1AZ6PLRF4345 FF+8d, DUKHCONP1AZ6PLRF4350 SS+5d, DUKHCONP1AZ6PLFF4340 FF+5d, DUKHCONP1AZ6ARRF3655 FF+5d, DUKHCONP1AZ6PLRF4345 SS+8d, DUKHCONP1AZ6PLFF4340 SS+5d, DUKHCONP1AZ6ARRF3655 SS+5d | -23d | 0d | LABOR- SUBCONTRACTOR [120 h]; MECHANICALS SK [216 h]; WATER TANK QTY [20 ea] | 592,597 | 20 | 1AP6PLRF20 | DUKHCON1AP6PLRF4355 | DUKHCONP1AZ6PLRF4355 | DH | CON | 1A | Z6 | MEP | PL | RF | B02 | B02-D07 | RES-1A |
|  | 20 | **AC WORKS** |  | 2014-04-13 | 2014-09-10 |  |  |  |  |  |  |  |  |  |  |  |  |  |  |  |  |  |  |  |
|  | 10 | **GROUND FLOOR** |  | 2014-04-13 | 2014-07-17 |  |  |  |  |  |  |  |  |  |  |  |  |  |  |  |  |  |  |  |
| DUKHCONP1AZ6ACGF4600 |  | Installation AC Pipes | 20d | 2014-04-13 | 2014-05-05 | DUKHCONP1AZ6ARGF3005 SS+7d, DUKHCONP1AZ5ACGF4600, DUKHCONP1AZ6ARGF3005 FF+7d | 25d | 5d | LABOR- SUBCONTRACTOR [216 h]; AC TECHNICIAN SK [761.6 h]; AC PIPES QTY [2008 lm] | 8,069 | 10 | 1AP6ACGF10 | DUKHCON1AP6ACGF4600 | DUKHCONP1AZ6ACGF4600 | DH | CON | 1A | Z6 | MEP | AC | GF | B02 | B02-D08 | RES-1A |
| DUKHCONP1AZ6ACGF4605 |  | Fixing of Ventilation Equipments | 25d | 2014-06-04 | 2014-07-02 | DUKHCONP1AZ6ARGF3060 SS+7d, DUKHCONP1AZ5ACGF4605, DUKHCONP1AZ6ARGF3055 SS+7d, DUKHCONP1AZ6ARGF3055 FF+7d, DUKHCONP1AZ6ACGF4600 FF+10d, DUKHCONP1AZ6ACGF4600 SS+10d, DUKHCONP1AZ6ARGF3060 FF+7d | 8d | 0d | LABOR- SUBCONTRACTOR [48 h]; AC TECHNICIAN SK [134.4 h]; VENTILIATION EQP QTY [40 ea] | 17,289 | 15 | 1AP6ACGF15 | DUKHCON1AP6ACGF4605 | DUKHCONP1AZ6ACGF4605 | DH | CON | 1A | Z6 | MEP | AC | GF | B02 | B02-D08 | RES-1A |
| DUKHCONP1AZ6ACGF4610 |  | Fixing of Split AC | 20d | 2014-06-25 | 2014-07-17 | DUKHCONP1AZ5ACGF4610, DUKHCONP1AZ6ACGF4605 SS+13d, DUKHCONP1AZ6ACGF4605 FF+13d | 8d | 5d | LABOR- SUBCONTRACTOR [72 h]; AC TECHNICIAN SK [224 h]; SPLIT UNIT QTY [40 ea] | 48,894 | 20 | 1AP6ACGF20 | DUKHCON1AP6ACGF4610 | DUKHCONP1AZ6ACGF4610 | DH | CON | 1A | Z6 | MEP | AC | GF | B02 | B02-D08 | RES-1A |

Notes:
- DUKHCONP1AZ6ELRF4070: Expenses: P1A-Electrical Installations 54690
- DUKHCONP1AZ6ELRF4075: Expenses: P1A-Electrical Installations 40597
- DUKHCONP1AZ6PLUG4300: Expenses: P1A-Plumbing and Drainage works 35465
- DUKHCONP1AZ6PLGF4305: Expenses: P1A-Plumbing and Drainage works 85973
- DUKHCONP1AZ6PLGF4310: Expenses: P1A-Plumbing and Drainage works 2966
- DUKHCONP1AZ6PLGF4315: Expenses: P1A-Plumbing and Drainage works 104291
- DUKHCONP1AZ6PLGF4320: Expenses: P1A-Plumbing and Drainage works 8932
- DUKHCONP1AZ6PLFF4325: Expenses: P1A-Plumbing and Drainage works 83745
- DUKHCONP1AZ6PLFF4330: Expenses: P1A-Plumbing and Drainage works 2542
- DUKHCONP1AZ6PLFF4335: Expenses: P1A-Plumbing and Drainage works 113094
- DUKHCONP1AZ6PLFF4340: Expenses: P1A-Plumbing and Drainage works 7006
- DUKHCONP1AZ6PLRF4345: Expenses: P1A-Plumbing and Drainage works 12902
- DUKHCONP1AZ6PLRF4350: Expenses: P1A-Plumbing and Drainage works 93917
- DUKHCONP1AZ6PLRF4355: Expenses: P1A-Plumbing and Drainage works 592597
- DUKHCONP1AZ6ACGF4600: Expenses: P1A-Air-conditioning and Ventilation works 8069
- DUKHCONP1AZ6ACGF4605: Expenses: P1A-Air-conditioning and Ventilation works 17289
- DUKHCONP1AZ6ACGF4610: Expenses: P1A-Air-conditioning and Ventilation works 48894

| ID | WBS | Activity | Duration | Start | Finish | Predecessors | Total float | Free float | Resources | Cost | CODE | P3 ACTID | P6 ID (old) | NP61D | PROJECT | PHASES | PACKAGE | PART | ELEMENTS | STEP | FLOORS | BILL NOS | BILL DIVISION | RES PACK |
| --- | --- | --- | --- | --- | --- | --- | --- | --- | --- | --- | --- | --- | --- | --- | --- | --- | --- | --- | --- | --- | --- | --- | --- | --- |
|  | 15 | **FIRST FLOORS** |  | 2014-05-27 | 2014-08-30 |  |  |  |  |  |  |  |  |  |  |  |  |  |  |  |  |  |  |  |
| DUKHCONP1AZ6ACFF4615 |  | Installation AC Pipes | 20d | 2014-05-27 | 2014-06-18 | DUKHCONP1AZ6ARFF3305 FF+7d, DUKHCONP1AZ6ARFF3305 SS+7d, DUKHCONP1AZ5ACFF4615 | 3d | 5d | LABOR- SUBCONTRACTOR [216 h]; AC TECHNICIAN SK [761.6 h]; AC PIPES QTY [2008 lm] | 7,555 | 10 | 1AP6ACFF10 | DUKHCON1AP6ACFF4615 | DUKHCONP1AZ6ACFF4615 | DH | CON | 1A | Z6 | MEP | AC | FF | B02 | B02-D08 | RES-1A |
| DUKHCONP1AZ6ACFF4620 |  | Fixing of Ventilation Equipments | 25d | 2014-07-14 | 2014-08-14 | DUKHCONP1AZ5ACFF4620, DUKHCONP1AZ6ACFF4615 FF+10d, DUKHCONP1AZ6ARFF3360 SS+7d, DUKHCONP1AZ6ARFF3360 FF+7d, DUKHCONP1AZ6ACFF4615 SS+10d | -22d | 0d | LABOR- SUBCONTRACTOR [24 h]; AC TECHNICIAN SK [89.6 h]; VENTILIATION EQP QTY [24 ea] | 17,083 | 15 | 1AP6ACFF15 | DUKHCON1AP6ACFF4620 | DUKHCONP1AZ6ACFF4620 | DH | CON | 1A | Z6 | MEP | AC | FF | B02 | B02-D08 | RES-1A |
| DUKHCONP1AZ6ACFF4625 |  | Fixing of Split AC | 20d | 2014-08-07 | 2014-08-30 | DUKHCONP1AZ6ACFF4620 FF+13d, DUKHCONP1AZ6ACFF4620 SS+13d, DUKHCONP1AZ5ACFF4625 | -22d | 0d | LABOR- SUBCONTRACTOR [72 h]; AC TECHNICIAN SK [224 h]; SPLIT UNIT QTY [40 ea] | 54,090 | 20 | 1AP6ACFF20 | DUKHCON1AP6ACFF4625 | DUKHCONP1AZ6ACFF4625 | DH | CON | 1A | Z6 | MEP | AC | FF | B02 | B02-D08 | RES-1A |
|  | 20 | **ROOF** |  | 2014-06-29 | 2014-09-10 |  |  |  |  |  |  |  |  |  |  |  |  |  |  |  |  |  |  |  |
| DUKHCONP1AZ6ACRF4630 |  | Installation of Refrigerant Pipes | 25d | 2014-06-29 | 2014-07-27 | DUKHCONP1AZ6ACFF4615 SS+7d, DUKHCONP1AZ6ACFF4615 FF+7d, DUKHCONP1AZ6ACGF4600 FF+7d, DUKHCONP1AZ6ACGF4600 SS+7d, DUKHCONP1AZ6ARRF3645 SS+7d, DUKHCONP1AZ5ACRF4630, DUKHCONP1AZ6ARRF3645 FF+7d | 10d | 0d | LABOR- SUBCONTRACTOR [96 h]; AC TECHNICIAN SK [313.6 h]; AC PIPES QTY [848 lm] | 24,880 | 10 | 1AP6ACRF10 | DUKHCON1AP6ACRF4630 | DUKHCONP1AZ6ACRF4630 | DH | CON | 1A | Z6 | MEP | AC | RF | B02 | B02-D08 | RES-1A |
| DUKHCONP1AZ6ACRF4635 |  | Installation of Condensing Unit | 25d | 2014-08-13 | 2014-09-10 | DUKHCONP1AZ6ACGF4610 FF+5d, DUKHCONP1AZ5ACRF4635, DUKHCONP1AZ6ACRF4630 FF+5d, DUKHCONP1AZ6ACFF4625 FF+5d, DUKHCONP1AZ6ACRF4630 SS+5d, DUKHCONP1AZ6ACGF4610 SS+5d, DUKHCONP1AZ6ACFF4625 SS+5d | -21d | 0d | LABOR- SUBCONTRACTOR [120 h]; AC TECHNICIAN SK [448 h]; AC UNITS QTY [80 ea] | 134,618 | 15 | 1AP6ACRF15 | DUKHCON1AP6ACRF4635 | DUKHCONP1AZ6ACRF4635 | DH | CON | 1A | Z6 | MEP | AC | RF | B02 | B02-D08 | RES-1A |
|  | 25 | **EXTERNAL WORKS** |  | 2014-04-20 | 2014-09-08 |  |  |  |  |  |  |  |  |  |  |  |  |  |  |  |  |  |  |  |
|  | 10 | **MISCELLANEOUS** |  | 2014-04-20 | 2014-09-08 |  |  |  |  |  |  |  |  |  |  |  |  |  |  |  |  |  |  |  |
| DUKHCONP1AZ6MSEX5000 |  | Construction of Manholes | 25d | 2014-04-20 | 2014-05-18 | DUKHCONP1AZ6STRF2055 SS+10d, DUKHCONP1AZ6PLGF4310 FF+10d, DUKHCONP1AZ6PLGF4310 SS+10d, DUKHCONP1AZ6STRF2055 FF+10d | -16d | 0d | MANHOLES SK [384 h]; LABOR- SUBCONTRACTOR [144 h]; MANHOLES QTY [48 ea] | 56,173 | 25 | 1AP6MSEX25 | DUKHCON1AP6MS005000 | DUKHCONP1AZ6MSEX5000 | DH | CON | 1A | Z6 | EX | MS |  | B02 | B02-D12 | RES-1A |
| DUKHCONP1AZ6MSEX5005 |  | Construction of Soak pit, Chambers | 25d | 2014-05-04 | 2014-06-01 | DUKHCONP1AZ6MSEX5000 FF+12d, DUKHCONP1AZ6MSEX5000 SS+12d | -16d | 0d | MANHOLES SK [128 h]; LABOR- SUBCONTRACTOR [48 h]; SOAKPIT QTY [16 ea] | 33,032 | 30 | 1AP6MSEX30 | DUKHCON1AP6MS005005 | DUKHCONP1AZ6MSEX5005 | DH | CON | 1A | Z6 | EX | MS |  | B02 | B02-D12 | RES-1A |
| DUKHCONP1AZ6MSEX5015 |  | Construction of grease Trap | 20d | 2014-05-24 | 2014-06-15 | DUKHCONP1AZ6MSEX5005 SS+12d, DUKHCONP1AZ6MSEX5005 FF+12d | -16d | 0d | LABOR- SUBCONTRACTOR [24 h]; GREASE TRAP QTY [16 lm]; HANDRAIL ERECTOR SKILLED [32 h] | 22,696 | 20 | 1AP6MSEX20 | DUKHCON1AP6MS005015 | DUKHCONP1AZ6MSEX5015 | DH | CON | 1A | Z6 | EX | MS |  | B02 | B02-D07 | RES-1A |
| DUKHCONP1AZ6MSEX5020 |  | Construction Entrance Ramp | 25d | 2014-06-10 | 2014-07-08 | DUKHCONP1AZ6STRF2055 FF, DUKHCONP1AZ5MSEX5020, DUKHCONP1AZ6STRF2055 SS | -8d | 0d | SCREED MASON SK [96 h]; CONCRETE MASON SK [192 h]; INTERLOCK MASON SK [128 h]; LABOR- SUBCONTRACTOR [192 h]; LABOR- SUBCONTRACTOR [48 h]; SCREED QTY [112 Sqm]; CONCRETE QTY [96 Cum]; INTERLOCK QTY [152 Sqm] | 31,768 | 10 | 1AP6MSEX10 | DUKHCON1AP6MS005020 | DUKHCONP1AZ6MSEX5020 | DH | CON | 1A | Z6 | EX | MS |  | B02 | B02-D12 | RES-1A |
| DUKHCONP1AZ6MSEX5010 |  | Telephone cable laying | 25d | 2014-06-16 | 2014-07-14 | DUKHCONP1AZ6MSEX5015 | -16d | 0d | LABOR- SUBCONTRACTOR [125 h]; ELECTRICIANS SK [125 h]; CONCRETE MASON SK [125 h] | 3,557 |  | 1AP6MSEX40 | DUKHCON1AP6MS005010 | DUKHCONP1AZ6MSEX5010 | DH | CON | 1A | Z6 | EX | MS |  | B02 | B02-D12 | RES-1A |
| DUKHCONP1AZ6MSEX5025 |  | SS.Handrails and Balustrades | 20d | 2014-06-28 | 2014-07-20 | DUKHCONP1AZ6MSEX5020 SS+10d, DUKHCONP1AZ6MSEX5020 FF+10d | -5d | 0d | LABOR- SUBCONTRACTOR [24 h]; S.S.BALUSTRADE QTY [16 lm]; HANDRAIL ERECTOR SKILLED [32 h] | 81,420 | 15 | 1AP6MSEX15 | DUKHCON1AP6MS005025 | DUKHCONP1AZ6MSEX5025 | DH | CON | 1A | Z6 | EX | MS |  | B02 | B02-D12 | RES-1A |
| DUKHCONP1AZ6MSEX5335 |  | Aluminum Roll-up Shutter with 2m Wall | 25d | 2014-08-11 | 2014-09-08 | DUKHCONI1AZ3BWGL5325, DUKHCONP1AZ5MSEX5335 SS+7d | 60d | 21d | LABOR- SUBCONTRACTOR [200 h]; DOOR ERECTOR SK [200 h]; ROLLING SHUTTER QTY [8 ea] | 59,528 | 25 | 1AP6BWFR25 | DUKHCON1AP6MS005335 | DUKHCONP1AZ6MSEX5335 | DH | CON | 1A | Z6 | EX | MS |  | B02 | B02-D12 | RES-1A |
|  | 15 | **WATER TANK ENCLOSURE** |  | 2014-05-19 | 2014-09-03 |  |  |  |  |  |  |  |  |  |  |  |  |  |  |  |  |  |  |  |
| DUKHCONP1AZ6WEEX5030 |  | Excavation | 20d | 2014-05-19 | 2014-06-10 | DUKHCONP1AZ5WEEX5030, DUKHCONP1AZ6STRF2055 SS+5d, DUKHCONP1AZ6STRF2055 FF+5d | 9d | 0d | LABOR- SUBCONTRACTOR [24 h]; EXCAVATION QTY [40 Cum]; LOADER [10 h]; POCLAIN [20 h]; TRUCK [10 h]; EQUIP OPERATORS [40 h] | 896 | 10 | 1AP6WEEX10 | DUKHCON1AP6WE005030 | DUKHCONP1AZ6WEEX5030 | DH | CON | 1A | Z6 | EX | WE |  | B02 | B02-D12 | RES-1A |
| DUKHCONP1AZ6WEEX5035 |  | Construction of Raft | 25d | 2014-05-25 | 2014-06-22 | DUKHCONP1AZ6WEEX5030 FF+10d, DUKHCONP1AZ6WEEX5030 SS+5d | 9d | 0d | STEEL FIXERS SK [64 h]; CARPENTERS SK [384 h]; CONCRETE MASON SK [32 h]; LABOR- SUBCONTRACTOR [360 h]; REINFORCEMENT BARS QTY [624 kg]; FORMWORK QTY [184 Sqm]; CONCRETE QTY [20 Cum] | 15,216 | 15 | 1AP6WEEX15 | DUKHCON1AP6WE005035 | DUKHCONP1AZ6WEEX5035 | DH | CON | 1A | Z6 | EX | WE |  | B02 | B02-D12 | RES-1A |
| DUKHCONP1AZ6WEEX5040 |  | Block works & Plastering | 25d | 2014-06-03 | 2014-07-01 | DUKHCONP1AZ6WEEX5035 FF+8d, DUKHCONP1AZ6WEEX5035 SS+8d | 9d | 0d | BLOCK MASON SK [128 h]; PLASTER MASON SK [192 h]; LABOR- SUBCONTRACTOR [192 h]; BLOCK QTY [56 Sqm]; PLASTER QTY [112 Sqm] | 13,582 | 20 | 1AP6WEEX20 | DUKHCON1AP6WE005040 | DUKHCONP1AZ6WEEX5040 | DH | CON | 1A | Z6 | EX | WE |  | B02 | B02-D12 | RES-1A |
| DUKHCONP1AZ6WEEX5045 |  | Flooring & Painting | 25d | 2014-06-10 | 2014-07-08 | DUKHCONP1AZ6WEEX5040 FF+6d, DUKHCONP1AZ6WEEX5040 SS+6d | 9d | 14d | EPOXY QTY [44 Sqm]; PAINTERS SK [128 h]; EPOXY SK [32 h]; LABOR- SUBCONTRACTOR [72 h]; PAINT QTY [156 Sqm] | 12,744 | 25 | 1AP6WEEX25 | DUKHCON1AP6WE005045 | DUKHCONP1AZ6WEEX5045 | DH | CON | 1A | Z6 | EX | WE |  | B02 | B02-D12 | RES-1A |
| DUKHCONP1AZ6WEEX5050 |  | Installation of Steel Gate | 20d | 2014-07-09 | 2014-07-31 | DUKHCONP1AZ6WEEX5045 SS+5d, DUKHCONP1AZ6WEEX5045 FF+6d, DUKHCONP1AZ6MSEX5025 FF+10d | -5d | 9d | LABOR- SUBCONTRACTOR [24 h]; GATE QTY [4 ea]; GATE ERECTOR SK [32 h] | 71,872 | 30 | 1AP6WEEX30 | DUKHCON1AP6WE005050 | DUKHCONP1AZ6WEEX5050 | DH | CON | 1A | Z6 | EX | WE |  | B02 | B02-D12 | RES-1A |
| DUKHCONP1AZ6WEEX5060 |  | Structural steel & SS Shed cover installation | 25d | 2014-07-26 | 2014-08-26 | DUKHCONP1AZ5WEEX5060, DUKHCONP1AZ6WEEX5050 FF+10d, DUKHCONP1AZ6MSEX5025 FF+10d, DUKHCONP1AZ6WEEX5050 SS+5d | -14d | 0d | LABOR- SUBCONTRACTOR [144 h]; STRUCTURAL STEEL QTY [128 kg]; SS SHED COVER QTY [40 Sqm]; STEEL ERECTOR SK [192 h] | 45,463 | 35 | 1AP6WEEX35 | DUKHCON1AP6WE005060 | DUKHCONP1AZ6WEEX5060 | DH | CON | 1A | Z6 | EX | WE |  | B02 | B02-D12 | RES-1A |
| DUKHCONP1AZ6WEEX5065 |  | Install. of Water Tank,Chiller,Pump & Meter | 25d | 2014-08-06 | 2014-09-03 | DUKHCONP1AZ5WEEX5065, DUKHCONP1AZ6WEEX5060 SS+6d, DUKHCONP1AZ6MSEX5015 FF+5d, DUKHCONP1AZ6WEEX5060 FF+6d, DUKHCONP1AZ6MSEX5015 SS+5d, DUKHCONP1AZ6PLRF4350 SS+5d, DUKHCONP1AZ6PLRF4350 FF+5d | -15d | 0d | LABOR- SUBCONTRACTOR [72 h]; AC TECHNICIAN SK [44.8 h]; MECHANICALS SK [86.4 h]; WATER TANK QTY [4 ea]; CHILLER QTY [40 ea]; PUMP QTY [4 ea] | 122,349 | 40 | 1AP6WEEX40 | DUKHCON1AP6WE005065 | DUKHCONP1AZ6WEEX5065 | DH | CON | 1A | Z6 | EX | WE |  | B02 | B02-D07 | RES-1A |

Notes:
- DUKHCONP1AZ6ACFF4615: Expenses: P1A-Air-conditioning and Ventilation works 7555
- DUKHCONP1AZ6ACFF4620: Expenses: P1A-Air-conditioning and Ventilation works 17083
- DUKHCONP1AZ6ACFF4625: Expenses: P1A-Air-conditioning and Ventilation works 54090
- DUKHCONP1AZ6ACRF4630: Expenses: P1A-Air-conditioning and Ventilation works 24880
- DUKHCONP1AZ6ACRF4635: Expenses: P1A-Air-conditioning and Ventilation works 134618
- DUKHCONP1AZ6MSEX5000: Expenses: P1A-External works within the Plot Curtilage 56173
- DUKHCONP1AZ6MSEX5005: Expenses: P1A-External works within the Plot Curtilage 33032
- DUKHCONP1AZ6MSEX5015: Expenses: P1A-Plumbing and Drainage works 22696
- DUKHCONP1AZ6MSEX5020: Expenses: P1A-External works within the Plot Curtilage 31768
- DUKHCONP1AZ6MSEX5010: Expenses: P1A-External works within the Plot Curtilage 3557
- DUKHCONP1AZ6MSEX5025: Expenses: P1A-External works within the Plot Curtilage 81420
- DUKHCONP1AZ6MSEX5335: Expenses: P1A-External works within the Plot Curtilage 59528
- DUKHCONP1AZ6WEEX5030: Expenses: P1A-External works within the Plot Curtilage 896
- DUKHCONP1AZ6WEEX5035: Expenses: P1A-External works within the Plot Curtilage 15216
- DUKHCONP1AZ6WEEX5040: Expenses: P1A-External works within the Plot Curtilage 13582
- DUKHCONP1AZ6WEEX5045: Expenses: P1A-External works within the Plot Curtilage 12744
- DUKHCONP1AZ6WEEX5050: Expenses: P1A-External works within the Plot Curtilage 71872
- DUKHCONP1AZ6WEEX5060: Expenses: P1A-External works within the Plot Curtilage 45463
- DUKHCONP1AZ6WEEX5065: Expenses: P1A-Plumbing and Drainage works 122349

| ID | WBS | Activity | Duration | Start | Finish | Predecessors | Total float | Free float | Resources | Cost | CODE | P3 ACTID | P6 ID (old) | NP61D | PROJECT | PHASES | PACKAGE | PART | ELEMENTS | STEP | BILL NOS | BILL DIVISION | RES PACK | FLOORS | rem |
| --- | --- | --- | --- | --- | --- | --- | --- | --- | --- | --- | --- | --- | --- | --- | --- | --- | --- | --- | --- | --- | --- | --- | --- | --- | --- |
|  | 20 | **HARD LANDSCAPING** |  | 2014-06-24 | 2014-08-07 |  |  |  |  |  |  |  |  |  |  |  |  |  |  |  |  |  |  |  |  |
| DUKHCONP1AZ6HDEX5090 |  | kerb works | 20d | 2014-06-24 | 2014-07-16 | DUKHCONP1AZ6MSEX5020 SS+7d, DUKHCONP1AZ6MSEX5020 FF+7d, DUKHCONP1AZ5HDEX5090 | -8d | 0d | KERBSTONE MASON SK [224 h]; LABOR- SUBCONTRACTOR [120 h]; KERBSTONE QTY [288 lm] | 13,284 | 10 | 1AP6HDEX10 | DUKHCON1AP6HD005090 | DUKHCONP1AZ6HDEX5090 | DH | CON | 1A | Z6 | EX | HD | B02 | B02-D12 | RES-1A |  |  |
| DUKHCONP1AZ6HDEX5095 |  | Cobble Stone Works | 20d | 2014-07-06 | 2014-07-28 | DUKHCONP1AZ6HDEX5090 FF+10d, DUKHCONP1AZ6HDEX5090 SS+10d | -8d | 0d | TILE MASON SK [128 h]; LABOR- SUBCONTRACTOR [72 h]; COBBLE STONE QTY [88 Sqm] | 12,232 | 15 | 1AP6HDEX15 | DUKHCON1AP6HD005095 | DUKHCONP1AZ6HDEX5095 | DH | CON | 1A | Z6 | EX | HD | B02 | B02-D12 | RES-1A |  |  |
| DUKHCONP1AZ6HDEX5100 |  | Interlock works | 20d | 2014-07-13 | 2014-08-07 | DUKHCONP1AZ6HDEX5095 SS+6d, DUKHCONP1AZ6HDEX5095 FF+6d | -8d | 0d | INTERLOCK MASON SK [160 h]; LABOR- SUBCONTRACTOR [72 h]; INTERLOCK QTY [184 Sqm] | 15,733 | 20 | 1AP6HDEX20 | DUKHCON1AP6HD005100 | DUKHCONP1AZ6HDEX5100 | DH | CON | 1A | Z6 | EX | HD | B02 | B02-D12 | RES-1A |  |  |
|  | 25 | **SOFT LANDSCAPING** |  | 2014-07-19 | 2014-08-26 |  |  |  |  |  |  |  |  |  |  |  |  |  |  |  |  |  |  |  |  |
| DUKHCONP1AZ6SLEX5105 |  | Laying of Grass/ green area | 25d | 2014-07-19 | 2014-08-19 | DUKHCONP1AZ6HDEX5100 SS+5d, DUKHCONP1AZ6HDEX5100 FF+5d | -8d | 0d | GRASS QTY [336 Sqm]; LANDSCAPING SK [1568 h]; LABOR- SUBCONTRACTOR [1176 h]; SWEET SOIL QTY [336 Cum] | 41,328 | 10 | 1AP6SLEX10 | DUKHCON1AP6SL005105 | DUKHCONP1AZ6SLEX5105 | DH | CON | 1A | Z6 | EX | SL | B02 | B02-D12 | RES-1A |  |  |
| DUKHCONP1AZ6SLEX5110 |  | Laying of Palm tree | 25d | 2014-07-26 | 2014-08-26 | DUKHCONP1AZ6SLEX5105 SS+6d, DUKHCONP1AZ6SLEX5105 FF+6d | -8d | 16d | LABOR- SUBCONTRACTOR [72 h]; SWEET SOIL QTY [48 Cum]; PLAM TREES QTY [16 ea]; LANDSCAPING SK [96 h] | 48,672 | 15 | 1AP6SLEX15 | DUKHCON1AP6SL005110 | DUKHCONP1AZ6SLEX5110 | DH | CON | 1A | Z6 | EX | SL | B02 | B02-D12 | RES-1A |  |  |
|  | 30 | **TESTING AND COMMISSIONING** |  | 2014-09-15 | 2014-10-15 |  |  |  |  |  |  |  |  |  |  |  |  |  |  |  |  |  |  |  |  |
| DUKHCONP1AZ6ACTC8000 |  | Pre-Commissioning & Testing of AC Works | 25d | 2014-09-15 | 2014-10-15 | DUKHCONP1AZ6HDEX5100, DUKHCONP1AZ6ACRF4635, DUKHCONP1AZ6ARRF3620, DUKHCONP1AZ6AREL3680, DUKHCONP1AZ6ACFF4625, DUKHCONP1AZ6MSEX5005, DUKHCONP1AZ6SLEX5105, DUKHCONP1AZ6ARGF3095, DUKHCONP1AZ6ARRF3660, DUKHCONP1AZ5ACTC8000, DUKHCONP1AZ6SLEX5110, DUKHCONP1AZ6ARFF3395 | -24d | 0d | LABOR- SUBCONTRACTOR [500 h]; AC TECHNICIAN SK [1000 h] | 3,168 |  | 1AP6ACU100 | DUKHCON1AP6AC008000 | DUKHCONP1AZ6ACTC8000 | DH | CON | 1A | Z6 | TES |  | B02 | B02-D08 | RES-1A |  |  |
| DUKHCONP1AZ6ELTC8010 |  | Pre-Commissioning & Testing of Electrical Works | 25d | 2014-09-15 | 2014-10-15 | DUKHCONP1AZ6ELGF4015, DUKHCONP1AZ6ELGF4030, DUKHCONP1AZ6AREL3680, DUKHCONP1AZ6ELFF4065, DUKHCONP1AZ6ARRF3655, DUKHCONP1AZ6MSEX5005, DUKHCONP1AZ6SLEX5105, DUKHCONP1AZ6ELRF4075, DUKHCONP1AZ5ELTC8010, DUKHCONP1AZ6HDEX5100, DUKHCONP1AZ6ELFF4055, DUKHCONP1AZ6ELFF4050, DUKHCONP1AZ6ELGF4025, DUKHCONP1AZ6ARGF3095, DUKHCONP1AZ6ARRF3660, DUKHCONP1AZ6SLEX5110, DUKHCONP1AZ6ARRF3620, DUKHCONP1AZ6ARFF3395 | -24d | 0d | LABOR- SUBCONTRACTOR [1000 h]; ELECTRICIANS SK [2000 h] | 40,656 |  | 1AP6ELE100 | DUKHCON1AP6EL008010 | DUKHCONP1AZ6ELTC8010 | DH | CON | 1A | Z6 | TES |  | B02 | B02-D09 | RES-1A |  |  |
| DUKHCONP1AZ6PLTC8005 |  | Pre-Commissioning & Testing of Plumbing Works | 25d | 2014-09-15 | 2014-10-15 | DUKHCONP1AZ6PLRF4350, DUKHCONP1AZ6PLRF4355, DUKHCONP1AZ6ARFF3395, DUKHCONP1AZ6ARRF3655, DUKHCONP1AZ5PLTC8005, DUKHCONP1AZ6MSEX5005, DUKHCONP1AZ6SLEX5110, DUKHCONP1AZ6ARGF3095, DUKHCONP1AZ6SLEX5105, DUKHCONP1AZ6WEEX5065, DUKHCONP1AZ6HDEX5100, DUKHCONP1AZ6PLGF4320, DUKHCONP1AZ6ARRF3620, DUKHCONP1AZ6ARRF3660, DUKHCONP1AZ6AREL3680 | -24d | 0d | LABOR- SUBCONTRACTOR [1000 h]; MECHANICALS SK [2000 h] | 9,008 |  | 1AP6PLU100 | DUKHCON1AP6PL008005 | DUKHCONP1AZ6PLTC8005 | DH | CON | 1A | Z6 | TES |  | B02 | B02-D07 | RES-1A |  |  |
|  | 40 | **ZONE - 7 (4 Twin Villas)** |  | 2013-08-25 | 2014-11-13 |  |  |  |  |  |  |  |  |  |  |  |  |  |  |  |  |  |  |  |  |
|  | 10 | **STRUCTURAL WORKS** |  | 2013-08-25 | 2014-06-17 |  |  |  |  |  |  |  |  |  |  |  |  |  |  |  |  |  |  |  |  |
|  | 10 | **SUB STRUCTURE** |  | 2013-08-25 | 2014-02-05 |  |  |  |  |  |  |  |  |  |  |  |  |  |  |  |  |  |  |  |  |
|  | 10 | **UPTO GRADE SLAB** |  | 2013-08-25 | 2014-02-05 |  |  |  |  |  |  |  |  |  |  |  |  |  |  |  |  |  |  |  |  |
| DUKHCONP1AZ7STUG1000 |  | Footing Excavation | 25d | 2013-08-25 | 2013-09-22 | DUKHCONP1AGNSP005000, DUKHCONP1AZ6STUG1000 | -11d | 0d | POCLAIN [262 h]; TRUCK [131 h]; EQUIP OPERATORS [524 h]; LABOR- SUBCONTRACTOR [590 h]; EXCAVATION QTY [984 Cum]; LOADER [131 h] | 68,256 | 10 | 1AP7SBUG10 | DUKHCON1AP7STUG1000 | DUKHCONP1AZ7STUG1000 | DH | CON | 1A | Z7 | ST | SB | B02 | B02-D01 | RES-1A | UG |  |
| DUKHCONP1AZ7STUG1005 |  | Footing Antitermite | 23d | 2013-09-05 | 2013-10-01 | DUKHCONP1AZ7STUG1000 SS+10d, DUKHCONP1AZ7STUG1000 FF+5d | -11d | 0d | LABOR- SUBCONTRACTOR [432 h]; ANTITERMITE QTY [2880 sqft]; ANTITERMITE SK [1152 h] | 8,640 | 15 | 1AP7SBUG15 | DUKHCON1AP7STUG1005 | DUKHCONP1AZ7STUG1005 | DH | CON | 1A | Z7 | ST | SB | B02 | B02-D01 | RES-1A | UG | REM |
| DUKHCONP1AZ7STUG1010 |  | Footing Blinding | 23d | 2013-09-09 | 2013-10-05 | DUKHCONP1AZ7STUG1005 SS+3d, DUKHCONP1AZ7STUG1005 FF+3d | -11d | 0d | BLINDING MASON SK [454 h]; LABOR- SUBCONTRACTOR [340.5 h]; BLINDING QTY [567 Sqm] | 14,285 | 15 | 1AP7SBUG18 | DUKHCON1AP7STUG1010 | DUKHCONP1AZ7STUG1010 | DH | CON | 1A | Z7 | ST | SB | B02 | B02-D02 | RES-1A | UG | REM |
| DUKHCONP1AZ7STUG1015 |  | Footing Waterproofing & Screed | 25d | 2013-09-15 | 2013-10-13 | DUKHCONP1AZ7STUG1010 FF+5d, DUKHCONP1AZ7STUG1010 SS+5d | -11d | 0d | SCREED QTY [522 Sqm]; WATERPROOFING QTY [1457 Sqm]; SCREED MASON SK [418 h]; LABOR- SUBCONTRACTOR [156.75 h] | 52,596 | 20 | 1AP7SBUG20 | DUKHCON1AP7STUG1015 | DUKHCONP1AZ7STUG1015 | DH | CON | 1A | Z7 | ST | SB | B02 | B02-D02 | RES-1A | UG | REM |
| DUKHCONP1AZ7STUG1020 |  | Construction of foundations | 20d | 2013-09-30 | 2013-10-24 | DUKHCONP1AZ7STUG1015 SS+7d, DUKHCONP1AZ7STUG1015 FF+8d | -11d | 13d | STEEL FIXERS SK [2565 h]; CARPENTERS SK [1160 h]; CONCRETE MASON SK [720 h]; LABOR- SUBCONTRACTOR [3333.75 h]; REINFORCEMENT BARS QTY [32062 kg]; FORMWORK QTY [580 Sqm]; CONCRETE QTY [360 Cum] | 225,546 | 25 | 1AP7SBUG25 | DUKHCON1AP7STUG1020 | DUKHCONP1AZ7STUG1020 | DH | CON | 1A | Z7 | ST | SB | B02 | B02-D02 | RES-1A | UG | REM |
| DUKHCONP1AZ7STUG1025 |  | Construction of neck of columns | 25d | 2013-10-27 | 2013-11-24 | DUKHCONP1AZ7STUG1020 SS+8d, DUKHCONP1AZ7STUG1020 FF+7d, DUKHCONP1AZ6STUG1025 | -24d | 0d | STEEL FIXERS SK [214 h]; CARPENTERS SK [656 h]; CONCRETE MASON SK [48 h]; LABOR- SUBCONTRACTOR [688.5 h]; REINFORCEMENT BARS QTY [2669 kg]; FORMWORK QTY [328 Sqm]; CONCRETE QTY [24 Cum] | 35,935 | 30 | 1AP7SBUG30 | DUKHCON1AP7STUG1025 | DUKHCONP1AZ7STUG1025 | DH | CON | 1A | Z7 | ST | SB | B02 | B02-D02 | RES-1A | UG | REM |
| DUKHCONP1AZ7STUG1030 |  | Waterproofing Footing & Neck Column | 25d | 2013-11-05 | 2013-12-03 | DUKHCONP1AZ7STUG1025 FF+8d, DUKHCONP1AZ7STUG1025 SS+8d | -24d | 0d | LABOR- SUBCONTRACTOR [141 h]; WATERPROOFING QTY [468 Sqm]; WATERPROOFING SPECIALIST SK [375 h] | 22,459 | 35 | 1AP7SBUG35 | DUKHCON1AP7STUG1030 | DUKHCONP1AZ7STUG1030 | DH | CON | 1A | Z7 | ST | SB | B02 | B02-D02 | RES-1A | UG | REM |
| DUKHCONP1AZ7STUG1035 |  | Backfilling Upto Grade Beam Bottom | 25d | 2013-11-19 | 2013-12-17 | DUKHCONP1AZ7STUG1030 FF+12d, DUKHCONP1AZ7STUG1030 SS+12d, DUKHCONP1AZ6STUG1035 | -24d | 0d | LABOR- SUBCONTRACTOR [216 h]; BACKFILLING QTY [880 Cum]; BOBCAT [375 h]; PLATE COMPACTOR [375 h]; TRUCK [75 h]; EQUIP OPERATORS [825 h] | 22,363 | 40 | 1AP7SBUG40 | DUKHCON1AP7STUG1035 | DUKHCONP1AZ7STUG1035 | DH | CON | 1A | Z7 | ST | SB | B02 | B02-D01 | RES-1A | UG |  |
| DUKHCONP1AZ7STUG1040 |  | Construction of Grade Beams | 25d | 2013-12-05 | 2014-01-04 | DUKHCONP1AZ7STUG1035 SS+14d, DUKHCONP1AZ7STUG1035 FF+14d | -24d | 0d | BLINDING MASON SK [244 h]; SCREED MASON SK [224 h]; STEEL FIXERS SK [1497 h]; CARPENTERS SK [2152 h]; CONCRETE MASON SK [256 h]; LABOR- SUBCONTRACTOR [3195.75 h]; BLINDING QTY [304 Sqm]; SCREED QTY [280 Sqm]; REINFORCEMENT BARS QTY [18709 kg]; FORMWORK QTY [1076 Sqm]; CONCRETE QTY [128 Cum] | 326,110 | 45 | 1AP7SBUG45 | DUKHCON1AP7STUG1040 | DUKHCONP1AZ7STUG1040 | DH | CON | 1A | Z7 | ST | SB | B02 | B02-D02 | RES-1A | UG | REM |
| DUKHCONP1AZ7STUG1045 |  | Construction of slab on grade | 25d | 2014-01-08 | 2014-02-05 | DUKHCONP1AZ7PLUG4300 FF+8d, DUKHCONP1AZ6STUG1045, DUKHCONP1AZ7STUG1040 SS+10d, DUKHCONP1AZ7PLUG4300 SS+8d, DUKHCONP1AZ7STUG1040 FF+10d | -24d | 0d | BLINDING MASON SK [923 h]; SCREED MASON SK [850 h]; STEEL FIXERS SK [536 h]; CONCRETE MASON SK [400 h]; LABOR- SUBCONTRACTOR [1713 h]; BLINDING QTY [1153 Sqm]; SCREED QTY [1062 Sqm]; CONCRETE QTY [200 Cum]; WELDED WIRE MESH [2008 Sqm] | 239,062 | 50 | 1AP7SBUG50 | DUKHCON1AP7STUG1045 | DUKHCONP1AZ7STUG1045 | DH | CON | 1A | Z7 | ST | SB | B02 | B02-D02 | RES-1A | UG | REM |

Notes:
- DUKHCONP1AZ6HDEX5090: Expenses: P1A-External works within the Plot Curtilage 13284
- DUKHCONP1AZ6HDEX5095: Expenses: P1A-External works within the Plot Curtilage 12232
- DUKHCONP1AZ6HDEX5100: Expenses: P1A-External works within the Plot Curtilage 15733
- DUKHCONP1AZ6SLEX5105: Expenses: P1A-External works within the Plot Curtilage 41328
- DUKHCONP1AZ6SLEX5110: Expenses: P1A-External works within the Plot Curtilage 48672
- DUKHCONP1AZ6ACTC8000: Expenses: P1A-Air-conditioning and Ventilation works 3168
- DUKHCONP1AZ6ELTC8010: Expenses: P1A-Electrical Installations 40656
- DUKHCONP1AZ6PLTC8005: Expenses: P1A-Plumbing and Drainage works 9008
- DUKHCONP1AZ7STUG1000: Expenses: P1A-Excavation and Earth Works 68256
- DUKHCONP1AZ7STUG1005: Expenses: P1A-Excavation and Earth Works 8640
- DUKHCONP1AZ7STUG1010: Expenses: P1A-Concrete Works 14285
- DUKHCONP1AZ7STUG1015: Expenses: P1A-Concrete Works 52596
- DUKHCONP1AZ7STUG1020: Expenses: P1A-Concrete Works 225546
- DUKHCONP1AZ7STUG1025: Expenses: P1A-Concrete Works 35935
- DUKHCONP1AZ7STUG1030: Expenses: P1A-Concrete Works 22459
- DUKHCONP1AZ7STUG1035: Expenses: P1A-Excavation and Earth Works 22363
- DUKHCONP1AZ7STUG1040: Expenses: P1A-Concrete Works 326110
- DUKHCONP1AZ7STUG1045: Expenses: P1A-Concrete Works 239062

| ID | WBS | Activity | Duration | Start | Finish | Predecessors | Total float | Free float | Resources | Cost | CODE | rem | P3 ACTID | P6 ID (old) | NP61D | PROJECT | PHASES | PACKAGE | PART | ELEMENTS | STEP | FLOORS | BILL NOS | BILL DIVISION | RES PACK | EXECUTER |
| --- | --- | --- | --- | --- | --- | --- | --- | --- | --- | --- | --- | --- | --- | --- | --- | --- | --- | --- | --- | --- | --- | --- | --- | --- | --- | --- |
|  | 15 | **SUPERSTRUCTURE** |  | 2014-01-25 | 2014-06-17 |  |  |  |  |  |  |  |  |  |  |  |  |  |  |  |  |  |  |  |  |  |
|  | 10 | **GROUND FLOOR** |  | 2014-01-25 | 2014-03-22 |  |  |  |  |  |  |  |  |  |  |  |  |  |  |  |  |  |  |  |  |  |
| DUKHCONP1AZ7STGF2000 |  | Column-Rebar & Formwork | 25d | 2014-01-25 | 2014-02-23 | DUKHCONP1AZ6STGF2000, DUKHCONP1AZ7STUG1045 FF+7d, DUKHCONP1AZ7STUG1045 SS+14d | -24d | 0d | STEEL FIXERS SK [656 h]; CARPENTERS SK [1656 h]; LABOR- SUBCONTRACTOR [1734 h]; REINFORCEMENT BARS QTY [8198 kg]; FORMWORK QTY [828 Sqm] | 73,433 | 10 | REM | 1AP7SPGF10 | DUKHCON1AP7STGF2000 | DUKHCONP1AZ7STGF2000 | DH | CON | 1A | Z7 | ST | SP | GF | B02 | B02-D02 | RES-1A |  |
| DUKHCONP1AZ7STGF2005 |  | Column-Concrete | 24d | 2014-02-02 | 2014-03-02 | DUKHCONP1AZ7STGF2000 SS+7d, DUKHCONP1AZ7STGF2000 FF+2d | -22d | 0d | CONCRETE MASON SK [146 h]; LABOR- SUBCONTRACTOR [109.5 h]; CONCRETE QTY [73 Cum] | 20,945 | 15 | REM | 1AP7SPGF15 | DUKHCON1AP7STGF2005 | DUKHCONP1AZ7STGF2005 | DH | CON | 1A | Z7 | ST | SP | GF | B02 | B02-D02 | RES-1A |  |
| DUKHCONP1AZ7STGF2010 |  | Beam, Stairs ,Slab-Rebar & Formwork | 25d | 2014-02-18 | 2014-03-18 | DUKHCONP1AZ7STGF2005 FF+14d, DUKHCONP1AZ7STGF2005 SS+2d | -22d | 0d | STEEL FIXERS SK [4091 h]; CARPENTERS SK [5526 h]; LABOR- SUBCONTRACTOR [7212.75 h]; REINFORCEMENT BARS QTY [51136 kg]; FORMWORK QTY [2763 Sqm] | 326,549 | 20 | REM | 1AP7SPGF20 | DUKHCON1AP7STGF2010 | DUKHCONP1AZ7STGF2010 | DH | CON | 1A | Z7 | ST | SP | GF | B02 | B02-D02 | RES-1A |  |
| DUKHCONP1AZ7STGF2015 |  | Beam, Stairs ,Slab-Concrete | 14d | 2014-03-06 | 2014-03-22 | DUKHCONP1AZ7STGF2010 FF+3d, DUKHCONP1AZ6STGF2015, DUKHCONP1AZ7STGF2010 SS+10d | -22d | 0d | CONCRETE MASON SK [740 h]; LABOR- SUBCONTRACTOR [555 h]; CONCRETE QTY [370 Cum] | 131,494 | 25 | REM | 1AP7SPGF25 | DUKHCON1AP7STGF2015 | DUKHCONP1AZ7STGF2015 | DH | CON | 1A | Z7 | ST | SP | GF | B02 | B02-D02 | RES-1A |  |
|  | 15 | **FIRST FLOORS** |  | 2014-03-09 | 2014-05-04 |  |  |  |  |  |  |  |  |  |  |  |  |  |  |  |  |  |  |  |  |  |
| DUKHCONP1AZ7STFF2020 |  | Column-Rebar & Formwork | 25d | 2014-03-09 | 2014-04-06 | DUKHCONP1AZ6STFF2020, DUKHCONP1AZ7STGF2015 SS+2d, DUKHCONP1AZ7STGF2015 FF+5d | -22d | 0d | STEEL FIXERS SK [574 h]; CARPENTERS SK [1472 h]; LABOR- SUBCONTRACTOR [1534.5 h]; REINFORCEMENT BARS QTY [7175 kg]; FORMWORK QTY [736 Sqm] | 64,915 | 10 | REM | 1AP7SPFF10 | DUKHCON1AP7STFF2020 | DUKHCONP1AZ7STFF2020 | DH | CON | 1A | Z7 | ST | SP | FF | B02 | B02-D02 | RES-1A |  |
| DUKHCONP1AZ7STFF2025 |  | Column-Concrete | 24d | 2014-03-18 | 2014-04-14 | DUKHCONP1AZ7STFF2020 FF+2d, DUKHCONP1AZ7STFF2020 SS+8d | -20d | 0d | CONCRETE MASON SK [128 h]; LABOR- SUBCONTRACTOR [96 h]; CONCRETE QTY [64 Cum] | 18,331 | 15 | REM | 1AP7SPFF15 | DUKHCON1AP7STFF2025 | DUKHCONP1AZ7STFF2025 | DH | CON | 1A | Z7 | ST | SP | FF | B02 | B02-D02 | RES-1A |  |
| DUKHCONP1AZ7STFF2030 |  | Beam, Stairs ,Slab-Rebar & Formwork | 25d | 2014-04-02 | 2014-04-30 | DUKHCONP1AZ7STFF2025 FF+14d, DUKHCONP1AZ7STFF2025 SS+2d | -20d | 0d | STEEL FIXERS SK [3685 h]; CARPENTERS SK [5526 h]; LABOR- SUBCONTRACTOR [6908.25 h]; REINFORCEMENT BARS QTY [46062 kg]; FORMWORK QTY [2763 Sqm] | 310,154 | 20 | REM | 1AP7SPFF20 | DUKHCON1AP7STFF2030 | DUKHCONP1AZ7STFF2030 | DH | CON | 1A | Z7 | ST | SP | FF | B02 | B02-D02 | RES-1A |  |
| DUKHCONP1AZ7STFF2035 |  | Beam, Stairs ,Slab-Concrete | 14d | 2014-04-19 | 2014-05-04 | DUKHCONP1AZ6STFF2035, DUKHCONP1AZ7STFF2030 SS+10d, DUKHCONP1AZ7STFF2030 FF+3d | -20d | 0d | CONCRETE MASON SK [652 h]; LABOR- SUBCONTRACTOR [489 h]; CONCRETE QTY [326 Cum] | 119,102 | 25 | REM | 1AP7SPFF25 | DUKHCON1AP7STFF2035 | DUKHCONP1AZ7STFF2035 | DH | CON | 1A | Z7 | ST | SP | FF | B02 | B02-D02 | RES-1A |  |
|  | 20 | **ROOF** |  | 2014-04-21 | 2014-06-17 |  |  |  |  |  |  |  |  |  |  |  |  |  |  |  |  |  |  |  |  |  |
| DUKHCONP1AZ7STRF2040 |  | Column-Rebar & Formwork | 18d | 2014-04-21 | 2014-05-11 | DUKHCONP1AZ7STFF2035 FF+3d, DUKHCONP1AZ7STFF2035 SS+2d, DUKHCONP1AZ6STRF2040 | -16d | 0d | STEEL FIXERS SK [137 h]; CARPENTERS SK [552 h]; LABOR- SUBCONTRACTOR [516.75 h]; REINFORCEMENT BARS QTY [1707 kg]; FORMWORK QTY [276 Sqm] | 21,168 | 10 | REM | 1AP7SPRF10 | DUKHCON1AP7STRF2040 | DUKHCONP1AZ7STRF2040 | DH | CON | 1A | Z7 | ST | SP | RF | B02 | B02-D02 | RES-1A |  |
| DUKHCONP1AZ7STRF2045 |  | Column-Concrete | 17d | 2014-04-24 | 2014-05-13 | DUKHCONP1AZ7STRF2040 SS+3d, DUKHCONP1AZ7STRF2040 FF+1d | -16d | 0d | CONCRETE MASON SK [30 h]; LABOR- SUBCONTRACTOR [22.5 h]; CONCRETE QTY [15 Cum] | 4,363 | 15 | REM | 1AP7SPRF15 | DUKHCON1AP7STRF2045 | DUKHCONP1AZ7STRF2045 | DH | CON | 1A | Z7 | ST | SP | RF | B02 | B02-D02 | RES-1A |  |
| DUKHCONP1AZ7STRF2050 |  | Slab-Rebar & Formwork - Head Room | 20d | 2014-04-27 | 2014-05-19 | DUKHCONP1AZ7STRF2045 FF+5d, DUKHCONP1AZ7STRF2045 SS+2d | -16d | 0d | STEEL FIXERS SK [869 h]; CARPENTERS SK [694 h]; LABOR- SUBCONTRACTOR [1172.25 h]; REINFORCEMENT BARS QTY [10859 kg]; FORMWORK QTY [347 Sqm] | 61,496 | 20 | REM | 1AP7SPRF20 | DUKHCON1AP7STRF2050 | DUKHCONP1AZ7STRF2050 | DH | CON | 1A | Z7 | ST | SP | RF | B02 | B02-D02 | RES-1A |  |
| DUKHCONP1AZ7STRF2055 |  | Slab-Concrete-Head room | 13d | 2014-05-07 | 2014-05-21 | DUKHCONP1AZ7STRF2050 FF+2d, DUKHCONP1AZ7STRF2050 SS+5d, DUKHCONP1AZ6STRF2055 | -16d | 0d | CONCRETE MASON SK [144 h]; LABOR- SUBCONTRACTOR [108 h]; CONCRETE QTY [72 Cum] | 22,960 | 25 | REM | 1AP7SPRF25 | DUKHCON1AP7STRF2055 | DUKHCONP1AZ7STRF2055 | DH | CON | 1A | Z7 | ST | SP | RF | B02 | B02-D02 | RES-1A |  |
| DUKHCONP1AZ7STRF2060 |  | Construction of Parapets | 25d | 2014-05-10 | 2014-06-07 | DUKHCONP1AZ7STRF2055 FF+14d, DUKHCONP1AZ7STRF2055 SS+2d | 32d | 4d | BLOCK MASON SK [1408 h]; LABOR- SUBCONTRACTOR [792 h]; BLOCK QTY [704 Sqm] | 43,648 | 30 | REM | 1AP7SPRF30 | DUKHCON1AP7STRF2060 | DUKHCONP1AZ7STRF2060 | DH | CON | 1A | Z7 | ST | SP | RF | B02 | B02-D03 | RES-1A |  |
| DUKHCONP1AZ7STRF2065 |  | Construction of up stands/Plinth | 25d | 2014-05-20 | 2014-06-17 | DUKHCONP1AZ7STRF2060 FF+5d, DUKHCONP1AZ7STRF2060 SS+5d, DUKHCONP1AZ6STRF2065 | 28d | 0d | STEEL FIXERS SK [45 h]; CARPENTERS SK [256 h]; CONCRETE MASON SK [16 h]; LABOR- SUBCONTRACTOR [237.75 h]; REINFORCEMENT BARS QTY [559 kg]; FORMWORK QTY [128 Sqm]; CONCRETE QTY [8 Cum] | 12,624 | 35 | REM | 1AP7SPRF35 | DUKHCON1AP7STRF2065 | DUKHCONP1AZ7STRF2065 | DH | CON | 1A | Z7 | ST | SP | RF | B02 | B02-D02 | RES-1A |  |
|  | 15 | **FINISHING WORKS** |  | 2014-04-06 | 2014-10-15 |  |  |  |  |  |  |  |  |  |  |  |  |  |  |  |  |  |  |  |  |  |
|  | 10 | **INTERNAL FINISHES** |  | 2014-04-06 | 2014-10-15 |  |  |  |  |  |  |  |  |  |  |  |  |  |  |  |  |  |  |  |  |  |
|  | 10 | **GROUND FLOOR** |  | 2014-04-06 | 2014-09-18 |  |  |  |  |  |  |  |  |  |  |  |  |  |  |  |  |  |  |  |  |  |
| DUKHCONP1AZ7ARGF3000 |  | Block work | 25d | 2014-04-06 | 2014-05-04 | DUKHCONP1AZ6ARGF3000, DUKHCONP1AZ7STGF2015 SS+21d, DUKHCONP1AZ7STGF2015 FF+21d | -6d | 0d | BLOCK MASON SK [6232 h]; LABOR- SUBCONTRACTOR [3505.5 h]; BLOCK QTY [3116 Sqm] | 225,562 | 10 | REM | 1AP7IFGF10 | DUKHCON1AP7ARGF3000 | DUKHCONP1AZ7ARGF3000 | DH | CON | 1A | Z7 | FIN | IF | GF | B02 | B02-D03 | RES-1A |  |
| DUKHCONP1AZ7ARGF3005 |  | Plastering work | 25d | 2014-04-28 | 2014-05-26 | DUKHCONP1AZ7ARGF3000 SS+7d, DUKHCONP1AZ7ARGF3000 FF+7d, DUKHCONP1AZ6ARGF3005, DUKHCONP1AZ7PLGF4305 SS+5d, DUKHCONP1AZ7PLGF4305 FF+5d, DUKHCONP1AZ7ELGF4000 FF+5d, DUKHCONP1AZ7ELGF4000 SS+5d | -6d | 0d | PLASTER MASON SK [8728 h]; LABOR- SUBCONTRACTOR [4909.5 h]; PLASTER QTY [5455 Sqm] | 71,593 | 12 | REM | 1AP7IFGF12 | DUKHCON1AP7ARGF3005 | DUKHCONP1AZ7ARGF3005 | DH | CON | 1A | Z7 | FIN | IF | GF | B02 | B02-D10 | RES-1A |  |
| DUKHCONP1AZ7ARGF3010 |  | Flooring screed | 21d | 2014-05-06 | 2014-05-29 | DUKHCONP1AZ7ARGF3005 SS+7d, DUKHCONP1AZ7ARGF3005 FF+3d | 2d | 8d | SCREED MASON SK [1149 h]; LABOR- SUBCONTRACTOR [431.25 h]; FLOORING SCREED QTY [1436 Sqm] | 48,008 | 15 | REM | 1AP7IFGF15 | DUKHCON1AP7ARGF3010 | DUKHCONP1AZ7ARGF3010 | DH | CON | 1A | Z7 | FIN | IF | GF | B02 | B02-D10 | RES-1A |  |
| DUKHCONP1AZ7ARGF3015 |  | Wet area waterproofing & Protection Screed | 15d | 2014-05-15 | 2014-06-01 | DUKHCONP1AZ7ARGF3005 FF+5d, DUKHCONP1AZ7ARGF3005 SS+7d, DUKHCONP1AZ6ARGF3015 | -6d | 0d | LABOR- SUBCONTRACTOR [67.5 h]; WETAREA WATERPROOFING QTY [224 Sqm]; WATERPROOFING SPECIALIST SK [180 h] | 7,616 | 18 | REM | 1AP7IFGF18 | DUKHCON1AP7ARGF3015 | DUKHCONP1AZ7ARGF3015 | DH | CON | 1A | Z7 | FIN | IF | GF | B02 | B02-D10 | RES-1A |  |
| DUKHCONP1AZ7ARGF3030 |  | Paint First coat | 25d | 2014-05-18 | 2014-06-15 | DUKHCONP1AZ6ARGF3030, DUKHCONP1AZ7ARGF3005 FF+14d, DUKHCONP1AZ7ARGF3005 SS+14d | 5d | 0d | LABOR- SUBCONTRACTOR [1479.75 h]; FIRSTCOAT PAINT QTY [4932 Sqm]; PAINTERS SK [3946 h] | 26,608 | 21 | REM | 1AP7IFGF21 | DUKHCON1AP7ARGF3030 | DUKHCONP1AZ7ARGF3030 | DH | CON | 1A | Z7 | FIN | IF | GF | B02 | B02-D11 | RES-1A | ENT |
| DUKHCONP1AZ7ARGF3020 |  | Ceramic Wall Tiling | 25d | 2014-05-21 | 2014-06-18 | DUKHCONP1AZ7PLGF4305 SS+4d, DUKHCONP1AZ7PLGF4310 SS+4d, DUKHCONP1AZ7ARGF3015 FF+5d, DUKHCONP1AZ6ARGF3020, DUKHCONP1AZ7ARGF3015 SS+5d, DUKHCONP1AZ7PLGF4305 FF+4d, DUKHCONP1AZ7PLGF4310 FF+4d | -6d | 0d | TILE MASON SK [2834 h]; LABOR- SUBCONTRACTOR [1594.5 h]; CERAMIC WALL TILE QTY [1417 Sqm] | 92,597 | 24 | REM | 1AP7IFGF24 | DUKHCON1AP7ARGF3020 | DUKHCONP1AZ7ARGF3020 | DH | CON | 1A | Z7 | FIN | IF | GF | B02 | B02-D10 | RES-1A |  |
| DUKHCONP1AZ7ARGF3025 |  | Porcelain Tile flooring | 25d | 2014-05-27 | 2014-06-24 | DUKHCONP1AZ6ARGF3025, DUKHCONP1AZ7ARGF3020 SS+5d, DUKHCONP1AZ7ARGF3020 FF+5d, DUKHCONP1AZ7ARGF3010 SS+10d, DUKHCONP1AZ7ARGF3010 FF+10d | -6d | 0d | TILE MASON SK [1116 h]; LABOR- SUBCONTRACTOR [627.75 h]; PORCELAIN FLOORING QTY [976 Sqm] | 74,919 | 27 | REM | 1AP7IFGF27 | DUKHCON1AP7ARGF3025 | DUKHCONP1AZ7ARGF3025 | DH | CON | 1A | Z7 | FIN | IF | GF | B02 | B02-D10 | RES-1A |  |
| DUKHCONP1AZ7ARGF3045 |  | Fixing of Suspension systems | 20d | 2014-06-14 | 2014-07-06 | DUKHCONP1AZ7ARGF3025 SS+10d, DUKHCONP1AZ7ARGF3030 FF+7d, DUKHCONP1AZ7ELGF4010 FF+5d, DUKHCONP1AZ7ARGF3030 SS+7d, DUKHCONP1AZ6ARGF3045, DUKHCONP1AZ7ARGF3025 FF+10d, DUKHCONP1AZ7ELGF4010 SS+5d | -6d | 0d | LABOR- SUBCONTRACTOR [523.82 h]; SUSPENSION QTY [1164.04 Sqm]; FALSE CEILING SKILLED SK [931.23 h] | 22,840 | 39 | REM | 1AP7IFGF39 | DUKHCON1AP7ARGF3045 | DUKHCONP1AZ7ARGF3045 | DH | CON | 1A | Z7 | FIN | IF | GF | B02 | B02-D10 | RES-1A | SUS |
| DUKHCONP1AZ7ARGF3035 |  | Slate Tile Flooring & Skirting | 15d | 2014-06-16 | 2014-07-02 | DUKHCONP1AZ7ARGF3010 FF+13d, DUKHCONP1AZ7ARGF3025 FF+7d, DUKHCONP1AZ7ARGF3010 SS+13d, DUKHCONP1AZ7ARGF3025 SS+13d | -1d | 2d | TILE MASON SK [487 h]; LABOR- SUBCONTRACTOR [274.5 h]; SLATE TILE QTY [304 Sqm] | 65,885 | 33 | REM | 1AP7IFGF33 | DUKHCON1AP7ARGF3035 | DUKHCONP1AZ7ARGF3035 | DH | CON | 1A | Z7 | FIN | IF | GF | B02 | B02-D10 | RES-1A |  |
| DUKHCONP1AZ7ARGF3055 |  | Aluminum tile false ceiling | 25d | 2014-06-22 | 2014-07-20 | DUKHCONP1AZ7ACGF4600 FF+7d, DUKHCONP1AZ7ACGF4600 SS+7d, DUKHCONP1AZ7ARGF3045 FF+7d, DUKHCONP1AZ7ARGF3045 SS+7d | -3d | 3d | LABOR- SUBCONTRACTOR [54 h]; FALSE CEILING QTY [120 Sqm]; FALSE CEILING SKILLED SK [96 h] | 7,661 | 42 | REM | 1AP7IFGF42 | DUKHCON1AP7ARGF3055 | DUKHCONP1AZ7ARGF3055 | DH | CON | 1A | Z7 | FIN | IF | GF | B02 | B02-D10 | RES-1A | ALU |
| DUKHCONP1AZ7ARGF3040 |  | Cobble Tile flooring | 15d | 2014-06-23 | 2014-07-09 | DUKHCONP1AZ7ARGF3010 FF+13d, DUKHCONP1AZ7ARGF3010 SS+13d, DUKHCONP1AZ7ARGF3035 FF+4d, DUKHCONP1AZ7ARGF3025 SS+13d, DUKHCONP1AZ7ARGF3025 FF+13d, DUKHCONP1AZ7ARGF3035 SS+4d | -3d | 0d | TILE MASON SK [474 h]; LABOR- SUBCONTRACTOR [267 h]; COBBLE STONE QTY [296 Sqm] | 24,687 | 30 | REM | 1AP7IFGF30 | DUKHCON1AP7ARGF3040 | DUKHCONP1AZ7ARGF3040 | DH | CON | 1A | Z7 | FIN | IF | GF | B02 | B02-D10 | RES-1A |  |
| DUKHCONP1AZ7ARGF3060 |  | Gypsum board false ceiling | 25d | 2014-06-25 | 2014-07-23 | DUKHCONP1AZ7ARGF3045 SS+10d, DUKHCONP1AZ7ACGF4600 SS+7d, DUKHCONP1AZ7ARGF3045 FF+10d, DUKHCONP1AZ7ACGF4600 FF+7d, DUKHCONP1AZ6ARGF3060 | -6d | 0d | LABOR- SUBCONTRACTOR [480.75 h]; FALSE CEILING QTY [1068.04 Sqm]; FALSE CEILING SKILLED SK [854.4 h] | 60,827 | 45 | REM | 1AP7IFGF45 | DUKHCON1AP7ARGF3060 | DUKHCONP1AZ7ARGF3060 | DH | CON | 1A | Z7 | FIN | IF | GF | B02 | B02-D10 | RES-1A | GYP |
| DUKHCONP1AZ7ARGF3050 |  | Granite - Stair case flooring & Skirting | 20d | 2014-07-01 | 2014-07-23 | DUKHCONP1AZ7ARGF3025 SS+13d, DUKHCONP1AZ7ARGF3040 SS+7d, DUKHCONP1AZ7ARGF3040 FF+7d, DUKHCONP1AZ7ARGF3025 FF+13d | -3d | 0d | GRANITE MASON SK [560 h]; LABOR- SUBCONTRACTOR [315 h]; GRANITE QTY [140 Sqm] | 93,589 | 36 | REM | 1AP7IFGF36 | DUKHCON1AP7ARGF3050 | DUKHCONP1AZ7ARGF3050 | DH | CON | 1A | Z7 | FIN | IF | GF | B02 | B02-D10 | RES-1A |  |
| DUKHCONP1AZ7ARGF3065 |  | Wooden door & PVC Door | 15d | 2014-07-15 | 2014-07-31 | DUKHCONP1AZ7ARGF3035 FF+7d, DUKHCONP1AZ6ARGF3065, DUKHCONP1AZ7ARGF3050 FF+7d, DUKHCONP1AZ7ARGF3050 SS+7d, DUKHCONP1AZ7ARGF3035 SS+7d | -3d | 0d | LABOR- SUBCONTRACTOR [84 h]; WOODEN DOOR QTY [56 ea]; DOOR ERECTOR SK [224 h] | 233,577 | 48 | REM | 1AP7IFGF48 | DUKHCON1AP7ARGF3065 | DUKHCONP1AZ7ARGF3065 | DH | CON | 1A | Z7 | FIN | IF | GF | B02 | B02-D05 | RES-1A |  |
| DUKHCONP1AZ7ARGF3070 |  | Aluminum doors | 15d | 2014-07-21 | 2014-08-10 | DUKHCONP1AZ6ARGF3070, DUKHCONP1AZ7ARGF3065 SS+5d, DUKHCONP1AZ7ARGF3065 FF+5d | -3d | 0d | LABOR- SUBCONTRACTOR [48 h]; ALUMINIUM DOOR QTY [32 ea]; DOOR ERECTOR SK [128 h] | 83,208 | 51 | REM | 1AP7IFGF51 | DUKHCON1AP7ARGF3070 | DUKHCONP1AZ7ARGF3070 | DH | CON | 1A | Z7 | FIN | IF | GF | B02 | B02-D06 | RES-1A |  |
| DUKHCONP1AZ7ARGF3075 |  | Carpentry & Joinery Works | 20d | 2014-07-27 | 2014-08-21 | DUKHCONP1AZ7ARGF3070 SS+5d, DUKHCONP1AZ6ARGF3075, DUKHCONP1AZ7ARGF3070 FF+7d | -3d | 0d | LABOR- SUBCONTRACTOR [156 h]; CABINET QTY [48 ea]; COUNTER QTY [8 ea]; JOINERY WORK SK [384 h]; COUNTER SK [32 h] | 114,072 | 57 | REM | 1AP7IFGF57 | DUKHCON1AP7ARGF3075 | DUKHCONP1AZ7ARGF3075 | DH | CON | 1A | Z7 | FIN | IF | GF | B02 | B02-D05 | RES-1A |  |
| DUKHCONP1AZ7ARGF3080 |  | Aluminum windows | 20d | 2014-07-28 | 2014-08-23 | DUKHCONP1AZ6ARGF3080, DUKHCONP1AZ7ARGF3070 FF+6d, DUKHCONP1AZ7ARGF3070 SS+6d | 7d | 5d | LABOR- SUBCONTRACTOR [44.25 h]; ALUMINIUM WINDOWS QTY [44 ea]; WINDOW ERECTOR SK [118 h] | 36,283 | 54 | REM | 1AP7IFGF54 | DUKHCON1AP7ARGF3080 | DUKHCONP1AZ7ARGF3080 | DH | CON | 1A | Z7 | FIN | IF | GF | B02 | B02-D06 | RES-1A |  |
| DUKHCONP1AZ7ARGF3085 |  | S.S.Balustrade | 20d | 2014-08-07 | 2014-08-30 | DUKHCONP1AZ7ARGF3075 FF+7d, DUKHCONP1AZ7ARGF3075 SS+7d, DUKHCONP1AZ7ARGF3050 FF+7d, DUKHCONP1AZ7ARGF3050 SS+7d | 2d | 5d | LABOR- SUBCONTRACTOR [94.5 h]; S.S.BALUSTRADE QTY [84 lm]; HANDRAIL ERECTOR SKILLED [168 h] | 121,464 | 63 | REM | 1AP7IFGF63 | DUKHCON1AP7ARGF3085 | DUKHCONP1AZ7ARGF3085 | DH | CON | 1A | Z7 | FIN | IF | GF | B02 | B02-D06 | RES-1A |  |
| DUKHCONP1AZ7ARGF3090 |  | Installation of Granite Counter Top | 15d | 2014-08-12 | 2014-08-28 | DUKHCONP1AZ7ARGF3075 FF+6d, DUKHCONP1AZ7ARGF3075 SS+7d | -3d | 0d | GRANITE MASON SK [128 h]; LABOR- SUBCONTRACTOR [48 h]; GRANITE COUNTER TOP QTY [32 ea] | 34,847 | 60 | REM | 1AP7IFGF60 | DUKHCON1AP7ARGF3090 | DUKHCONP1AZ7ARGF3090 | DH | CON | 1A | Z7 | FIN | IF | GF | B02 | B02-D10 | RES-1A |  |
| DUKHCONP1AZ7ARGF3095 |  | Final Painting | 25d | 2014-08-21 | 2014-09-18 | DUKHCONP1AZ7ARGF3030 FF+10d, DUKHCONP1AZ7ARGF3085 FF+7d, DUKHCONP1AZ7ARGF3080 SS+8d, DUKHCONP1AZ7ARGF3090 SS+8d, DUKHCONP1AZ7ARGF3085 SS+7d, DUKHCONP1AZ7ARGF3035 FF+13d, DUKHCONP1AZ7ARGF3070 FF+5d, DUKHCONP1AZ7ARGF3080 FF+8d, DUKHCONP1AZ7ARGF3090 FF+8d, DUKHCONP1AZ7ARGF3040 FF+13d, DUKHCONP1AZ7ARGF3060 FF+8d, DUKHCONP1AZ7ARGF3030 SS+10d, DUKHCONP1AZ7ARGF3070 SS+5d, DUKHCONP1AZ7ACGF4610 FF+10d, DUKHCONP1AZ6ARGF3095, DUKHCONP1AZ7ARGF3040 SS+13d, DUKHCONP1AZ7ARGF3035 SS+13d, DUKHCONP1AZ7ARGF3060 SS+8d, DUKHCONP1AZ7ACGF4610 SS+10d | -3d | 0d | LABOR- SUBCONTRACTOR [1479.75 h]; PAINT QTY [4932 Sqm]; PAINTERS SK [3946 h] | 61,805 | 66 | REM | 1AP7IFGF66 | DUKHCON1AP7ARGF3095 | DUKHCONP1AZ7ARGF3095 | DH | CON | 1A | Z7 | FIN | IF | GF | B02 | B02-D11 | RES-1A | PNT |

Notes:
- DUKHCONP1AZ7STGF2000: Expenses: P1A-Concrete Works 73433
- DUKHCONP1AZ7STGF2005: Expenses: P1A-Concrete Works 20945
- DUKHCONP1AZ7STGF2010: Expenses: P1A-Concrete Works 326549
- DUKHCONP1AZ7STGF2015: Expenses: P1A-Concrete Works 131494
- DUKHCONP1AZ7STFF2020: Expenses: P1A-Concrete Works 64915
- DUKHCONP1AZ7STFF2025: Expenses: P1A-Concrete Works 18331
- DUKHCONP1AZ7STFF2030: Expenses: P1A-Concrete Works 310154
- DUKHCONP1AZ7STFF2035: Expenses: P1A-Concrete Works 119102
- DUKHCONP1AZ7STRF2040: Expenses: P1A-Concrete Works 21168
- DUKHCONP1AZ7STRF2045: Expenses: P1A-Concrete Works 4363
- DUKHCONP1AZ7STRF2050: Expenses: P1A-Concrete Works 61496
- DUKHCONP1AZ7STRF2055: Expenses: P1A-Concrete Works 22960
- DUKHCONP1AZ7STRF2060: Expenses: P1A-Block work 43648
- DUKHCONP1AZ7STRF2065: Expenses: P1A-Concrete Works 12624
- DUKHCONP1AZ7ARGF3000: Expenses: P1A-Block work 225562
- DUKHCONP1AZ7ARGF3005: Expenses: P1A-Finishes 71593
- DUKHCONP1AZ7ARGF3010: Expenses: P1A-Finishes 48008
- DUKHCONP1AZ7ARGF3015: Expenses: P1A-Finishes 7616
- DUKHCONP1AZ7ARGF3030: Expenses: P1A-Painting and Decorating 26608
- DUKHCONP1AZ7ARGF3020: Expenses: P1A-Finishes 92597
- DUKHCONP1AZ7ARGF3025: Expenses: P1A-Finishes 74919
- DUKHCONP1AZ7ARGF3045: Expenses: P1A-Finishes 22840
- DUKHCONP1AZ7ARGF3035: Expenses: P1A-Finishes 65885
- DUKHCONP1AZ7ARGF3055: Expenses: P1A-Finishes 7661
- DUKHCONP1AZ7ARGF3040: Expenses: P1A-Finishes 24687
- DUKHCONP1AZ7ARGF3060: Expenses: P1A-Finishes 60827
- DUKHCONP1AZ7ARGF3050: Expenses: P1A-Finishes 93589
- DUKHCONP1AZ7ARGF3065: Expenses: P1A-Carpentry and Joinery 233577
- DUKHCONP1AZ7ARGF3070: Expenses: P1A-Metal work 83208
- DUKHCONP1AZ7ARGF3075: Expenses: P1A-Carpentry and Joinery 114072
- DUKHCONP1AZ7ARGF3080: Expenses: P1A-Metal work 36283
- DUKHCONP1AZ7ARGF3085: Expenses: P1A-Metal work 121464
- DUKHCONP1AZ7ARGF3090: Expenses: P1A-Finishes 34847
- DUKHCONP1AZ7ARGF3095: Expenses: P1A-Painting and Decorating 61805

| ID | WBS | Activity | Duration | Start | Finish | Predecessors | Total float | Free float | Resources | Cost | CODE | rem | P3 ACTID | P6 ID (old) | NP61D | PROJECT | PHASES | PACKAGE | PART | ELEMENTS | STEP | FLOORS | BILL NOS | BILL DIVISION | RES PACK | EXECUTER |
| --- | --- | --- | --- | --- | --- | --- | --- | --- | --- | --- | --- | --- | --- | --- | --- | --- | --- | --- | --- | --- | --- | --- | --- | --- | --- | --- |
|  | 15 | **FIRST FLOORS** |  | 2014-05-18 | 2014-10-15 |  |  |  |  |  |  |  |  |  |  |  |  |  |  |  |  |  |  |  |  |  |
| DUKHCONP1AZ7ARFF3300 |  | Block work | 25d | 2014-05-18 | 2014-06-15 | DUKHCONP1AZ7STFF2035 SS+21d, DUKHCONP1AZ7STFF2035 FF+21d, DUKHCONP1AZ7STFF2020 SS+21d, DUKHCONP1AZ6ARFF3300, DUKHCONP1AZ7STFF2020 FF+21d | -24d | 0d | LABOR- SUBCONTRACTOR [2299.5 h]; BLOCK QTY [2044 Sqm]; BLOCK MASON SK [4088 h] | 127,687 | 10 | REM | 1AP7IFFF10 | DUKHCON1AP7ARFF3300 | DUKHCONP1AZ7ARFF3300 | DH | CON | 1A | Z7 | FIN | IF | FF | B02 | B02-D03 | RES-1A |  |
| DUKHCONP1AZ7ARFF3305 |  | Plastering work | 25d | 2014-06-11 | 2014-07-09 | DUKHCONP1AZ7PLFF4325 SS+6d, DUKHCONP1AZ6ARFF3305, DUKHCONP1AZ7ARFF3300 FF+7d, DUKHCONP1AZ7ARFF3300 SS+7d, DUKHCONP1AZ7ELFF4035 SS+5d, DUKHCONP1AZ7PLFF4325 FF+6d, DUKHCONP1AZ7ELFF4035 FF+5d | -24d | 0d | PLASTER MASON SK [5695 h]; LABOR- SUBCONTRACTOR [3204 h]; PLASTER QTY [3559 Sqm] | 46,951 | 12 | REM | 1AP7IFFF12 | DUKHCON1AP7ARFF3305 | DUKHCONP1AZ7ARFF3305 | DH | CON | 1A | Z7 | FIN | IF | FF | B02 | B02-D10 | RES-1A |  |
| DUKHCONP1AZ7ARFF3310 |  | Flooring screed | 21d | 2014-06-19 | 2014-07-13 | DUKHCONP1AZ7ARFF3305 FF+3d, DUKHCONP1AZ7ARFF3305 SS+7d | -12d | 12d | SCREED MASON SK [884 h]; LABOR- SUBCONTRACTOR [331.5 h]; FLOORING SCREED QTY [1105 Sqm] | 36,472 | 15 | REM | 1AP7IFFF15 | DUKHCON1AP7ARFF3310 | DUKHCONP1AZ7ARFF3310 | DH | CON | 1A | Z7 | FIN | IF | FF | B02 | B02-D10 | RES-1A |  |
| DUKHCONP1AZ7ARFF3330 |  | Paint First coat | 25d | 2014-06-28 | 2014-07-26 | DUKHCONP1AZ7ARFF3305 FF+14d, DUKHCONP1AZ7ARFF3305 SS+14d | -10d | 14d | LABOR- SUBCONTRACTOR [1293.75 h]; FIRSTCOAT PAINT QTY [4311.37 Sqm]; PAINTERS SK [3449 h] | 26,608 | 21 | REM | 1AP7IFFF21 | DUKHCON1AP7ARFF3330 | DUKHCONP1AZ7ARFF3330 | DH | CON | 1A | Z7 | FIN | IF | FF | B02 | B02-D11 | RES-1A | ENT |
| DUKHCONP1AZ7ARFF3315 |  | Wet area waterproofing | 15d | 2014-07-01 | 2014-07-17 | DUKHCONP1AZ6ARFF3315, DUKHCONP1AZ7ARFF3305 SS+7d, DUKHCONP1AZ7ARFF3305 FF+7d | -24d | 0d | LABOR- SUBCONTRACTOR [331.5 h]; WETAREA WATERPROOFING QTY [1104 Sqm]; WATERPROOFING SPECIALIST SK [884 h] | 36,704 | 18 | REM | 1AP7IFFF18 | DUKHCON1AP7ARFF3315 | DUKHCONP1AZ7ARFF3315 | DH | CON | 1A | Z7 | FIN | IF | FF | B02 | B02-D10 | RES-1A |  |
| DUKHCONP1AZ7ARFF3320 |  | Ceramic Wall Tiling | 25d | 2014-07-08 | 2014-08-09 | DUKHCONP1AZ6ARFF3320, DUKHCONP1AZ7PLFF4325 SS+4d, DUKHCONP1AZ7ARFF3315 SS+6d, DUKHCONP1AZ7ARFF3315 FF+6d, DUKHCONP1AZ7PLFF4330 FF+7d, DUKHCONP1AZ7PLFF4325 FF+4d, DUKHCONP1AZ7PLFF4330 SS+7d | -24d | 0d | TILE MASON SK [1214 h]; LABOR- SUBCONTRACTOR [683.25 h]; CERAMIC WALL TILE QTY [607 Sqm] | 42,941 | 24 | REM | 1AP7IFFF24 | DUKHCON1AP7ARFF3320 | DUKHCONP1AZ7ARFF3320 | DH | CON | 1A | Z7 | FIN | IF | FF | B02 | B02-D10 | RES-1A |  |
| DUKHCONP1AZ7ARFF3325 |  | Porcelain Tile flooring | 25d | 2014-07-15 | 2014-08-16 | DUKHCONP1AZ7ARFF3320 FF+6d, DUKHCONP1AZ6ARFF3325, DUKHCONP1AZ7ARFF3310 SS+10d, DUKHCONP1AZ7ARFF3310 FF+10d, DUKHCONP1AZ7ARFF3320 SS+6d | -24d | 0d | TILE MASON SK [1116 h]; LABOR- SUBCONTRACTOR [627.75 h]; PORCELAIN FLOORING QTY [976 Sqm] | 74,923 | 27 | REM | 1AP7IFFF27 | DUKHCON1AP7ARFF3325 | DUKHCONP1AZ7ARFF3325 | DH | CON | 1A | Z7 | FIN | IF | FF | B02 | B02-D10 | RES-1A |  |
| DUKHCONP1AZ7ARFF3345 |  | Fixing of Suspension systems | 20d | 2014-07-28 | 2014-08-23 | DUKHCONP1AZ7ELFF4045 FF+5d, DUKHCONP1AZ7ARFF3325 SS+6d, DUKHCONP1AZ7ARFF3330 FF+7d, DUKHCONP1AZ7ARFF3330 SS+7d, DUKHCONP1AZ6ARFF3345, DUKHCONP1AZ7ARFF3325 FF+6d, DUKHCONP1AZ7ELFF4045 SS+5d | -24d | 0d | LABOR- SUBCONTRACTOR [469.8 h]; SUSPENSION QTY [1044 Sqm]; FALSE CEILING SKILLED SK [835.2 h] | 19,648 | 36 | REM | 1AP7IFFF36 | DUKHCON1AP7ARFF3345 | DUKHCONP1AZ7ARFF3345 | DH | CON | 1A | Z7 | FIN | IF | FF | B02 | B02-D10 | RES-1A | SUS |
| DUKHCONP1AZ7ARFF3335 |  | Slate Tile Flooring & Skirting | 15d | 2014-08-05 | 2014-08-21 | DUKHCONP1AZ7ARFF3310 FF+13d, DUKHCONP1AZ7ARFF3325 SS+13d, DUKHCONP1AZ7ARFF3310 SS+13d, DUKHCONP1AZ7ARFF3325 FF+5d | -16d | 8d | LABOR- SUBCONTRACTOR [94.5 h]; SLATE TILE QTY [104 Sqm]; TILE MASON SK [167 h] | 20,405 | 30 | REM | 1AP7IFFF30 | DUKHCON1AP7ARFF3335 | DUKHCONP1AZ7ARFF3335 | DH | CON | 1A | Z7 | FIN | IF | FF | B02 | B02-D10 | RES-1A |  |
| DUKHCONP1AZ7ARFF3360 |  | Gypsum board false ceiling | 25d | 2014-08-07 | 2014-09-04 | DUKHCONP1AZ7ACFF4615 SS+7d, DUKHCONP1AZ7ARFF3345 SS+6d, DUKHCONP1AZ7ARFF3345 FF+6d, DUKHCONP1AZ7ACFF4615 FF+7d, DUKHCONP1AZ6ARFF3360 | -24d | 0d | LABOR- SUBCONTRACTOR [469.8 h]; FALSE CEILING QTY [1044 Sqm]; FALSE CEILING SKILLED SK [835.2 h] | 60,821 | 39 | REM | 1AP7IFFF39 | DUKHCON1AP7ARFF3360 | DUKHCONP1AZ7ARFF3360 | DH | CON | 1A | Z7 | FIN | IF | FF | B02 | B02-D10 | RES-1A | GYP |
| DUKHCONP1AZ7ARFF3350 |  | Granite - Stair case flooring & Skirting | 20d | 2014-08-09 | 2014-08-31 | DUKHCONP1AZ7ARFF3325 SS+13d, DUKHCONP1AZ7ARFF3325 FF+13d | -22d | 2d | GRANITE MASON SK [560 h]; LABOR- SUBCONTRACTOR [315 h]; GRANITE QTY [140 Sqm] | 93,598 | 33 | REM | 1AP7IFFF33 | DUKHCON1AP7ARFF3350 | DUKHCONP1AZ7ARFF3350 | DH | CON | 1A | Z7 | FIN | IF | FF | B02 | B02-D10 | RES-1A |  |
| DUKHCONP1AZ7ARFF3365 |  | Wooden door | 15d | 2014-08-23 | 2014-09-08 | DUKHCONP1AZ6ARFF3365, DUKHCONP1AZ7ARFF3360 SS+3d, DUKHCONP1AZ7ARFF3335 FF+7d, DUKHCONP1AZ7ARFF3350 SS+5d, DUKHCONP1AZ7ARFF3335 SS+7d, DUKHCONP1AZ7ARFF3360 FF+3d, DUKHCONP1AZ7ARFF3350 FF+5d | -24d | 0d | LABOR- SUBCONTRACTOR [84 h]; WOODEN DOOR QTY [56 ea]; DOOR ERECTOR SK [224 h] | 152,394 | 42 | REM | 1AP7IFFF42 | DUKHCON1AP7ARFF3365 | DUKHCONP1AZ7ARFF3365 | DH | CON | 1A | Z7 | FIN | IF | FF | B02 | B02-D05 | RES-1A |  |
| DUKHCONP1AZ7ARFF3370 |  | Aluminum Door | 20d | 2014-08-23 | 2014-09-14 | DUKHCONP1AZ7ARFF3365 SS, DUKHCONP1AZ7ARFF3365 FF, DUKHCONP1AZ6ARFF3370 | -24d | 0d | LABOR- SUBCONTRACTOR [60 h]; ALUMINIUM DOOR QTY [40 ea]; DOOR ERECTOR SK [160 h] | 122,026 | 45 | REM | 1AP7IFFF45 | DUKHCON1AP7ARFF3370 | DUKHCONP1AZ7ARFF3370 | DH | CON | 1A | Z7 | FIN | IF | FF | B02 | B02-D06 | RES-1A |  |
| DUKHCONP1AZ7ARFF3375 |  | Carpentry & Joinery Works | 25d | 2014-08-28 | 2014-09-25 | DUKHCONP1AZ6ARFF3375, DUKHCONP1AZ7ARFF3370 SS+5d, DUKHCONP1AZ7ARFF3370 FF+5d | -24d | 0d | LABOR- SUBCONTRACTOR [300 h]; CABINET QTY [24 ea]; COUNTER QTY [24 ea]; WARDROBE QTY [40 ea]; SHELVES QTY [24 ea]; JOINERY WORK SK [704 h]; COUNTER SK [96 h] | 231,933 | 51 | REM | 1AP7IFFF51 | DUKHCON1AP7ARFF3375 | DUKHCONP1AZ7ARFF3375 | DH | CON | 1A | Z7 | FIN | IF | FF | B02 | B02-D05 | RES-1A |  |
| DUKHCONP1AZ7ARFF3380 |  | Aluminum windows | 20d | 2014-08-30 | 2014-09-21 | DUKHCONP1AZ7ARFF3370 SS+6d, DUKHCONP1AZ7ARFF3370 FF+6d | -20d | 4d | LABOR- SUBCONTRACTOR [44.25 h]; ALUMINIUM WINDOWS QTY [44 ea]; WINDOW ERECTOR SK [118 h] | 55,776 | 48 | REM | 1AP7IFFF48 | DUKHCON1AP7ARFF3380 | DUKHCONP1AZ7ARFF3380 | DH | CON | 1A | Z7 | FIN | IF | FF | B02 | B02-D06 | RES-1A |  |
| DUKHCONP1AZ7ARFF3385 |  | Handrail & Balustrade | 20d | 2014-09-09 | 2014-10-01 | DUKHCONP1AZ7ARFF3350 FF+7d, DUKHCONP1AZ7ARFF3350 SS+7d, DUKHCONP1AZ7ARFF3375 FF+5d, DUKHCONP1AZ7ARFF3375 SS+5d | -24d | 0d | LABOR- SUBCONTRACTOR [283.5 h]; S.S.BALUSTRADE QTY [252 lm]; HANDRAIL ERECTOR SKILLED [504 h] | 308,447 | 57 | REM | 1AP7IFFF57 | DUKHCON1AP7ARFF3385 | DUKHCONP1AZ7ARFF3385 | DH | CON | 1A | Z7 | FIN | IF | FF | B02 | B02-D06 | RES-1A |  |
| DUKHCONP1AZ7ARFF3390 |  | Installation of Granite Counter Top | 20d | 2014-09-09 | 2014-10-01 | DUKHCONP1AZ7ARFF3375 FF+5d, DUKHCONP1AZ7ARFF3375 SS+6d | -23d | 1d | GRANITE MASON SK [64 h]; LABOR- SUBCONTRACTOR [24 h]; GRANITE COUNTER TOP QTY [16 ea] | 7,594 | 54 | REM | 1AP7IFFF54 | DUKHCON1AP7ARFF3390 | DUKHCONP1AZ7ARFF3390 | DH | CON | 1A | Z7 | FIN | IF | FF | B02 | B02-D10 | RES-1A |  |
| DUKHCONP1AZ7ARFF3395 |  | Final Painting | 25d | 2014-09-15 | 2014-10-15 | DUKHCONP1AZ6ARFF3395, DUKHCONP1AZ7ARFF3335 FF+8d, DUKHCONP1AZ7ARFF3360 FF+10d, DUKHCONP1AZ7ARFF3380 SS+10d, DUKHCONP1AZ7ARFF3375 SS+8d, DUKHCONP1AZ7ARFF3390 FF+6d, DUKHCONP1AZ7ARFF3385 FF+5d, DUKHCONP1AZ7ARFF3330 SS+10d, DUKHCONP1AZ7ARFF3360 SS+10d, DUKHCONP1AZ7ARFF3390 SS+4d, DUKHCONP1AZ7ARFF3350 SS+8d, DUKHCONP1AZ7ARFF3385 SS+5d, DUKHCONP1AZ7ARFF3365 FF+8d, DUKHCONP1AZ7ARFF3330 FF+10d, DUKHCONP1AZ7ARFF3335 SS+8d, DUKHCONP1AZ7ARFF3365 SS+8d, DUKHCONP1AZ7ARFF3380 FF+10d, DUKHCONP1AZ7ARFF3350 FF+8d, DUKHCONP1AZ7ARFF3375 FF+8d, DUKHCONP1AZ7ACFF4625 SS+6d, DUKHCONP1AZ7ACFF4625 FF+6d | -24d | 0d | LABOR- SUBCONTRACTOR [1293.75 h]; PAINT QTY [4311.37 Sqm]; PAINTERS SK [3449 h] | 50,803 | 60 | REM | 1AP7IFFF60 | DUKHCON1AP7ARFF3395 | DUKHCONP1AZ7ARFF3395 | DH | CON | 1A | Z7 | FIN | IF | FF | B02 | B02-D11 | RES-1A | PNT |
|  | 20 | **ROOF** |  | 2014-06-01 | 2014-08-07 |  |  |  |  |  |  |  |  |  |  |  |  |  |  |  |  |  |  |  |  |  |
| DUKHCONP1AZ7ARRF3600 |  | Block work | 20d | 2014-06-01 | 2014-06-23 | DUKHCONP1AZ7STRF2055 FF+21d, DUKHCONP1AZ7STRF2055 SS+21d, DUKHCONP1AZ6ARRF3600 | 28d | 0d | BLOCK MASON SK [448 h]; LABOR- SUBCONTRACTOR [252 h]; BLOCK QTY [224 Sqm] | 17,789 | 10 | REM | 1AP7IFRF10 | DUKHCON1AP7ARRF3600 | DUKHCONP1AZ7ARRF3600 | DH | CON | 1A | Z7 | FIN | IF | RF | B02 | B02-D03 | RES-1A |  |
| DUKHCONP1AZ7ARRF3605 |  | Plastering work | 20d | 2014-06-09 | 2014-07-01 | DUKHCONP1AZ7ARRF3600 SS+7d, DUKHCONP1AZ7ARRF3600 FF+7d | 28d | 0d | PLASTER MASON SK [1143 h]; LABOR- SUBCONTRACTOR [643.5 h]; PLASTER QTY [714 Sqm] | 9,277 | 20 | REM | 1AP7IFRF20 | DUKHCON1AP7ARRF3605 | DUKHCONP1AZ7ARRF3605 | DH | CON | 1A | Z7 | FIN | IF | RF | B02 | B02-D10 | RES-1A |  |
| DUKHCONP1AZ7ARRF3610 |  | Flooring screed | 15d | 2014-06-23 | 2014-07-09 | DUKHCONP1AZ7ARRF3605 SS+7d, DUKHCONP1AZ7ARRF3605 FF+7d | 33d | 0d | SCREED MASON SK [99 h]; LABOR- SUBCONTRACTOR [37.5 h]; FLOORING SCREED QTY [123 Sqm] | 4,056 | 30 | REM | 1AP7IFRF30 | DUKHCON1AP7ARRF3610 | DUKHCONP1AZ7ARRF3610 | DH | CON | 1A | Z7 | FIN | IF | RF | B02 | B02-D10 | RES-1A |  |
| DUKHCONP1AZ7ARRF3695 |  | Painting -Storage area | 20d | 2014-07-01 | 2014-07-23 | DUKHCONP1AZ7ARRF3610 SS+7d, DUKHCONP1AZ7ARRF3610 FF+7d | 33d | 0d | LABOR- SUBCONTRACTOR [456 h]; PAINT QTY [1472 Sqm]; PAINTERS SK [1184 h] | 7,956 | 40 |  | 1AP7IFRF40 | DUKHCON1AP7ARRF3695 | DUKHCONP1AZ7ARRF3695 | DH | CON | 1A | Z7 | FIN | IF | RF | B02 | B02-D11 | RES-1A |  |
| DUKHCONP1AZ7ARRF3620 |  | Epoxy Painting -Storage area | 15d | 2014-07-19 | 2014-08-07 | DUKHCONP1AZ7ARRF3695 FF+10d, DUKHCONP1AZ7ARRF3695 SS+10d | 33d | 57d | LABOR- SUBCONTRACTOR [13.5 h]; EPOXY QTY [64 Sqm]; EPOXY SK [35 h] | 3,216 | 50 | REM | 1AP7IFRF50 | DUKHCON1AP7ARRF3620 | DUKHCONP1AZ7ARRF3620 | DH | CON | 1A | Z7 | FIN | IF | RF | B02 | B02-D11 | RES-1A |  |

Notes:
- DUKHCONP1AZ7ARFF3300: Expenses: P1A-Block work 127687
- DUKHCONP1AZ7ARFF3305: Expenses: P1A-Finishes 46951
- DUKHCONP1AZ7ARFF3310: Expenses: P1A-Finishes 36472
- DUKHCONP1AZ7ARFF3330: Expenses: P1A-Painting and Decorating 26608
- DUKHCONP1AZ7ARFF3315: Expenses: P1A-Finishes 36704
- DUKHCONP1AZ7ARFF3320: Expenses: P1A-Finishes 42941
- DUKHCONP1AZ7ARFF3325: Expenses: P1A-Finishes 74923
- DUKHCONP1AZ7ARFF3345: Expenses: P1A-Finishes 19648
- DUKHCONP1AZ7ARFF3335: Expenses: P1A-Finishes 20405
- DUKHCONP1AZ7ARFF3360: Expenses: P1A-Finishes 60821
- DUKHCONP1AZ7ARFF3350: Expenses: P1A-Finishes 93598
- DUKHCONP1AZ7ARFF3365: Expenses: P1A-Carpentry and Joinery 152394
- DUKHCONP1AZ7ARFF3370: Expenses: P1A-Metal work 122026
- DUKHCONP1AZ7ARFF3375: Expenses: P1A-Carpentry and Joinery 231933
- DUKHCONP1AZ7ARFF3380: Expenses: P1A-Metal work 55776
- DUKHCONP1AZ7ARFF3385: Expenses: P1A-Metal work 308447
- DUKHCONP1AZ7ARFF3390: Expenses: P1A-Finishes 7594
- DUKHCONP1AZ7ARFF3395: Expenses: P1A-Painting and Decorating 50803
- DUKHCONP1AZ7ARRF3600: Expenses: P1A-Block work 17789
- DUKHCONP1AZ7ARRF3605: Expenses: P1A-Finishes 9277
- DUKHCONP1AZ7ARRF3610: Expenses: P1A-Finishes 4056
- DUKHCONP1AZ7ARRF3695: Expenses: P1A-Painting and Decorating 7956
- DUKHCONP1AZ7ARRF3620: Expenses: P1A-Painting and Decorating 3216

| ID | WBS | Activity | Duration | Start | Finish | Predecessors | Total float | Free float | Resources | Cost | CODE | rem | P3 ACTID | P6 ID (old) | NP61D | PROJECT | PHASES | PACKAGE | PART | ELEMENTS | STEP | FLOORS | BILL NOS | BILL DIVISION | RES PACK |
| --- | --- | --- | --- | --- | --- | --- | --- | --- | --- | --- | --- | --- | --- | --- | --- | --- | --- | --- | --- | --- | --- | --- | --- | --- | --- |
|  | 15 | **EXTERNAL FINISHES** |  | 2014-06-23 | 2014-09-13 |  |  |  |  |  |  |  |  |  |  |  |  |  |  |  |  |  |  |  |  |
|  | 10 | **ROOF** |  | 2014-07-07 | 2014-09-13 |  |  |  |  |  |  |  |  |  |  |  |  |  |  |  |  |  |  |  |  |
| DUKHCONP1AZ7ARRF3630 |  | Leveling Screed for Waterproofing | 25d | 2014-07-07 | 2014-08-07 | DUKHCONP1AZ7STRF2060 SS+10d, DUKHCONP1AZ6ARRF3630, DUKHCONP1AZ7STRF2065 FF+10d, DUKHCONP1AZ7STRF2065 SS+10d, DUKHCONP1AZ7STRF2060 FF+10d | -3d | 0d | SCREED MASON SK [512 h]; LABOR- SUBCONTRACTOR [288 h]; ROOF WP SCREED QTY [1280 Sqm] | 56,792 | 10 | REM | 1AP7EFRF10 | DUKHCON1AP7ARRF3630 | DUKHCONP1AZ7ARRF3630 | DH | CON | 1A | Z7 | FIN | EF | RF | B02 | B02-D04 | RES-1A |
| DUKHCONP1AZ7ARRF3635 |  | Laying of Waterproofing Membrane | 25d | 2014-07-10 | 2014-08-11 | DUKHCONP1AZ7ARRF3630 SS+3d, DUKHCONP1AZ7ARRF3630 FF+3d | -3d | 0d | LABOR- SUBCONTRACTOR [310.5 h]; ROOF WP MEMBRANE QTY [1552 Sqm]; WATERPROOFING SPECIALIST SK [828 h] | 43,994 | 15 | REM | 1AP7EFRF15 | DUKHCON1AP7ARRF3635 | DUKHCONP1AZ7ARRF3635 | DH | CON | 1A | Z7 | FIN | EF | RF | B02 | B02-D04 | RES-1A |
| DUKHCONP1AZ7ARRF3640 |  | Installation of Insulation & Protection | 25d | 2014-07-15 | 2014-08-16 | DUKHCONP1AZ7ARRF3635 SS+4d, DUKHCONP1AZ7ARRF3635 FF+4d | -3d | 0d | LABOR- SUBCONTRACTOR [384 h]; ROOF WP INSULATION QTY [2560 Sqm]; WATERPROOFING SPECIALIST SK [1024 h] | 55,936 | 20 | REM | 1AP7EFRF20 | DUKHCON1AP7ARRF3640 | DUKHCONP1AZ7ARRF3640 | DH | CON | 1A | Z7 | FIN | EF | RF | B02 | B02-D04 | RES-1A |
| DUKHCONP1AZ7ARRF3645 |  | Lime Stone Chips & Paving slab Installation | 25d | 2014-07-20 | 2014-08-20 | DUKHCONP1AZ7ARRF3640 SS+4d, DUKHCONP1AZ7ARRF3640 FF+4d | -3d | 0d | TILE MASON SK [45 h]; LABOR- SUBCONTRACTOR [188.25 h]; LIME STONE QTY [112 Sqm]; PRECAST PAVING SLAB QTY [1136 Sqm]; PRE CAST CONCRETE SK [455 h] | 83,344 | 25 | REM | 1AP7EFRF25 | DUKHCON1AP7ARRF3645 | DUKHCONP1AZ7ARRF3645 | DH | CON | 1A | Z7 | FIN | EF | RF | B02 | B02-D04 | RES-1A |
| DUKHCONP1AZ7ARRF3650 |  | Install. of Gal. Frame & Aluminum Slat Screen | 25d | 2014-07-28 | 2014-08-28 | DUKHCONP1AZ7ARRF3645 SS+7d, DUKHCONP1AZ7ARRF3645 FF+7d | -3d | 0d | LABOR- SUBCONTRACTOR [448.5 h]; ALUMINIUM SCREEN QTY [224 Sqm]; DOOR ERECTOR SK [598 h] | 63,347 | 35 | REM | 1AP7EFRF35 | DUKHCON1AP7ARRF3650 | DUKHCONP1AZ7ARRF3650 | DH | CON | 1A | Z7 | FIN | EF | RF | B02 | B02-D06 | RES-1A |
| DUKHCONP1AZ7ARRF3655 |  | Installation of Pumps Protection cabinets | 20d | 2014-08-16 | 2014-09-07 | DUKHCONP1AZ7ARRF3650 FF+8d, DUKHCONP1AZ7ARRF3645 SS+7d, DUKHCONP1AZ7ARRF3645 FF+7d, DUKHCONP1AZ6ARRF3655, DUKHCONP1AZ7ARRF3650 SS+8d | -3d | 0d | LABOR- SUBCONTRACTOR [168 h]; CABINET QTY [56 ea]; JOINERY WORK SK [448 h] | 26,600 | 30 | REM | 1AP7EFRF30 | DUKHCON1AP7ARRF3655 | DUKHCONP1AZ7ARRF3655 | DH | CON | 1A | Z7 | FIN | EF | RF | B02 | B02-D04 | RES-1A |
| DUKHCONP1AZ7ARRF3660 |  | Installation of Access Ladder | 15d | 2014-08-27 | 2014-09-13 | DUKHCONP1AZ7ARRF3655 FF+5d, DUKHCONP1AZ7ARRF3655 SS+5d | 2d | 26d | LABOR- SUBCONTRACTOR [48 h]; LADDER QTY [16 ea]; LADDER ERECTOR SK [128 h] | 53,206 | 40 | REM | 1AP7EFRF40 | DUKHCON1AP7ARRF3660 | DUKHCONP1AZ7ARRF3660 | DH | CON | 1A | Z7 | FIN | EF | RF | B02 | B02-D06 | RES-1A |
|  | 15 | **ELEVATION** |  | 2014-06-23 | 2014-08-17 |  |  |  |  |  |  |  |  |  |  |  |  |  |  |  |  |  |  |  |  |
| DUKHCONP1AZ7AREL3665 |  | External Plastering | 25d | 2014-06-23 | 2014-07-21 | DUKHCONP1AZ7ARFF3305 FF+7d, DUKHCONP1AZ7STRF2065 SS+7d, DUKHCONP1AZ7ARFF3305 SS+7d, DUKHCONP1AZ7STRF2065 FF+7d, DUKHCONP1AZ7ARRF3605 SS+7d, DUKHCONP1AZ6AREL3665 | 23d | 0d | PLASTER MASON SK [9136 h]; LABOR- SUBCONTRACTOR [5139 h]; EXTERNAL PLASTER QTY [4568 Sqm] | 108,894 | 10 | REM | 1AP7EFEL10 | DUKHCON1AP7AREL3665 | DUKHCONP1AZ7AREL3665 | DH | CON | 1A | Z7 | FIN | EF | EL | B02 | B02-D10 | RES-1A |
| DUKHCONP1AZ7AREL3670 |  | External stone cladding works | 20d | 2014-07-10 | 2014-08-05 | DUKHCONP1AZ7AREL3665 FF+10d, DUKHCONP1AZ7AREL3665 SS+10d, DUKHCONP1AZ6AREL3670 | 25d | 0d | TILE MASON SK [720 h]; LABOR- SUBCONTRACTOR [270 h]; STONE CLADDING QTY [360 Sqm] | 71,820 | 15 | REM | 1AP7EFEL15 | DUKHCON1AP7AREL3670 | DUKHCONP1AZ7AREL3670 | DH | CON | 1A | Z7 | FIN | EF | EL | B02 | B02-D10 | RES-1A |
| DUKHCONP1AZ7AREL3680 |  | External Painting | 20d | 2014-07-22 | 2014-08-17 | DUKHCONP1AZ7AREL3670 FF+10d, DUKHCONP1AZ7ARRF3695 SS+4d, DUKHCONP1AZ7AREL3670 SS+10d, DUKHCONP1AZ7ARRF3695 FF+4d, DUKHCONP1AZ6AREL3680 | 25d | 5d | LABOR- SUBCONTRACTOR [1032 h]; PAINT QTY [3424 Sqm]; PAINTERS SK [2752 h] | 86,006 | 20 |  | 1AP7EFEL20 | DUKHCON1AP7AREL3680 | DUKHCONP1AZ7AREL3680 | DH | CON | 1A | Z7 | FIN | EF | EL | B02 | B02-D11 | RES-1A |
|  | 20 | **MEP WORKS** |  | 2013-12-30 | 2014-10-14 |  |  |  |  |  |  |  |  |  |  |  |  |  |  |  |  |  |  |  |  |
|  | 10 | **ELECTRICAL WORKS** |  | 2014-04-12 | 2014-10-14 |  |  |  |  |  |  |  |  |  |  |  |  |  |  |  |  |  |  |  |  |
|  | 10 | **GROUND FLOOR** |  | 2014-04-12 | 2014-08-21 |  |  |  |  |  |  |  |  |  |  |  |  |  |  |  |  |  |  |  |  |
| DUKHCONP1AZ7ELGF4000 |  | Fixing of wall conduits & switch socket boxes | 25d | 2014-04-12 | 2014-05-10 | DUKHCONP1AZ7ARGF3000 FF+5d, DUKHCONP1AZ7ARGF3000 SS+5d | 3d | 0d | LABOR- SUBCONTRACTOR [192 h]; ELECTRICIANS SK [1030.4 h]; SOCKET BOXES QTY [724 ea]; CODUITS QTY [184 lm] | 33,077 | 10 |  | 1AP7EWGF10 | DUKHCON1AP7ELGF4000 | DUKHCONP1AZ7ELGF4000 | DH | CON | 1A | Z7 | MEP | EW | GF | B02 | B02-D09 | RES-1A |
| DUKHCONP1AZ7ELGF4005 |  | Cable tray & trunking installation | 20d | 2014-04-23 | 2014-05-15 | DUKHCONP1AZ7ELGF4000 SS+5d, DUKHCONP1AZ7ELGF4000 FF+5d, DUKHCONP1AZ6ELGF4005 | 21d | 0d | LABOR- SUBCONTRACTOR [288 h]; ELECTRICIANS SK [1030.4 h]; CABLE TRAY QTY [184 lm] | 7,536 | 15 |  | 1AP7EWGF15 | DUKHCON1AP7ELGF4005 | DUKHCONP1AZ7ELGF4005 | DH | CON | 1A | Z7 | MEP | EW | GF | B02 | B02-D09 | RES-1A |
| DUKHCONP1AZ7ELGF4010 |  | Installation of wiring & Main Cabling | 25d | 2014-05-01 | 2014-05-29 | DUKHCONP1AZ7ELGF4005 FF+7d, DUKHCONP1AZ7ELGF4005 SS+7d | 21d | 27d | LABOR- SUBCONTRACTOR [72 h]; ELECTRICIANS SK [224 h]; CABLE QTY [184 lm] | 112,018 | 20 |  | 1AP7EWGF20 | DUKHCON1AP7ELGF4010 | DUKHCONP1AZ7ELGF4010 | DH | CON | 1A | Z7 | MEP | EW | GF | B02 | B02-D09 | RES-1A |
| DUKHCONP1AZ7ELGF4015 |  | Install. of CAMS & Fire Fighting Accessories | 25d | 2014-07-03 | 2014-07-31 | DUKHCONP1AZ6ELGF4015, DUKHCONP1AZ7ARGF3055 SS+7d, DUKHCONP1AZ7ARGF3060 FF+7d, DUKHCONP1AZ7ARGF3055 FF+7d, DUKHCONP1AZ7ARGF3060 SS+7d | 6d | 0d | LABOR- SUBCONTRACTOR [384 h]; MECHANICALS SK [691.2 h]; SMOKE DETECTOR POINTS QTY [92 ea]; FIRE EXTINGUISHER QTY [28 ea] | 71,164 | 35 |  | 1AP7EWGF35 | DUKHCON1AP7ELGF4015 | DUKHCONP1AZ7ELGF4015 | DH | CON | 1A | Z7 | MEP | EW | GF | B02 | B02-D09 | RES-1A |
| DUKHCONP1AZ7ELGF4020 |  | Installation of DBS,MCCB Accessories. | 20d | 2014-07-09 | 2014-07-31 | DUKHCONP1AZ7ARGF3055 SS+7d, DUKHCONP1AZ7ARGF3055 FF+7d, DUKHCONP1AZ7ARGF3060 FF+7d, DUKHCONP1AZ7ELGF4010 SS+5d, DUKHCONP1AZ7ELGF4010 FF+5d, DUKHCONP1AZ7ARGF3060 SS+7d | -6d | 0d | LABOR- SUBCONTRACTOR [48 h]; ELECTRICIANS SK [179.2 h]; MCCB QTY [64 ea]; DB QTY [8 ea] | 26,049 | 25 |  | 1AP7EWGF25 | DUKHCON1AP7ELGF4020 | DUKHCONP1AZ7ELGF4020 | DH | CON | 1A | Z7 | MEP | EW | GF | B02 | B02-D09 | RES-1A |
| DUKHCONP1AZ7ELGF4025 |  | Installation of Lighting fixtures & Accessories | 25d | 2014-07-21 | 2014-08-21 | DUKHCONP1AZ7ARGF3055 SS+10d, DUKHCONP1AZ7ARGF3060 FF+10d, DUKHCONP1AZ7ELGF4020 SS+10d, DUKHCONP1AZ7ARGF3055 FF+10d, DUKHCONP1AZ7ARGF3060 SS+10d, DUKHCONP1AZ6ELGF4025, DUKHCONP1AZ7ELGF4020 FF+10d | 1d | 0d | LABOR- SUBCONTRACTOR [576 h]; ELECTRICIANS SK [1075.2 h]; LIGHTS QTY [480 ea] | 154,315 | 30 |  | 1AP7EWGF30 | DUKHCON1AP7ELGF4025 | DUKHCONP1AZ7ELGF4025 | DH | CON | 1A | Z7 | MEP | EW | GF | B02 | B02-D09 | RES-1A |
| DUKHCONP1AZ7ELGF4030 |  | Installation of Telephone System | 20d | 2014-07-21 | 2014-08-16 | DUKHCONP1AZ7ELGF4020 SS+10d, DUKHCONP1AZ7ARGF3060 SS+5d, DUKHCONP1AZ7ARGF3060 FF+5d, DUKHCONP1AZ7ELGF4020 FF+10d, DUKHCONP1AZ6ELGF4030 | -6d | 5d | LABOR- SUBCONTRACTOR [72 h]; ELECTRICIANS SK [448 h]; TELEPHONE SOCKETS QTY [40 ea] | 38,162 | 40 |  | 1AP7EWGF40 | DUKHCON1AP7ELGF4030 | DUKHCONP1AZ7ELGF4030 | DH | CON | 1A | Z7 | MEP | EW | GF | B02 | B02-D09 | RES-1A |
|  | 15 | **FIRST FLOORS** |  | 2014-05-24 | 2014-09-24 |  |  |  |  |  |  |  |  |  |  |  |  |  |  |  |  |  |  |  |  |
| DUKHCONP1AZ7ELFF4035 |  | Fixing of wall conduits & switch socket boxes | 25d | 2014-05-24 | 2014-06-21 | DUKHCONP1AZ7ARFF3300 FF+5d, DUKHCONP1AZ7ARFF3300 SS+5d | -13d | 0d | LABOR- SUBCONTRACTOR [192 h]; ELECTRICIANS SK [1030.4 h]; SOCKET BOXES QTY [724 ea]; CODUITS QTY [184 lm] | 32,659 | 10 |  | 1AP7EWFF10 | DUKHCON1AP7ELFF4035 | DUKHCONP1AZ7ELFF4035 | DH | CON | 1A | Z7 | MEP | EW | FF | B02 | B02-D09 | RES-1A |
| DUKHCONP1AZ7ELFF4040 |  | Cable tray & trunking installation | 20d | 2014-06-04 | 2014-06-26 | DUKHCONP1AZ7ELFF4035 FF+5d, DUKHCONP1AZ7ELFF4035 SS+5d | 5d | 2d | CABLE TRAY QTY [184 lm]; LABOR- SUBCONTRACTOR [288 h]; ELECTRICIANS SK [1030.4 h] | 7,520 | 15 |  | 1AP7EWFF15 | DUKHCON1AP7ELFF4040 | DUKHCONP1AZ7ELFF4040 | DH | CON | 1A | Z7 | MEP | EW | FF | B02 | B02-D09 | RES-1A |
| DUKHCONP1AZ7ELFF4045 |  | Installation of wiring & Main Cabling | 25d | 2014-06-15 | 2014-07-13 | DUKHCONP1AZ7ELFF4040 SS+7d, DUKHCONP1AZ6ELFF4045, DUKHCONP1AZ7ELFF4040 FF+7d | 3d | 0d | LABOR- SUBCONTRACTOR [72 h]; ELECTRICIANS SK [224 h]; CABLE QTY [184 lm] | 110,383 | 20 |  | 1AP7EWFF20 | DUKHCON1AP7ELFF4045 | DUKHCONP1AZ7ELFF4045 | DH | CON | 1A | Z7 | MEP | EW | FF | B02 | B02-D09 | RES-1A |
| DUKHCONP1AZ7ELFF4055 |  | Install. of CAMS & Fire Fighting Accessories | 25d | 2014-08-16 | 2014-09-13 | DUKHCONP1AZ7ARFF3360 SS+7d, DUKHCONP1AZ7ELGF4015 FF+5d, DUKHCONP1AZ7ARFF3360 FF+7d, DUKHCONP1AZ6ELFF4055, DUKHCONP1AZ7ELGF4015 SS+5d | -23d | 0d | LABOR- SUBCONTRACTOR [360 h]; MECHANICALS SK [648 h]; SMOKE DETECTOR POINTS QTY [92 ea]; FIRE EXTINGUISHER QTY [24 ea] | 71,142 | 35 |  | 1AP7EWFF35 | DUKHCON1AP7ELFF4055 | DUKHCONP1AZ7ELFF4055 | DH | CON | 1A | Z7 | MEP | EW | FF | B02 | B02-D09 | RES-1A |
| DUKHCONP1AZ7ELFF4050 |  | Installation of Telephone System | 25d | 2014-08-17 | 2014-09-14 | DUKHCONP1AZ7MSEX5010, DUKHCONP1AZ7ARFF3360 SS+5d, DUKHCONP1AZ7ARFF3360 FF+5d, DUKHCONP1AZ7ELGF4030 FF+10d, DUKHCONP1AZ7ELGF4030 SS+10d | -16d | 7d | LABOR- SUBCONTRACTOR [48 h]; ELECTRICIANS SK [403.2 h]; TELEPHONE SOCKETS QTY [36 ea] | 36,523 | 40 |  | 1AP7EWFF40 | DUKHCON1AP7ELFF4050 | DUKHCONP1AZ7ELFF4050 | DH | CON | 1A | Z7 | MEP | EW | FF | B02 | B02-D09 | RES-1A |
| DUKHCONP1AZ7ELFF4060 |  | Installation of DBS,MCCB Accessories. | 20d | 2014-08-19 | 2014-09-10 | DUKHCONP1AZ7ARFF3360 FF+5d, DUKHCONP1AZ7ELFF4045 FF+5d, DUKHCONP1AZ7ARFF3360 SS+8d, DUKHCONP1AZ7ELFF4045 SS+5d, DUKHCONP1AZ6ELFF4060 | -21d | 2d | LABOR- SUBCONTRACTOR [48 h]; ELECTRICIANS SK [179.2 h]; MCCB QTY [64 ea]; DB QTY [8 ea] | 26,040 | 25 |  | 1AP7EWFF25 | DUKHCON1AP7ELFF4060 | DUKHCONP1AZ7ELFF4060 | DH | CON | 1A | Z7 | MEP | EW | FF | B02 | B02-D09 | RES-1A |
| DUKHCONP1AZ7ELFF4065 |  | Installation of Lighting fixtures & Accessories | 25d | 2014-08-27 | 2014-09-24 | DUKHCONP1AZ7ELGF4025 FF+5d, DUKHCONP1AZ7ARFF3360 FF+10d, DUKHCONP1AZ7ELFF4060 FF+5d, DUKHCONP1AZ6ELFF4065, DUKHCONP1AZ7ELFF4060 SS+5d, DUKHCONP1AZ7ARFF3360 SS+10d, DUKHCONP1AZ7ELGF4025 SS+5d | -23d | 0d | LABOR- SUBCONTRACTOR [576 h]; ELECTRICIANS SK [1075.2 h]; LIGHTS QTY [480 ea] | 154,301 | 30 |  | 1AP7EWFF30 | DUKHCON1AP7ELFF4065 | DUKHCONP1AZ7ELFF4065 | DH | CON | 1A | Z7 | MEP | EW | FF | B02 | B02-D09 | RES-1A |

Notes:
- DUKHCONP1AZ7ARRF3630: Expenses: P1A-Roofing 56792
- DUKHCONP1AZ7ARRF3635: Expenses: P1A-Roofing 43994
- DUKHCONP1AZ7ARRF3640: Expenses: P1A-Roofing 55936
- DUKHCONP1AZ7ARRF3645: Expenses: P1A-Roofing 83344
- DUKHCONP1AZ7ARRF3650: Expenses: P1A-Metal work 63347
- DUKHCONP1AZ7ARRF3655: Expenses: P1A-Roofing 26600
- DUKHCONP1AZ7ARRF3660: Expenses: P1A-Metal work 53206
- DUKHCONP1AZ7AREL3665: Expenses: P1A-Finishes 108894
- DUKHCONP1AZ7AREL3670: Expenses: P1A-Finishes 71820
- DUKHCONP1AZ7AREL3680: Expenses: P1A-Painting and Decorating 86006
- DUKHCONP1AZ7ELGF4000: Expenses: P1A-Electrical Installations 33077
- DUKHCONP1AZ7ELGF4005: Expenses: P1A-Electrical Installations 7536
- DUKHCONP1AZ7ELGF4010: Expenses: P1A-Electrical Installations 112018
- DUKHCONP1AZ7ELGF4015: Expenses: P1A-Electrical Installations 71164
- DUKHCONP1AZ7ELGF4020: Expenses: P1A-Electrical Installations 26049
- DUKHCONP1AZ7ELGF4025: Expenses: P1A-Electrical Installations 154315
- DUKHCONP1AZ7ELGF4030: Expenses: P1A-Electrical Installations 38162
- DUKHCONP1AZ7ELFF4035: Expenses: P1A-Electrical Installations 32659
- DUKHCONP1AZ7ELFF4040: Expenses: P1A-Electrical Installations 7520
- DUKHCONP1AZ7ELFF4045: Expenses: P1A-Electrical Installations 110383
- DUKHCONP1AZ7ELFF4055: Expenses: P1A-Electrical Installations 71142
- DUKHCONP1AZ7ELFF4050: Expenses: P1A-Electrical Installations 36523
- DUKHCONP1AZ7ELFF4060: Expenses: P1A-Electrical Installations 26040
- DUKHCONP1AZ7ELFF4065: Expenses: P1A-Electrical Installations 154301

| ID | WBS | Activity | Duration | Start | Finish | Predecessors | Total float | Free float | Resources | Cost | CODE | P3 ACTID | P6 ID (old) | NP61D | PROJECT | PHASES | PACKAGE | PART | ELEMENTS | STEP | FLOORS | BILL NOS | BILL DIVISION | RES PACK |
| --- | --- | --- | --- | --- | --- | --- | --- | --- | --- | --- | --- | --- | --- | --- | --- | --- | --- | --- | --- | --- | --- | --- | --- | --- |
|  | 20 | **ROOF** |  | 2014-09-10 | 2014-10-14 |  |  |  |  |  |  |  |  |  |  |  |  |  |  |  |  |  |  |  |
| DUKHCONP1AZ7ELRF4070 |  | Installation of Isolator | 18d | 2014-09-10 | 2014-09-30 | DUKHCONP1AZ7ELFF4050 SS+5d, DUKHCONP1AZ7ELFF4065 FF+5d, DUKHCONP1AZ7ELFF4050 FF+7d, DUKHCONP1AZ7ARRF3645 FF+7d, DUKHCONP1AZ7ARRF3645 SS+7d, DUKHCONP1AZ7ELFF4045 FF+10d, DUKHCONP1AZ7ELFF4045 SS+10d, DUKHCONP1AZ7ELFF4065 SS+5d | -23d | 0d | LABOR- SUBCONTRACTOR [144 h]; ELECTRICIANS SK [268.8 h]; ISOLATOR QTY [44 ea] | 54,690 | 10 | 1AP7EWRF10 | DUKHCON1AP7ELRF4070 | DUKHCONP1AZ7ELRF4070 | DH | CON | 1A | Z7 | MEP | EW | RF | B02 | B02-D09 | RES-1A |
| DUKHCONP1AZ7ELRF4075 |  | Installation of TV Dish Antenna | 23d | 2014-09-16 | 2014-10-14 | DUKHCONP1AZ7ELRF4070 SS+5d, DUKHCONP1AZ7ELRF4070 FF+5d | -23d | 1d | LABOR- SUBCONTRACTOR [240 h]; ELECTRICIANS SK [492.8 h]; CONTROL BOX QTY [12 ea]; SWITCHING BOX QTY [32 ea] | 40,597 | 15 | 1AP7EWRF15 | DUKHCON1AP7ELRF4075 | DUKHCONP1AZ7ELRF4075 | DH | CON | 1A | Z7 | MEP | EW | RF | B02 | B02-D09 | RES-1A |
|  | 15 | **PLUMBING, DRAINAGE & FIRE FIGHTING WORKS** |  | 2013-12-30 | 2014-10-14 |  |  |  |  |  |  |  |  |  |  |  |  |  |  |  |  |  |  |  |
|  | 10 | **GROUND FLOOR** |  | 2013-12-30 | 2014-08-21 |  |  |  |  |  |  |  |  |  |  |  |  |  |  |  |  |  |  |  |
| DUKHCONP1AZ7PLUG4300 |  | Drainage / Storm Pipes in Grade Slab | 16d | 2013-12-30 | 2014-01-16 | DUKHCONP1AZ7STUG1040 FF+11d, DUKHCONP1AZ7STUG1040 SS+11d | -24d | 0d | LABOR- SUBCONTRACTOR [24 h]; MECHANICALS SK [43.2 h]; DRAINAGE PIPES QTY [80 lm] | 35,465 | 10 | 1AP7PLUG10 | DUKHCON1AP7PLUG4300 | DUKHCONP1AZ7PLUG4300 | DH | CON | 1A | Z7 | ST | SB | UG | B02 | B02-D07 | RES-1A |
| DUKHCONP1AZ7PLGF4305 |  | Installation of Plumbing pipes & testing | 18d | 2014-04-22 | 2014-05-12 | DUKHCONP1AZ6PLGF4305, DUKHCONP1AZ7ARGF3000 SS+7d, DUKHCONP1AZ7ARGF3000 FF+7d | -6d | 0d | LABOR- SUBCONTRACTOR [96 h]; MECHANICALS SK [345.6 h]; PLUMB PIPES QTY [328 lm] | 85,973 | 10 | 1AP7PLGF10 | DUKHCON1AP7PLGF4305 | DUKHCONP1AZ7PLGF4305 | DH | CON | 1A | Z7 | MEP | PL | GF | B02 | B02-D07 | RES-1A |
| DUKHCONP1AZ7PLGF4310 |  | Installation of Drainage pipes &testing | 18d | 2014-04-22 | 2014-05-12 | DUKHCONP1AZ7PLGF4305 FF, DUKHCONP1AZ7ARGF3000 SS+7d, DUKHCONP1AZ7ARGF3000 FF+7d, DUKHCONP1AZ7PLGF4305 SS | -3d | 13d | LABOR- SUBCONTRACTOR [48 h]; MECHANICALS SK [129.6 h]; DRAINAGE PIPES QTY [248 lm] | 2,966 | 15 | 1AP7PLGF15 | DUKHCON1AP7PLGF4310 | DUKHCONP1AZ7PLGF4310 | DH | CON | 1A | Z7 | MEP | PL | GF | B02 | B02-D07 | RES-1A |
| DUKHCONP1AZ7PLGF4315 |  | Sanitary Fittings & Accessories | 20d | 2014-07-21 | 2014-08-16 | DUKHCONP1AZ6PLGF4315, DUKHCONP1AZ7PLGF4310 SS+5d, DUKHCONP1AZ7PLGF4310 FF+5d, DUKHCONP1AZ7ARGF3065 FF+5d, DUKHCONP1AZ7ARGF3065 SS+5d | 21d | 0d | LABOR- SUBCONTRACTOR [48 h]; MECHANICALS SK [86.4 h]; SANITARY ACC QTY [60 ea] | 104,291 | 20 | 1AP7PLGF20 | DUKHCON1AP7PLGF4315 | DUKHCONP1AZ7PLGF4315 | DH | CON | 1A | Z7 | MEP | PL | GF | B02 | B02-D07 | RES-1A |
| DUKHCONP1AZ7PLGF4320 |  | Installation of Water Heater | 15d | 2014-08-05 | 2014-08-21 | DUKHCONP1AZ6PLGF4320, DUKHCONP1AZ7PLGF4315 SS+5d, DUKHCONP1AZ7ARGF3060 SS+5d, DUKHCONP1AZ7ARGF3060 FF+5d, DUKHCONP1AZ7PLGF4315 FF+5d | 21d | 10d | LABOR- SUBCONTRACTOR [48 h]; MECHANICALS SK [86.4 h]; WATER HEATER QTY [12 ea] | 8,932 | 25 | 1AP7PLGF25 | DUKHCON1AP7PLGF4320 | DUKHCONP1AZ7PLGF4320 | DH | CON | 1A | Z7 | MEP | PL | GF | B02 | B02-D07 | RES-1A |
|  | 15 | **FIRST FLOORS** |  | 2014-06-04 | 2014-09-20 |  |  |  |  |  |  |  |  |  |  |  |  |  |  |  |  |  |  |  |
| DUKHCONP1AZ7PLFF4325 |  | Installation of Plumbing pipes & testing | 18d | 2014-06-04 | 2014-06-24 | DUKHCONP1AZ7ARFF3300 SS+7d, DUKHCONP1AZ7ARFF3300 FF+8d | -24d | 0d | LABOR- SUBCONTRACTOR [96 h]; MECHANICALS SK [345.6 h]; PLUMB PIPES QTY [328 lm] | 83,745 | 10 | 1AP7PLFF10 | DUKHCON1AP7PLFF4325 | DUKHCONP1AZ7PLFF4325 | DH | CON | 1A | Z7 | MEP | PL | FF | B02 | B02-D07 | RES-1A |
| DUKHCONP1AZ7PLFF4330 |  | Installation of Drainage pipes & testing | 18d | 2014-06-04 | 2014-06-24 | DUKHCONP1AZ7ARFF3300 SS+7d, DUKHCONP1AZ7PLFF4325 SS, DUKHCONP1AZ7PLFF4325 FF, DUKHCONP1AZ7ARFF3300 FF+7d, DUKHCONP1AZ6PLFF4330 | -2d | 7d | LABOR- SUBCONTRACTOR [48 h]; MECHANICALS SK [129.6 h]; DRAINAGE PIPES QTY [248 lm] | 2,542 | 15 | 1AP7PLFF15 | DUKHCON1AP7PLFF4330 | DUKHCONP1AZ7PLFF4330 | DH | CON | 1A | Z7 | MEP | PL | FF | B02 | B02-D07 | RES-1A |
| DUKHCONP1AZ7PLFF4335 |  | Sanitary Fittings & Accessories | 20d | 2014-08-23 | 2014-09-14 | DUKHCONP1AZ7ARFF3365 SS, DUKHCONP1AZ7PLFF4330 SS+5d, DUKHCONP1AZ7ARFF3365 FF+5d, DUKHCONP1AZ7PLFF4330 FF+5d | -19d | 0d | LABOR- SUBCONTRACTOR [24 h]; MECHANICALS SK [43.2 h]; SANITARY ACC QTY [56 ea] | 113,094 | 20 | 1AP7PLFF20 | DUKHCON1AP7PLFF4335 | DUKHCONP1AZ7PLFF4335 | DH | CON | 1A | Z7 | MEP | PL | FF | B02 | B02-D07 | RES-1A |
| DUKHCONP1AZ7PLFF4340 |  | Installation of Water Heater | 15d | 2014-09-03 | 2014-09-20 | DUKHCONP1AZ7PLFF4335 SS+5d, DUKHCONP1AZ7ARFF3360 SS+5d, DUKHCONP1AZ7ARFF3360 FF+5d, DUKHCONP1AZ6PLFF4340, DUKHCONP1AZ7PLFF4335 FF+5d | -19d | 4d | LABOR- SUBCONTRACTOR [24 h]; MECHANICALS SK [43.2 h]; WATER HEATER QTY [8 ea] | 7,006 | 25 | 1AP7PLFF25 | DUKHCON1AP7PLFF4340 | DUKHCONP1AZ7PLFF4340 | DH | CON | 1A | Z7 | MEP | PL | FF | B02 | B02-D07 | RES-1A |
|  | 20 | **ROOF** |  | 2014-06-23 | 2014-10-14 |  |  |  |  |  |  |  |  |  |  |  |  |  |  |  |  |  |  |  |
| DUKHCONP1AZ7PLRF4345 |  | Installation of Plumbing pipes & fittings | 15d | 2014-06-23 | 2014-07-09 | DUKHCONP1AZ7ARRF3605 FF+7d, DUKHCONP1AZ7ARRF3605 SS+7d | 32d | 30d | LABOR- SUBCONTRACTOR [24 h]; MECHANICALS SK [86.4 h]; PLUMB PIPES QTY [96 lm] | 12,902 | 10 | 1AP7PLRF10 | DUKHCON1AP7PLRF4345 | DUKHCONP1AZ7PLRF4345 | DH | CON | 1A | Z7 | MEP | PL | RF | B02 | B02-D07 | RES-1A |
| DUKHCONP1AZ7PLRF4350 |  | Installation of Rain water Pipes | 15d | 2014-08-10 | 2014-08-26 | DUKHCONP1AZ7ARRF3645 FF+5d, DUKHCONP1AZ7ARRF3645 SS+5d, DUKHCONP1AZ7PLFF4330 FF+5d, DUKHCONP1AZ7PLFF4330 SS+5d, DUKHCONP1AZ7PLRF4345 FF+8d, DUKHCONP1AZ7PLRF4345 SS+8d, DUKHCONP1AZ6PLRF4350, DUKHCONP1AZ7AREL3665 FF+7d, DUKHCONP1AZ7AREL3665 SS+7d | 2d | 10d | LABOR- SUBCONTRACTOR [24 h]; MECHANICALS SK [43.2 h]; DRAINAGE PIPES QTY [80 lm] | 93,917 | 15 | 1AP7PLRF15 | DUKHCON1AP7PLRF4350 | DUKHCONP1AZ7PLRF4350 | DH | CON | 1A | Z7 | MEP | PL | RF | B02 | B02-D07 | RES-1A |
| DUKHCONP1AZ7PLRF4355 |  | Roof Water Tank Installation & Connections | 25d | 2014-09-14 | 2014-10-14 | DUKHCONP1AZ6PLRF4355, DUKHCONP1AZ7PLRF4345 SS+8d, DUKHCONP1AZ7PLRF4350 SS+5d, DUKHCONP1AZ7ARRF3655 SS+5d, DUKHCONP1AZ7ARRF3655 FF+5d, DUKHCONP1AZ7PLFF4340 SS+5d, DUKHCONP1AZ7PLFF4340 FF+5d, DUKHCONP1AZ7PLRF4345 FF+8d, DUKHCONP1AZ7PLRF4350 FF+5d | -23d | 0d | LABOR- SUBCONTRACTOR [120 h]; MECHANICALS SK [216 h]; WATER TANK QTY [20 ea] | 592,597 | 20 | 1AP7PLRF20 | DUKHCON1AP7PLRF4355 | DUKHCONP1AZ7PLRF4355 | DH | CON | 1A | Z7 | MEP | PL | RF | B02 | B02-D07 | RES-1A |
|  | 20 | **AC WORKS** |  | 2014-05-12 | 2014-10-12 |  |  |  |  |  |  |  |  |  |  |  |  |  |  |  |  |  |  |  |
|  | 10 | **GROUND FLOOR** |  | 2014-05-12 | 2014-08-19 |  |  |  |  |  |  |  |  |  |  |  |  |  |  |  |  |  |  |  |
| DUKHCONP1AZ7ACGF4600 |  | Installation AC Pipes | 20d | 2014-05-12 | 2014-06-03 | DUKHCONP1AZ6ACGF4600, DUKHCONP1AZ7ARGF3005 FF+7d, DUKHCONP1AZ7ARGF3005 SS+7d | 25d | 5d | LABOR- SUBCONTRACTOR [216 h]; AC TECHNICIAN SK [761.6 h]; AC PIPES QTY [2008 lm] | 8,069 | 10 | 1AP7ACGF10 | DUKHCON1AP7ACGF4600 | DUKHCONP1AZ7ACGF4600 | DH | CON | 1A | Z7 | MEP | AC | GF | B02 | B02-D08 | RES-1A |
| DUKHCONP1AZ7ACGF4605 |  | Fixing of Ventilation Equipments | 25d | 2014-07-03 | 2014-07-31 | DUKHCONP1AZ7ACGF4600 SS+10d, DUKHCONP1AZ6ACGF4605, DUKHCONP1AZ7ARGF3060 FF+7d, DUKHCONP1AZ7ARGF3055 SS+7d, DUKHCONP1AZ7ARGF3060 SS+7d, DUKHCONP1AZ7ACGF4600 FF+10d, DUKHCONP1AZ7ARGF3055 FF+7d | 8d | 0d | LABOR- SUBCONTRACTOR [48 h]; AC TECHNICIAN SK [134.4 h]; VENTILIATION EQP QTY [40 ea] | 17,289 | 15 | 1AP7ACGF15 | DUKHCON1AP7ACGF4605 | DUKHCONP1AZ7ACGF4605 | DH | CON | 1A | Z7 | MEP | AC | GF | B02 | B02-D08 | RES-1A |
| DUKHCONP1AZ7ACGF4610 |  | Fixing of Split AC | 20d | 2014-07-24 | 2014-08-19 | DUKHCONP1AZ6ACGF4610, DUKHCONP1AZ7ACGF4605 SS+13d, DUKHCONP1AZ7ACGF4605 FF+13d | 8d | 5d | LABOR- SUBCONTRACTOR [72 h]; AC TECHNICIAN SK [224 h]; SPLIT UNIT QTY [40 ea] | 48,894 | 20 | 1AP7ACGF20 | DUKHCON1AP7ACGF4610 | DUKHCONP1AZ7ACGF4610 | DH | CON | 1A | Z7 | MEP | AC | GF | B02 | B02-D08 | RES-1A |

Notes:
- DUKHCONP1AZ7ELRF4070: Expenses: P1A-Electrical Installations 54690
- DUKHCONP1AZ7ELRF4075: Expenses: P1A-Electrical Installations 40597
- DUKHCONP1AZ7PLUG4300: Expenses: P1A-Plumbing and Drainage works 35465
- DUKHCONP1AZ7PLGF4305: Expenses: P1A-Plumbing and Drainage works 85973
- DUKHCONP1AZ7PLGF4310: Expenses: P1A-Plumbing and Drainage works 2966
- DUKHCONP1AZ7PLGF4315: Expenses: P1A-Plumbing and Drainage works 104291
- DUKHCONP1AZ7PLGF4320: Expenses: P1A-Plumbing and Drainage works 8932
- DUKHCONP1AZ7PLFF4325: Expenses: P1A-Plumbing and Drainage works 83745
- DUKHCONP1AZ7PLFF4330: Expenses: P1A-Plumbing and Drainage works 2542
- DUKHCONP1AZ7PLFF4335: Expenses: P1A-Plumbing and Drainage works 113094
- DUKHCONP1AZ7PLFF4340: Expenses: P1A-Plumbing and Drainage works 7006
- DUKHCONP1AZ7PLRF4345: Expenses: P1A-Plumbing and Drainage works 12902
- DUKHCONP1AZ7PLRF4350: Expenses: P1A-Plumbing and Drainage works 93917
- DUKHCONP1AZ7PLRF4355: Expenses: P1A-Plumbing and Drainage works 592597
- DUKHCONP1AZ7ACGF4600: Expenses: P1A-Air-conditioning and Ventilation works 8069
- DUKHCONP1AZ7ACGF4605: Expenses: P1A-Air-conditioning and Ventilation works 17289
- DUKHCONP1AZ7ACGF4610: Expenses: P1A-Air-conditioning and Ventilation works 48894

| ID | WBS | Activity | Duration | Start | Finish | Predecessors | Total float | Free float | Resources | Cost | CODE | P3 ACTID | P6 ID (old) | NP61D | PROJECT | PHASES | PACKAGE | PART | ELEMENTS | STEP | FLOORS | BILL NOS | BILL DIVISION | RES PACK |
| --- | --- | --- | --- | --- | --- | --- | --- | --- | --- | --- | --- | --- | --- | --- | --- | --- | --- | --- | --- | --- | --- | --- | --- | --- |
|  | 15 | **FIRST FLOORS** |  | 2014-06-25 | 2014-09-28 |  |  |  |  |  |  |  |  |  |  |  |  |  |  |  |  |  |  |  |
| DUKHCONP1AZ7ACFF4615 |  | Installation AC Pipes | 20d | 2014-06-25 | 2014-07-17 | DUKHCONP1AZ6ACFF4615, DUKHCONP1AZ7ARFF3305 SS+7d, DUKHCONP1AZ7ARFF3305 FF+7d | 3d | 5d | LABOR- SUBCONTRACTOR [216 h]; AC TECHNICIAN SK [761.6 h]; AC PIPES QTY [2008 lm] | 7,555 | 10 | 1AP7ACFF10 | DUKHCON1AP7ACFF4615 | DUKHCONP1AZ7ACFF4615 | DH | CON | 1A | Z7 | MEP | AC | FF | B02 | B02-D08 | RES-1A |
| DUKHCONP1AZ7ACFF4620 |  | Fixing of Ventilation Equipments | 25d | 2014-08-16 | 2014-09-13 | DUKHCONP1AZ7ACFF4615 FF+10d, DUKHCONP1AZ7ARFF3360 FF+7d, DUKHCONP1AZ7ACFF4615 SS+10d, DUKHCONP1AZ6ACFF4620, DUKHCONP1AZ7ARFF3360 SS+7d | -22d | 0d | LABOR- SUBCONTRACTOR [24 h]; AC TECHNICIAN SK [89.6 h]; VENTILIATION EQP QTY [24 ea] | 17,083 | 15 | 1AP7ACFF15 | DUKHCON1AP7ACFF4620 | DUKHCONP1AZ7ACFF4620 | DH | CON | 1A | Z7 | MEP | AC | FF | B02 | B02-D08 | RES-1A |
| DUKHCONP1AZ7ACFF4625 |  | Fixing of Split AC | 20d | 2014-09-06 | 2014-09-28 | DUKHCONP1AZ6ACFF4625, DUKHCONP1AZ7ACFF4620 FF+13d, DUKHCONP1AZ7ACFF4620 SS+13d | -22d | 0d | LABOR- SUBCONTRACTOR [72 h]; AC TECHNICIAN SK [224 h]; SPLIT UNIT QTY [40 ea] | 54,090 | 20 | 1AP7ACFF20 | DUKHCON1AP7ACFF4625 | DUKHCONP1AZ7ACFF4625 | DH | CON | 1A | Z7 | MEP | AC | FF | B02 | B02-D08 | RES-1A |
|  | 20 | **ROOF** |  | 2014-07-28 | 2014-10-12 |  |  |  |  |  |  |  |  |  |  |  |  |  |  |  |  |  |  |  |
| DUKHCONP1AZ7ACRF4630 |  | Installation of Refrigerant Pipes | 25d | 2014-07-28 | 2014-08-28 | DUKHCONP1AZ6ACRF4630, DUKHCONP1AZ7ACFF4615 FF+7d, DUKHCONP1AZ7ARRF3645 FF+7d, DUKHCONP1AZ7ACGF4600 FF+7d, DUKHCONP1AZ7ARRF3645 SS+7d, DUKHCONP1AZ7ACFF4615 SS+7d, DUKHCONP1AZ7ACGF4600 SS+7d | 10d | 0d | LABOR- SUBCONTRACTOR [96 h]; AC TECHNICIAN SK [313.6 h]; AC PIPES QTY [848 lm] | 24,880 | 10 | 1AP7ACRF10 | DUKHCON1AP7ACRF4630 | DUKHCONP1AZ7ACRF4630 | DH | CON | 1A | Z7 | MEP | AC | RF | B02 | B02-D08 | RES-1A |
| DUKHCONP1AZ7ACRF4635 |  | Installation of Condensing Unit | 25d | 2014-09-11 | 2014-10-12 | DUKHCONP1AZ7ACFF4625 SS+5d, DUKHCONP1AZ7ACRF4630 SS+5d, DUKHCONP1AZ7ACGF4610 SS+5d, DUKHCONP1AZ7ACFF4625 FF+5d, DUKHCONP1AZ6ACRF4635, DUKHCONP1AZ7ACRF4630 FF+5d, DUKHCONP1AZ7ACGF4610 FF+5d | -21d | 0d | LABOR- SUBCONTRACTOR [120 h]; AC TECHNICIAN SK [448 h]; AC UNITS QTY [80 ea] | 134,618 | 15 | 1AP7ACRF15 | DUKHCON1AP7ACRF4635 | DUKHCONP1AZ7ACRF4635 | DH | CON | 1A | Z7 | MEP | AC | RF | B02 | B02-D08 | RES-1A |
|  | 25 | **EXTERNAL WORKS** |  | 2014-05-19 | 2014-10-13 |  |  |  |  |  |  |  |  |  |  |  |  |  |  |  |  |  |  |  |
|  | 10 | **MISCELLANEOUS** |  | 2014-05-19 | 2014-10-13 |  |  |  |  |  |  |  |  |  |  |  |  |  |  |  |  |  |  |  |
| DUKHCONP1AZ7MSEX5000 |  | Construction of Manholes | 25d | 2014-05-19 | 2014-06-16 | DUKHCONP1AZ7PLGF4310 SS+10d, DUKHCONP1AZ7PLGF4310 FF+10d, DUKHCONP1AZ7STRF2055 FF+10d, DUKHCONP1AZ7STRF2055 SS+10d | -16d | 0d | MANHOLES SK [384 h]; LABOR- SUBCONTRACTOR [144 h]; MANHOLES QTY [48 ea] | 56,173 | 25 | 1AP7MSEX25 | DUKHCON1AP7MS005000 | DUKHCONP1AZ7MSEX5000 | DH | CON | 1A | Z7 | EX | MS |  | B02 | B02-D12 | RES-1A |
| DUKHCONP1AZ7MSEX5005 |  | Construction of Soak pit, Chambers | 25d | 2014-06-02 | 2014-06-30 | DUKHCONP1AZ7MSEX5000 FF+12d, DUKHCONP1AZ7MSEX5000 SS+12d | -16d | 0d | MANHOLES SK [128 h]; LABOR- SUBCONTRACTOR [48 h]; SOAKPIT QTY [16 ea] | 33,032 | 30 | 1AP7MSEX30 | DUKHCON1AP7MS005005 | DUKHCONP1AZ7MSEX5005 | DH | CON | 1A | Z7 | EX | MS |  | B02 | B02-D12 | RES-1A |
| DUKHCONP1AZ7MSEX5015 |  | Construction of grease Trap | 20d | 2014-06-22 | 2014-07-14 | DUKHCONP1AZ7MSEX5005 FF+12d, DUKHCONP1AZ7MSEX5005 SS+12d | -16d | 0d | LABOR- SUBCONTRACTOR [24 h]; GREASE TRAP QTY [16 lm]; HANDRAIL ERECTOR SKILLED [32 h] | 22,696 | 20 | 1AP7MSEX20 | DUKHCON1AP7MS005015 | DUKHCONP1AZ7MSEX5015 | DH | CON | 1A | Z7 | EX | MS |  | B02 | B02-D07 | RES-1A |
| DUKHCONP1AZ7MSEX5020 |  | Construction Entrance Ramp | 25d | 2014-07-09 | 2014-08-10 | DUKHCONP1AZ7STRF2055 FF, DUKHCONP1AZ6MSEX5020, DUKHCONP1AZ7STRF2055 SS | -8d | 0d | SCREED MASON SK [96 h]; CONCRETE MASON SK [192 h]; INTERLOCK MASON SK [128 h]; LABOR- SUBCONTRACTOR [192 h]; LABOR- SUBCONTRACTOR [48 h]; SCREED QTY [112 Sqm]; CONCRETE QTY [96 Cum]; INTERLOCK QTY [152 Sqm] | 31,768 | 10 | 1AP7MSEX10 | DUKHCON1AP7MS005020 | DUKHCONP1AZ7MSEX5020 | DH | CON | 1A | Z7 | EX | MS |  | B02 | B02-D12 | RES-1A |
| DUKHCONP1AZ7MSEX5010 |  | Telephone cable laying | 25d | 2014-07-15 | 2014-08-16 | DUKHCONP1AZ7MSEX5015 | -16d | 0d | LABOR- SUBCONTRACTOR [125 h]; ELECTRICIANS SK [125 h]; CONCRETE MASON SK [125 h] | 3,557 |  | 1AP7MSEX40 | DUKHCON1AP7MS005010 | DUKHCONP1AZ7MSEX5010 | DH | CON | 1A | Z7 | EX | MS |  | B02 | B02-D12 | RES-1A |
| DUKHCONP1AZ7MSEX5025 |  | SS.Handrails and Balustrades | 20d | 2014-07-27 | 2014-08-21 | DUKHCONP1AZ7MSEX5020 FF+10d, DUKHCONP1AZ7MSEX5020 SS+10d | -5d | 0d | LABOR- SUBCONTRACTOR [24 h]; S.S.BALUSTRADE QTY [16 lm]; HANDRAIL ERECTOR SKILLED [32 h] | 81,420 | 15 | 1AP7MSEX15 | DUKHCON1AP7MS005025 | DUKHCONP1AZ7MSEX5025 | DH | CON | 1A | Z7 | EX | MS |  | B02 | B02-D12 | RES-1A |
| DUKHCONP1AZ7MSEX5335 |  | Aluminum Roll-up Shutter with 2m Wall | 25d | 2014-09-13 | 2014-10-13 | DUKHCONP1AZ6MSEX5335 SS+7d, DUKHCONI1AZ4BWGL5325 SS+10d | 39d | 8d | LABOR- SUBCONTRACTOR [200 h]; DOOR ERECTOR SK [200 h]; ROLLING SHUTTER QTY [8 ea] | 59,528 | 25 | 1AP7BWFR25 | DUKHCON1AP7MS005335 | DUKHCONP1AZ7MSEX5335 | DH | CON | 1A | Z7 | EX | MS |  | B02 | B02-D12 | RES-1A |
|  | 15 | **WATER TANK ENCLOSURE** |  | 2014-06-11 | 2014-10-02 |  |  |  |  |  |  |  |  |  |  |  |  |  |  |  |  |  |  |  |
| DUKHCONP1AZ7WEEX5030 |  | Excavation | 20d | 2014-06-11 | 2014-07-03 | DUKHCONP1AZ6WEEX5030, DUKHCONP1AZ7STRF2055 FF+5d, DUKHCONP1AZ7STRF2055 SS+5d | 14d | 0d | LABOR- SUBCONTRACTOR [24 h]; EXCAVATION QTY [40 Cum]; LOADER [10 h]; POCLAIN [20 h]; TRUCK [10 h]; EQUIP OPERATORS [40 h] | 896 | 10 | 1AP7WEEX10 | DUKHCON1AP7WE005030 | DUKHCONP1AZ7WEEX5030 | DH | CON | 1A | Z7 | EX | WE |  | B02 | B02-D12 | RES-1A |
| DUKHCONP1AZ7WEEX5035 |  | Construction of Raft | 25d | 2014-06-17 | 2014-07-15 | DUKHCONP1AZ7WEEX5030 FF+10d, DUKHCONP1AZ7WEEX5030 SS+5d | 14d | 0d | STEEL FIXERS SK [64 h]; CARPENTERS SK [384 h]; CONCRETE MASON SK [32 h]; LABOR- SUBCONTRACTOR [360 h]; REINFORCEMENT BARS QTY [624 kg]; FORMWORK QTY [184 Sqm]; CONCRETE QTY [20 Cum] | 15,216 | 15 | 1AP7WEEX15 | DUKHCON1AP7WE005035 | DUKHCONP1AZ7WEEX5035 | DH | CON | 1A | Z7 | EX | WE |  | B02 | B02-D12 | RES-1A |
| DUKHCONP1AZ7WEEX5040 |  | Block works & Plastering | 25d | 2014-06-26 | 2014-07-24 | DUKHCONP1AZ7WEEX5035 SS+8d, DUKHCONP1AZ7WEEX5035 FF+8d | 14d | 0d | BLOCK QTY [56 Sqm]; PLASTER QTY [112 Sqm]; BLOCK MASON SK [128 h]; PLASTER MASON SK [192 h]; LABOR- SUBCONTRACTOR [192 h] | 13,582 | 20 | 1AP7WEEX20 | DUKHCON1AP7WE005040 | DUKHCONP1AZ7WEEX5040 | DH | CON | 1A | Z7 | EX | WE |  | B02 | B02-D12 | RES-1A |
| DUKHCONP1AZ7WEEX5045 |  | Flooring & Painting | 25d | 2014-07-03 | 2014-07-31 | DUKHCONP1AZ7WEEX5040 SS+6d, DUKHCONP1AZ7WEEX5040 FF+6d | 14d | 19d | LABOR- SUBCONTRACTOR [72 h]; PAINT QTY [156 Sqm]; EPOXY QTY [44 Sqm]; PAINTERS SK [128 h]; EPOXY SK [32 h] | 12,744 | 25 | 1AP7WEEX25 | DUKHCON1AP7WE005045 | DUKHCONP1AZ7WEEX5045 | DH | CON | 1A | Z7 | EX | WE |  | B02 | B02-D12 | RES-1A |
| DUKHCONP1AZ7WEEX5050 |  | Installation of Steel Gate | 20d | 2014-08-11 | 2014-09-02 | DUKHCONP1AZ7WEEX5045 SS+5d, DUKHCONP1AZ7WEEX5045 FF+6d, DUKHCONP1AZ7MSEX5025 FF+10d | -5d | 9d | LABOR- SUBCONTRACTOR [24 h]; GATE QTY [4 ea]; GATE ERECTOR SK [32 h] | 71,872 | 30 | 1AP7WEEX30 | DUKHCON1AP7WE005050 | DUKHCONP1AZ7WEEX5050 | DH | CON | 1A | Z7 | EX | WE |  | B02 | B02-D12 | RES-1A |
| DUKHCONP1AZ7WEEX5060 |  | Structural steel & SS Shed cover installation | 25d | 2014-08-27 | 2014-09-24 | DUKHCONP1AZ7WEEX5050 SS+5d, DUKHCONP1AZ7WEEX5050 FF+10d, DUKHCONP1AZ6WEEX5060, DUKHCONP1AZ7MSEX5025 FF+10d | -14d | 0d | LABOR- SUBCONTRACTOR [144 h]; STRUCTURAL STEEL QTY [128 kg]; SS SHED COVER QTY [40 Sqm]; STEEL ERECTOR SK [192 h] | 45,463 | 35 | 1AP7WEEX35 | DUKHCON1AP7WE005060 | DUKHCONP1AZ7WEEX5060 | DH | CON | 1A | Z7 | EX | WE |  | B02 | B02-D12 | RES-1A |
| DUKHCONP1AZ7WEEX5065 |  | Install. of Water Tank,Chiller,Pump & Meter | 25d | 2014-09-04 | 2014-10-02 | DUKHCONP1AZ7WEEX5060 FF+6d, DUKHCONP1AZ6WEEX5065, DUKHCONP1AZ7WEEX5060 SS+6d, DUKHCONP1AZ7MSEX5015 FF+5d, DUKHCONP1AZ7MSEX5015 SS+5d, DUKHCONP1AZ7PLRF4350 FF+5d, DUKHCONP1AZ7PLRF4350 SS+5d | -15d | 0d | LABOR- SUBCONTRACTOR [72 h]; AC TECHNICIAN SK [44.8 h]; MECHANICALS SK [86.4 h]; WATER TANK QTY [4 ea]; CHILLER QTY [40 ea]; PUMP QTY [4 ea] | 122,349 | 40 | 1AP7WEEX40 | DUKHCON1AP7WE005065 | DUKHCONP1AZ7WEEX5065 | DH | CON | 1A | Z7 | EX | WE |  | B02 | B02-D07 | RES-1A |

Notes:
- DUKHCONP1AZ7ACFF4615: Expenses: P1A-Air-conditioning and Ventilation works 7555
- DUKHCONP1AZ7ACFF4620: Expenses: P1A-Air-conditioning and Ventilation works 17083
- DUKHCONP1AZ7ACFF4625: Expenses: P1A-Air-conditioning and Ventilation works 54090
- DUKHCONP1AZ7ACRF4630: Expenses: P1A-Air-conditioning and Ventilation works 24880
- DUKHCONP1AZ7ACRF4635: Expenses: P1A-Air-conditioning and Ventilation works 134618
- DUKHCONP1AZ7MSEX5000: Expenses: P1A-External works within the Plot Curtilage 56173
- DUKHCONP1AZ7MSEX5005: Expenses: P1A-External works within the Plot Curtilage 33032
- DUKHCONP1AZ7MSEX5015: Expenses: P1A-Plumbing and Drainage works 22696
- DUKHCONP1AZ7MSEX5020: Expenses: P1A-External works within the Plot Curtilage 31768
- DUKHCONP1AZ7MSEX5010: Expenses: P1A-External works within the Plot Curtilage 3557
- DUKHCONP1AZ7MSEX5025: Expenses: P1A-External works within the Plot Curtilage 81420
- DUKHCONP1AZ7MSEX5335: Expenses: P1A-External works within the Plot Curtilage 59528
- DUKHCONP1AZ7WEEX5030: Expenses: P1A-External works within the Plot Curtilage 896
- DUKHCONP1AZ7WEEX5035: Expenses: P1A-External works within the Plot Curtilage 15216
- DUKHCONP1AZ7WEEX5040: Expenses: P1A-External works within the Plot Curtilage 13582
- DUKHCONP1AZ7WEEX5045: Expenses: P1A-External works within the Plot Curtilage 12744
- DUKHCONP1AZ7WEEX5050: Expenses: P1A-External works within the Plot Curtilage 71872
- DUKHCONP1AZ7WEEX5060: Expenses: P1A-External works within the Plot Curtilage 45463
- DUKHCONP1AZ7WEEX5065: Expenses: P1A-Plumbing and Drainage works 122349

| ID | WBS | Activity | Duration | Start | Finish | Predecessors | Total float | Free float | Resources | Cost | CODE | P3 ACTID | P6 ID (old) | NP61D | PROJECT | PHASES | PACKAGE | PART | ELEMENTS | STEP | BILL NOS | BILL DIVISION | RES PACK | FLOORS | rem |
| --- | --- | --- | --- | --- | --- | --- | --- | --- | --- | --- | --- | --- | --- | --- | --- | --- | --- | --- | --- | --- | --- | --- | --- | --- | --- |
|  | 20 | **HARD LANDSCAPING** |  | 2014-07-23 | 2014-09-06 |  |  |  |  |  |  |  |  |  |  |  |  |  |  |  |  |  |  |  |  |
| DUKHCONP1AZ7HDEX5090 |  | kerb works | 20d | 2014-07-23 | 2014-08-18 | DUKHCONP1AZ7MSEX5020 FF+7d, DUKHCONP1AZ6HDEX5090, DUKHCONP1AZ7MSEX5020 SS+7d | -8d | 0d | KERBSTONE MASON SK [224 h]; LABOR- SUBCONTRACTOR [120 h]; KERBSTONE QTY [288 lm] | 13,284 | 10 | 1AP7HDEX10 | DUKHCON1AP7HD005090 | DUKHCONP1AZ7HDEX5090 | DH | CON | 1A | Z7 | EX | HD | B02 | B02-D12 | RES-1A |  |  |
| DUKHCONP1AZ7HDEX5095 |  | Cobble Stone Works | 20d | 2014-08-07 | 2014-08-30 | DUKHCONP1AZ7HDEX5090 SS+10d, DUKHCONP1AZ7HDEX5090 FF+10d | -8d | 0d | TILE MASON SK [128 h]; LABOR- SUBCONTRACTOR [72 h]; COBBLE STONE QTY [88 Sqm] | 12,232 | 15 | 1AP7HDEX15 | DUKHCON1AP7HD005095 | DUKHCONP1AZ7HDEX5095 | DH | CON | 1A | Z7 | EX | HD | B02 | B02-D12 | RES-1A |  |  |
| DUKHCONP1AZ7HDEX5100 |  | Interlock works | 20d | 2014-08-14 | 2014-09-06 | DUKHCONP1AZ7HDEX5095 FF+6d, DUKHCONP1AZ7HDEX5095 SS+6d | -8d | 0d | INTERLOCK MASON SK [160 h]; LABOR- SUBCONTRACTOR [72 h]; INTERLOCK QTY [184 Sqm] | 15,733 | 20 | 1AP7HDEX20 | DUKHCON1AP7HD005100 | DUKHCONP1AZ7HDEX5100 | DH | CON | 1A | Z7 | EX | HD | B02 | B02-D12 | RES-1A |  |  |
|  | 25 | **SOFT LANDSCAPING** |  | 2014-08-20 | 2014-09-24 |  |  |  |  |  |  |  |  |  |  |  |  |  |  |  |  |  |  |  |  |
| DUKHCONP1AZ7SLEX5105 |  | Laying of Grass/ green area | 25d | 2014-08-20 | 2014-09-17 | DUKHCONP1AZ7HDEX5100 FF+5d, DUKHCONP1AZ7HDEX5100 SS+5d | -8d | 0d | GRASS QTY [336 Sqm]; LANDSCAPING SK [1568 h]; LABOR- SUBCONTRACTOR [1176 h]; SWEET SOIL QTY [336 Cum] | 41,328 | 10 | 1AP7SLEX10 | DUKHCON1AP7SL005105 | DUKHCONP1AZ7SLEX5105 | DH | CON | 1A | Z7 | EX | SL | B02 | B02-D12 | RES-1A |  |  |
| DUKHCONP1AZ7SLEX5110 |  | Laying of Palm tree | 25d | 2014-08-27 | 2014-09-24 | DUKHCONP1AZ7SLEX5105 SS+6d, DUKHCONP1AZ7SLEX5105 FF+6d | -8d | 16d | LABOR- SUBCONTRACTOR [72 h]; SWEET SOIL QTY [48 Cum]; PLAM TREES QTY [16 ea]; LANDSCAPING SK [96 h] | 48,672 | 15 | 1AP7SLEX15 | DUKHCON1AP7SL005110 | DUKHCONP1AZ7SLEX5110 | DH | CON | 1A | Z7 | EX | SL | B02 | B02-D12 | RES-1A |  |  |
|  | 30 | **TESTING AND COMMISSIONING** |  | 2014-10-16 | 2014-11-13 |  |  |  |  |  |  |  |  |  |  |  |  |  |  |  |  |  |  |  |  |
| DUKHCONP1AZ7ACTC8000 |  | Pre-Commissioning & Testing of AC Works | 25d | 2014-10-16 | 2014-11-13 | DUKHCONP1AZ7ARFF3395, DUKHCONP1AZ7HDEX5100, DUKHCONP1AZ7SLEX5105, DUKHCONP1AZ7ARRF3660, DUKHCONP1AZ7ACRF4635, DUKHCONP1AZ7SLEX5110, DUKHCONP1AZ7ARRF3620, DUKHCONP1AZ7ARGF3095, DUKHCONP1AZ6ACTC8000, DUKHCONP1AZ7MSEX5005, DUKHCONP1AZ7AREL3680, DUKHCONP1AZ7ACFF4625 | -24d | 0d | LABOR- SUBCONTRACTOR [500 h]; AC TECHNICIAN SK [1000 h] | 3,168 |  | 1AP7ACU100 | DUKHCON1AP7AC008000 | DUKHCONP1AZ7ACTC8000 | DH | CON | 1A | Z7 | TES |  | B02 | B02-D08 | RES-1A |  |  |
| DUKHCONP1AZ7ELTC8010 |  | Pre-Commissioning & Testing of Electrical Works | 25d | 2014-10-16 | 2014-11-13 | DUKHCONP1AZ7ELFF4055, DUKHCONP1AZ7HDEX5100, DUKHCONP1AZ7SLEX5105, DUKHCONP1AZ7SLEX5110, DUKHCONP1AZ7ELGF4015, DUKHCONP1AZ6ELTC8010, DUKHCONP1AZ7ARRF3655, DUKHCONP1AZ7ARRF3660, DUKHCONP1AZ7ARGF3095, DUKHCONP1AZ7ELGF4030, DUKHCONP1AZ7MSEX5005, DUKHCONP1AZ7ELRF4075, DUKHCONP1AZ7ELFF4050, DUKHCONP1AZ7ELGF4025, DUKHCONP1AZ7AREL3680, DUKHCONP1AZ7ARRF3620, DUKHCONP1AZ7ARFF3395, DUKHCONP1AZ7ELFF4065 | -24d | 0d | LABOR- SUBCONTRACTOR [1000 h]; ELECTRICIANS SK [2000 h] | 40,656 |  | 1AP7ELE100 | DUKHCON1AP7EL008010 | DUKHCONP1AZ7ELTC8010 | DH | CON | 1A | Z7 | TES |  | B02 | B02-D09 | RES-1A |  |  |
| DUKHCONP1AZ7PLTC8005 |  | Pre-Commissioning & Testing of Plumbing Works | 25d | 2014-10-16 | 2014-11-13 | DUKHCONP1AZ7HDEX5100, DUKHCONP1AZ7WEEX5065, DUKHCONP1AZ7ARRF3660, DUKHCONP1AZ7ARFF3395, DUKHCONP1AZ6PLTC8005, DUKHCONP1AZ7AREL3680, DUKHCONP1AZ7PLGF4320, DUKHCONP1AZ7MSEX5005, DUKHCONP1AZ7ARGF3095, DUKHCONP1AZ7ARRF3655, DUKHCONP1AZ7PLRF4355, DUKHCONP1AZ7PLRF4350, DUKHCONP1AZ7SLEX5110, DUKHCONP1AZ7ARRF3620, DUKHCONP1AZ7SLEX5105 | -24d | 0d | LABOR- SUBCONTRACTOR [1000 h]; MECHANICALS SK [2000 h] | 9,008 |  | 1AP7PLU100 | DUKHCON1AP7PL008005 | DUKHCONP1AZ7PLTC8005 | DH | CON | 1A | Z7 | TES |  | B02 | B02-D07 | RES-1A |  |  |
|  | 45 | **ZONE - 8 (4 Twin Villas)** |  | 2013-09-23 | 2014-12-13 |  |  |  |  |  |  |  |  |  |  |  |  |  |  |  |  |  |  |  |  |
|  | 10 | **STRUCTURAL WORKS** |  | 2013-09-23 | 2014-07-16 |  |  |  |  |  |  |  |  |  |  |  |  |  |  |  |  |  |  |  |  |
|  | 10 | **SUB STRUCTURE** |  | 2013-09-23 | 2014-03-08 |  |  |  |  |  |  |  |  |  |  |  |  |  |  |  |  |  |  |  |  |
|  | 10 | **UPTO GRADE SLAB** |  | 2013-09-23 | 2014-03-08 |  |  |  |  |  |  |  |  |  |  |  |  |  |  |  |  |  |  |  |  |
| DUKHCONP1AZ8STUG1000 |  | Footing Excavation | 25d | 2013-09-23 | 2013-10-23 | DUKHCONP1AZ7STUG1000, DUKHCONP1AGNSP005000 | -11d | 0d | LABOR- SUBCONTRACTOR [590 h]; EXCAVATION QTY [984 Cum]; LOADER [131 h]; POCLAIN [262 h]; TRUCK [131 h]; EQUIP OPERATORS [524 h] | 68,256 | 10 | 1AP8SBUG10 | DUKHCON1AP8STUG1000 | DUKHCONP1AZ8STUG1000 | DH | CON | 1A | Z8 | ST | SB | B02 | B02-D01 | RES-1A | UG |  |
| DUKHCONP1AZ8STUG1005 |  | Footing Antitermite | 23d | 2013-10-05 | 2013-11-02 | DUKHCONP1AZ8STUG1000 FF+5d, DUKHCONP1AZ8STUG1000 SS+10d | -11d | 0d | LABOR- SUBCONTRACTOR [432 h]; ANTITERMITE QTY [2880 sqft]; ANTITERMITE SK [1152 h] | 8,640 | 15 | 1AP8SBUG15 | DUKHCON1AP8STUG1005 | DUKHCONP1AZ8STUG1005 | DH | CON | 1A | Z8 | ST | SB | B02 | B02-D01 | RES-1A | UG | REM |
| DUKHCONP1AZ8STUG1010 |  | Footing Blinding | 23d | 2013-10-08 | 2013-11-05 | DUKHCONP1AZ8STUG1005 FF+3d, DUKHCONP1AZ8STUG1005 SS+3d | -11d | 0d | BLINDING MASON SK [454 h]; LABOR- SUBCONTRACTOR [340.5 h]; BLINDING QTY [567 Sqm] | 14,285 | 15 | 1AP8SBUG18 | DUKHCON1AP8STUG1010 | DUKHCONP1AZ8STUG1010 | DH | CON | 1A | Z8 | ST | SB | B02 | B02-D02 | RES-1A | UG | REM |
| DUKHCONP1AZ8STUG1015 |  | Footing Waterproofing & Screed | 25d | 2013-10-14 | 2013-11-13 | DUKHCONP1AZ8STUG1010 FF+5d, DUKHCONP1AZ8STUG1010 SS+5d | -11d | 0d | SCREED MASON SK [418 h]; LABOR- SUBCONTRACTOR [156.75 h]; SCREED QTY [522 Sqm]; WATERPROOFING QTY [1457 Sqm] | 52,596 | 20 | 1AP8SBUG20 | DUKHCON1AP8STUG1015 | DUKHCONP1AZ8STUG1015 | DH | CON | 1A | Z8 | ST | SB | B02 | B02-D02 | RES-1A | UG | REM |
| DUKHCONP1AZ8STUG1020 |  | Construction of foundations | 20d | 2013-10-31 | 2013-11-23 | DUKHCONP1AZ8STUG1015 SS+7d, DUKHCONP1AZ8STUG1015 FF+8d | -11d | 13d | STEEL FIXERS SK [2565 h]; CARPENTERS SK [1160 h]; CONCRETE MASON SK [720 h]; LABOR- SUBCONTRACTOR [3333.75 h]; REINFORCEMENT BARS QTY [32062 kg]; FORMWORK QTY [580 Sqm]; CONCRETE QTY [360 Cum] | 225,546 | 25 | 1AP8SBUG25 | DUKHCON1AP8STUG1020 | DUKHCONP1AZ8STUG1020 | DH | CON | 1A | Z8 | ST | SB | B02 | B02-D02 | RES-1A | UG | REM |
| DUKHCONP1AZ8STUG1025 |  | Construction of neck of columns | 25d | 2013-11-25 | 2013-12-24 | DUKHCONP1AZ8STUG1020 FF+7d, DUKHCONP1AZ7STUG1025, DUKHCONP1AZ8STUG1020 SS+8d | -24d | 0d | STEEL FIXERS SK [214 h]; CARPENTERS SK [656 h]; CONCRETE MASON SK [48 h]; LABOR- SUBCONTRACTOR [688.5 h]; REINFORCEMENT BARS QTY [2669 kg]; FORMWORK QTY [328 Sqm]; CONCRETE QTY [24 Cum] | 35,935 | 30 | 1AP8SBUG30 | DUKHCON1AP8STUG1025 | DUKHCONP1AZ8STUG1025 | DH | CON | 1A | Z8 | ST | SB | B02 | B02-D02 | RES-1A | UG | REM |
| DUKHCONP1AZ8STUG1030 |  | Waterproofing Footing & Neck Column | 25d | 2013-12-04 | 2014-01-02 | DUKHCONP1AZ8STUG1025 SS+8d, DUKHCONP1AZ8STUG1025 FF+8d | -24d | 0d | LABOR- SUBCONTRACTOR [141 h]; WATERPROOFING QTY [468 Sqm]; WATERPROOFING SPECIALIST SK [375 h] | 22,459 | 35 | 1AP8SBUG35 | DUKHCON1AP8STUG1030 | DUKHCONP1AZ8STUG1030 | DH | CON | 1A | Z8 | ST | SB | B02 | B02-D02 | RES-1A | UG | REM |
| DUKHCONP1AZ8STUG1035 |  | Backfilling Upto Grade Beam Bottom | 25d | 2013-12-19 | 2014-01-16 | DUKHCONP1AZ8STUG1030 FF+12d, DUKHCONP1AZ8STUG1030 SS+12d, DUKHCONP1AZ7STUG1035 | -24d | 0d | LABOR- SUBCONTRACTOR [216 h]; BACKFILLING QTY [880 Cum]; BOBCAT [375 h]; PLATE COMPACTOR [375 h]; TRUCK [75 h]; EQUIP OPERATORS [825 h] | 22,363 | 40 | 1AP8SBUG40 | DUKHCON1AP8STUG1035 | DUKHCONP1AZ8STUG1035 | DH | CON | 1A | Z8 | ST | SB | B02 | B02-D01 | RES-1A | UG |  |
| DUKHCONP1AZ8STUG1040 |  | Construction of Grade Beams | 25d | 2014-01-05 | 2014-02-02 | DUKHCONP1AZ8STUG1035 FF+14d, DUKHCONP1AZ8STUG1035 SS+14d | -24d | 0d | BLINDING MASON SK [244 h]; SCREED MASON SK [224 h]; STEEL FIXERS SK [1497 h]; CARPENTERS SK [2152 h]; CONCRETE MASON SK [256 h]; LABOR- SUBCONTRACTOR [3195.75 h]; BLINDING QTY [304 Sqm]; SCREED QTY [280 Sqm]; REINFORCEMENT BARS QTY [18709 kg]; FORMWORK QTY [1076 Sqm]; CONCRETE QTY [128 Cum] | 326,110 | 45 | 1AP8SBUG45 | DUKHCON1AP8STUG1040 | DUKHCONP1AZ8STUG1040 | DH | CON | 1A | Z8 | ST | SB | B02 | B02-D02 | RES-1A | UG | REM |
| DUKHCONP1AZ8STUG1045 |  | Construction of slab on grade | 25d | 2014-02-06 | 2014-03-08 | DUKHCONP1AZ8STUG1040 FF+10d, DUKHCONP1AZ8PLUG4300 SS+8d, DUKHCONP1AZ7STUG1045, DUKHCONP1AZ8STUG1040 SS+10d, DUKHCONP1AZ8PLUG4300 FF+8d | -24d | 0d | BLINDING MASON SK [923 h]; SCREED MASON SK [850 h]; STEEL FIXERS SK [536 h]; CONCRETE MASON SK [400 h]; LABOR- SUBCONTRACTOR [1713 h]; BLINDING QTY [1153 Sqm]; SCREED QTY [1062 Sqm]; CONCRETE QTY [200 Cum]; WELDED WIRE MESH [2008 Sqm] | 239,062 | 50 | 1AP8SBUG50 | DUKHCON1AP8STUG1045 | DUKHCONP1AZ8STUG1045 | DH | CON | 1A | Z8 | ST | SB | B02 | B02-D02 | RES-1A | UG | REM |

Notes:
- DUKHCONP1AZ7HDEX5090: Expenses: P1A-External works within the Plot Curtilage 13284
- DUKHCONP1AZ7HDEX5095: Expenses: P1A-External works within the Plot Curtilage 12232
- DUKHCONP1AZ7HDEX5100: Expenses: P1A-External works within the Plot Curtilage 15733
- DUKHCONP1AZ7SLEX5105: Expenses: P1A-External works within the Plot Curtilage 41328
- DUKHCONP1AZ7SLEX5110: Expenses: P1A-External works within the Plot Curtilage 48672
- DUKHCONP1AZ7ACTC8000: Expenses: P1A-Air-conditioning and Ventilation works 3168
- DUKHCONP1AZ7ELTC8010: Expenses: P1A-Electrical Installations 40656
- DUKHCONP1AZ7PLTC8005: Expenses: P1A-Plumbing and Drainage works 9008
- DUKHCONP1AZ8STUG1000: Expenses: P1A-Excavation and Earth Works 68256
- DUKHCONP1AZ8STUG1005: Expenses: P1A-Excavation and Earth Works 8640
- DUKHCONP1AZ8STUG1010: Expenses: P1A-Concrete Works 14285
- DUKHCONP1AZ8STUG1015: Expenses: P1A-Concrete Works 52596
- DUKHCONP1AZ8STUG1020: Expenses: P1A-Concrete Works 225546
- DUKHCONP1AZ8STUG1025: Expenses: P1A-Concrete Works 35935
- DUKHCONP1AZ8STUG1030: Expenses: P1A-Concrete Works 22459
- DUKHCONP1AZ8STUG1035: Expenses: P1A-Excavation and Earth Works 22363
- DUKHCONP1AZ8STUG1040: Expenses: P1A-Concrete Works 326110
- DUKHCONP1AZ8STUG1045: Expenses: P1A-Concrete Works 239062

| ID | WBS | Activity | Duration | Start | Finish | Predecessors | Total float | Free float | Resources | Cost | CODE | rem | P3 ACTID | P6 ID (old) | NP61D | PROJECT | PHASES | PACKAGE | PART | ELEMENTS | STEP | FLOORS | BILL NOS | BILL DIVISION | RES PACK | EXECUTER |
| --- | --- | --- | --- | --- | --- | --- | --- | --- | --- | --- | --- | --- | --- | --- | --- | --- | --- | --- | --- | --- | --- | --- | --- | --- | --- | --- |
|  | 15 | **SUPERSTRUCTURE** |  | 2014-02-24 | 2014-07-16 |  |  |  |  |  |  |  |  |  |  |  |  |  |  |  |  |  |  |  |  |  |
|  | 10 | **GROUND FLOOR** |  | 2014-02-24 | 2014-04-20 |  |  |  |  |  |  |  |  |  |  |  |  |  |  |  |  |  |  |  |  |  |
| DUKHCONP1AZ8STGF2000 |  | Column-Rebar & Formwork | 25d | 2014-02-24 | 2014-03-24 | DUKHCONP1AZ8STUG1045 FF+7d, DUKHCONP1AZ8STUG1045 SS+14d, DUKHCONP1AZ7STGF2000 | -24d | 0d | STEEL FIXERS SK [656 h]; CARPENTERS SK [1656 h]; LABOR- SUBCONTRACTOR [1734 h]; REINFORCEMENT BARS QTY [8198 kg]; FORMWORK QTY [828 Sqm] | 73,433 | 10 | REM | 1AP8SPGF10 | DUKHCON1AP8STGF2000 | DUKHCONP1AZ8STGF2000 | DH | CON | 1A | Z8 | ST | SP | GF | B02 | B02-D02 | RES-1A |  |
| DUKHCONP1AZ8STGF2005 |  | Column-Concrete | 24d | 2014-03-04 | 2014-03-31 | DUKHCONP1AZ8STGF2000 FF+2d, DUKHCONP1AZ8STGF2000 SS+7d | -22d | 0d | CONCRETE MASON SK [146 h]; LABOR- SUBCONTRACTOR [109.5 h]; CONCRETE QTY [73 Cum] | 20,945 | 15 | REM | 1AP8SPGF15 | DUKHCON1AP8STGF2005 | DUKHCONP1AZ8STGF2005 | DH | CON | 1A | Z8 | ST | SP | GF | B02 | B02-D02 | RES-1A |  |
| DUKHCONP1AZ8STGF2010 |  | Beam, Stairs ,Slab-Rebar & Formwork | 25d | 2014-03-19 | 2014-04-16 | DUKHCONP1AZ8STGF2005 FF+14d, DUKHCONP1AZ8STGF2005 SS+2d | -22d | 0d | STEEL FIXERS SK [4091 h]; CARPENTERS SK [5526 h]; LABOR- SUBCONTRACTOR [7212.75 h]; REINFORCEMENT BARS QTY [51136 kg]; FORMWORK QTY [2763 Sqm] | 326,549 | 20 | REM | 1AP8SPGF20 | DUKHCON1AP8STGF2010 | DUKHCONP1AZ8STGF2010 | DH | CON | 1A | Z8 | ST | SP | GF | B02 | B02-D02 | RES-1A |  |
| DUKHCONP1AZ8STGF2015 |  | Beam, Stairs ,Slab-Concrete | 14d | 2014-04-05 | 2014-04-20 | DUKHCONP1AZ8STGF2010 FF+3d, DUKHCONP1AZ7STGF2015, DUKHCONP1AZ8STGF2010 SS+10d | -22d | 0d | CONCRETE MASON SK [740 h]; LABOR- SUBCONTRACTOR [555 h]; CONCRETE QTY [370 Cum] | 131,494 | 25 | REM | 1AP8SPGF25 | DUKHCON1AP8STGF2015 | DUKHCONP1AZ8STGF2015 | DH | CON | 1A | Z8 | ST | SP | GF | B02 | B02-D02 | RES-1A |  |
|  | 15 | **FIRST FLOORS** |  | 2014-04-07 | 2014-06-02 |  |  |  |  |  |  |  |  |  |  |  |  |  |  |  |  |  |  |  |  |  |
| DUKHCONP1AZ8STFF2020 |  | Column-Rebar & Formwork | 25d | 2014-04-07 | 2014-05-05 | DUKHCONP1AZ8STGF2015 SS+2d, DUKHCONP1AZ8STGF2015 FF+5d, DUKHCONP1AZ7STFF2020 | -22d | 0d | STEEL FIXERS SK [574 h]; CARPENTERS SK [1472 h]; LABOR- SUBCONTRACTOR [1534.5 h]; REINFORCEMENT BARS QTY [7175 kg]; FORMWORK QTY [736 Sqm] | 64,915 | 10 | REM | 1AP8SPFF10 | DUKHCON1AP8STFF2020 | DUKHCONP1AZ8STFF2020 | DH | CON | 1A | Z8 | ST | SP | FF | B02 | B02-D02 | RES-1A |  |
| DUKHCONP1AZ8STFF2025 |  | Column-Concrete | 24d | 2014-04-16 | 2014-05-13 | DUKHCONP1AZ8STFF2020 SS+8d, DUKHCONP1AZ8STFF2020 FF+2d | -20d | 0d | CONCRETE MASON SK [128 h]; LABOR- SUBCONTRACTOR [96 h]; CONCRETE QTY [64 Cum] | 18,331 | 15 | REM | 1AP8SPFF15 | DUKHCON1AP8STFF2025 | DUKHCONP1AZ8STFF2025 | DH | CON | 1A | Z8 | ST | SP | FF | B02 | B02-D02 | RES-1A |  |
| DUKHCONP1AZ8STFF2030 |  | Beam, Stairs ,Slab-Rebar & Formwork | 25d | 2014-05-01 | 2014-05-29 | DUKHCONP1AZ8STFF2025 SS+2d, DUKHCONP1AZ8STFF2025 FF+14d | -20d | 0d | STEEL FIXERS SK [3685 h]; CARPENTERS SK [5526 h]; LABOR- SUBCONTRACTOR [6908.25 h]; REINFORCEMENT BARS QTY [46062 kg]; FORMWORK QTY [2763 Sqm] | 310,154 | 20 | REM | 1AP8SPFF20 | DUKHCON1AP8STFF2030 | DUKHCONP1AZ8STFF2030 | DH | CON | 1A | Z8 | ST | SP | FF | B02 | B02-D02 | RES-1A |  |
| DUKHCONP1AZ8STFF2035 |  | Beam, Stairs ,Slab-Concrete | 14d | 2014-05-18 | 2014-06-02 | DUKHCONP1AZ8STFF2030 FF+3d, DUKHCONP1AZ8STFF2030 SS+10d, DUKHCONP1AZ7STFF2035 | -20d | 0d | CONCRETE MASON SK [652 h]; LABOR- SUBCONTRACTOR [489 h]; CONCRETE QTY [326 Cum] | 119,102 | 25 | REM | 1AP8SPFF25 | DUKHCON1AP8STFF2035 | DUKHCONP1AZ8STFF2035 | DH | CON | 1A | Z8 | ST | SP | FF | B02 | B02-D02 | RES-1A |  |
|  | 20 | **ROOF** |  | 2014-05-20 | 2014-07-16 |  |  |  |  |  |  |  |  |  |  |  |  |  |  |  |  |  |  |  |  |  |
| DUKHCONP1AZ8STRF2040 |  | Column-Rebar & Formwork | 18d | 2014-05-20 | 2014-06-09 | DUKHCONP1AZ7STRF2040, DUKHCONP1AZ8STFF2035 SS+2d, DUKHCONP1AZ8STFF2035 FF+3d | -16d | 0d | STEEL FIXERS SK [137 h]; CARPENTERS SK [552 h]; LABOR- SUBCONTRACTOR [516.75 h]; REINFORCEMENT BARS QTY [1707 kg]; FORMWORK QTY [276 Sqm] | 21,168 | 10 | REM | 1AP8SPRF10 | DUKHCON1AP8STRF2040 | DUKHCONP1AZ8STRF2040 | DH | CON | 1A | Z8 | ST | SP | RF | B02 | B02-D02 | RES-1A |  |
| DUKHCONP1AZ8STRF2045 |  | Column-Concrete | 17d | 2014-05-24 | 2014-06-11 | DUKHCONP1AZ8STRF2040 SS+3d, DUKHCONP1AZ8STRF2040 FF+1d | -16d | 0d | CONCRETE MASON SK [30 h]; LABOR- SUBCONTRACTOR [22.5 h]; CONCRETE QTY [15 Cum] | 4,363 | 15 | REM | 1AP8SPRF15 | DUKHCON1AP8STRF2045 | DUKHCONP1AZ8STRF2045 | DH | CON | 1A | Z8 | ST | SP | RF | B02 | B02-D02 | RES-1A |  |
| DUKHCONP1AZ8STRF2050 |  | Slab-Rebar & Formwork - Head Room | 20d | 2014-05-26 | 2014-06-17 | DUKHCONP1AZ8STRF2045 SS+2d, DUKHCONP1AZ8STRF2045 FF+5d | -16d | 0d | STEEL FIXERS SK [869 h]; CARPENTERS SK [694 h]; LABOR- SUBCONTRACTOR [1172.25 h]; REINFORCEMENT BARS QTY [10859 kg]; FORMWORK QTY [347 Sqm] | 61,496 | 20 | REM | 1AP8SPRF20 | DUKHCON1AP8STRF2050 | DUKHCONP1AZ8STRF2050 | DH | CON | 1A | Z8 | ST | SP | RF | B02 | B02-D02 | RES-1A |  |
| DUKHCONP1AZ8STRF2055 |  | Slab-Concrete-Head room | 13d | 2014-06-05 | 2014-06-19 | DUKHCONP1AZ7STRF2055, DUKHCONP1AZ8STRF2050 SS+5d, DUKHCONP1AZ8STRF2050 FF+2d | -16d | 0d | CONCRETE MASON SK [144 h]; LABOR- SUBCONTRACTOR [108 h]; CONCRETE QTY [72 Cum] | 22,960 | 25 | REM | 1AP8SPRF25 | DUKHCON1AP8STRF2055 | DUKHCONP1AZ8STRF2055 | DH | CON | 1A | Z8 | ST | SP | RF | B02 | B02-D02 | RES-1A |  |
| DUKHCONP1AZ8STRF2060 |  | Construction of Parapets | 25d | 2014-06-08 | 2014-07-06 | DUKHCONP1AZ8STRF2055 SS+2d, DUKHCONP1AZ8STRF2055 FF+14d | 32d | 4d | BLOCK MASON SK [1408 h]; LABOR- SUBCONTRACTOR [792 h]; BLOCK QTY [704 Sqm] | 43,648 | 30 | REM | 1AP8SPRF30 | DUKHCON1AP8STRF2060 | DUKHCONP1AZ8STRF2060 | DH | CON | 1A | Z8 | ST | SP | RF | B02 | B02-D03 | RES-1A |  |
| DUKHCONP1AZ8STRF2065 |  | Construction of up stands/Plinth | 25d | 2014-06-18 | 2014-07-16 | DUKHCONP1AZ7STRF2065, DUKHCONP1AZ8STRF2060 SS+5d, DUKHCONP1AZ8STRF2060 FF+5d | 28d | 0d | STEEL FIXERS SK [45 h]; CARPENTERS SK [256 h]; CONCRETE MASON SK [16 h]; LABOR- SUBCONTRACTOR [237.75 h]; REINFORCEMENT BARS QTY [559 kg]; FORMWORK QTY [128 Sqm]; CONCRETE QTY [8 Cum] | 12,624 | 35 | REM | 1AP8SPRF35 | DUKHCON1AP8STRF2065 | DUKHCONP1AZ8STRF2065 | DH | CON | 1A | Z8 | ST | SP | RF | B02 | B02-D02 | RES-1A |  |
|  | 15 | **FINISHING WORKS** |  | 2014-05-05 | 2014-11-13 |  |  |  |  |  |  |  |  |  |  |  |  |  |  |  |  |  |  |  |  |  |
|  | 10 | **INTERNAL FINISHES** |  | 2014-05-05 | 2014-11-13 |  |  |  |  |  |  |  |  |  |  |  |  |  |  |  |  |  |  |  |  |  |
|  | 10 | **GROUND FLOOR** |  | 2014-05-05 | 2014-10-20 |  |  |  |  |  |  |  |  |  |  |  |  |  |  |  |  |  |  |  |  |  |
| DUKHCONP1AZ8ARGF3000 |  | Block work | 25d | 2014-05-05 | 2014-06-02 | DUKHCONP1AZ8STGF2015 FF+21d, DUKHCONP1AZ8STGF2015 SS+21d, DUKHCONP1AZ7ARGF3000 | -6d | 0d | LABOR- SUBCONTRACTOR [3505.5 h]; BLOCK QTY [3116 Sqm]; BLOCK MASON SK [6232 h] | 225,562 | 10 | REM | 1AP8IFGF10 | DUKHCON1AP8ARGF3000 | DUKHCONP1AZ8ARGF3000 | DH | CON | 1A | Z8 | FIN | IF | GF | B02 | B02-D03 | RES-1A |  |
| DUKHCONP1AZ8ARGF3005 |  | Plastering work | 25d | 2014-05-27 | 2014-06-24 | DUKHCONP1AZ8PLGF4305 FF+5d, DUKHCONP1AZ8ARGF3000 SS+7d, DUKHCONP1AZ7ARGF3005, DUKHCONP1AZ8ELGF4000 SS+5d, DUKHCONP1AZ8ARGF3000 FF+7d, DUKHCONP1AZ8PLGF4305 SS+5d, DUKHCONP1AZ8ELGF4000 FF+5d | -6d | 0d | LABOR- SUBCONTRACTOR [4909.5 h]; PLASTER QTY [5455 Sqm]; PLASTER MASON SK [8728 h] | 71,593 | 12 | REM | 1AP8IFGF12 | DUKHCON1AP8ARGF3005 | DUKHCONP1AZ8ARGF3005 | DH | CON | 1A | Z8 | FIN | IF | GF | B02 | B02-D10 | RES-1A |  |
| DUKHCONP1AZ8ARGF3010 |  | Flooring screed | 21d | 2014-06-04 | 2014-06-28 | DUKHCONP1AZ8ARGF3005 SS+7d, DUKHCONP1AZ8ARGF3005 FF+3d | 2d | 8d | SCREED MASON SK [1149 h]; LABOR- SUBCONTRACTOR [431.25 h]; FLOORING SCREED QTY [1436 Sqm] | 48,008 | 15 | REM | 1AP8IFGF15 | DUKHCON1AP8ARGF3010 | DUKHCONP1AZ8ARGF3010 | DH | CON | 1A | Z8 | FIN | IF | GF | B02 | B02-D10 | RES-1A |  |
| DUKHCONP1AZ8ARGF3015 |  | Wet area waterproofing & Protection Screed | 15d | 2014-06-14 | 2014-06-30 | DUKHCONP1AZ7ARGF3015, DUKHCONP1AZ8ARGF3005 SS+7d, DUKHCONP1AZ8ARGF3005 FF+5d | -6d | 0d | LABOR- SUBCONTRACTOR [67.5 h]; WETAREA WATERPROOFING QTY [224 Sqm]; WATERPROOFING SPECIALIST SK [180 h] | 7,616 | 18 | REM | 1AP8IFGF18 | DUKHCON1AP8ARGF3015 | DUKHCONP1AZ8ARGF3015 | DH | CON | 1A | Z8 | FIN | IF | GF | B02 | B02-D10 | RES-1A |  |
| DUKHCONP1AZ8ARGF3030 |  | Paint First coat | 25d | 2014-06-16 | 2014-07-14 | DUKHCONP1AZ8ARGF3005 FF+14d, DUKHCONP1AZ8ARGF3005 SS+14d, DUKHCONP1AZ7ARGF3030 | 5d | 0d | LABOR- SUBCONTRACTOR [1479.75 h]; FIRSTCOAT PAINT QTY [4932 Sqm]; PAINTERS SK [3946 h] | 26,608 | 21 | REM | 1AP8IFGF21 | DUKHCON1AP8ARGF3030 | DUKHCONP1AZ8ARGF3030 | DH | CON | 1A | Z8 | FIN | IF | GF | B02 | B02-D11 | RES-1A | ENT |
| DUKHCONP1AZ8ARGF3020 |  | Ceramic Wall Tiling | 25d | 2014-06-19 | 2014-07-17 | DUKHCONP1AZ8PLGF4305 FF+4d, DUKHCONP1AZ8PLGF4310 FF+4d, DUKHCONP1AZ8PLGF4310 SS+4d, DUKHCONP1AZ8PLGF4305 SS+4d, DUKHCONP1AZ8ARGF3015 SS+5d, DUKHCONP1AZ7ARGF3020, DUKHCONP1AZ8ARGF3015 FF+5d | -6d | 0d | TILE MASON SK [2834 h]; LABOR- SUBCONTRACTOR [1594.5 h]; CERAMIC WALL TILE QTY [1417 Sqm] | 92,597 | 24 | REM | 1AP8IFGF24 | DUKHCON1AP8ARGF3020 | DUKHCONP1AZ8ARGF3020 | DH | CON | 1A | Z8 | FIN | IF | GF | B02 | B02-D10 | RES-1A |  |
| DUKHCONP1AZ8ARGF3025 |  | Porcelain Tile flooring | 25d | 2014-06-25 | 2014-07-23 | DUKHCONP1AZ7ARGF3025, DUKHCONP1AZ8ARGF3020 SS+5d, DUKHCONP1AZ8ARGF3010 FF+10d, DUKHCONP1AZ8ARGF3020 FF+5d, DUKHCONP1AZ8ARGF3010 SS+10d | -6d | 0d | TILE MASON SK [1116 h]; LABOR- SUBCONTRACTOR [627.75 h]; PORCELAIN FLOORING QTY [976 Sqm] | 74,919 | 27 | REM | 1AP8IFGF27 | DUKHCON1AP8ARGF3025 | DUKHCONP1AZ8ARGF3025 | DH | CON | 1A | Z8 | FIN | IF | GF | B02 | B02-D10 | RES-1A |  |
| DUKHCONP1AZ8ARGF3045 |  | Fixing of Suspension systems | 20d | 2014-07-13 | 2014-08-07 | DUKHCONP1AZ8ELGF4010 FF+5d, DUKHCONP1AZ8ARGF3030 SS+7d, DUKHCONP1AZ8ARGF3030 FF+7d, DUKHCONP1AZ8ARGF3025 FF+10d, DUKHCONP1AZ8ELGF4010 SS+5d, DUKHCONP1AZ8ARGF3025 SS+10d, DUKHCONP1AZ7ARGF3045 | -6d | 0d | LABOR- SUBCONTRACTOR [523.82 h]; SUSPENSION QTY [1164.04 Sqm]; FALSE CEILING SKILLED SK [931.23 h] | 22,840 | 39 | REM | 1AP8IFGF39 | DUKHCON1AP8ARGF3045 | DUKHCONP1AZ8ARGF3045 | DH | CON | 1A | Z8 | FIN | IF | GF | B02 | B02-D10 | RES-1A | SUS |
| DUKHCONP1AZ8ARGF3035 |  | Slate Tile Flooring & Skirting | 15d | 2014-07-15 | 2014-07-31 | DUKHCONP1AZ8ARGF3025 FF+7d, DUKHCONP1AZ8ARGF3025 SS+13d, DUKHCONP1AZ8ARGF3010 SS+13d, DUKHCONP1AZ8ARGF3010 FF+13d | -1d | 2d | TILE MASON SK [487 h]; LABOR- SUBCONTRACTOR [274.5 h]; SLATE TILE QTY [304 Sqm] | 65,885 | 33 | REM | 1AP8IFGF33 | DUKHCON1AP8ARGF3035 | DUKHCONP1AZ8ARGF3035 | DH | CON | 1A | Z8 | FIN | IF | GF | B02 | B02-D10 | RES-1A |  |
| DUKHCONP1AZ8ARGF3055 |  | Aluminum tile false ceiling | 25d | 2014-07-21 | 2014-08-21 | DUKHCONP1AZ8ACGF4600 SS+7d, DUKHCONP1AZ8ARGF3045 SS+7d, DUKHCONP1AZ8ACGF4600 FF+7d, DUKHCONP1AZ8ARGF3045 FF+7d | -3d | 3d | LABOR- SUBCONTRACTOR [54 h]; FALSE CEILING QTY [120 Sqm]; FALSE CEILING SKILLED SK [96 h] | 7,661 | 42 | REM | 1AP8IFGF42 | DUKHCON1AP8ARGF3055 | DUKHCONP1AZ8ARGF3055 | DH | CON | 1A | Z8 | FIN | IF | GF | B02 | B02-D10 | RES-1A | ALU |
| DUKHCONP1AZ8ARGF3040 |  | Cobble Tile flooring | 15d | 2014-07-22 | 2014-08-11 | DUKHCONP1AZ8ARGF3010 FF+13d, DUKHCONP1AZ8ARGF3025 FF+13d, DUKHCONP1AZ8ARGF3035 FF+4d, DUKHCONP1AZ8ARGF3010 SS+13d, DUKHCONP1AZ8ARGF3025 SS+13d, DUKHCONP1AZ8ARGF3035 SS+4d | -3d | 0d | TILE MASON SK [474 h]; LABOR- SUBCONTRACTOR [267 h]; COBBLE STONE QTY [296 Sqm] | 24,687 | 30 | REM | 1AP8IFGF30 | DUKHCON1AP8ARGF3040 | DUKHCONP1AZ8ARGF3040 | DH | CON | 1A | Z8 | FIN | IF | GF | B02 | B02-D10 | RES-1A |  |
| DUKHCONP1AZ8ARGF3060 |  | Gypsum board false ceiling | 25d | 2014-07-24 | 2014-08-25 | DUKHCONP1AZ7ARGF3060, DUKHCONP1AZ8ARGF3045 SS+10d, DUKHCONP1AZ8ARGF3045 FF+10d, DUKHCONP1AZ8ACGF4600 FF+7d, DUKHCONP1AZ8ACGF4600 SS+7d | -6d | 0d | LABOR- SUBCONTRACTOR [480.75 h]; FALSE CEILING QTY [1068.04 Sqm]; FALSE CEILING SKILLED SK [854.4 h] | 60,827 | 45 | REM | 1AP8IFGF45 | DUKHCON1AP8ARGF3060 | DUKHCONP1AZ8ARGF3060 | DH | CON | 1A | Z8 | FIN | IF | GF | B02 | B02-D10 | RES-1A | GYP |
| DUKHCONP1AZ8ARGF3050 |  | Granite - Stair case flooring & Skirting | 20d | 2014-07-30 | 2014-08-25 | DUKHCONP1AZ8ARGF3025 FF+13d, DUKHCONP1AZ8ARGF3040 FF+7d, DUKHCONP1AZ8ARGF3025 SS+13d, DUKHCONP1AZ8ARGF3040 SS+7d | -3d | 0d | GRANITE MASON SK [560 h]; LABOR- SUBCONTRACTOR [315 h]; GRANITE QTY [140 Sqm] | 93,589 | 36 | REM | 1AP8IFGF36 | DUKHCON1AP8ARGF3050 | DUKHCONP1AZ8ARGF3050 | DH | CON | 1A | Z8 | FIN | IF | GF | B02 | B02-D10 | RES-1A |  |
| DUKHCONP1AZ8ARGF3065 |  | Wooden door & PVC Door | 15d | 2014-08-17 | 2014-09-02 | DUKHCONP1AZ8ARGF3050 SS+7d, DUKHCONP1AZ8ARGF3035 SS+7d, DUKHCONP1AZ8ARGF3035 FF+7d, DUKHCONP1AZ8ARGF3050 FF+7d, DUKHCONP1AZ7ARGF3065 | -3d | 0d | LABOR- SUBCONTRACTOR [84 h]; WOODEN DOOR QTY [56 ea]; DOOR ERECTOR SK [224 h] | 233,577 | 48 | REM | 1AP8IFGF48 | DUKHCON1AP8ARGF3065 | DUKHCONP1AZ8ARGF3065 | DH | CON | 1A | Z8 | FIN | IF | GF | B02 | B02-D05 | RES-1A |  |
| DUKHCONP1AZ8ARGF3070 |  | Aluminum doors | 15d | 2014-08-23 | 2014-09-08 | DUKHCONP1AZ8ARGF3065 FF+5d, DUKHCONP1AZ8ARGF3065 SS+5d, DUKHCONP1AZ7ARGF3070 | -3d | 0d | LABOR- SUBCONTRACTOR [48 h]; ALUMINIUM DOOR QTY [32 ea]; DOOR ERECTOR SK [128 h] | 83,208 | 51 | REM | 1AP8IFGF51 | DUKHCON1AP8ARGF3070 | DUKHCONP1AZ8ARGF3070 | DH | CON | 1A | Z8 | FIN | IF | GF | B02 | B02-D06 | RES-1A |  |
| DUKHCONP1AZ8ARGF3075 |  | Carpentry & Joinery Works | 20d | 2014-08-28 | 2014-09-20 | DUKHCONP1AZ8ARGF3070 SS+5d, DUKHCONP1AZ8ARGF3070 FF+7d, DUKHCONP1AZ7ARGF3075 | -3d | 0d | LABOR- SUBCONTRACTOR [156 h]; CABINET QTY [48 ea]; COUNTER QTY [8 ea]; JOINERY WORK SK [384 h]; COUNTER SK [32 h] | 114,072 | 57 | REM | 1AP8IFGF57 | DUKHCON1AP8ARGF3075 | DUKHCONP1AZ8ARGF3075 | DH | CON | 1A | Z8 | FIN | IF | GF | B02 | B02-D05 | RES-1A |  |
| DUKHCONP1AZ8ARGF3080 |  | Aluminum windows | 20d | 2014-08-30 | 2014-09-21 | DUKHCONP1AZ8ARGF3070 FF+6d, DUKHCONP1AZ8ARGF3070 SS+6d, DUKHCONP1AZ7ARGF3080 | 7d | 5d | LABOR- SUBCONTRACTOR [44.25 h]; ALUMINIUM WINDOWS QTY [44 ea]; WINDOW ERECTOR SK [118 h] | 36,283 | 54 | REM | 1AP8IFGF54 | DUKHCON1AP8ARGF3080 | DUKHCONP1AZ8ARGF3080 | DH | CON | 1A | Z8 | FIN | IF | GF | B02 | B02-D06 | RES-1A |  |
| DUKHCONP1AZ8ARGF3085 |  | S.S.Balustrade | 20d | 2014-09-06 | 2014-09-28 | DUKHCONP1AZ8ARGF3075 FF+7d, DUKHCONP1AZ8ARGF3050 FF+7d, DUKHCONP1AZ8ARGF3050 SS+7d, DUKHCONP1AZ8ARGF3075 SS+7d | 2d | 5d | LABOR- SUBCONTRACTOR [94.5 h]; S.S.BALUSTRADE QTY [84 lm]; HANDRAIL ERECTOR SKILLED [168 h] | 121,464 | 63 | REM | 1AP8IFGF63 | DUKHCON1AP8ARGF3085 | DUKHCONP1AZ8ARGF3085 | DH | CON | 1A | Z8 | FIN | IF | GF | B02 | B02-D06 | RES-1A |  |
| DUKHCONP1AZ8ARGF3090 |  | Installation of Granite Counter Top | 15d | 2014-09-10 | 2014-09-27 | DUKHCONP1AZ8ARGF3075 SS+7d, DUKHCONP1AZ8ARGF3075 FF+6d | -3d | 0d | GRANITE COUNTER TOP QTY [32 ea]; GRANITE MASON SK [128 h]; LABOR- SUBCONTRACTOR [48 h] | 34,847 | 60 | REM | 1AP8IFGF60 | DUKHCON1AP8ARGF3090 | DUKHCONP1AZ8ARGF3090 | DH | CON | 1A | Z8 | FIN | IF | GF | B02 | B02-D10 | RES-1A |  |
| DUKHCONP1AZ8ARGF3095 |  | Final Painting | 25d | 2014-09-20 | 2014-10-20 | DUKHCONP1AZ8ARGF3080 FF+8d, DUKHCONP1AZ8ARGF3040 FF+13d, DUKHCONP1AZ8ARGF3040 SS+13d, DUKHCONP1AZ8ARGF3060 FF+8d, DUKHCONP1AZ8ARGF3080 SS+8d, DUKHCONP1AZ8ARGF3090 FF+8d, DUKHCONP1AZ7ARGF3095, DUKHCONP1AZ8ARGF3035 FF+13d, DUKHCONP1AZ8ARGF3070 SS+5d, DUKHCONP1AZ8ARGF3085 SS+7d, DUKHCONP1AZ8ARGF3030 SS+10d, DUKHCONP1AZ8ARGF3030 FF+10d, DUKHCONP1AZ8ARGF3035 SS+13d, DUKHCONP1AZ8ARGF3060 SS+8d, DUKHCONP1AZ8ACGF4610 FF+10d, DUKHCONP1AZ8ARGF3070 FF+5d, DUKHCONP1AZ8ARGF3090 SS+8d, DUKHCONP1AZ8ACGF4610 SS+10d, DUKHCONP1AZ8ARGF3085 FF+7d | -3d | 0d | LABOR- SUBCONTRACTOR [1479.75 h]; PAINT QTY [4932 Sqm]; PAINTERS SK [3946 h] | 61,805 | 66 | REM | 1AP8IFGF66 | DUKHCON1AP8ARGF3095 | DUKHCONP1AZ8ARGF3095 | DH | CON | 1A | Z8 | FIN | IF | GF | B02 | B02-D11 | RES-1A | PNT |

Notes:
- DUKHCONP1AZ8STGF2000: Expenses: P1A-Concrete Works 73433
- DUKHCONP1AZ8STGF2005: Expenses: P1A-Concrete Works 20945
- DUKHCONP1AZ8STGF2010: Expenses: P1A-Concrete Works 326549
- DUKHCONP1AZ8STGF2015: Expenses: P1A-Concrete Works 131494
- DUKHCONP1AZ8STFF2020: Expenses: P1A-Concrete Works 64915
- DUKHCONP1AZ8STFF2025: Expenses: P1A-Concrete Works 18331
- DUKHCONP1AZ8STFF2030: Expenses: P1A-Concrete Works 310154
- DUKHCONP1AZ8STFF2035: Expenses: P1A-Concrete Works 119102
- DUKHCONP1AZ8STRF2040: Expenses: P1A-Concrete Works 21168
- DUKHCONP1AZ8STRF2045: Expenses: P1A-Concrete Works 4363
- DUKHCONP1AZ8STRF2050: Expenses: P1A-Concrete Works 61496
- DUKHCONP1AZ8STRF2055: Expenses: P1A-Concrete Works 22960
- DUKHCONP1AZ8STRF2060: Expenses: P1A-Block work 43648
- DUKHCONP1AZ8STRF2065: Expenses: P1A-Concrete Works 12624
- DUKHCONP1AZ8ARGF3000: Expenses: P1A-Block work 225562
- DUKHCONP1AZ8ARGF3005: Expenses: P1A-Finishes 71593
- DUKHCONP1AZ8ARGF3010: Expenses: P1A-Finishes 48008
- DUKHCONP1AZ8ARGF3015: Expenses: P1A-Finishes 7616
- DUKHCONP1AZ8ARGF3030: Expenses: P1A-Painting and Decorating 26608
- DUKHCONP1AZ8ARGF3020: Expenses: P1A-Finishes 92597
- DUKHCONP1AZ8ARGF3025: Expenses: P1A-Finishes 74919
- DUKHCONP1AZ8ARGF3045: Expenses: P1A-Finishes 22840
- DUKHCONP1AZ8ARGF3035: Expenses: P1A-Finishes 65885
- DUKHCONP1AZ8ARGF3055: Expenses: P1A-Finishes 7661
- DUKHCONP1AZ8ARGF3040: Expenses: P1A-Finishes 24687
- DUKHCONP1AZ8ARGF3060: Expenses: P1A-Finishes 60827
- DUKHCONP1AZ8ARGF3050: Expenses: P1A-Finishes 93589
- DUKHCONP1AZ8ARGF3065: Expenses: P1A-Carpentry and Joinery 233577
- DUKHCONP1AZ8ARGF3070: Expenses: P1A-Metal work 83208
- DUKHCONP1AZ8ARGF3075: Expenses: P1A-Carpentry and Joinery 114072
- DUKHCONP1AZ8ARGF3080: Expenses: P1A-Metal work 36283
- DUKHCONP1AZ8ARGF3085: Expenses: P1A-Metal work 121464
- DUKHCONP1AZ8ARGF3090: Expenses: P1A-Finishes 34847
- DUKHCONP1AZ8ARGF3095: Expenses: P1A-Painting and Decorating 61805

| ID | WBS | Activity | Duration | Start | Finish | Predecessors | Total float | Free float | Resources | Cost | CODE | rem | P3 ACTID | P6 ID (old) | NP61D | PROJECT | PHASES | PACKAGE | PART | ELEMENTS | STEP | FLOORS | BILL NOS | BILL DIVISION | RES PACK | EXECUTER |
| --- | --- | --- | --- | --- | --- | --- | --- | --- | --- | --- | --- | --- | --- | --- | --- | --- | --- | --- | --- | --- | --- | --- | --- | --- | --- | --- |
|  | 15 | **FIRST FLOORS** |  | 2014-06-16 | 2014-11-13 |  |  |  |  |  |  |  |  |  |  |  |  |  |  |  |  |  |  |  |  |  |
| DUKHCONP1AZ8ARFF3300 |  | Block work | 25d | 2014-06-16 | 2014-07-14 | DUKHCONP1AZ8STFF2035 FF+21d, DUKHCONP1AZ8STFF2020 SS+21d, DUKHCONP1AZ8STFF2035 SS+21d, DUKHCONP1AZ8STFF2020 FF+21d, DUKHCONP1AZ7ARFF3300 | -24d | 0d | BLOCK MASON SK [4088 h]; LABOR- SUBCONTRACTOR [2299.5 h]; BLOCK QTY [2044 Sqm] | 127,687 | 10 | REM | 1AP8IFFF10 | DUKHCON1AP8ARFF3300 | DUKHCONP1AZ8ARFF3300 | DH | CON | 1A | Z8 | FIN | IF | FF | B02 | B02-D03 | RES-1A |  |
| DUKHCONP1AZ8ARFF3305 |  | Plastering work | 25d | 2014-07-10 | 2014-08-11 | DUKHCONP1AZ8ARFF3300 FF+7d, DUKHCONP1AZ7ARFF3305, DUKHCONP1AZ8PLFF4325 SS+6d, DUKHCONP1AZ8ARFF3300 SS+7d, DUKHCONP1AZ8ELFF4035 SS+5d, DUKHCONP1AZ8PLFF4325 FF+6d, DUKHCONP1AZ8ELFF4035 FF+5d | -24d | 0d | PLASTER MASON SK [5695 h]; LABOR- SUBCONTRACTOR [3204 h]; PLASTER QTY [3559 Sqm] | 46,951 | 12 | REM | 1AP8IFFF12 | DUKHCON1AP8ARFF3305 | DUKHCONP1AZ8ARFF3305 | DH | CON | 1A | Z8 | FIN | IF | FF | B02 | B02-D10 | RES-1A |  |
| DUKHCONP1AZ8ARFF3310 |  | Flooring screed | 21d | 2014-07-19 | 2014-08-14 | DUKHCONP1AZ8ARFF3305 SS+7d, DUKHCONP1AZ8ARFF3305 FF+3d | -12d | 12d | SCREED MASON SK [884 h]; LABOR- SUBCONTRACTOR [331.5 h]; FLOORING SCREED QTY [1105 Sqm] | 36,472 | 15 | REM | 1AP8IFFF15 | DUKHCON1AP8ARFF3310 | DUKHCONP1AZ8ARFF3310 | DH | CON | 1A | Z8 | FIN | IF | FF | B02 | B02-D10 | RES-1A |  |
| DUKHCONP1AZ8ARFF3330 |  | Paint First coat | 25d | 2014-07-27 | 2014-08-27 | DUKHCONP1AZ8ARFF3305 SS+14d, DUKHCONP1AZ8ARFF3305 FF+14d | -10d | 14d | LABOR- SUBCONTRACTOR [1293.75 h]; FIRSTCOAT PAINT QTY [4311.37 Sqm]; PAINTERS SK [3449 h] | 26,608 | 21 | REM | 1AP8IFFF21 | DUKHCON1AP8ARFF3330 | DUKHCONP1AZ8ARFF3330 | DH | CON | 1A | Z8 | FIN | IF | FF | B02 | B02-D11 | RES-1A | ENT |
| DUKHCONP1AZ8ARFF3315 |  | Wet area waterproofing | 15d | 2014-07-30 | 2014-08-19 | DUKHCONP1AZ7ARFF3315, DUKHCONP1AZ8ARFF3305 SS+7d, DUKHCONP1AZ8ARFF3305 FF+7d | -24d | 0d | LABOR- SUBCONTRACTOR [331.5 h]; WETAREA WATERPROOFING QTY [1104 Sqm]; WATERPROOFING SPECIALIST SK [884 h] | 36,704 | 18 | REM | 1AP8IFFF18 | DUKHCON1AP8ARFF3315 | DUKHCONP1AZ8ARFF3315 | DH | CON | 1A | Z8 | FIN | IF | FF | B02 | B02-D10 | RES-1A |  |
| DUKHCONP1AZ8ARFF3320 |  | Ceramic Wall Tiling | 25d | 2014-08-10 | 2014-09-07 | DUKHCONP1AZ8PLFF4325 SS+4d, DUKHCONP1AZ8ARFF3315 FF+6d, DUKHCONP1AZ8ARFF3315 SS+6d, DUKHCONP1AZ8PLFF4330 SS+7d, DUKHCONP1AZ7ARFF3320, DUKHCONP1AZ8PLFF4325 FF+4d, DUKHCONP1AZ8PLFF4330 FF+7d | -24d | 0d | TILE MASON SK [1214 h]; LABOR- SUBCONTRACTOR [683.25 h]; CERAMIC WALL TILE QTY [607 Sqm] | 42,941 | 24 | REM | 1AP8IFFF24 | DUKHCON1AP8ARFF3320 | DUKHCONP1AZ8ARFF3320 | DH | CON | 1A | Z8 | FIN | IF | FF | B02 | B02-D10 | RES-1A |  |
| DUKHCONP1AZ8ARFF3325 |  | Porcelain Tile flooring | 25d | 2014-08-17 | 2014-09-14 | DUKHCONP1AZ8ARFF3320 SS+6d, DUKHCONP1AZ7ARFF3325, DUKHCONP1AZ8ARFF3310 FF+10d, DUKHCONP1AZ8ARFF3310 SS+10d, DUKHCONP1AZ8ARFF3320 FF+6d | -24d | 0d | TILE MASON SK [1116 h]; LABOR- SUBCONTRACTOR [627.75 h]; PORCELAIN FLOORING QTY [976 Sqm] | 74,923 | 27 | REM | 1AP8IFFF27 | DUKHCON1AP8ARFF3325 | DUKHCONP1AZ8ARFF3325 | DH | CON | 1A | Z8 | FIN | IF | FF | B02 | B02-D10 | RES-1A |  |
| DUKHCONP1AZ8ARFF3345 |  | Fixing of Suspension systems | 20d | 2014-08-30 | 2014-09-21 | DUKHCONP1AZ8ELFF4045 FF+5d, DUKHCONP1AZ7ARFF3345, DUKHCONP1AZ8ARFF3325 FF+6d, DUKHCONP1AZ8ARFF3330 SS+7d, DUKHCONP1AZ8ARFF3330 FF+7d, DUKHCONP1AZ8ELFF4045 SS+5d, DUKHCONP1AZ8ARFF3325 SS+6d | -24d | 0d | LABOR- SUBCONTRACTOR [469.8 h]; SUSPENSION QTY [1044 Sqm]; FALSE CEILING SKILLED SK [835.2 h] | 19,648 | 36 | REM | 1AP8IFFF36 | DUKHCON1AP8ARFF3345 | DUKHCONP1AZ8ARFF3345 | DH | CON | 1A | Z8 | FIN | IF | FF | B02 | B02-D10 | RES-1A | SUS |
| DUKHCONP1AZ8ARFF3335 |  | Slate Tile Flooring & Skirting | 15d | 2014-09-03 | 2014-09-20 | DUKHCONP1AZ8ARFF3310 SS+13d, DUKHCONP1AZ8ARFF3310 FF+13d, DUKHCONP1AZ8ARFF3325 FF+5d, DUKHCONP1AZ8ARFF3325 SS+13d | -16d | 8d | TILE MASON SK [167 h]; LABOR- SUBCONTRACTOR [94.5 h]; SLATE TILE QTY [104 Sqm] | 20,405 | 30 | REM | 1AP8IFFF30 | DUKHCON1AP8ARFF3335 | DUKHCONP1AZ8ARFF3335 | DH | CON | 1A | Z8 | FIN | IF | FF | B02 | B02-D10 | RES-1A |  |
| DUKHCONP1AZ8ARFF3360 |  | Gypsum board false ceiling | 25d | 2014-09-06 | 2014-10-04 | DUKHCONP1AZ8ACFF4615 FF+7d, DUKHCONP1AZ8ARFF3345 SS+6d, DUKHCONP1AZ8ARFF3345 FF+6d, DUKHCONP1AZ8ACFF4615 SS+7d, DUKHCONP1AZ7ARFF3360 | -24d | 0d | LABOR- SUBCONTRACTOR [469.8 h]; FALSE CEILING QTY [1044 Sqm]; FALSE CEILING SKILLED SK [835.2 h] | 60,821 | 39 | REM | 1AP8IFFF39 | DUKHCON1AP8ARFF3360 | DUKHCONP1AZ8ARFF3360 | DH | CON | 1A | Z8 | FIN | IF | FF | B02 | B02-D10 | RES-1A | GYP |
| DUKHCONP1AZ8ARFF3350 |  | Granite - Stair case flooring & Skirting | 20d | 2014-09-07 | 2014-09-29 | DUKHCONP1AZ8ARFF3325 FF+13d, DUKHCONP1AZ8ARFF3325 SS+13d | -22d | 2d | GRANITE MASON SK [560 h]; LABOR- SUBCONTRACTOR [315 h]; GRANITE QTY [140 Sqm] | 93,598 | 33 | REM | 1AP8IFFF33 | DUKHCON1AP8ARFF3350 | DUKHCONP1AZ8ARFF3350 | DH | CON | 1A | Z8 | FIN | IF | FF | B02 | B02-D10 | RES-1A |  |
| DUKHCONP1AZ8ARFF3365 |  | Wooden door | 15d | 2014-09-21 | 2014-10-07 | DUKHCONP1AZ8ARFF3360 SS+3d, DUKHCONP1AZ8ARFF3350 SS+5d, DUKHCONP1AZ8ARFF3335 SS+7d, DUKHCONP1AZ8ARFF3335 FF+7d, DUKHCONP1AZ8ARFF3350 FF+5d, DUKHCONP1AZ8ARFF3360 FF+3d, DUKHCONP1AZ7ARFF3365 | -24d | 0d | LABOR- SUBCONTRACTOR [84 h]; WOODEN DOOR QTY [56 ea]; DOOR ERECTOR SK [224 h] | 152,394 | 42 | REM | 1AP8IFFF42 | DUKHCON1AP8ARFF3365 | DUKHCONP1AZ8ARFF3365 | DH | CON | 1A | Z8 | FIN | IF | FF | B02 | B02-D05 | RES-1A |  |
| DUKHCONP1AZ8ARFF3370 |  | Aluminum Door | 20d | 2014-09-21 | 2014-10-15 | DUKHCONP1AZ7ARFF3370, DUKHCONP1AZ8ARFF3365 FF, DUKHCONP1AZ8ARFF3365 SS | -24d | 0d | LABOR- SUBCONTRACTOR [60 h]; ALUMINIUM DOOR QTY [40 ea]; DOOR ERECTOR SK [160 h] | 122,026 | 45 | REM | 1AP8IFFF45 | DUKHCON1AP8ARFF3370 | DUKHCONP1AZ8ARFF3370 | DH | CON | 1A | Z8 | FIN | IF | FF | B02 | B02-D06 | RES-1A |  |
| DUKHCONP1AZ8ARFF3375 |  | Carpentry & Joinery Works | 25d | 2014-09-27 | 2014-10-27 | DUKHCONP1AZ7ARFF3375, DUKHCONP1AZ8ARFF3370 FF+5d, DUKHCONP1AZ8ARFF3370 SS+5d | -24d | 0d | LABOR- SUBCONTRACTOR [300 h]; CABINET QTY [24 ea]; COUNTER QTY [24 ea]; WARDROBE QTY [40 ea]; SHELVES QTY [24 ea]; JOINERY WORK SK [704 h]; COUNTER SK [96 h] | 231,933 | 51 | REM | 1AP8IFFF51 | DUKHCON1AP8ARFF3375 | DUKHCONP1AZ8ARFF3375 | DH | CON | 1A | Z8 | FIN | IF | FF | B02 | B02-D05 | RES-1A |  |
| DUKHCONP1AZ8ARFF3380 |  | Aluminum windows | 20d | 2014-09-28 | 2014-10-22 | DUKHCONP1AZ8ARFF3370 FF+6d, DUKHCONP1AZ8ARFF3370 SS+6d | -20d | 4d | LABOR- SUBCONTRACTOR [44.25 h]; ALUMINIUM WINDOWS QTY [44 ea]; WINDOW ERECTOR SK [118 h] | 55,776 | 48 | REM | 1AP8IFFF48 | DUKHCON1AP8ARFF3380 | DUKHCONP1AZ8ARFF3380 | DH | CON | 1A | Z8 | FIN | IF | FF | B02 | B02-D06 | RES-1A |  |
| DUKHCONP1AZ8ARFF3385 |  | Handrail & Balustrade | 20d | 2014-10-08 | 2014-11-02 | DUKHCONP1AZ8ARFF3350 SS+7d, DUKHCONP1AZ8ARFF3350 FF+7d, DUKHCONP1AZ8ARFF3375 SS+5d, DUKHCONP1AZ8ARFF3375 FF+5d | -24d | 0d | LABOR- SUBCONTRACTOR [283.5 h]; S.S.BALUSTRADE QTY [252 lm]; HANDRAIL ERECTOR SKILLED [504 h] | 308,447 | 57 | REM | 1AP8IFFF57 | DUKHCON1AP8ARFF3385 | DUKHCONP1AZ8ARFF3385 | DH | CON | 1A | Z8 | FIN | IF | FF | B02 | B02-D06 | RES-1A |  |
| DUKHCONP1AZ8ARFF3390 |  | Installation of Granite Counter Top | 20d | 2014-10-08 | 2014-11-02 | DUKHCONP1AZ8ARFF3375 FF+5d, DUKHCONP1AZ8ARFF3375 SS+6d | -23d | 1d | GRANITE MASON SK [64 h]; LABOR- SUBCONTRACTOR [24 h]; GRANITE COUNTER TOP QTY [16 ea] | 7,594 | 54 | REM | 1AP8IFFF54 | DUKHCON1AP8ARFF3390 | DUKHCONP1AZ8ARFF3390 | DH | CON | 1A | Z8 | FIN | IF | FF | B02 | B02-D10 | RES-1A |  |
| DUKHCONP1AZ8ARFF3395 |  | Final Painting | 25d | 2014-10-16 | 2014-11-13 | DUKHCONP1AZ8ARFF3330 FF+10d, DUKHCONP1AZ8ARFF3375 SS+8d, DUKHCONP1AZ8ARFF3385 FF+5d, DUKHCONP1AZ8ACFF4625 SS+6d, DUKHCONP1AZ8ARFF3360 FF+10d, DUKHCONP1AZ8ARFF3390 SS+4d, DUKHCONP1AZ8ARFF3335 FF+8d, DUKHCONP1AZ7ARFF3395, DUKHCONP1AZ8ARFF3365 SS+8d, DUKHCONP1AZ8ARFF3375 FF+8d, DUKHCONP1AZ8ARFF3335 SS+8d, DUKHCONP1AZ8ARFF3350 FF+8d, DUKHCONP1AZ8ARFF3360 SS+10d, DUKHCONP1AZ8ARFF3380 SS+10d, DUKHCONP1AZ8ARFF3380 FF+10d, DUKHCONP1AZ8ARFF3390 FF+6d, DUKHCONP1AZ8ACFF4625 FF+6d, DUKHCONP1AZ8ARFF3350 SS+8d, DUKHCONP1AZ8ARFF3365 FF+8d, DUKHCONP1AZ8ARFF3330 SS+10d, DUKHCONP1AZ8ARFF3385 SS+5d | -24d | 0d | LABOR- SUBCONTRACTOR [1293.75 h]; PAINT QTY [4311.37 Sqm]; PAINTERS SK [3449 h] | 50,803 | 60 | REM | 1AP8IFFF60 | DUKHCON1AP8ARFF3395 | DUKHCONP1AZ8ARFF3395 | DH | CON | 1A | Z8 | FIN | IF | FF | B02 | B02-D11 | RES-1A | PNT |
|  | 20 | **ROOF** |  | 2014-06-30 | 2014-09-06 |  |  |  |  |  |  |  |  |  |  |  |  |  |  |  |  |  |  |  |  |  |
| DUKHCONP1AZ8ARRF3600 |  | Block work | 20d | 2014-06-30 | 2014-07-22 | DUKHCONP1AZ7ARRF3600, DUKHCONP1AZ8STRF2055 SS+21d, DUKHCONP1AZ8STRF2055 FF+21d | 28d | 0d | BLOCK MASON SK [448 h]; LABOR- SUBCONTRACTOR [252 h]; BLOCK QTY [224 Sqm] | 17,789 | 10 | REM | 1AP8IFRF10 | DUKHCON1AP8ARRF3600 | DUKHCONP1AZ8ARRF3600 | DH | CON | 1A | Z8 | FIN | IF | RF | B02 | B02-D03 | RES-1A |  |
| DUKHCONP1AZ8ARRF3605 |  | Plastering work | 20d | 2014-07-08 | 2014-07-30 | DUKHCONP1AZ8ARRF3600 SS+7d, DUKHCONP1AZ8ARRF3600 FF+7d | 28d | 0d | PLASTER MASON SK [1143 h]; LABOR- SUBCONTRACTOR [643.5 h]; PLASTER QTY [714 Sqm] | 9,277 | 20 | REM | 1AP8IFRF20 | DUKHCON1AP8ARRF3605 | DUKHCONP1AZ8ARRF3605 | DH | CON | 1A | Z8 | FIN | IF | RF | B02 | B02-D10 | RES-1A |  |
| DUKHCONP1AZ8ARRF3610 |  | Flooring screed | 15d | 2014-07-22 | 2014-08-11 | DUKHCONP1AZ8ARRF3605 SS+7d, DUKHCONP1AZ8ARRF3605 FF+7d | 33d | 0d | SCREED MASON SK [99 h]; FLOORING SCREED QTY [123 Sqm]; LABOR- SUBCONTRACTOR [37.5 h] | 4,056 | 30 | REM | 1AP8IFRF30 | DUKHCON1AP8ARRF3610 | DUKHCONP1AZ8ARRF3610 | DH | CON | 1A | Z8 | FIN | IF | RF | B02 | B02-D10 | RES-1A |  |
| DUKHCONP1AZ8ARRF3695 |  | Painting -Storage area | 20d | 2014-07-30 | 2014-08-25 | DUKHCONP1AZ8ARRF3610 SS+7d, DUKHCONP1AZ8ARRF3610 FF+7d | 33d | 0d | LABOR- SUBCONTRACTOR [456 h]; PAINT QTY [1472 Sqm]; PAINTERS SK [1184 h] | 7,956 | 40 |  | 1AP8IFRF40 | DUKHCON1AP8ARRF3695 | DUKHCONP1AZ8ARRF3695 | DH | CON | 1A | Z8 | FIN | IF | RF | B02 | B02-D11 | RES-1A |  |
| DUKHCONP1AZ8ARRF3620 |  | Epoxy Painting -Storage area | 15d | 2014-08-20 | 2014-09-06 | DUKHCONP1AZ8ARRF3695 FF+10d, DUKHCONP1AZ8ARRF3695 SS+10d | 33d | 57d | LABOR- SUBCONTRACTOR [13.5 h]; EPOXY QTY [64 Sqm]; EPOXY SK [35 h] | 3,216 | 50 | REM | 1AP8IFRF50 | DUKHCON1AP8ARRF3620 | DUKHCONP1AZ8ARRF3620 | DH | CON | 1A | Z8 | FIN | IF | RF | B02 | B02-D11 | RES-1A |  |

Notes:
- DUKHCONP1AZ8ARFF3300: Expenses: P1A-Block work 127687
- DUKHCONP1AZ8ARFF3305: Expenses: P1A-Finishes 46951
- DUKHCONP1AZ8ARFF3310: Expenses: P1A-Finishes 36472
- DUKHCONP1AZ8ARFF3330: Expenses: P1A-Painting and Decorating 26608
- DUKHCONP1AZ8ARFF3315: Expenses: P1A-Finishes 36704
- DUKHCONP1AZ8ARFF3320: Expenses: P1A-Finishes 42941
- DUKHCONP1AZ8ARFF3325: Expenses: P1A-Finishes 74923
- DUKHCONP1AZ8ARFF3345: Expenses: P1A-Finishes 19648
- DUKHCONP1AZ8ARFF3335: Expenses: P1A-Finishes 20405
- DUKHCONP1AZ8ARFF3360: Expenses: P1A-Finishes 60821
- DUKHCONP1AZ8ARFF3350: Expenses: P1A-Finishes 93598
- DUKHCONP1AZ8ARFF3365: Expenses: P1A-Carpentry and Joinery 152394
- DUKHCONP1AZ8ARFF3370: Expenses: P1A-Metal work 122026
- DUKHCONP1AZ8ARFF3375: Expenses: P1A-Carpentry and Joinery 231933
- DUKHCONP1AZ8ARFF3380: Expenses: P1A-Metal work 55776
- DUKHCONP1AZ8ARFF3385: Expenses: P1A-Metal work 308447
- DUKHCONP1AZ8ARFF3390: Expenses: P1A-Finishes 7594
- DUKHCONP1AZ8ARFF3395: Expenses: P1A-Painting and Decorating 50803
- DUKHCONP1AZ8ARRF3600: Expenses: P1A-Block work 17789
- DUKHCONP1AZ8ARRF3605: Expenses: P1A-Finishes 9277
- DUKHCONP1AZ8ARRF3610: Expenses: P1A-Finishes 4056
- DUKHCONP1AZ8ARRF3695: Expenses: P1A-Painting and Decorating 7956
- DUKHCONP1AZ8ARRF3620: Expenses: P1A-Painting and Decorating 3216

| ID | WBS | Activity | Duration | Start | Finish | Predecessors | Total float | Free float | Resources | Cost | CODE | rem | P3 ACTID | P6 ID (old) | NP61D | PROJECT | PHASES | PACKAGE | PART | ELEMENTS | STEP | FLOORS | BILL NOS | BILL DIVISION | RES PACK |
| --- | --- | --- | --- | --- | --- | --- | --- | --- | --- | --- | --- | --- | --- | --- | --- | --- | --- | --- | --- | --- | --- | --- | --- | --- | --- |
|  | 15 | **EXTERNAL FINISHES** |  | 2014-07-22 | 2014-10-14 |  |  |  |  |  |  |  |  |  |  |  |  |  |  |  |  |  |  |  |  |
|  | 10 | **ROOF** |  | 2014-08-09 | 2014-10-14 |  |  |  |  |  |  |  |  |  |  |  |  |  |  |  |  |  |  |  |  |
| DUKHCONP1AZ8ARRF3630 |  | Leveling Screed for Waterproofing | 25d | 2014-08-09 | 2014-09-06 | DUKHCONP1AZ8STRF2060 FF+10d, DUKHCONP1AZ8STRF2065 SS+10d, DUKHCONP1AZ8STRF2060 SS+10d, DUKHCONP1AZ7ARRF3630, DUKHCONP1AZ8STRF2065 FF+10d | -3d | 0d | SCREED MASON SK [512 h]; LABOR- SUBCONTRACTOR [288 h]; ROOF WP SCREED QTY [1280 Sqm] | 56,792 | 10 | REM | 1AP8EFRF10 | DUKHCON1AP8ARRF3630 | DUKHCONP1AZ8ARRF3630 | DH | CON | 1A | Z8 | FIN | EF | RF | B02 | B02-D04 | RES-1A |
| DUKHCONP1AZ8ARRF3635 |  | Laying of Waterproofing Membrane | 25d | 2014-08-12 | 2014-09-09 | DUKHCONP1AZ8ARRF3630 SS+3d, DUKHCONP1AZ8ARRF3630 FF+3d | -3d | 0d | LABOR- SUBCONTRACTOR [310.5 h]; ROOF WP MEMBRANE QTY [1552 Sqm]; WATERPROOFING SPECIALIST SK [828 h] | 43,994 | 15 | REM | 1AP8EFRF15 | DUKHCON1AP8ARRF3635 | DUKHCONP1AZ8ARRF3635 | DH | CON | 1A | Z8 | FIN | EF | RF | B02 | B02-D04 | RES-1A |
| DUKHCONP1AZ8ARRF3640 |  | Installation of Insulation & Protection | 25d | 2014-08-17 | 2014-09-14 | DUKHCONP1AZ8ARRF3635 SS+4d, DUKHCONP1AZ8ARRF3635 FF+4d | -3d | 0d | LABOR- SUBCONTRACTOR [384 h]; ROOF WP INSULATION QTY [2560 Sqm]; WATERPROOFING SPECIALIST SK [1024 h] | 55,936 | 20 | REM | 1AP8EFRF20 | DUKHCON1AP8ARRF3640 | DUKHCONP1AZ8ARRF3640 | DH | CON | 1A | Z8 | FIN | EF | RF | B02 | B02-D04 | RES-1A |
| DUKHCONP1AZ8ARRF3645 |  | Lime Stone Chips & Paving slab Installation | 25d | 2014-08-21 | 2014-09-18 | DUKHCONP1AZ8ARRF3640 SS+4d, DUKHCONP1AZ8ARRF3640 FF+4d | -3d | 0d | TILE MASON SK [45 h]; LABOR- SUBCONTRACTOR [188.25 h]; LIME STONE QTY [112 Sqm]; PRECAST PAVING SLAB QTY [1136 Sqm]; PRE CAST CONCRETE SK [455 h] | 83,344 | 25 | REM | 1AP8EFRF25 | DUKHCON1AP8ARRF3645 | DUKHCONP1AZ8ARRF3645 | DH | CON | 1A | Z8 | FIN | EF | RF | B02 | B02-D04 | RES-1A |
| DUKHCONP1AZ8ARRF3650 |  | Install. of Gal. Frame & Aluminum Slat Screen | 25d | 2014-08-30 | 2014-09-27 | DUKHCONP1AZ8ARRF3645 FF+7d, DUKHCONP1AZ8ARRF3645 SS+7d | -3d | 0d | LABOR- SUBCONTRACTOR [448.5 h]; ALUMINIUM SCREEN QTY [224 Sqm]; DOOR ERECTOR SK [598 h] | 63,347 | 35 | REM | 1AP8EFRF35 | DUKHCON1AP8ARRF3650 | DUKHCONP1AZ8ARRF3650 | DH | CON | 1A | Z8 | FIN | EF | RF | B02 | B02-D06 | RES-1A |
| DUKHCONP1AZ8ARRF3655 |  | Installation of Pumps Protection cabinets | 20d | 2014-09-14 | 2014-10-06 | DUKHCONP1AZ8ARRF3645 FF+7d, DUKHCONP1AZ8ARRF3650 FF+8d, DUKHCONP1AZ8ARRF3650 SS+8d, DUKHCONP1AZ8ARRF3645 SS+7d, DUKHCONP1AZ7ARRF3655 | -3d | 0d | LABOR- SUBCONTRACTOR [168 h]; CABINET QTY [56 ea]; JOINERY WORK SK [448 h] | 26,600 | 30 | REM | 1AP8EFRF30 | DUKHCON1AP8ARRF3655 | DUKHCONP1AZ8ARRF3655 | DH | CON | 1A | Z8 | FIN | EF | RF | B02 | B02-D04 | RES-1A |
| DUKHCONP1AZ8ARRF3660 |  | Installation of Access Ladder | 15d | 2014-09-25 | 2014-10-14 | DUKHCONP1AZ8ARRF3655 SS+5d, DUKHCONP1AZ8ARRF3655 FF+5d | 2d | 26d | LABOR- SUBCONTRACTOR [48 h]; LADDER QTY [16 ea]; LADDER ERECTOR SK [128 h] | 53,206 | 40 | REM | 1AP8EFRF40 | DUKHCON1AP8ARRF3660 | DUKHCONP1AZ8ARRF3660 | DH | CON | 1A | Z8 | FIN | EF | RF | B02 | B02-D06 | RES-1A |
|  | 15 | **ELEVATION** |  | 2014-07-22 | 2014-09-15 |  |  |  |  |  |  |  |  |  |  |  |  |  |  |  |  |  |  |  |  |
| DUKHCONP1AZ8AREL3665 |  | External Plastering | 25d | 2014-07-22 | 2014-08-23 | DUKHCONP1AZ8ARRF3605 SS+7d, DUKHCONP1AZ8ARFF3305 FF+7d, DUKHCONP1AZ8ARFF3305 SS+7d, DUKHCONP1AZ7AREL3665, DUKHCONP1AZ8STRF2065 FF+7d, DUKHCONP1AZ8STRF2065 SS+7d | 23d | 0d | PLASTER MASON SK [9136 h]; LABOR- SUBCONTRACTOR [5139 h]; EXTERNAL PLASTER QTY [4568 Sqm] | 108,894 | 10 | REM | 1AP8EFEL10 | DUKHCON1AP8AREL3665 | DUKHCONP1AZ8AREL3665 | DH | CON | 1A | Z8 | FIN | EF | EL | B02 | B02-D10 | RES-1A |
| DUKHCONP1AZ8AREL3670 |  | External stone cladding works | 20d | 2014-08-12 | 2014-09-03 | DUKHCONP1AZ8AREL3665 SS+10d, DUKHCONP1AZ8AREL3665 FF+10d, DUKHCONP1AZ7AREL3670 | 25d | 0d | TILE MASON SK [720 h]; LABOR- SUBCONTRACTOR [270 h]; STONE CLADDING QTY [360 Sqm] | 71,820 | 15 | REM | 1AP8EFEL15 | DUKHCON1AP8AREL3670 | DUKHCONP1AZ8AREL3670 | DH | CON | 1A | Z8 | FIN | EF | EL | B02 | B02-D10 | RES-1A |
| DUKHCONP1AZ8AREL3680 |  | External Painting | 20d | 2014-08-24 | 2014-09-15 | DUKHCONP1AZ8ARRF3695 FF+4d, DUKHCONP1AZ7AREL3680, DUKHCONP1AZ8ARRF3695 SS+4d, DUKHCONP1AZ8AREL3670 FF+10d, DUKHCONP1AZ8AREL3670 SS+10d | 25d | 5d | LABOR- SUBCONTRACTOR [1032 h]; PAINT QTY [3424 Sqm]; PAINTERS SK [2752 h] | 86,006 | 20 |  | 1AP8EFEL20 | DUKHCON1AP8AREL3680 | DUKHCONP1AZ8AREL3680 | DH | CON | 1A | Z8 | FIN | EF | EL | B02 | B02-D11 | RES-1A |
|  | 20 | **MEP WORKS** |  | 2014-01-28 | 2014-11-12 |  |  |  |  |  |  |  |  |  |  |  |  |  |  |  |  |  |  |  |  |
|  | 10 | **ELECTRICAL WORKS** |  | 2014-05-11 | 2014-11-12 |  |  |  |  |  |  |  |  |  |  |  |  |  |  |  |  |  |  |  |  |
|  | 10 | **GROUND FLOOR** |  | 2014-05-11 | 2014-09-20 |  |  |  |  |  |  |  |  |  |  |  |  |  |  |  |  |  |  |  |  |
| DUKHCONP1AZ8ELGF4000 |  | Fixing of wall conduits & switch socket boxes | 25d | 2014-05-11 | 2014-06-08 | DUKHCONP1AZ8ARGF3000 FF+5d, DUKHCONP1AZ8ARGF3000 SS+5d | 3d | 0d | LABOR- SUBCONTRACTOR [192 h]; ELECTRICIANS SK [1030.4 h]; SOCKET BOXES QTY [724 ea]; CODUITS QTY [184 lm] | 33,077 | 10 |  | 1AP8EWGF10 | DUKHCON1AP8ELGF4000 | DUKHCONP1AZ8ELGF4000 | DH | CON | 1A | Z8 | MEP | EW | GF | B02 | B02-D09 | RES-1A |
| DUKHCONP1AZ8ELGF4005 |  | Cable tray & trunking installation | 20d | 2014-05-22 | 2014-06-14 | DUKHCONP1AZ8ELGF4000 FF+5d, DUKHCONP1AZ7ELGF4005, DUKHCONP1AZ8ELGF4000 SS+5d | 21d | 0d | LABOR- SUBCONTRACTOR [288 h]; ELECTRICIANS SK [1030.4 h]; CABLE TRAY QTY [184 lm] | 7,536 | 15 |  | 1AP8EWGF15 | DUKHCON1AP8ELGF4005 | DUKHCONP1AZ8ELGF4005 | DH | CON | 1A | Z8 | MEP | EW | GF | B02 | B02-D09 | RES-1A |
| DUKHCONP1AZ8ELGF4010 |  | Installation of wiring & Main Cabling | 25d | 2014-05-31 | 2014-06-28 | DUKHCONP1AZ8ELGF4005 FF+7d, DUKHCONP1AZ8ELGF4005 SS+7d | 21d | 27d | LABOR- SUBCONTRACTOR [72 h]; ELECTRICIANS SK [224 h]; CABLE QTY [184 lm] | 112,018 | 20 |  | 1AP8EWGF20 | DUKHCON1AP8ELGF4010 | DUKHCONP1AZ8ELGF4010 | DH | CON | 1A | Z8 | MEP | EW | GF | B02 | B02-D09 | RES-1A |
| DUKHCONP1AZ8ELGF4015 |  | Install. of CAMS & Fire Fighting Accessories | 25d | 2014-08-05 | 2014-09-02 | DUKHCONP1AZ8ARGF3055 FF+7d, DUKHCONP1AZ8ARGF3060 FF+7d, DUKHCONP1AZ8ARGF3055 SS+7d, DUKHCONP1AZ8ARGF3060 SS+7d, DUKHCONP1AZ7ELGF4015 | 6d | 0d | LABOR- SUBCONTRACTOR [384 h]; MECHANICALS SK [691.2 h]; SMOKE DETECTOR POINTS QTY [92 ea]; FIRE EXTINGUISHER QTY [28 ea] | 71,164 | 35 |  | 1AP8EWGF35 | DUKHCON1AP8ELGF4015 | DUKHCONP1AZ8ELGF4015 | DH | CON | 1A | Z8 | MEP | EW | GF | B02 | B02-D09 | RES-1A |
| DUKHCONP1AZ8ELGF4020 |  | Installation of DBS,MCCB Accessories. | 20d | 2014-08-11 | 2014-09-02 | DUKHCONP1AZ8ARGF3055 FF+7d, DUKHCONP1AZ8ELGF4010 SS+5d, DUKHCONP1AZ8ELGF4010 FF+5d, DUKHCONP1AZ8ARGF3055 SS+7d, DUKHCONP1AZ8ARGF3060 FF+7d, DUKHCONP1AZ8ARGF3060 SS+7d | -6d | 0d | LABOR- SUBCONTRACTOR [48 h]; ELECTRICIANS SK [179.2 h]; MCCB QTY [64 ea]; DB QTY [8 ea] | 26,049 | 25 |  | 1AP8EWGF25 | DUKHCON1AP8ELGF4020 | DUKHCONP1AZ8ELGF4020 | DH | CON | 1A | Z8 | MEP | EW | GF | B02 | B02-D09 | RES-1A |
| DUKHCONP1AZ8ELGF4025 |  | Installation of Lighting fixtures & Accessories | 25d | 2014-08-23 | 2014-09-20 | DUKHCONP1AZ8ARGF3060 SS+10d, DUKHCONP1AZ8ARGF3060 FF+10d, DUKHCONP1AZ8ARGF3055 FF+10d, DUKHCONP1AZ8ELGF4020 SS+10d, DUKHCONP1AZ8ARGF3055 SS+10d, DUKHCONP1AZ8ELGF4020 FF+10d, DUKHCONP1AZ7ELGF4025 | 1d | 0d | LABOR- SUBCONTRACTOR [576 h]; ELECTRICIANS SK [1075.2 h]; LIGHTS QTY [480 ea] | 154,315 | 30 |  | 1AP8EWGF30 | DUKHCON1AP8ELGF4025 | DUKHCONP1AZ8ELGF4025 | DH | CON | 1A | Z8 | MEP | EW | GF | B02 | B02-D09 | RES-1A |
| DUKHCONP1AZ8ELGF4030 |  | Installation of Telephone System | 20d | 2014-08-23 | 2014-09-14 | DUKHCONP1AZ8ELGF4020 SS+10d, DUKHCONP1AZ8ARGF3060 SS+5d, DUKHCONP1AZ7ELGF4030, DUKHCONP1AZ8ELGF4020 FF+10d, DUKHCONP1AZ8ARGF3060 FF+5d | -6d | 5d | LABOR- SUBCONTRACTOR [72 h]; ELECTRICIANS SK [448 h]; TELEPHONE SOCKETS QTY [40 ea] | 38,162 | 40 |  | 1AP8EWGF40 | DUKHCON1AP8ELGF4030 | DUKHCONP1AZ8ELGF4030 | DH | CON | 1A | Z8 | MEP | EW | GF | B02 | B02-D09 | RES-1A |
|  | 15 | **FIRST FLOORS** |  | 2014-06-22 | 2014-10-26 |  |  |  |  |  |  |  |  |  |  |  |  |  |  |  |  |  |  |  |  |
| DUKHCONP1AZ8ELFF4035 |  | Fixing of wall conduits & switch socket boxes | 25d | 2014-06-22 | 2014-07-20 | DUKHCONP1AZ8ARFF3300 FF+5d, DUKHCONP1AZ8ARFF3300 SS+5d | -13d | 0d | LABOR- SUBCONTRACTOR [192 h]; ELECTRICIANS SK [1030.4 h]; SOCKET BOXES QTY [724 ea]; CODUITS QTY [184 lm] | 32,659 | 10 |  | 1AP8EWFF10 | DUKHCON1AP8ELFF4035 | DUKHCONP1AZ8ELFF4035 | DH | CON | 1A | Z8 | MEP | EW | FF | B02 | B02-D09 | RES-1A |
| DUKHCONP1AZ8ELFF4040 |  | Cable tray & trunking installation | 20d | 2014-07-03 | 2014-07-26 | DUKHCONP1AZ8ELFF4035 SS+5d, DUKHCONP1AZ8ELFF4035 FF+5d | 5d | 2d | LABOR- SUBCONTRACTOR [288 h]; ELECTRICIANS SK [1030.4 h]; CABLE TRAY QTY [184 lm] | 7,520 | 15 |  | 1AP8EWFF15 | DUKHCON1AP8ELFF4040 | DUKHCONP1AZ8ELFF4040 | DH | CON | 1A | Z8 | MEP | EW | FF | B02 | B02-D09 | RES-1A |
| DUKHCONP1AZ8ELFF4045 |  | Installation of wiring & Main Cabling | 25d | 2014-07-14 | 2014-08-14 | DUKHCONP1AZ8ELFF4040 FF+7d, DUKHCONP1AZ8ELFF4040 SS+7d, DUKHCONP1AZ7ELFF4045 | 3d | 0d | LABOR- SUBCONTRACTOR [72 h]; ELECTRICIANS SK [224 h]; CABLE QTY [184 lm] | 110,383 | 20 |  | 1AP8EWFF20 | DUKHCON1AP8ELFF4045 | DUKHCONP1AZ8ELFF4045 | DH | CON | 1A | Z8 | MEP | EW | FF | B02 | B02-D09 | RES-1A |
| DUKHCONP1AZ8ELFF4055 |  | Install. of CAMS & Fire Fighting Accessories | 25d | 2014-09-14 | 2014-10-14 | DUKHCONP1AZ7ELFF4055, DUKHCONP1AZ8ELGF4015 FF+5d, DUKHCONP1AZ8ARFF3360 SS+7d, DUKHCONP1AZ8ARFF3360 FF+7d, DUKHCONP1AZ8ELGF4015 SS+5d | -23d | 0d | LABOR- SUBCONTRACTOR [360 h]; MECHANICALS SK [648 h]; SMOKE DETECTOR POINTS QTY [92 ea]; FIRE EXTINGUISHER QTY [24 ea] | 71,142 | 35 |  | 1AP8EWFF35 | DUKHCON1AP8ELFF4055 | DUKHCONP1AZ8ELFF4055 | DH | CON | 1A | Z8 | MEP | EW | FF | B02 | B02-D09 | RES-1A |
| DUKHCONP1AZ8ELFF4050 |  | Installation of Telephone System | 25d | 2014-09-15 | 2014-10-15 | DUKHCONP1AZ8ELGF4030 SS+10d, DUKHCONP1AZ8ARFF3360 FF+5d, DUKHCONP1AZ8MSEX5010, DUKHCONP1AZ8ELGF4030 FF+10d, DUKHCONP1AZ8ARFF3360 SS+5d | -16d | 7d | LABOR- SUBCONTRACTOR [48 h]; ELECTRICIANS SK [403.2 h]; TELEPHONE SOCKETS QTY [36 ea] | 36,523 | 40 |  | 1AP8EWFF40 | DUKHCON1AP8ELFF4050 | DUKHCONP1AZ8ELFF4050 | DH | CON | 1A | Z8 | MEP | EW | FF | B02 | B02-D09 | RES-1A |
| DUKHCONP1AZ8ELFF4060 |  | Installation of DBS,MCCB Accessories. | 20d | 2014-09-17 | 2014-10-12 | DUKHCONP1AZ8ELFF4045 FF+5d, DUKHCONP1AZ8ARFF3360 FF+5d, DUKHCONP1AZ7ELFF4060, DUKHCONP1AZ8ELFF4045 SS+5d, DUKHCONP1AZ8ARFF3360 SS+8d | -21d | 2d | LABOR- SUBCONTRACTOR [48 h]; ELECTRICIANS SK [179.2 h]; MCCB QTY [64 ea]; DB QTY [8 ea] | 26,040 | 25 |  | 1AP8EWFF25 | DUKHCON1AP8ELFF4060 | DUKHCONP1AZ8ELFF4060 | DH | CON | 1A | Z8 | MEP | EW | FF | B02 | B02-D09 | RES-1A |
| DUKHCONP1AZ8ELFF4065 |  | Installation of Lighting fixtures & Accessories | 25d | 2014-09-25 | 2014-10-26 | DUKHCONP1AZ8ARFF3360 SS+10d, DUKHCONP1AZ7ELFF4065, DUKHCONP1AZ8ARFF3360 FF+10d, DUKHCONP1AZ8ELGF4025 SS+5d, DUKHCONP1AZ8ELGF4025 FF+5d, DUKHCONP1AZ8ELFF4060 SS+5d, DUKHCONP1AZ8ELFF4060 FF+5d | -23d | 0d | LABOR- SUBCONTRACTOR [576 h]; ELECTRICIANS SK [1075.2 h]; LIGHTS QTY [480 ea] | 154,301 | 30 |  | 1AP8EWFF30 | DUKHCON1AP8ELFF4065 | DUKHCONP1AZ8ELFF4065 | DH | CON | 1A | Z8 | MEP | EW | FF | B02 | B02-D09 | RES-1A |

Notes:
- DUKHCONP1AZ8ARRF3630: Expenses: P1A-Roofing 56792
- DUKHCONP1AZ8ARRF3635: Expenses: P1A-Roofing 43994
- DUKHCONP1AZ8ARRF3640: Expenses: P1A-Roofing 55936
- DUKHCONP1AZ8ARRF3645: Expenses: P1A-Roofing 83344
- DUKHCONP1AZ8ARRF3650: Expenses: P1A-Metal work 63347
- DUKHCONP1AZ8ARRF3655: Expenses: P1A-Roofing 26600
- DUKHCONP1AZ8ARRF3660: Expenses: P1A-Metal work 53206
- DUKHCONP1AZ8AREL3665: Expenses: P1A-Finishes 108894
- DUKHCONP1AZ8AREL3670: Expenses: P1A-Finishes 71820
- DUKHCONP1AZ8AREL3680: Expenses: P1A-Painting and Decorating 86006
- DUKHCONP1AZ8ELGF4000: Expenses: P1A-Electrical Installations 33077
- DUKHCONP1AZ8ELGF4005: Expenses: P1A-Electrical Installations 7536
- DUKHCONP1AZ8ELGF4010: Expenses: P1A-Electrical Installations 112018
- DUKHCONP1AZ8ELGF4015: Expenses: P1A-Electrical Installations 71164
- DUKHCONP1AZ8ELGF4020: Expenses: P1A-Electrical Installations 26049
- DUKHCONP1AZ8ELGF4025: Expenses: P1A-Electrical Installations 154315
- DUKHCONP1AZ8ELGF4030: Expenses: P1A-Electrical Installations 38162
- DUKHCONP1AZ8ELFF4035: Expenses: P1A-Electrical Installations 32659
- DUKHCONP1AZ8ELFF4040: Expenses: P1A-Electrical Installations 7520
- DUKHCONP1AZ8ELFF4045: Expenses: P1A-Electrical Installations 110383
- DUKHCONP1AZ8ELFF4055: Expenses: P1A-Electrical Installations 71142
- DUKHCONP1AZ8ELFF4050: Expenses: P1A-Electrical Installations 36523
- DUKHCONP1AZ8ELFF4060: Expenses: P1A-Electrical Installations 26040
- DUKHCONP1AZ8ELFF4065: Expenses: P1A-Electrical Installations 154301

| ID | WBS | Activity | Duration | Start | Finish | Predecessors | Total float | Free float | Resources | Cost | CODE | P3 ACTID | P6 ID (old) | NP61D | PROJECT | PHASES | PACKAGE | PART | ELEMENTS | STEP | FLOORS | BILL NOS | BILL DIVISION | RES PACK |
| --- | --- | --- | --- | --- | --- | --- | --- | --- | --- | --- | --- | --- | --- | --- | --- | --- | --- | --- | --- | --- | --- | --- | --- | --- |
|  | 20 | **ROOF** |  | 2014-10-12 | 2014-11-12 |  |  |  |  |  |  |  |  |  |  |  |  |  |  |  |  |  |  |  |
| DUKHCONP1AZ8ELRF4070 |  | Installation of Isolator | 18d | 2014-10-12 | 2014-11-01 | DUKHCONP1AZ8ELFF4045 SS+10d, DUKHCONP1AZ8ELFF4065 SS+5d, DUKHCONP1AZ8ELFF4045 FF+10d, DUKHCONP1AZ8ELFF4050 FF+7d, DUKHCONP1AZ8ELFF4050 SS+5d, DUKHCONP1AZ8ELFF4065 FF+5d, DUKHCONP1AZ8ARRF3645 FF+7d, DUKHCONP1AZ8ARRF3645 SS+7d | -23d | 0d | LABOR- SUBCONTRACTOR [144 h]; ELECTRICIANS SK [268.8 h]; ISOLATOR QTY [44 ea] | 54,690 | 10 | 1AP8EWRF10 | DUKHCON1AP8ELRF4070 | DUKHCONP1AZ8ELRF4070 | DH | CON | 1A | Z8 | MEP | EW | RF | B02 | B02-D09 | RES-1A |
| DUKHCONP1AZ8ELRF4075 |  | Installation of TV Dish Antenna | 23d | 2014-10-18 | 2014-11-12 | DUKHCONP1AZ8ELRF4070 SS+5d, DUKHCONP1AZ8ELRF4070 FF+5d | -23d | 1d | LABOR- SUBCONTRACTOR [240 h]; ELECTRICIANS SK [492.8 h]; CONTROL BOX QTY [12 ea]; SWITCHING BOX QTY [32 ea] | 40,597 | 15 | 1AP8EWRF15 | DUKHCON1AP8ELRF4075 | DUKHCONP1AZ8ELRF4075 | DH | CON | 1A | Z8 | MEP | EW | RF | B02 | B02-D09 | RES-1A |
|  | 15 | **PLUMBING, DRAINAGE & FIRE FIGHTING WORKS** |  | 2014-01-28 | 2014-11-12 |  |  |  |  |  |  |  |  |  |  |  |  |  |  |  |  |  |  |  |
|  | 10 | **GROUND FLOOR** |  | 2014-01-28 | 2014-09-20 |  |  |  |  |  |  |  |  |  |  |  |  |  |  |  |  |  |  |  |
| DUKHCONP1AZ8PLUG4300 |  | Drainage / Storm Pipes in Grade Slab | 16d | 2014-01-28 | 2014-02-16 | DUKHCONP1AZ8STUG1040 FF+11d, DUKHCONP1AZ8STUG1040 SS+11d | -24d | 0d | LABOR- SUBCONTRACTOR [24 h]; MECHANICALS SK [43.2 h]; DRAINAGE PIPES QTY [80 lm] | 35,465 | 10 | 1AP8PLUG10 | DUKHCON1AP8PLUG4300 | DUKHCONP1AZ8PLUG4300 | DH | CON | 1A | Z8 | ST | SB | UG | B02 | B02-D07 | RES-1A |
| DUKHCONP1AZ8PLGF4305 |  | Installation of Plumbing pipes & testing | 18d | 2014-05-21 | 2014-06-10 | DUKHCONP1AZ7PLGF4305, DUKHCONP1AZ8ARGF3000 FF+7d, DUKHCONP1AZ8ARGF3000 SS+7d | -6d | 0d | LABOR- SUBCONTRACTOR [96 h]; MECHANICALS SK [345.6 h]; PLUMB PIPES QTY [328 lm] | 85,973 | 10 | 1AP8PLGF10 | DUKHCON1AP8PLGF4305 | DUKHCONP1AZ8PLGF4305 | DH | CON | 1A | Z8 | MEP | PL | GF | B02 | B02-D07 | RES-1A |
| DUKHCONP1AZ8PLGF4310 |  | Installation of Drainage pipes &testing | 18d | 2014-05-21 | 2014-06-10 | DUKHCONP1AZ8ARGF3000 SS+7d, DUKHCONP1AZ8PLGF4305 FF, DUKHCONP1AZ8PLGF4305 SS, DUKHCONP1AZ8ARGF3000 FF+7d | -3d | 13d | LABOR- SUBCONTRACTOR [48 h]; MECHANICALS SK [129.6 h]; DRAINAGE PIPES QTY [248 lm] | 2,966 | 15 | 1AP8PLGF15 | DUKHCON1AP8PLGF4310 | DUKHCONP1AZ8PLGF4310 | DH | CON | 1A | Z8 | MEP | PL | GF | B02 | B02-D07 | RES-1A |
| DUKHCONP1AZ8PLGF4315 |  | Sanitary Fittings & Accessories | 20d | 2014-08-23 | 2014-09-14 | DUKHCONP1AZ8PLGF4310 SS+5d, DUKHCONP1AZ8ARGF3065 FF+5d, DUKHCONP1AZ8PLGF4310 FF+5d, DUKHCONP1AZ8ARGF3065 SS+5d, DUKHCONP1AZ7PLGF4315 | 21d | 0d | LABOR- SUBCONTRACTOR [48 h]; MECHANICALS SK [86.4 h]; SANITARY ACC QTY [60 ea] | 104,291 | 20 | 1AP8PLGF20 | DUKHCON1AP8PLGF4315 | DUKHCONP1AZ8PLGF4315 | DH | CON | 1A | Z8 | MEP | PL | GF | B02 | B02-D07 | RES-1A |
| DUKHCONP1AZ8PLGF4320 |  | Installation of Water Heater | 15d | 2014-09-03 | 2014-09-20 | DUKHCONP1AZ8PLGF4315 SS+5d, DUKHCONP1AZ8PLGF4315 FF+5d, DUKHCONP1AZ7PLGF4320, DUKHCONP1AZ8ARGF3060 SS+5d, DUKHCONP1AZ8ARGF3060 FF+5d | 21d | 10d | LABOR- SUBCONTRACTOR [48 h]; MECHANICALS SK [86.4 h]; WATER HEATER QTY [12 ea] | 8,932 | 25 | 1AP8PLGF25 | DUKHCON1AP8PLGF4320 | DUKHCONP1AZ8PLGF4320 | DH | CON | 1A | Z8 | MEP | PL | GF | B02 | B02-D07 | RES-1A |
|  | 15 | **FIRST FLOORS** |  | 2014-07-03 | 2014-10-21 |  |  |  |  |  |  |  |  |  |  |  |  |  |  |  |  |  |  |  |
| DUKHCONP1AZ8PLFF4325 |  | Installation of Plumbing pipes & testing | 18d | 2014-07-03 | 2014-07-23 | DUKHCONP1AZ8ARFF3300 SS+7d, DUKHCONP1AZ8ARFF3300 FF+8d | -24d | 0d | LABOR- SUBCONTRACTOR [96 h]; MECHANICALS SK [345.6 h]; PLUMB PIPES QTY [328 lm] | 83,745 | 10 | 1AP8PLFF10 | DUKHCON1AP8PLFF4325 | DUKHCONP1AZ8PLFF4325 | DH | CON | 1A | Z8 | MEP | PL | FF | B02 | B02-D07 | RES-1A |
| DUKHCONP1AZ8PLFF4330 |  | Installation of Drainage pipes & testing | 18d | 2014-07-03 | 2014-07-23 | DUKHCONP1AZ8PLFF4325 SS, DUKHCONP1AZ8ARFF3300 SS+7d, DUKHCONP1AZ7PLFF4330, DUKHCONP1AZ8PLFF4325 FF, DUKHCONP1AZ8ARFF3300 FF+7d | -2d | 7d | LABOR- SUBCONTRACTOR [48 h]; MECHANICALS SK [129.6 h]; DRAINAGE PIPES QTY [248 lm] | 2,542 | 15 | 1AP8PLFF15 | DUKHCON1AP8PLFF4330 | DUKHCONP1AZ8PLFF4330 | DH | CON | 1A | Z8 | MEP | PL | FF | B02 | B02-D07 | RES-1A |
| DUKHCONP1AZ8PLFF4335 |  | Sanitary Fittings & Accessories | 20d | 2014-09-21 | 2014-10-15 | DUKHCONP1AZ8ARFF3365 SS, DUKHCONP1AZ8PLFF4330 SS+5d, DUKHCONP1AZ8ARFF3365 FF+5d, DUKHCONP1AZ8PLFF4330 FF+5d | -19d | 0d | LABOR- SUBCONTRACTOR [24 h]; MECHANICALS SK [43.2 h]; SANITARY ACC QTY [56 ea] | 113,094 | 20 | 1AP8PLFF20 | DUKHCON1AP8PLFF4335 | DUKHCONP1AZ8PLFF4335 | DH | CON | 1A | Z8 | MEP | PL | FF | B02 | B02-D07 | RES-1A |
| DUKHCONP1AZ8PLFF4340 |  | Installation of Water Heater | 15d | 2014-10-02 | 2014-10-21 | DUKHCONP1AZ8ARFF3360 FF+5d, DUKHCONP1AZ7PLFF4340, DUKHCONP1AZ8PLFF4335 FF+5d, DUKHCONP1AZ8ARFF3360 SS+5d, DUKHCONP1AZ8PLFF4335 SS+5d | -19d | 4d | LABOR- SUBCONTRACTOR [24 h]; MECHANICALS SK [43.2 h]; WATER HEATER QTY [8 ea] | 7,006 | 25 | 1AP8PLFF25 | DUKHCON1AP8PLFF4340 | DUKHCONP1AZ8PLFF4340 | DH | CON | 1A | Z8 | MEP | PL | FF | B02 | B02-D07 | RES-1A |
|  | 20 | **ROOF** |  | 2014-07-22 | 2014-11-12 |  |  |  |  |  |  |  |  |  |  |  |  |  |  |  |  |  |  |  |
| DUKHCONP1AZ8PLRF4345 |  | Installation of Plumbing pipes & fittings | 15d | 2014-07-22 | 2014-08-11 | DUKHCONP1AZ8ARRF3605 FF+7d, DUKHCONP1AZ8ARRF3605 SS+7d | 32d | 30d | LABOR- SUBCONTRACTOR [24 h]; MECHANICALS SK [86.4 h]; PLUMB PIPES QTY [96 lm] | 12,902 | 10 | 1AP8PLRF10 | DUKHCON1AP8PLRF4345 | DUKHCONP1AZ8PLRF4345 | DH | CON | 1A | Z8 | MEP | PL | RF | B02 | B02-D07 | RES-1A |
| DUKHCONP1AZ8PLRF4350 |  | Installation of Rain water Pipes | 15d | 2014-09-08 | 2014-09-24 | DUKHCONP1AZ8PLRF4345 FF+8d, DUKHCONP1AZ7PLRF4350, DUKHCONP1AZ8PLFF4330 SS+5d, DUKHCONP1AZ8ARRF3645 SS+5d, DUKHCONP1AZ8ARRF3645 FF+5d, DUKHCONP1AZ8AREL3665 FF+7d, DUKHCONP1AZ8PLRF4345 SS+8d, DUKHCONP1AZ8AREL3665 SS+7d, DUKHCONP1AZ8PLFF4330 FF+5d | 2d | 10d | LABOR- SUBCONTRACTOR [24 h]; MECHANICALS SK [43.2 h]; DRAINAGE PIPES QTY [80 lm] | 93,917 | 15 | 1AP8PLRF15 | DUKHCON1AP8PLRF4350 | DUKHCONP1AZ8PLRF4350 | DH | CON | 1A | Z8 | MEP | PL | RF | B02 | B02-D07 | RES-1A |
| DUKHCONP1AZ8PLRF4355 |  | Roof Water Tank Installation & Connections | 25d | 2014-10-15 | 2014-11-12 | DUKHCONP1AZ8PLRF4345 FF+8d, DUKHCONP1AZ8PLRF4345 SS+8d, DUKHCONP1AZ8ARRF3655 SS+5d, DUKHCONP1AZ8PLRF4350 FF+5d, DUKHCONP1AZ7PLRF4355, DUKHCONP1AZ8PLFF4340 SS+5d, DUKHCONP1AZ8PLRF4350 SS+5d, DUKHCONP1AZ8PLFF4340 FF+5d, DUKHCONP1AZ8ARRF3655 FF+5d | -23d | 0d | MECHANICALS SK [216 h]; WATER TANK QTY [20 ea]; LABOR- SUBCONTRACTOR [120 h] | 592,597 | 20 | 1AP8PLRF20 | DUKHCON1AP8PLRF4355 | DUKHCONP1AZ8PLRF4355 | DH | CON | 1A | Z8 | MEP | PL | RF | B02 | B02-D07 | RES-1A |
|  | 20 | **AC WORKS** |  | 2014-06-10 | 2014-11-10 |  |  |  |  |  |  |  |  |  |  |  |  |  |  |  |  |  |  |  |
|  | 10 | **GROUND FLOOR** |  | 2014-06-10 | 2014-09-17 |  |  |  |  |  |  |  |  |  |  |  |  |  |  |  |  |  |  |  |
| DUKHCONP1AZ8ACGF4600 |  | Installation AC Pipes | 20d | 2014-06-10 | 2014-07-02 | DUKHCONP1AZ8ARGF3005 SS+7d, DUKHCONP1AZ7ACGF4600, DUKHCONP1AZ8ARGF3005 FF+7d | 25d | 5d | LABOR- SUBCONTRACTOR [216 h]; AC TECHNICIAN SK [761.6 h]; AC PIPES QTY [2008 lm] | 8,069 | 10 | 1AP8ACGF10 | DUKHCON1AP8ACGF4600 | DUKHCONP1AZ8ACGF4600 | DH | CON | 1A | Z8 | MEP | AC | GF | B02 | B02-D08 | RES-1A |
| DUKHCONP1AZ8ACGF4605 |  | Fixing of Ventilation Equipments | 25d | 2014-08-05 | 2014-09-02 | DUKHCONP1AZ8ACGF4600 FF+10d, DUKHCONP1AZ8ARGF3060 SS+7d, DUKHCONP1AZ8ARGF3055 FF+7d, DUKHCONP1AZ8ARGF3060 FF+7d, DUKHCONP1AZ8ARGF3055 SS+7d, DUKHCONP1AZ8ACGF4600 SS+10d, DUKHCONP1AZ7ACGF4605 | 8d | 0d | LABOR- SUBCONTRACTOR [48 h]; AC TECHNICIAN SK [134.4 h]; VENTILIATION EQP QTY [40 ea] | 17,289 | 15 | 1AP8ACGF15 | DUKHCON1AP8ACGF4605 | DUKHCONP1AZ8ACGF4605 | DH | CON | 1A | Z8 | MEP | AC | GF | B02 | B02-D08 | RES-1A |
| DUKHCONP1AZ8ACGF4610 |  | Fixing of Split AC | 20d | 2014-08-26 | 2014-09-17 | DUKHCONP1AZ7ACGF4610, DUKHCONP1AZ8ACGF4605 SS+13d, DUKHCONP1AZ8ACGF4605 FF+13d | 8d | 5d | LABOR- SUBCONTRACTOR [72 h]; AC TECHNICIAN SK [224 h]; SPLIT UNIT QTY [40 ea] | 48,894 | 20 | 1AP8ACGF20 | DUKHCON1AP8ACGF4610 | DUKHCONP1AZ8ACGF4610 | DH | CON | 1A | Z8 | MEP | AC | GF | B02 | B02-D08 | RES-1A |

Notes:
- DUKHCONP1AZ8ELRF4070: Expenses: P1A-Electrical Installations 54690
- DUKHCONP1AZ8ELRF4075: Expenses: P1A-Electrical Installations 40597
- DUKHCONP1AZ8PLUG4300: Expenses: P1A-Plumbing and Drainage works 35465
- DUKHCONP1AZ8PLGF4305: Expenses: P1A-Plumbing and Drainage works 85973
- DUKHCONP1AZ8PLGF4310: Expenses: P1A-Plumbing and Drainage works 2966
- DUKHCONP1AZ8PLGF4315: Expenses: P1A-Plumbing and Drainage works 104291
- DUKHCONP1AZ8PLGF4320: Expenses: P1A-Plumbing and Drainage works 8932
- DUKHCONP1AZ8PLFF4325: Expenses: P1A-Plumbing and Drainage works 83745
- DUKHCONP1AZ8PLFF4330: Expenses: P1A-Plumbing and Drainage works 2542
- DUKHCONP1AZ8PLFF4335: Expenses: P1A-Plumbing and Drainage works 113094
- DUKHCONP1AZ8PLFF4340: Expenses: P1A-Plumbing and Drainage works 7006
- DUKHCONP1AZ8PLRF4345: Expenses: P1A-Plumbing and Drainage works 12902
- DUKHCONP1AZ8PLRF4350: Expenses: P1A-Plumbing and Drainage works 93917
- DUKHCONP1AZ8PLRF4355: Expenses: P1A-Plumbing and Drainage works 592597
- DUKHCONP1AZ8ACGF4600: Expenses: P1A-Air-conditioning and Ventilation works 8069
- DUKHCONP1AZ8ACGF4605: Expenses: P1A-Air-conditioning and Ventilation works 17289
- DUKHCONP1AZ8ACGF4610: Expenses: P1A-Air-conditioning and Ventilation works 48894

| ID | WBS | Activity | Duration | Start | Finish | Predecessors | Total float | Free float | Resources | Cost | CODE | P3 ACTID | P6 ID (old) | NP61D | PROJECT | PHASES | PACKAGE | PART | ELEMENTS | STEP | FLOORS | BILL NOS | BILL DIVISION | RES PACK |
| --- | --- | --- | --- | --- | --- | --- | --- | --- | --- | --- | --- | --- | --- | --- | --- | --- | --- | --- | --- | --- | --- | --- | --- | --- |
|  | 15 | **FIRST FLOORS** |  | 2014-07-24 | 2014-10-29 |  |  |  |  |  |  |  |  |  |  |  |  |  |  |  |  |  |  |  |
| DUKHCONP1AZ8ACFF4615 |  | Installation AC Pipes | 20d | 2014-07-24 | 2014-08-19 | DUKHCONP1AZ7ACFF4615, DUKHCONP1AZ8ARFF3305 SS+7d, DUKHCONP1AZ8ARFF3305 FF+7d | 3d | 5d | LABOR- SUBCONTRACTOR [216 h]; AC TECHNICIAN SK [761.6 h]; AC PIPES QTY [2008 lm] | 7,555 | 10 | 1AP8ACFF10 | DUKHCON1AP8ACFF4615 | DUKHCONP1AZ8ACFF4615 | DH | CON | 1A | Z8 | MEP | AC | FF | B02 | B02-D08 | RES-1A |
| DUKHCONP1AZ8ACFF4620 |  | Fixing of Ventilation Equipments | 25d | 2014-09-14 | 2014-10-14 | DUKHCONP1AZ8ACFF4615 SS+10d, DUKHCONP1AZ8ACFF4615 FF+10d, DUKHCONP1AZ8ARFF3360 FF+7d, DUKHCONP1AZ7ACFF4620, DUKHCONP1AZ8ARFF3360 SS+7d | -22d | 0d | LABOR- SUBCONTRACTOR [24 h]; AC TECHNICIAN SK [89.6 h]; VENTILIATION EQP QTY [24 ea] | 17,083 | 15 | 1AP8ACFF15 | DUKHCON1AP8ACFF4620 | DUKHCONP1AZ8ACFF4620 | DH | CON | 1A | Z8 | MEP | AC | FF | B02 | B02-D08 | RES-1A |
| DUKHCONP1AZ8ACFF4625 |  | Fixing of Split AC | 20d | 2014-10-05 | 2014-10-29 | DUKHCONP1AZ8ACFF4620 SS+13d, DUKHCONP1AZ8ACFF4620 FF+13d, DUKHCONP1AZ7ACFF4625 | -22d | 0d | LABOR- SUBCONTRACTOR [72 h]; AC TECHNICIAN SK [224 h]; SPLIT UNIT QTY [40 ea] | 54,090 | 20 | 1AP8ACFF20 | DUKHCON1AP8ACFF4625 | DUKHCONP1AZ8ACFF4625 | DH | CON | 1A | Z8 | MEP | AC | FF | B02 | B02-D08 | RES-1A |
|  | 20 | **ROOF** |  | 2014-08-30 | 2014-11-10 |  |  |  |  |  |  |  |  |  |  |  |  |  |  |  |  |  |  |  |
| DUKHCONP1AZ8ACRF4630 |  | Installation of Refrigerant Pipes | 25d | 2014-08-30 | 2014-09-27 | DUKHCONP1AZ8ACGF4600 FF+7d, DUKHCONP1AZ8ARRF3645 FF+7d, DUKHCONP1AZ8ACFF4615 FF+7d, DUKHCONP1AZ7ACRF4630, DUKHCONP1AZ8ARRF3645 SS+7d, DUKHCONP1AZ8ACFF4615 SS+7d, DUKHCONP1AZ8ACGF4600 SS+7d | 10d | 0d | LABOR- SUBCONTRACTOR [96 h]; AC TECHNICIAN SK [313.6 h]; AC PIPES QTY [848 lm] | 24,880 | 10 | 1AP8ACRF10 | DUKHCON1AP8ACRF4630 | DUKHCONP1AZ8ACRF4630 | DH | CON | 1A | Z8 | MEP | AC | RF | B02 | B02-D08 | RES-1A |
| DUKHCONP1AZ8ACRF4635 |  | Installation of Condensing Unit | 25d | 2014-10-13 | 2014-11-10 | DUKHCONP1AZ8ACRF4630 SS+5d, DUKHCONP1AZ7ACRF4635, DUKHCONP1AZ8ACGF4610 SS+5d, DUKHCONP1AZ8ACRF4630 FF+5d, DUKHCONP1AZ8ACFF4625 SS+5d, DUKHCONP1AZ8ACGF4610 FF+5d, DUKHCONP1AZ8ACFF4625 FF+5d | -21d | 0d | LABOR- SUBCONTRACTOR [120 h]; AC TECHNICIAN SK [448 h]; AC UNITS QTY [80 ea] | 134,618 | 15 | 1AP8ACRF15 | DUKHCON1AP8ACRF4635 | DUKHCONP1AZ8ACRF4635 | DH | CON | 1A | Z8 | MEP | AC | RF | B02 | B02-D08 | RES-1A |
|  | 25 | **EXTERNAL WORKS** |  | 2014-06-17 | 2014-11-03 |  |  |  |  |  |  |  |  |  |  |  |  |  |  |  |  |  |  |  |
|  | 10 | **MISCELLANEOUS** |  | 2014-06-17 | 2014-10-30 |  |  |  |  |  |  |  |  |  |  |  |  |  |  |  |  |  |  |  |
| DUKHCONP1AZ8MSEX5000 |  | Construction of Manholes | 25d | 2014-06-17 | 2014-07-15 | DUKHCONP1AZ8STRF2055 SS+10d, DUKHCONP1AZ8PLGF4310 SS+10d, DUKHCONP1AZ8STRF2055 FF+10d, DUKHCONP1AZ8PLGF4310 FF+10d | -16d | 0d | MANHOLES SK [384 h]; LABOR- SUBCONTRACTOR [144 h]; MANHOLES QTY [48 ea] | 56,173 | 25 | 1AP8MSEX25 | DUKHCON1AP8MS005000 | DUKHCONP1AZ8MSEX5000 | DH | CON | 1A | Z8 | EX | MS |  | B02 | B02-D12 | RES-1A |
| DUKHCONP1AZ8MSEX5005 |  | Construction of Soak pit, Chambers | 25d | 2014-07-01 | 2014-07-29 | DUKHCONP1AZ8MSEX5000 FF+12d, DUKHCONP1AZ8MSEX5000 SS+12d | -16d | 0d | MANHOLES SK [128 h]; LABOR- SUBCONTRACTOR [48 h]; SOAKPIT QTY [16 ea] | 33,032 | 30 | 1AP8MSEX30 | DUKHCON1AP8MS005005 | DUKHCONP1AZ8MSEX5005 | DH | CON | 1A | Z8 | EX | MS |  | B02 | B02-D12 | RES-1A |
| DUKHCONP1AZ8MSEX5015 |  | Construction of grease Trap | 20d | 2014-07-21 | 2014-08-16 | DUKHCONP1AZ8MSEX5005 FF+12d, DUKHCONP1AZ8MSEX5005 SS+12d | -16d | 0d | LABOR- SUBCONTRACTOR [24 h]; GREASE TRAP QTY [16 lm]; HANDRAIL ERECTOR SKILLED [32 h] | 22,696 | 20 | 1AP8MSEX20 | DUKHCON1AP8MS005015 | DUKHCONP1AZ8MSEX5015 | DH | CON | 1A | Z8 | EX | MS |  | B02 | B02-D07 | RES-1A |
| DUKHCONP1AZ8MSEX5020 |  | Construction Entrance Ramp | 25d | 2014-08-11 | 2014-09-08 | DUKHCONP1AZ7MSEX5020, DUKHCONP1AZ8STRF2055 SS, DUKHCONP1AZ8STRF2055 FF | -8d | 0d | SCREED MASON SK [96 h]; CONCRETE MASON SK [192 h]; INTERLOCK MASON SK [128 h]; LABOR- SUBCONTRACTOR [192 h]; LABOR- SUBCONTRACTOR [48 h]; SCREED QTY [112 Sqm]; CONCRETE QTY [96 Cum]; INTERLOCK QTY [152 Sqm] | 31,768 | 10 | 1AP8MSEX10 | DUKHCON1AP8MS005020 | DUKHCONP1AZ8MSEX5020 | DH | CON | 1A | Z8 | EX | MS |  | B02 | B02-D12 | RES-1A |
| DUKHCONP1AZ8MSEX5010 |  | Telephone cable laying | 25d | 2014-08-17 | 2014-09-14 | DUKHCONP1AZ8MSEX5015 | -16d | 0d | LABOR- SUBCONTRACTOR [125 h]; ELECTRICIANS SK [125 h]; CONCRETE MASON SK [125 h] | 3,557 |  | 1AP8MSEX40 | DUKHCON1AP8MS005010 | DUKHCONP1AZ8MSEX5010 | DH | CON | 1A | Z8 | EX | MS |  | B02 | B02-D12 | RES-1A |
| DUKHCONP1AZ8MSEX5025 |  | SS.Handrails and Balustrades | 20d | 2014-08-28 | 2014-09-20 | DUKHCONP1AZ8MSEX5020 SS+10d, DUKHCONP1AZ8MSEX5020 FF+10d | -5d | 0d | LABOR- SUBCONTRACTOR [24 h]; S.S.BALUSTRADE QTY [16 lm]; HANDRAIL ERECTOR SKILLED [32 h] | 81,420 | 15 | 1AP8MSEX15 | DUKHCON1AP8MS005025 | DUKHCONP1AZ8MSEX5025 | DH | CON | 1A | Z8 | EX | MS |  | B02 | B02-D12 | RES-1A |
| DUKHCONP1AZ8MSEX5335 |  | Aluminum Roll-up Shutter with 2m Wall | 25d | 2014-09-30 | 2014-10-30 | DUKHCONP1AZ7MSEX5335 SS+7d, DUKHCONI1AZ4BWGL5325 | 31d | 21d | LABOR- SUBCONTRACTOR [200 h]; DOOR ERECTOR SK [200 h]; ROLLING SHUTTER QTY [8 ea] | 59,528 | 25 | 1AP8BWFR25 | DUKHCON1AP8MS005335 | DUKHCONP1AZ8MSEX5335 | DH | CON | 1A | Z8 | EX | MS |  | B02 | B02-D12 | RES-1A |
|  | 15 | **WATER TANK ENCLOSURE** |  | 2014-07-05 | 2014-11-03 |  |  |  |  |  |  |  |  |  |  |  |  |  |  |  |  |  |  |  |
| DUKHCONP1AZ8WEEX5030 |  | Excavation | 20d | 2014-07-05 | 2014-07-27 | DUKHCONP1AZ8STRF2055 FF+5d, DUKHCONP1AZ8STRF2055 SS+5d, DUKHCONP1AZ7WEEX5030 | 19d | 0d | POCLAIN [20 h]; TRUCK [10 h]; EQUIP OPERATORS [40 h]; LABOR- SUBCONTRACTOR [24 h]; EXCAVATION QTY [40 Cum]; LOADER [10 h] | 896 | 10 | 1AP8WEEX10 | DUKHCON1AP8WE005030 | DUKHCONP1AZ8WEEX5030 | DH | CON | 1A | Z8 | EX | WE |  | B02 | B02-D12 | RES-1A |
| DUKHCONP1AZ8WEEX5035 |  | Construction of Raft | 25d | 2014-07-10 | 2014-08-11 | DUKHCONP1AZ8WEEX5030 FF+10d, DUKHCONP1AZ8WEEX5030 SS+5d | 19d | 0d | STEEL FIXERS SK [64 h]; CARPENTERS SK [384 h]; CONCRETE MASON SK [32 h]; LABOR- SUBCONTRACTOR [360 h]; REINFORCEMENT BARS QTY [624 kg]; FORMWORK QTY [184 Sqm]; CONCRETE QTY [20 Cum] | 15,216 | 15 | 1AP8WEEX15 | DUKHCON1AP8WE005035 | DUKHCONP1AZ8WEEX5035 | DH | CON | 1A | Z8 | EX | WE |  | B02 | B02-D12 | RES-1A |
| DUKHCONP1AZ8WEEX5040 |  | Block works & Plastering | 25d | 2014-07-20 | 2014-08-20 | DUKHCONP1AZ8WEEX5035 FF+8d, DUKHCONP1AZ8WEEX5035 SS+8d | 19d | 0d | BLOCK MASON SK [128 h]; PLASTER MASON SK [192 h]; LABOR- SUBCONTRACTOR [192 h]; BLOCK QTY [56 Sqm]; PLASTER QTY [112 Sqm] | 13,582 | 20 | 1AP8WEEX20 | DUKHCON1AP8WE005040 | DUKHCONP1AZ8WEEX5040 | DH | CON | 1A | Z8 | EX | WE |  | B02 | B02-D12 | RES-1A |
| DUKHCONP1AZ8WEEX5045 |  | Flooring & Painting | 25d | 2014-07-27 | 2014-08-27 | DUKHCONP1AZ8WEEX5040 FF+6d, DUKHCONP1AZ8WEEX5040 SS+6d | 19d | 24d | LABOR- SUBCONTRACTOR [72 h]; PAINT QTY [156 Sqm]; EPOXY QTY [44 Sqm]; PAINTERS SK [128 h]; EPOXY SK [32 h] | 12,744 | 25 | 1AP8WEEX25 | DUKHCON1AP8WE005045 | DUKHCONP1AZ8WEEX5045 | DH | CON | 1A | Z8 | EX | WE |  | B02 | B02-D12 | RES-1A |
| DUKHCONP1AZ8WEEX5050 |  | Installation of Steel Gate | 20d | 2014-09-09 | 2014-10-01 | DUKHCONP1AZ8MSEX5025 FF+10d, DUKHCONP1AZ8WEEX5045 FF+6d, DUKHCONP1AZ8WEEX5045 SS+5d | -5d | 9d | LABOR- SUBCONTRACTOR [24 h]; GATE QTY [4 ea]; GATE ERECTOR SK [32 h] | 71,872 | 30 | 1AP8WEEX30 | DUKHCON1AP8WE005050 | DUKHCONP1AZ8WEEX5050 | DH | CON | 1A | Z8 | EX | WE |  | B02 | B02-D12 | RES-1A |
| DUKHCONP1AZ8WEEX5060 |  | Structural steel & SS Shed cover installation | 25d | 2014-09-25 | 2014-10-26 | DUKHCONP1AZ7WEEX5060, DUKHCONP1AZ8MSEX5025 FF+10d, DUKHCONP1AZ8WEEX5050 SS+5d, DUKHCONP1AZ8WEEX5050 FF+10d | -14d | 0d | LABOR- SUBCONTRACTOR [144 h]; STRUCTURAL STEEL QTY [128 kg]; SS SHED COVER QTY [40 Sqm]; STEEL ERECTOR SK [192 h] | 45,463 | 35 | 1AP8WEEX35 | DUKHCON1AP8WE005060 | DUKHCONP1AZ8WEEX5060 | DH | CON | 1A | Z8 | EX | WE |  | B02 | B02-D12 | RES-1A |
| DUKHCONP1AZ8WEEX5065 |  | Install. of Water Tank,Chiller,Pump & Meter | 25d | 2014-10-04 | 2014-11-03 | DUKHCONP1AZ8MSEX5015 FF+5d, DUKHCONP1AZ8MSEX5015 SS+5d, DUKHCONP1AZ8PLRF4350 FF+5d, DUKHCONP1AZ7WEEX5065, DUKHCONP1AZ8WEEX5060 FF+6d, DUKHCONP1AZ8WEEX5060 SS+6d, DUKHCONP1AZ8PLRF4350 SS+5d | -15d | 0d | LABOR- SUBCONTRACTOR [72 h]; AC TECHNICIAN SK [44.8 h]; MECHANICALS SK [86.4 h]; WATER TANK QTY [4 ea]; CHILLER QTY [40 ea]; PUMP QTY [4 ea] | 122,349 | 40 | 1AP8WEEX40 | DUKHCON1AP8WE005065 | DUKHCONP1AZ8WEEX5065 | DH | CON | 1A | Z8 | EX | WE |  | B02 | B02-D07 | RES-1A |

Notes:
- DUKHCONP1AZ8ACFF4615: Expenses: P1A-Air-conditioning and Ventilation works 7555
- DUKHCONP1AZ8ACFF4620: Expenses: P1A-Air-conditioning and Ventilation works 17083
- DUKHCONP1AZ8ACFF4625: Expenses: P1A-Air-conditioning and Ventilation works 54090
- DUKHCONP1AZ8ACRF4630: Expenses: P1A-Air-conditioning and Ventilation works 24880
- DUKHCONP1AZ8ACRF4635: Expenses: P1A-Air-conditioning and Ventilation works 134618
- DUKHCONP1AZ8MSEX5000: Expenses: P1A-External works within the Plot Curtilage 56173
- DUKHCONP1AZ8MSEX5005: Expenses: P1A-External works within the Plot Curtilage 33032
- DUKHCONP1AZ8MSEX5015: Expenses: P1A-Plumbing and Drainage works 22696
- DUKHCONP1AZ8MSEX5020: Expenses: P1A-External works within the Plot Curtilage 31768
- DUKHCONP1AZ8MSEX5010: Expenses: P1A-External works within the Plot Curtilage 3557
- DUKHCONP1AZ8MSEX5025: Expenses: P1A-External works within the Plot Curtilage 81420
- DUKHCONP1AZ8MSEX5335: Expenses: P1A-External works within the Plot Curtilage 59528
- DUKHCONP1AZ8WEEX5030: Expenses: P1A-External works within the Plot Curtilage 896
- DUKHCONP1AZ8WEEX5035: Expenses: P1A-External works within the Plot Curtilage 15216
- DUKHCONP1AZ8WEEX5040: Expenses: P1A-External works within the Plot Curtilage 13582
- DUKHCONP1AZ8WEEX5045: Expenses: P1A-External works within the Plot Curtilage 12744
- DUKHCONP1AZ8WEEX5050: Expenses: P1A-External works within the Plot Curtilage 71872
- DUKHCONP1AZ8WEEX5060: Expenses: P1A-External works within the Plot Curtilage 45463
- DUKHCONP1AZ8WEEX5065: Expenses: P1A-Plumbing and Drainage works 122349

| ID | WBS | Activity | Duration | Start | Finish | Predecessors | Total float | Free float | Resources | Cost | CODE | P3 ACTID | P6 ID (old) | NP61D | PROJECT | PHASES | PACKAGE | PART | ELEMENTS | STEP | BILL NOS | BILL DIVISION | RES PACK | FLOORS | rem |
| --- | --- | --- | --- | --- | --- | --- | --- | --- | --- | --- | --- | --- | --- | --- | --- | --- | --- | --- | --- | --- | --- | --- | --- | --- | --- |
|  | 20 | **HARD LANDSCAPING** |  | 2014-08-25 | 2014-10-05 |  |  |  |  |  |  |  |  |  |  |  |  |  |  |  |  |  |  |  |  |
| DUKHCONP1AZ8HDEX5090 |  | kerb works | 20d | 2014-08-25 | 2014-09-16 | DUKHCONP1AZ8MSEX5020 SS+7d, DUKHCONP1AZ8MSEX5020 FF+7d, DUKHCONP1AZ7HDEX5090 | -8d | 0d | KERBSTONE MASON SK [224 h]; LABOR- SUBCONTRACTOR [120 h]; KERBSTONE QTY [288 lm] | 13,284 | 10 | 1AP8HDEX10 | DUKHCON1AP8HD005090 | DUKHCONP1AZ8HDEX5090 | DH | CON | 1A | Z8 | EX | HD | B02 | B02-D12 | RES-1A |  |  |
| DUKHCONP1AZ8HDEX5095 |  | Cobble Stone Works | 20d | 2014-09-06 | 2014-09-28 | DUKHCONP1AZ8HDEX5090 FF+10d, DUKHCONP1AZ8HDEX5090 SS+10d | -8d | 0d | TILE MASON SK [128 h]; LABOR- SUBCONTRACTOR [72 h]; COBBLE STONE QTY [88 Sqm] | 12,232 | 15 | 1AP8HDEX15 | DUKHCON1AP8HD005095 | DUKHCONP1AZ8HDEX5095 | DH | CON | 1A | Z8 | EX | HD | B02 | B02-D12 | RES-1A |  |  |
| DUKHCONP1AZ8HDEX5100 |  | Interlock works | 20d | 2014-09-13 | 2014-10-05 | DUKHCONP1AZ8HDEX5095 FF+6d, DUKHCONP1AZ8HDEX5095 SS+6d | -8d | 0d | INTERLOCK MASON SK [160 h]; LABOR- SUBCONTRACTOR [72 h]; INTERLOCK QTY [184 Sqm] | 15,733 | 20 | 1AP8HDEX20 | DUKHCON1AP8HD005100 | DUKHCONP1AZ8HDEX5100 | DH | CON | 1A | Z8 | EX | HD | B02 | B02-D12 | RES-1A |  |  |
|  | 25 | **SOFT LANDSCAPING** |  | 2014-09-18 | 2014-10-26 |  |  |  |  |  |  |  |  |  |  |  |  |  |  |  |  |  |  |  |  |
| DUKHCONP1AZ8SLEX5105 |  | Laying of Grass/ green area | 25d | 2014-09-18 | 2014-10-19 | DUKHCONP1AZ8HDEX5100 SS+5d, DUKHCONP1AZ8HDEX5100 FF+5d | -8d | 0d | LABOR- SUBCONTRACTOR [1176 h]; SWEET SOIL QTY [336 Cum]; GRASS QTY [336 Sqm]; LANDSCAPING SK [1568 h] | 41,328 | 10 | 1AP8SLEX10 | DUKHCON1AP8SL005105 | DUKHCONP1AZ8SLEX5105 | DH | CON | 1A | Z8 | EX | SL | B02 | B02-D12 | RES-1A |  |  |
| DUKHCONP1AZ8SLEX5110 |  | Laying of Palm tree | 25d | 2014-09-25 | 2014-10-26 | DUKHCONP1AZ8SLEX5105 SS+6d, DUKHCONP1AZ8SLEX5105 FF+6d | -8d | 16d | LABOR- SUBCONTRACTOR [72 h]; SWEET SOIL QTY [48 Cum]; PLAM TREES QTY [16 ea]; LANDSCAPING SK [96 h] | 48,672 | 15 | 1AP8SLEX15 | DUKHCON1AP8SL005110 | DUKHCONP1AZ8SLEX5110 | DH | CON | 1A | Z8 | EX | SL | B02 | B02-D12 | RES-1A |  |  |
|  | 30 | **TESTING AND COMMISSIONING** |  | 2014-11-15 | 2014-12-13 |  |  |  |  |  |  |  |  |  |  |  |  |  |  |  |  |  |  |  |  |
| DUKHCONP1AZ8ACTC8000 |  | Pre-Commissioning & Testing of AC Works | 25d | 2014-11-15 | 2014-12-13 | DUKHCONP1AZ8SLEX5110, DUKHCONP1AZ7ACTC8000, DUKHCONP1AZ8HDEX5100, DUKHCONP1AZ8AREL3680, DUKHCONP1AZ8ARRF3620, DUKHCONP1AZ8SLEX5105, DUKHCONP1AZ8PLRF4350, DUKHCONP1AZ8ACFF4625, DUKHCONP1AZ8ARFF3395, DUKHCONP1AZ8ARGF3095, DUKHCONP1AZ8ARRF3660, DUKHCONP1AZ8MSEX5005, DUKHCONP1AZ8PLRF4355, DUKHCONP1AZ8ACRF4635 | -24d | 0d | LABOR- SUBCONTRACTOR [500 h]; AC TECHNICIAN SK [1000 h] | 3,168 |  | 1AP8ACU100 | DUKHCON1AP8AC008000 | DUKHCONP1AZ8ACTC8000 | DH | CON | 1A | Z8 | TES |  | B02 | B02-D08 | RES-1A |  |  |
| DUKHCONP1AZ8ELTC8010 |  | Pre-Commissioning & Testing of Electrical Works | 25d | 2014-11-15 | 2014-12-13 | DUKHCONP1AZ8MSEX5005, DUKHCONP1AZ8ELFF4065, DUKHCONP1AZ8ELFF4055, DUKHCONP1AZ8HDEX5100, DUKHCONP1AZ8ELGF4025, DUKHCONP1AZ8ARRF3655, DUKHCONP1AZ8ARRF3620, DUKHCONP1AZ8SLEX5110, DUKHCONP1AZ8ARRF3660, DUKHCONP1AZ7ELTC8010, DUKHCONP1AZ8ELGF4015, DUKHCONP1AZ8ELRF4075, DUKHCONP1AZ8ARFF3395, DUKHCONP1AZ8ARGF3095, DUKHCONP1AZ8ELGF4030, DUKHCONP1AZ8AREL3680, DUKHCONP1AZ8SLEX5105, DUKHCONP1AZ8ELFF4050 | -24d | 0d | LABOR- SUBCONTRACTOR [1000 h]; ELECTRICIANS SK [2000 h] | 40,656 |  | 1AP8ELE100 | DUKHCON1AP8EL008010 | DUKHCONP1AZ8ELTC8010 | DH | CON | 1A | Z8 | TES |  | B02 | B02-D09 | RES-1A |  |  |
| DUKHCONP1AZ8PLTC8005 |  | Pre-Commissioning & Testing of Plumbing Works | 25d | 2014-11-15 | 2014-12-13 | DUKHCONP1AZ8HDEX5100, DUKHCONP1AZ8SLEX5110, DUKHCONP1AZ8ARRF3620, DUKHCONP1AZ8ARFF3395, DUKHCONP1AZ8SLEX5105, DUKHCONP1AZ8ARRF3660, DUKHCONP1AZ8MSEX5005, DUKHCONP1AZ8PLGF4320, DUKHCONP1AZ8PLRF4350, DUKHCONP1AZ8ARRF3655, DUKHCONP1AZ8ARGF3095, DUKHCONP1AZ8PLRF4355, DUKHCONP1AZ7PLTC8005, DUKHCONP1AZ8WEEX5065, DUKHCONP1AZ8AREL3680 | -24d | 0d | LABOR- SUBCONTRACTOR [1000 h]; MECHANICALS SK [2000 h] | 9,008 |  | 1AP8PLU100 | DUKHCON1AP8PL008005 | DUKHCONP1AZ8PLTC8005 | DH | CON | 1A | Z8 | TES |  | B02 | B02-D07 | RES-1A |  |  |
|  | 50 | **ZONE - 9 (5 Twin Villas)** |  | 2013-10-24 | 2015-01-12 |  |  |  |  |  |  |  |  |  |  |  |  |  |  |  |  |  |  |  |  |
|  | 10 | **STRUCTURAL WORKS** |  | 2013-10-24 | 2014-08-18 |  |  |  |  |  |  |  |  |  |  |  |  |  |  |  |  |  |  |  |  |
|  | 10 | **SUB STRUCTURE** |  | 2013-10-24 | 2014-04-06 |  |  |  |  |  |  |  |  |  |  |  |  |  |  |  |  |  |  |  |  |
|  | 10 | **UPTO GRADE SLAB** |  | 2013-10-24 | 2014-04-06 |  |  |  |  |  |  |  |  |  |  |  |  |  |  |  |  |  |  |  |  |
| DUKHCONP1AZ9STUG1000 |  | Footing Excavation | 25d | 2013-10-24 | 2013-11-21 | DUKHCONP1AGNSP005000, DUKHCONP1AZ8STUG1000 | -11d | 0d | LABOR- SUBCONTRACTOR [738 h]; EXCAVATION QTY [1230 Cum]; LOADER [164 h]; POCLAIN [328 h]; TRUCK [164 h]; EQUIP OPERATORS [656 h] | 85,320 | 10 | 1AP9SBUG10 | DUKHCON1AP9STUG1000 | DUKHCONP1AZ9STUG1000 | DH | CON | 1A | Z9 | ST | SB | B02 | B02-D01 | RES-1A | UG |  |
| DUKHCONP1AZ9STUG1005 |  | Footing Antitermite | 23d | 2013-11-05 | 2013-12-01 | DUKHCONP1AZ9STUG1000 SS+10d, DUKHCONP1AZ9STUG1000 FF+5d | -11d | 0d | ANTITERMITE QTY [3600 sqft]; ANTITERMITE SK [1440 h]; LABOR- SUBCONTRACTOR [540 h] | 10,800 | 15 | 1AP9SBUG15 | DUKHCON1AP9STUG1005 | DUKHCONP1AZ9STUG1005 | DH | CON | 1A | Z9 | ST | SB | B02 | B02-D01 | RES-1A | UG | REM |
| DUKHCONP1AZ9STUG1010 |  | Footing Blinding | 23d | 2013-11-09 | 2013-12-04 | DUKHCONP1AZ9STUG1005 SS+3d, DUKHCONP1AZ9STUG1005 FF+3d | -11d | 0d | BLINDING MASON SK [568 h]; LABOR- SUBCONTRACTOR [426 h]; BLINDING QTY [709 Sqm] | 17,856 | 15 | 1AP9SBUG18 | DUKHCON1AP9STUG1010 | DUKHCONP1AZ9STUG1010 | DH | CON | 1A | Z9 | ST | SB | B02 | B02-D02 | RES-1A | UG | REM |
| DUKHCONP1AZ9STUG1015 |  | Footing Waterproofing & Screed | 25d | 2013-11-14 | 2013-12-12 | DUKHCONP1AZ9STUG1010 FF+5d, DUKHCONP1AZ9STUG1010 SS+5d | -11d | 0d | SCREED MASON SK [523 h]; LABOR- SUBCONTRACTOR [196.5 h]; SCREED QTY [653 Sqm]; WATERPROOFING QTY [1821 Sqm] | 65,745 | 20 | 1AP9SBUG20 | DUKHCON1AP9STUG1015 | DUKHCONP1AZ9STUG1015 | DH | CON | 1A | Z9 | ST | SB | B02 | B02-D02 | RES-1A | UG | REM |
| DUKHCONP1AZ9STUG1020 |  | Construction of foundations | 20d | 2013-11-30 | 2013-12-23 | DUKHCONP1AZ9STUG1015 SS+7d, DUKHCONP1AZ9STUG1015 FF+8d | -11d | 13d | STEEL FIXERS SK [3207 h]; CARPENTERS SK [1448 h]; CONCRETE MASON SK [900 h]; LABOR- SUBCONTRACTOR [4166.25 h]; REINFORCEMENT BARS QTY [40078 kg]; FORMWORK QTY [724 Sqm]; CONCRETE QTY [450 Cum] | 281,933 | 25 | 1AP9SBUG25 | DUKHCON1AP9STUG1020 | DUKHCONP1AZ9STUG1020 | DH | CON | 1A | Z9 | ST | SB | B02 | B02-D02 | RES-1A | UG | REM |
| DUKHCONP1AZ9STUG1025 |  | Construction of neck of columns | 25d | 2013-12-25 | 2014-01-22 | DUKHCONP1AZ8STUG1025, DUKHCONP1AZ9STUG1020 SS+8d, DUKHCONP1AZ9STUG1020 FF+7d | -24d | 0d | STEEL FIXERS SK [267 h]; CARPENTERS SK [820 h]; CONCRETE MASON SK [60 h]; LABOR- SUBCONTRACTOR [860.25 h]; REINFORCEMENT BARS QTY [3336 kg]; FORMWORK QTY [410 Sqm]; CONCRETE QTY [30 Cum] | 44,919 | 30 | 1AP9SBUG30 | DUKHCON1AP9STUG1025 | DUKHCONP1AZ9STUG1025 | DH | CON | 1A | Z9 | ST | SB | B02 | B02-D02 | RES-1A | UG | REM |
| DUKHCONP1AZ9STUG1030 |  | Waterproofing Footing & Neck Column | 25d | 2014-01-04 | 2014-02-01 | DUKHCONP1AZ9STUG1025 FF+8d, DUKHCONP1AZ9STUG1025 SS+8d | -24d | 0d | LABOR- SUBCONTRACTOR [175.5 h]; WATERPROOFING QTY [585 Sqm]; WATERPROOFING SPECIALIST SK [468 h] | 28,073 | 35 | 1AP9SBUG35 | DUKHCON1AP9STUG1030 | DUKHCONP1AZ9STUG1030 | DH | CON | 1A | Z9 | ST | SB | B02 | B02-D02 | RES-1A | UG | REM |
| DUKHCONP1AZ9STUG1035 |  | Backfilling Upto Grade Beam Bottom | 25d | 2014-01-18 | 2014-02-16 | DUKHCONP1AZ9STUG1030 SS+12d, DUKHCONP1AZ8STUG1035, DUKHCONP1AZ9STUG1030 FF+12d | -24d | 0d | LABOR- SUBCONTRACTOR [270 h]; BACKFILLING QTY [1100 Cum]; BOBCAT [375 h]; PLATE COMPACTOR [375 h]; TRUCK [75 h]; EQUIP OPERATORS [825 h] | 27,954 | 40 | 1AP9SBUG40 | DUKHCON1AP9STUG1035 | DUKHCONP1AZ9STUG1035 | DH | CON | 1A | Z9 | ST | SB | B02 | B02-D01 | RES-1A | UG |  |
| DUKHCONP1AZ9STUG1040 |  | Construction of Grade Beams | 25d | 2014-02-03 | 2014-03-04 | DUKHCONP1AZ9STUG1035 SS+14d, DUKHCONP1AZ9STUG1035 FF+14d | -24d | 0d | BLINDING MASON SK [304 h]; SCREED MASON SK [280 h]; STEEL FIXERS SK [1871 h]; CARPENTERS SK [2692 h]; CONCRETE MASON SK [320 h]; LABOR- SUBCONTRACTOR [3995.25 h]; BLINDING QTY [380 Sqm]; SCREED QTY [350 Sqm]; REINFORCEMENT BARS QTY [23386 kg]; FORMWORK QTY [1346 Sqm]; CONCRETE QTY [160 Cum] | 407,637 | 45 | 1AP9SBUG45 | DUKHCON1AP9STUG1040 | DUKHCONP1AZ9STUG1040 | DH | CON | 1A | Z9 | ST | SB | B02 | B02-D02 | RES-1A | UG | REM |
| DUKHCONP1AZ9STUG1045 |  | Construction of slab on grade | 25d | 2014-03-09 | 2014-04-06 | DUKHCONP1AZ8STUG1045, DUKHCONP1AZ9STUG1040 SS+10d, DUKHCONP1AZ9STUG1040 FF+10d, DUKHCONP1AZ9PLUG4300 SS+9d, DUKHCONP1AZ9PLUG4300 FF+9d | -24d | 0d | BLINDING MASON SK [1154 h]; SCREED MASON SK [1063 h]; STEEL FIXERS SK [670 h]; CONCRETE MASON SK [500 h]; LABOR- SUBCONTRACTOR [2142 h]; BLINDING QTY [1442 Sqm]; SCREED QTY [1328 Sqm]; CONCRETE QTY [250 Cum]; WELDED WIRE MESH [2510 Sqm] | 298,827 | 50 | 1AP9SBUG50 | DUKHCON1AP9STUG1045 | DUKHCONP1AZ9STUG1045 | DH | CON | 1A | Z9 | ST | SB | B02 | B02-D02 | RES-1A | UG | REM |

Notes:
- DUKHCONP1AZ8HDEX5090: Expenses: P1A-External works within the Plot Curtilage 13284
- DUKHCONP1AZ8HDEX5095: Expenses: P1A-External works within the Plot Curtilage 12232
- DUKHCONP1AZ8HDEX5100: Expenses: P1A-External works within the Plot Curtilage 15733
- DUKHCONP1AZ8SLEX5105: Expenses: P1A-External works within the Plot Curtilage 41328
- DUKHCONP1AZ8SLEX5110: Expenses: P1A-External works within the Plot Curtilage 48672
- DUKHCONP1AZ8ACTC8000: Expenses: P1A-Air-conditioning and Ventilation works 3168
- DUKHCONP1AZ8ELTC8010: Expenses: P1A-Electrical Installations 40656
- DUKHCONP1AZ8PLTC8005: Expenses: P1A-Plumbing and Drainage works 9008
- DUKHCONP1AZ9STUG1000: Expenses: P1A-Excavation and Earth Works 85320
- DUKHCONP1AZ9STUG1005: Expenses: P1A-Excavation and Earth Works 10800
- DUKHCONP1AZ9STUG1010: Expenses: P1A-Concrete Works 17856
- DUKHCONP1AZ9STUG1015: Expenses: P1A-Concrete Works 65745
- DUKHCONP1AZ9STUG1020: Expenses: P1A-Concrete Works 281933
- DUKHCONP1AZ9STUG1025: Expenses: P1A-Concrete Works 44919
- DUKHCONP1AZ9STUG1030: Expenses: P1A-Concrete Works 28073
- DUKHCONP1AZ9STUG1035: Expenses: P1A-Excavation and Earth Works 27954
- DUKHCONP1AZ9STUG1040: Expenses: P1A-Concrete Works 407637
- DUKHCONP1AZ9STUG1045: Expenses: P1A-Concrete Works 298827

| ID | WBS | Activity | Duration | Start | Finish | Predecessors | Total float | Free float | Resources | Cost | CODE | rem | P3 ACTID | P6 ID (old) | NP61D | PROJECT | PHASES | PACKAGE | PART | ELEMENTS | STEP | FLOORS | BILL NOS | BILL DIVISION | RES PACK | EXECUTER |
| --- | --- | --- | --- | --- | --- | --- | --- | --- | --- | --- | --- | --- | --- | --- | --- | --- | --- | --- | --- | --- | --- | --- | --- | --- | --- | --- |
|  | 15 | **SUPERSTRUCTURE** |  | 2014-03-25 | 2014-08-18 |  |  |  |  |  |  |  |  |  |  |  |  |  |  |  |  |  |  |  |  |  |
|  | 10 | **GROUND FLOOR** |  | 2014-03-25 | 2014-05-20 |  |  |  |  |  |  |  |  |  |  |  |  |  |  |  |  |  |  |  |  |  |
| DUKHCONP1AZ9STGF2000 |  | Column-Rebar & Formwork | 25d | 2014-03-25 | 2014-04-22 | DUKHCONP1AZ9STUG1045 FF+7d, DUKHCONP1AZ9STUG1045 SS+14d, DUKHCONP1AZ8STGF2000 | -24d | 0d | STEEL FIXERS SK [820 h]; CARPENTERS SK [2070 h]; LABOR- SUBCONTRACTOR [2167.5 h]; REINFORCEMENT BARS QTY [10247 kg]; FORMWORK QTY [1035 Sqm] | 91,791 | 10 | REM | 1AP9SPGF10 | DUKHCON1AP9STGF2000 | DUKHCONP1AZ9STGF2000 | DH | CON | 1A | Z9 | ST | SP | GF | B02 | B02-D02 | RES-1A |  |
| DUKHCONP1AZ9STGF2005 |  | Column-Concrete | 24d | 2014-04-03 | 2014-04-30 | DUKHCONP1AZ9STGF2000 SS+8d, DUKHCONP1AZ9STGF2000 FF+2d | -24d | 0d | CONCRETE MASON SK [182 h]; LABOR- SUBCONTRACTOR [136.5 h]; CONCRETE QTY [91 Cum] | 26,181 | 15 | REM | 1AP9SPGF15 | DUKHCON1AP9STGF2005 | DUKHCONP1AZ9STGF2005 | DH | CON | 1A | Z9 | ST | SP | GF | B02 | B02-D02 | RES-1A |  |
| DUKHCONP1AZ9STGF2010 |  | Beam, Stairs ,Slab-Rebar & Formwork | 25d | 2014-04-19 | 2014-05-17 | DUKHCONP1AZ9STGF2005 SS+2d, DUKHCONP1AZ9STGF2005 FF+14d | -24d | 0d | STEEL FIXERS SK [5114 h]; CARPENTERS SK [6906 h]; REINFORCEMENT BARS QTY [63920 kg]; FORMWORK QTY [3453 Sqm]; LABOR- SUBCONTRACTOR [9015 h] | 408,186 | 20 | REM | 1AP9SPGF20 | DUKHCON1AP9STGF2010 | DUKHCONP1AZ9STGF2010 | DH | CON | 1A | Z9 | ST | SP | GF | B02 | B02-D02 | RES-1A |  |
| DUKHCONP1AZ9STGF2015 |  | Beam, Stairs ,Slab-Concrete | 14d | 2014-05-05 | 2014-05-20 | DUKHCONP1AZ9STGF2010 SS+10d, DUKHCONP1AZ9STGF2010 FF+3d, DUKHCONP1AZ8STGF2015 | -24d | 0d | CONCRETE MASON SK [924 h]; LABOR- SUBCONTRACTOR [693 h]; CONCRETE QTY [462 Cum] | 164,367 | 25 | REM | 1AP9SPGF25 | DUKHCON1AP9STGF2015 | DUKHCONP1AZ9STGF2015 | DH | CON | 1A | Z9 | ST | SP | GF | B02 | B02-D02 | RES-1A |  |
|  | 15 | **FIRST FLOORS** |  | 2014-05-08 | 2014-07-06 |  |  |  |  |  |  |  |  |  |  |  |  |  |  |  |  |  |  |  |  |  |
| DUKHCONP1AZ9STFF2020 |  | Column-Rebar & Formwork | 25d | 2014-05-08 | 2014-06-05 | DUKHCONP1AZ9STGF2015 FF+5d, DUKHCONP1AZ8STFF2020, DUKHCONP1AZ9STGF2015 SS+3d | -24d | 0d | STEEL FIXERS SK [718 h]; CARPENTERS SK [1840 h]; LABOR- SUBCONTRACTOR [1918.5 h]; REINFORCEMENT BARS QTY [8969 kg]; FORMWORK QTY [920 Sqm] | 81,144 | 10 | REM | 1AP9SPFF10 | DUKHCON1AP9STFF2020 | DUKHCONP1AZ9STFF2020 | DH | CON | 1A | Z9 | ST | SP | FF | B02 | B02-D02 | RES-1A |  |
| DUKHCONP1AZ9STFF2025 |  | Column-Concrete | 24d | 2014-05-20 | 2014-06-16 | DUKHCONP1AZ9STFF2020 FF+2d, DUKHCONP1AZ9STFF2020 SS+10d | -24d | 0d | CONCRETE MASON SK [160 h]; LABOR- SUBCONTRACTOR [120 h]; CONCRETE QTY [80 Cum] | 22,914 | 15 | REM | 1AP9SPFF15 | DUKHCON1AP9STFF2025 | DUKHCONP1AZ9STFF2025 | DH | CON | 1A | Z9 | ST | SP | FF | B02 | B02-D02 | RES-1A |  |
| DUKHCONP1AZ9STFF2030 |  | Beam, Stairs ,Slab-Rebar & Formwork | 25d | 2014-06-04 | 2014-07-02 | DUKHCONP1AZ9STFF2025 FF+14d, DUKHCONP1AZ9STFF2025 SS+2d | -24d | 0d | STEEL FIXERS SK [4607 h]; CARPENTERS SK [6906 h]; LABOR- SUBCONTRACTOR [8634.75 h]; REINFORCEMENT BARS QTY [57577 kg]; FORMWORK QTY [3453 Sqm] | 387,693 | 20 | REM | 1AP9SPFF20 | DUKHCON1AP9STFF2030 | DUKHCONP1AZ9STFF2030 | DH | CON | 1A | Z9 | ST | SP | FF | B02 | B02-D02 | RES-1A |  |
| DUKHCONP1AZ9STFF2035 |  | Beam, Stairs ,Slab-Concrete | 14d | 2014-06-21 | 2014-07-06 | DUKHCONP1AZ9STFF2030 FF+3d, DUKHCONP1AZ9STFF2030 SS+10d, DUKHCONP1AZ8STFF2035 | -24d | 0d | CONCRETE MASON SK [816 h]; LABOR- SUBCONTRACTOR [612 h]; CONCRETE QTY [408 Cum] | 148,878 | 25 | REM | 1AP9SPFF25 | DUKHCON1AP9STFF2035 | DUKHCONP1AZ9STFF2035 | DH | CON | 1A | Z9 | ST | SP | FF | B02 | B02-D02 | RES-1A |  |
|  | 20 | **ROOF** |  | 2014-06-23 | 2014-08-18 |  |  |  |  |  |  |  |  |  |  |  |  |  |  |  |  |  |  |  |  |  |
| DUKHCONP1AZ9STRF2040 |  | Column-Rebar & Formwork | 18d | 2014-06-23 | 2014-07-13 | DUKHCONP1AZ8STRF2040, DUKHCONP1AZ9STFF2035 SS+2d, DUKHCONP1AZ9STFF2035 FF+3d | -15d | 0d | STEEL FIXERS SK [171 h]; CARPENTERS SK [690 h]; LABOR- SUBCONTRACTOR [645.75 h]; REINFORCEMENT BARS QTY [2134 kg]; FORMWORK QTY [345 Sqm] | 26,460 | 10 | REM | 1AP9SPRF10 | DUKHCON1AP9STRF2040 | DUKHCONP1AZ9STRF2040 | DH | CON | 1A | Z9 | ST | SP | RF | B02 | B02-D02 | RES-1A |  |
| DUKHCONP1AZ9STRF2045 |  | Column-Concrete | 17d | 2014-06-26 | 2014-07-15 | DUKHCONP1AZ9STRF2040 SS+3d, DUKHCONP1AZ9STRF2040 FF+1d | -15d | 0d | CONCRETE MASON SK [38 h]; LABOR- SUBCONTRACTOR [28.5 h]; CONCRETE QTY [19 Cum] | 5,454 | 15 | REM | 1AP9SPRF15 | DUKHCON1AP9STRF2045 | DUKHCONP1AZ9STRF2045 | DH | CON | 1A | Z9 | ST | SP | RF | B02 | B02-D02 | RES-1A |  |
| DUKHCONP1AZ9STRF2050 |  | Slab-Rebar & Formwork - Head Room | 20d | 2014-06-29 | 2014-07-21 | DUKHCONP1AZ9STRF2045 FF+5d, DUKHCONP1AZ9STRF2045 SS+2d | -15d | 0d | STEEL FIXERS SK [1086 h]; CARPENTERS SK [866 h]; LABOR- SUBCONTRACTOR [1464 h]; REINFORCEMENT BARS QTY [13574 kg]; FORMWORK QTY [433 Sqm] | 76,870 | 20 | REM | 1AP9SPRF20 | DUKHCON1AP9STRF2050 | DUKHCONP1AZ9STRF2050 | DH | CON | 1A | Z9 | ST | SP | RF | B02 | B02-D02 | RES-1A |  |
| DUKHCONP1AZ9STRF2055 |  | Slab-Concrete-Head room | 13d | 2014-07-09 | 2014-07-23 | DUKHCONP1AZ9STRF2050 SS+5d, DUKHCONP1AZ8STRF2055, DUKHCONP1AZ9STRF2050 FF+2d | -15d | 0d | CONCRETE MASON SK [180 h]; LABOR- SUBCONTRACTOR [135 h]; CONCRETE QTY [90 Cum] | 28,700 | 25 | REM | 1AP9SPRF25 | DUKHCON1AP9STRF2055 | DUKHCONP1AZ9STRF2055 | DH | CON | 1A | Z9 | ST | SP | RF | B02 | B02-D02 | RES-1A |  |
| DUKHCONP1AZ9STRF2060 |  | Construction of Parapets | 25d | 2014-07-12 | 2014-08-12 | DUKHCONP1AZ9STRF2055 SS+2d, DUKHCONP1AZ9STRF2055 FF+14d | 28d | 0d | BLOCK MASON SK [1760 h]; LABOR- SUBCONTRACTOR [990 h]; BLOCK QTY [880 Sqm] | 54,560 | 30 | REM | 1AP9SPRF30 | DUKHCON1AP9STRF2060 | DUKHCONP1AZ9STRF2060 | DH | CON | 1A | Z9 | ST | SP | RF | B02 | B02-D03 | RES-1A |  |
| DUKHCONP1AZ9STRF2065 |  | Construction of up stands/Plinth | 25d | 2014-07-17 | 2014-08-18 | DUKHCONP1AZ9STRF2060 SS+5d, DUKHCONP1AZ8STRF2065, DUKHCONP1AZ9STRF2060 FF+5d | 28d | 22d | STEEL FIXERS SK [56 h]; CARPENTERS SK [320 h]; CONCRETE MASON SK [20 h]; LABOR- SUBCONTRACTOR [297 h]; REINFORCEMENT BARS QTY [699 kg]; FORMWORK QTY [160 Sqm]; CONCRETE QTY [10 Cum] | 15,780 | 35 | REM | 1AP9SPRF35 | DUKHCON1AP9STRF2065 | DUKHCONP1AZ9STRF2065 | DH | CON | 1A | Z9 | ST | SP | RF | B02 | B02-D02 | RES-1A |  |
|  | 15 | **FINISHING WORKS** |  | 2014-06-03 | 2014-12-13 |  |  |  |  |  |  |  |  |  |  |  |  |  |  |  |  |  |  |  |  |  |
|  | 10 | **INTERNAL FINISHES** |  | 2014-06-03 | 2014-12-13 |  |  |  |  |  |  |  |  |  |  |  |  |  |  |  |  |  |  |  |  |  |
|  | 10 | **GROUND FLOOR** |  | 2014-06-03 | 2014-11-18 |  |  |  |  |  |  |  |  |  |  |  |  |  |  |  |  |  |  |  |  |  |
| DUKHCONP1AZ9ARGF3000 |  | Block work | 25d | 2014-06-03 | 2014-07-01 | DUKHCONP1AZ9STGF2015 SS+21d, DUKHCONP1AZ8ARGF3000, DUKHCONP1AZ9STGF2015 FF+21d | -6d | 0d | BLOCK MASON SK [7790 h]; LABOR- SUBCONTRACTOR [4382.25 h]; BLOCK QTY [3895 Sqm] | 281,952 | 10 | REM | 1AP9IFGF10 | DUKHCON1AP9ARGF3000 | DUKHCONP1AZ9ARGF3000 | DH | CON | 1A | Z9 | FIN | IF | GF | B02 | B02-D03 | RES-1A |  |
| DUKHCONP1AZ9ARGF3005 |  | Plastering work | 25d | 2014-06-25 | 2014-07-23 | DUKHCONP1AZ8ARGF3005, DUKHCONP1AZ9PLGF4305 FF+5d, DUKHCONP1AZ9ARGF3000 FF+7d, DUKHCONP1AZ9PLGF4305 SS+5d, DUKHCONP1AZ9ELGF4000 FF+5d, DUKHCONP1AZ9ARGF3000 SS+7d, DUKHCONP1AZ9ELGF4000 SS+5d | -6d | 0d | PLASTER MASON SK [10911 h]; LABOR- SUBCONTRACTOR [6138 h]; PLASTER QTY [6819 Sqm] | 89,492 | 12 | REM | 1AP9IFGF12 | DUKHCON1AP9ARGF3005 | DUKHCONP1AZ9ARGF3005 | DH | CON | 1A | Z9 | FIN | IF | GF | B02 | B02-D10 | RES-1A |  |
| DUKHCONP1AZ9ARGF3010 |  | Flooring screed | 21d | 2014-07-03 | 2014-07-27 | DUKHCONP1AZ9ARGF3005 FF+3d, DUKHCONP1AZ9ARGF3005 SS+7d | 2d | 8d | SCREED MASON SK [1436 h]; LABOR- SUBCONTRACTOR [538.5 h]; FLOORING SCREED QTY [1795 Sqm] | 60,010 | 15 | REM | 1AP9IFGF15 | DUKHCON1AP9ARGF3010 | DUKHCONP1AZ9ARGF3010 | DH | CON | 1A | Z9 | FIN | IF | GF | B02 | B02-D10 | RES-1A |  |
| DUKHCONP1AZ9ARGF3015 |  | Wet area waterproofing & Protection Screed | 15d | 2014-07-13 | 2014-07-29 | DUKHCONP1AZ9ARGF3005 FF+5d, DUKHCONP1AZ9ARGF3005 SS+7d, DUKHCONP1AZ8ARGF3015 | -6d | 0d | LABOR- SUBCONTRACTOR [84 h]; WETAREA WATERPROOFING QTY [280 Sqm]; WATERPROOFING SPECIALIST SK [224 h] | 9,520 | 18 | REM | 1AP9IFGF18 | DUKHCON1AP9ARGF3015 | DUKHCONP1AZ9ARGF3015 | DH | CON | 1A | Z9 | FIN | IF | GF | B02 | B02-D10 | RES-1A |  |
| DUKHCONP1AZ9ARGF3030 |  | Paint First coat | 25d | 2014-07-15 | 2014-08-16 | DUKHCONP1AZ9ARGF3005 SS+14d, DUKHCONP1AZ8ARGF3030, DUKHCONP1AZ9ARGF3005 FF+14d | 5d | 11d | PAINTERS SK [4932 h]; LABOR- SUBCONTRACTOR [1849.5 h]; FIRSTCOAT PAINT QTY [6165 Sqm] | 33,261 | 21 | REM | 1AP9IFGF21 | DUKHCON1AP9ARGF3030 | DUKHCONP1AZ9ARGF3030 | DH | CON | 1A | Z9 | FIN | IF | GF | B02 | B02-D11 | RES-1A | ENT |
| DUKHCONP1AZ9ARGF3020 |  | Ceramic Wall Tiling | 25d | 2014-07-19 | 2014-08-19 | DUKHCONP1AZ9PLGF4305 FF+4d, DUKHCONP1AZ9PLGF4310 FF+4d, DUKHCONP1AZ9ARGF3015 FF+5d, DUKHCONP1AZ9PLGF4305 SS+4d, DUKHCONP1AZ8ARGF3020, DUKHCONP1AZ9PLGF4310 SS+4d, DUKHCONP1AZ9ARGF3015 SS+5d | -6d | 0d | TILE MASON SK [3542 h]; LABOR- SUBCONTRACTOR [1992.75 h]; CERAMIC WALL TILE QTY [1771 Sqm] | 115,745 | 24 | REM | 1AP9IFGF24 | DUKHCON1AP9ARGF3020 | DUKHCONP1AZ9ARGF3020 | DH | CON | 1A | Z9 | FIN | IF | GF | B02 | B02-D10 | RES-1A |  |
| DUKHCONP1AZ9ARGF3025 |  | Porcelain Tile flooring | 25d | 2014-07-24 | 2014-08-25 | DUKHCONP1AZ9ARGF3020 SS+5d, DUKHCONP1AZ9ARGF3020 FF+5d, DUKHCONP1AZ8ARGF3025, DUKHCONP1AZ9ARGF3010 SS+10d, DUKHCONP1AZ9ARGF3010 FF+10d | -6d | 0d | TILE MASON SK [1395 h]; LABOR- SUBCONTRACTOR [785.25 h]; PORCELAIN FLOORING QTY [1220 Sqm] | 93,648 | 27 | REM | 1AP9IFGF27 | DUKHCON1AP9ARGF3025 | DUKHCONP1AZ9ARGF3025 | DH | CON | 1A | Z9 | FIN | IF | GF | B02 | B02-D10 | RES-1A |  |
| DUKHCONP1AZ9ARGF3045 |  | Fixing of Suspension systems | 20d | 2014-08-14 | 2014-09-06 | DUKHCONP1AZ9ARGF3030 FF+7d, DUKHCONP1AZ9ELGF4010 SS+5d, DUKHCONP1AZ9ARGF3025 SS+10d, DUKHCONP1AZ9ELGF4010 FF+5d, DUKHCONP1AZ8ARGF3045, DUKHCONP1AZ9ARGF3030 SS+7d, DUKHCONP1AZ9ARGF3025 FF+10d | -6d | 0d | LABOR- SUBCONTRACTOR [654.77 h]; SUSPENSION QTY [1455.05 Sqm]; FALSE CEILING SKILLED SK [1164.04 h] | 28,550 | 39 | REM | 1AP9IFGF39 | DUKHCON1AP9ARGF3045 | DUKHCONP1AZ9ARGF3045 | DH | CON | 1A | Z9 | FIN | IF | GF | B02 | B02-D10 | RES-1A | SUS |
| DUKHCONP1AZ9ARGF3035 |  | Slate Tile Flooring & Skirting | 15d | 2014-08-17 | 2014-09-02 | DUKHCONP1AZ9ARGF3010 FF+13d, DUKHCONP1AZ9ARGF3025 SS+13d, DUKHCONP1AZ9ARGF3025 FF+7d, DUKHCONP1AZ9ARGF3010 SS+13d | -1d | 2d | TILE MASON SK [608 h]; LABOR- SUBCONTRACTOR [342 h]; SLATE TILE QTY [380 Sqm] | 82,356 | 33 | REM | 1AP9IFGF33 | DUKHCON1AP9ARGF3035 | DUKHCONP1AZ9ARGF3035 | DH | CON | 1A | Z9 | FIN | IF | GF | B02 | B02-D10 | RES-1A |  |
| DUKHCONP1AZ9ARGF3055 |  | Aluminum tile false ceiling | 25d | 2014-08-23 | 2014-09-20 | DUKHCONP1AZ9ACGF4600 SS+7d, DUKHCONP1AZ9ACGF4600 FF+7d, DUKHCONP1AZ9ARGF3045 SS+7d, DUKHCONP1AZ9ARGF3045 FF+7d | -3d | 3d | LABOR- SUBCONTRACTOR [67.5 h]; FALSE CEILING QTY [150 Sqm]; FALSE CEILING SKILLED SK [120 h] | 9,576 | 42 | REM | 1AP9IFGF42 | DUKHCON1AP9ARGF3055 | DUKHCONP1AZ9ARGF3055 | DH | CON | 1A | Z9 | FIN | IF | GF | B02 | B02-D10 | RES-1A | ALU |
| DUKHCONP1AZ9ARGF3040 |  | Cobble Tile flooring | 15d | 2014-08-24 | 2014-09-09 | DUKHCONP1AZ9ARGF3035 SS+4d, DUKHCONP1AZ9ARGF3035 FF+4d, DUKHCONP1AZ9ARGF3025 SS+13d, DUKHCONP1AZ9ARGF3010 SS+13d, DUKHCONP1AZ9ARGF3010 FF+13d, DUKHCONP1AZ9ARGF3025 FF+13d | -3d | 0d | TILE MASON SK [592 h]; LABOR- SUBCONTRACTOR [333 h]; COBBLE STONE QTY [370 Sqm] | 30,857 | 30 | REM | 1AP9IFGF30 | DUKHCON1AP9ARGF3040 | DUKHCONP1AZ9ARGF3040 | DH | CON | 1A | Z9 | FIN | IF | GF | B02 | B02-D10 | RES-1A |  |
| DUKHCONP1AZ9ARGF3060 |  | Gypsum board false ceiling | 25d | 2014-08-26 | 2014-09-23 | DUKHCONP1AZ9ARGF3045 SS+10d, DUKHCONP1AZ8ARGF3060, DUKHCONP1AZ9ACGF4600 FF+7d, DUKHCONP1AZ9ACGF4600 SS+7d, DUKHCONP1AZ9ARGF3045 FF+10d | -6d | 0d | LABOR- SUBCONTRACTOR [600.77 h]; FALSE CEILING QTY [1335.05 Sqm]; FALSE CEILING SKILLED SK [1068.04 h] | 76,032 | 45 | REM | 1AP9IFGF45 | DUKHCON1AP9ARGF3060 | DUKHCONP1AZ9ARGF3060 | DH | CON | 1A | Z9 | FIN | IF | GF | B02 | B02-D10 | RES-1A | GYP |
| DUKHCONP1AZ9ARGF3050 |  | Granite - Stair case flooring & Skirting | 20d | 2014-09-01 | 2014-09-23 | DUKHCONP1AZ9ARGF3040 FF+7d, DUKHCONP1AZ9ARGF3040 SS+7d, DUKHCONP1AZ9ARGF3025 SS+13d, DUKHCONP1AZ9ARGF3025 FF+13d | -3d | 0d | GRANITE MASON SK [700 h]; LABOR- SUBCONTRACTOR [393.75 h]; GRANITE QTY [175 Sqm] | 116,984 | 36 | REM | 1AP9IFGF36 | DUKHCON1AP9ARGF3050 | DUKHCONP1AZ9ARGF3050 | DH | CON | 1A | Z9 | FIN | IF | GF | B02 | B02-D10 | RES-1A |  |
| DUKHCONP1AZ9ARGF3065 |  | Wooden door & PVC Door | 15d | 2014-09-15 | 2014-10-01 | DUKHCONP1AZ9ARGF3035 SS+7d, DUKHCONP1AZ9ARGF3050 FF+7d, DUKHCONP1AZ9ARGF3050 SS+7d, DUKHCONP1AZ8ARGF3065, DUKHCONP1AZ9ARGF3035 FF+7d | -3d | 0d | LABOR- SUBCONTRACTOR [105 h]; WOODEN DOOR QTY [70 ea]; DOOR ERECTOR SK [280 h] | 291,970 | 48 | REM | 1AP9IFGF48 | DUKHCON1AP9ARGF3065 | DUKHCONP1AZ9ARGF3065 | DH | CON | 1A | Z9 | FIN | IF | GF | B02 | B02-D05 | RES-1A |  |
| DUKHCONP1AZ9ARGF3070 |  | Aluminum doors | 15d | 2014-09-21 | 2014-10-07 | DUKHCONP1AZ8ARGF3070, DUKHCONP1AZ9ARGF3065 FF+5d, DUKHCONP1AZ9ARGF3065 SS+5d | -3d | 0d | LABOR- SUBCONTRACTOR [60 h]; ALUMINIUM DOOR QTY [40 ea]; DOOR ERECTOR SK [160 h] | 104,009 | 51 | REM | 1AP9IFGF51 | DUKHCON1AP9ARGF3070 | DUKHCONP1AZ9ARGF3070 | DH | CON | 1A | Z9 | FIN | IF | GF | B02 | B02-D06 | RES-1A |  |
| DUKHCONP1AZ9ARGF3075 |  | Carpentry & Joinery Works | 20d | 2014-09-27 | 2014-10-21 | DUKHCONP1AZ9ARGF3070 SS+5d, DUKHCONP1AZ9ARGF3070 FF+7d, DUKHCONP1AZ8ARGF3075 | -3d | 0d | LABOR- SUBCONTRACTOR [195 h]; CABINET QTY [60 ea]; COUNTER QTY [10 ea]; JOINERY WORK SK [480 h]; COUNTER SK [40 h] | 142,590 | 57 | REM | 1AP9IFGF57 | DUKHCON1AP9ARGF3075 | DUKHCONP1AZ9ARGF3075 | DH | CON | 1A | Z9 | FIN | IF | GF | B02 | B02-D05 | RES-1A |  |
| DUKHCONP1AZ9ARGF3080 |  | Aluminum windows | 20d | 2014-09-28 | 2014-10-22 | DUKHCONP1AZ9ARGF3070 SS+6d, DUKHCONP1AZ8ARGF3080, DUKHCONP1AZ9ARGF3070 FF+6d | 7d | 10d | LABOR- SUBCONTRACTOR [55.5 h]; ALUMINIUM WINDOWS QTY [55 ea]; WINDOW ERECTOR SK [147 h] | 45,353 | 54 | REM | 1AP9IFGF54 | DUKHCON1AP9ARGF3080 | DUKHCONP1AZ9ARGF3080 | DH | CON | 1A | Z9 | FIN | IF | GF | B02 | B02-D06 | RES-1A |  |
| DUKHCONP1AZ9ARGF3085 |  | S.S.Balustrade | 20d | 2014-10-05 | 2014-10-29 | DUKHCONP1AZ9ARGF3075 FF+7d, DUKHCONP1AZ9ARGF3050 SS+7d, DUKHCONP1AZ9ARGF3075 SS+7d, DUKHCONP1AZ9ARGF3050 FF+7d | 2d | 5d | LABOR- SUBCONTRACTOR [118.5 h]; S.S.BALUSTRADE QTY [105 lm]; HANDRAIL ERECTOR SKILLED [210 h] | 151,830 | 63 | REM | 1AP9IFGF63 | DUKHCON1AP9ARGF3085 | DUKHCONP1AZ9ARGF3085 | DH | CON | 1A | Z9 | FIN | IF | GF | B02 | B02-D06 | RES-1A |  |
| DUKHCONP1AZ9ARGF3090 |  | Installation of Granite Counter Top | 15d | 2014-10-12 | 2014-10-28 | DUKHCONP1AZ9ARGF3075 FF+6d, DUKHCONP1AZ9ARGF3075 SS+7d | -3d | 0d | GRANITE MASON SK [160 h]; LABOR- SUBCONTRACTOR [60 h]; GRANITE COUNTER TOP QTY [40 ea] | 43,560 | 60 | REM | 1AP9IFGF60 | DUKHCON1AP9ARGF3090 | DUKHCONP1AZ9ARGF3090 | DH | CON | 1A | Z9 | FIN | IF | GF | B02 | B02-D10 | RES-1A |  |
| DUKHCONP1AZ9ARGF3095 |  | Final Painting | 25d | 2014-10-21 | 2014-11-18 | DUKHCONP1AZ9ACGF4610 FF+10d, DUKHCONP1AZ9ARGF3030 FF+10d, DUKHCONP1AZ9ARGF3035 SS+13d, DUKHCONP1AZ9ARGF3060 SS+8d, DUKHCONP1AZ9ARGF3070 FF+5d, DUKHCONP1AZ8ARGF3095, DUKHCONP1AZ9ACGF4610 SS+10d, DUKHCONP1AZ9ARGF3060 FF+8d, DUKHCONP1AZ9ARGF3080 SS+8d, DUKHCONP1AZ9ARGF3090 SS+8d, DUKHCONP1AZ9ARGF3040 SS+13d, DUKHCONP1AZ9ARGF3035 FF+13d, DUKHCONP1AZ9ARGF3090 FF+8d, DUKHCONP1AZ9ARGF3030 SS+10d, DUKHCONP1AZ9ARGF3070 SS+5d, DUKHCONP1AZ9ARGF3080 FF+8d, DUKHCONP1AZ9ARGF3085 FF+7d, DUKHCONP1AZ9ARGF3085 SS+7d, DUKHCONP1AZ9ARGF3040 FF+13d | -3d | 21d | LABOR- SUBCONTRACTOR [1849.5 h]; PAINT QTY [6165 Sqm]; PAINTERS SK [4932 h] | 77,257 | 66 | REM | 1AP9IFGF66 | DUKHCON1AP9ARGF3095 | DUKHCONP1AZ9ARGF3095 | DH | CON | 1A | Z9 | FIN | IF | GF | B02 | B02-D11 | RES-1A | PNT |

Notes:
- DUKHCONP1AZ9STGF2000: Expenses: P1A-Concrete Works 91791
- DUKHCONP1AZ9STGF2005: Expenses: P1A-Concrete Works 26181
- DUKHCONP1AZ9STGF2010: Expenses: P1A-Concrete Works 408186
- DUKHCONP1AZ9STGF2015: Expenses: P1A-Concrete Works 164367
- DUKHCONP1AZ9STFF2020: Expenses: P1A-Concrete Works 81144
- DUKHCONP1AZ9STFF2025: Expenses: P1A-Concrete Works 22914
- DUKHCONP1AZ9STFF2030: Expenses: P1A-Concrete Works 387693
- DUKHCONP1AZ9STFF2035: Expenses: P1A-Concrete Works 148878
- DUKHCONP1AZ9STRF2040: Expenses: P1A-Concrete Works 26460
- DUKHCONP1AZ9STRF2045: Expenses: P1A-Concrete Works 5454
- DUKHCONP1AZ9STRF2050: Expenses: P1A-Concrete Works 76870
- DUKHCONP1AZ9STRF2055: Expenses: P1A-Concrete Works 28700
- DUKHCONP1AZ9STRF2060: Expenses: P1A-Block work 54560
- DUKHCONP1AZ9STRF2065: Expenses: P1A-Concrete Works 15780
- DUKHCONP1AZ9ARGF3000: Expenses: P1A-Block work 281952
- DUKHCONP1AZ9ARGF3005: Expenses: P1A-Finishes 89492
- DUKHCONP1AZ9ARGF3010: Expenses: P1A-Finishes 60010
- DUKHCONP1AZ9ARGF3015: Expenses: P1A-Finishes 9520
- DUKHCONP1AZ9ARGF3030: Expenses: P1A-Painting and Decorating 33261
- DUKHCONP1AZ9ARGF3020: Expenses: P1A-Finishes 115745
- DUKHCONP1AZ9ARGF3025: Expenses: P1A-Finishes 93648
- DUKHCONP1AZ9ARGF3045: Expenses: P1A-Finishes 28550
- DUKHCONP1AZ9ARGF3035: Expenses: P1A-Finishes 82356
- DUKHCONP1AZ9ARGF3055: Expenses: P1A-Finishes 9576
- DUKHCONP1AZ9ARGF3040: Expenses: P1A-Finishes 30857
- DUKHCONP1AZ9ARGF3060: Expenses: P1A-Finishes 76032
- DUKHCONP1AZ9ARGF3050: Expenses: P1A-Finishes 116984
- DUKHCONP1AZ9ARGF3065: Expenses: P1A-Carpentry and Joinery 291970
- DUKHCONP1AZ9ARGF3070: Expenses: P1A-Metal work 104009
- DUKHCONP1AZ9ARGF3075: Expenses: P1A-Carpentry and Joinery 142590
- DUKHCONP1AZ9ARGF3080: Expenses: P1A-Metal work 45353
- DUKHCONP1AZ9ARGF3085: Expenses: P1A-Metal work 151830
- DUKHCONP1AZ9ARGF3090: Expenses: P1A-Finishes 43560
- DUKHCONP1AZ9ARGF3095: Expenses: P1A-Painting and Decorating 77257

| ID | WBS | Activity | Duration | Start | Finish | Predecessors | Total float | Free float | Resources | Cost | CODE | rem | P3 ACTID | P6 ID (old) | NP61D | PROJECT | PHASES | PACKAGE | PART | ELEMENTS | STEP | FLOORS | BILL NOS | BILL DIVISION | RES PACK | EXECUTER |
| --- | --- | --- | --- | --- | --- | --- | --- | --- | --- | --- | --- | --- | --- | --- | --- | --- | --- | --- | --- | --- | --- | --- | --- | --- | --- | --- |
|  | 15 | **FIRST FLOORS** |  | 2014-07-15 | 2014-12-13 |  |  |  |  |  |  |  |  |  |  |  |  |  |  |  |  |  |  |  |  |  |
| DUKHCONP1AZ9ARFF3300 |  | Block work | 25d | 2014-07-15 | 2014-08-16 | DUKHCONP1AZ9STFF2035 SS+21d, DUKHCONP1AZ9STFF2020 FF+21d, DUKHCONP1AZ9STFF2035 FF+21d, DUKHCONP1AZ9STFF2020 SS+21d, DUKHCONP1AZ8ARFF3300 | -24d | 0d | BLOCK MASON SK [5110 h]; LABOR- SUBCONTRACTOR [2874.75 h]; BLOCK QTY [2555 Sqm] | 159,608 | 10 | REM | 1AP9IFFF10 | DUKHCON1AP9ARFF3300 | DUKHCONP1AZ9ARFF3300 | DH | CON | 1A | Z9 | FIN | IF | FF | B02 | B02-D03 | RES-1A |  |
| DUKHCONP1AZ9ARFF3305 |  | Plastering work | 25d | 2014-08-12 | 2014-09-09 | DUKHCONP1AZ9PLFF4325 SS+6d, DUKHCONP1AZ8ARFF3305, DUKHCONP1AZ9ELFF4035 FF+5d, DUKHCONP1AZ9ARFF3300 SS+7d, DUKHCONP1AZ9PLFF4325 FF+6d, DUKHCONP1AZ9ARFF3300 FF+7d, DUKHCONP1AZ9ELFF4035 SS+5d | -24d | 0d | PLASTER MASON SK [7119 h]; LABOR- SUBCONTRACTOR [4005 h]; PLASTER QTY [4449 Sqm] | 58,689 | 12 | REM | 1AP9IFFF12 | DUKHCON1AP9ARFF3305 | DUKHCONP1AZ9ARFF3305 | DH | CON | 1A | Z9 | FIN | IF | FF | B02 | B02-D10 | RES-1A |  |
| DUKHCONP1AZ9ARFF3310 |  | Flooring screed | 21d | 2014-08-20 | 2014-09-13 | DUKHCONP1AZ9ARFF3305 FF+3d, DUKHCONP1AZ9ARFF3305 SS+7d | -12d | 12d | SCREED MASON SK [1106 h]; LABOR- SUBCONTRACTOR [414.75 h]; FLOORING SCREED QTY [1382 Sqm] | 45,590 | 15 | REM | 1AP9IFFF15 | DUKHCON1AP9ARFF3310 | DUKHCONP1AZ9ARFF3310 | DH | CON | 1A | Z9 | FIN | IF | FF | B02 | B02-D10 | RES-1A |  |
| DUKHCONP1AZ9ARFF3330 |  | Paint First coat | 25d | 2014-08-28 | 2014-09-25 | DUKHCONP1AZ9ARFF3305 SS+14d, DUKHCONP1AZ9ARFF3305 FF+14d | -10d | 14d | LABOR- SUBCONTRACTOR [1616.78 h]; FIRSTCOAT PAINT QTY [5389.21 Sqm]; PAINTERS SK [4311.4 h] | 33,261 | 21 | REM | 1AP9IFFF21 | DUKHCON1AP9ARFF3330 | DUKHCONP1AZ9ARFF3330 | DH | CON | 1A | Z9 | FIN | IF | FF | B02 | B02-D11 | RES-1A | ENT |
| DUKHCONP1AZ9ARFF3315 |  | Wet area waterproofing | 15d | 2014-09-01 | 2014-09-17 | DUKHCONP1AZ8ARFF3315, DUKHCONP1AZ9ARFF3305 SS+7d, DUKHCONP1AZ9ARFF3305 FF+7d | -24d | 0d | LABOR- SUBCONTRACTOR [414 h]; WETAREA WATERPROOFING QTY [1380 Sqm]; WATERPROOFING SPECIALIST SK [1104 h] | 45,880 | 18 | REM | 1AP9IFFF18 | DUKHCON1AP9ARFF3315 | DUKHCONP1AZ9ARFF3315 | DH | CON | 1A | Z9 | FIN | IF | FF | B02 | B02-D10 | RES-1A |  |
| DUKHCONP1AZ9ARFF3320 |  | Ceramic Wall Tiling | 25d | 2014-09-08 | 2014-10-06 | DUKHCONP1AZ8ARFF3320, DUKHCONP1AZ9PLFF4325 FF+4d, DUKHCONP1AZ9PLFF4330 FF+7d, DUKHCONP1AZ9ARFF3315 FF+6d, DUKHCONP1AZ9ARFF3315 SS+6d, DUKHCONP1AZ9PLFF4330 SS+7d, DUKHCONP1AZ9PLFF4325 SS+4d | -24d | 0d | TILE MASON SK [1518 h]; LABOR- SUBCONTRACTOR [854.25 h]; CERAMIC WALL TILE QTY [759 Sqm] | 53,676 | 24 | REM | 1AP9IFFF24 | DUKHCON1AP9ARFF3320 | DUKHCONP1AZ9ARFF3320 | DH | CON | 1A | Z9 | FIN | IF | FF | B02 | B02-D10 | RES-1A |  |
| DUKHCONP1AZ9ARFF3325 |  | Porcelain Tile flooring | 25d | 2014-09-15 | 2014-10-15 | DUKHCONP1AZ9ARFF3320 FF+6d, DUKHCONP1AZ9ARFF3320 SS+6d, DUKHCONP1AZ9ARFF3310 FF+10d, DUKHCONP1AZ8ARFF3325, DUKHCONP1AZ9ARFF3310 SS+10d | -24d | 0d | TILE MASON SK [1395 h]; LABOR- SUBCONTRACTOR [785.25 h]; PORCELAIN FLOORING QTY [1220 Sqm] | 93,653 | 27 | REM | 1AP9IFFF27 | DUKHCON1AP9ARFF3325 | DUKHCONP1AZ9ARFF3325 | DH | CON | 1A | Z9 | FIN | IF | FF | B02 | B02-D10 | RES-1A |  |
| DUKHCONP1AZ9ARFF3345 |  | Fixing of Suspension systems | 20d | 2014-09-28 | 2014-10-22 | DUKHCONP1AZ8ARFF3345, DUKHCONP1AZ9ARFF3325 FF+6d, DUKHCONP1AZ9ARFF3330 SS+7d, DUKHCONP1AZ9ARFF3325 SS+6d, DUKHCONP1AZ9ELFF4045 FF+5d, DUKHCONP1AZ9ELFF4045 SS+5d, DUKHCONP1AZ9ARFF3330 FF+7d | -24d | 0d | LABOR- SUBCONTRACTOR [587.25 h]; SUSPENSION QTY [1305 Sqm]; FALSE CEILING SKILLED SK [1044 h] | 24,560 | 36 | REM | 1AP9IFFF36 | DUKHCON1AP9ARFF3345 | DUKHCONP1AZ9ARFF3345 | DH | CON | 1A | Z9 | FIN | IF | FF | B02 | B02-D10 | RES-1A | SUS |
| DUKHCONP1AZ9ARFF3335 |  | Slate Tile Flooring & Skirting | 15d | 2014-10-02 | 2014-10-21 | DUKHCONP1AZ9ARFF3310 SS+13d, DUKHCONP1AZ9ARFF3310 FF+13d, DUKHCONP1AZ9ARFF3325 FF+5d, DUKHCONP1AZ9ARFF3325 SS+13d | -16d | 8d | TILE MASON SK [208 h]; LABOR- SUBCONTRACTOR [117 h]; SLATE TILE QTY [130 Sqm] | 25,505 | 30 | REM | 1AP9IFFF30 | DUKHCON1AP9ARFF3335 | DUKHCONP1AZ9ARFF3335 | DH | CON | 1A | Z9 | FIN | IF | FF | B02 | B02-D10 | RES-1A |  |
| DUKHCONP1AZ9ARFF3360 |  | Gypsum board false ceiling | 25d | 2014-10-05 | 2014-11-04 | DUKHCONP1AZ9ACFF4615 SS+7d, DUKHCONP1AZ9ACFF4615 FF+7d, DUKHCONP1AZ8ARFF3360, DUKHCONP1AZ9ARFF3345 FF+6d, DUKHCONP1AZ9ARFF3345 SS+6d | -24d | 0d | LABOR- SUBCONTRACTOR [587.25 h]; FALSE CEILING QTY [1305 Sqm]; FALSE CEILING SKILLED SK [1044 h] | 76,025 | 39 | REM | 1AP9IFFF39 | DUKHCON1AP9ARFF3360 | DUKHCONP1AZ9ARFF3360 | DH | CON | 1A | Z9 | FIN | IF | FF | B02 | B02-D10 | RES-1A | GYP |
| DUKHCONP1AZ9ARFF3350 |  | Granite - Stair case flooring & Skirting | 20d | 2014-10-06 | 2014-10-30 | DUKHCONP1AZ9ARFF3325 SS+13d, DUKHCONP1AZ9ARFF3325 FF+13d | -22d | 2d | GRANITE MASON SK [700 h]; LABOR- SUBCONTRACTOR [393.75 h]; GRANITE QTY [175 Sqm] | 116,996 | 33 | REM | 1AP9IFFF33 | DUKHCON1AP9ARFF3350 | DUKHCONP1AZ9ARFF3350 | DH | CON | 1A | Z9 | FIN | IF | FF | B02 | B02-D10 | RES-1A |  |
| DUKHCONP1AZ9ARFF3365 |  | Wooden door | 15d | 2014-10-22 | 2014-11-08 | DUKHCONP1AZ9ARFF3350 SS+5d, DUKHCONP1AZ9ARFF3360 SS+3d, DUKHCONP1AZ9ARFF3350 FF+5d, DUKHCONP1AZ9ARFF3335 SS+7d, DUKHCONP1AZ9ARFF3360 FF+3d, DUKHCONP1AZ9ARFF3335 FF+7d, DUKHCONP1AZ8ARFF3365 | -24d | 0d | LABOR- SUBCONTRACTOR [105 h]; WOODEN DOOR QTY [70 ea]; DOOR ERECTOR SK [280 h] | 190,495 | 42 | REM | 1AP9IFFF42 | DUKHCON1AP9ARFF3365 | DUKHCONP1AZ9ARFF3365 | DH | CON | 1A | Z9 | FIN | IF | FF | B02 | B02-D05 | RES-1A |  |
| DUKHCONP1AZ9ARFF3370 |  | Aluminum Door | 20d | 2014-10-22 | 2014-11-13 | DUKHCONP1AZ9ARFF3365 SS, DUKHCONP1AZ8ARFF3370, DUKHCONP1AZ9ARFF3365 FF | -24d | 0d | LABOR- SUBCONTRACTOR [75 h]; ALUMINIUM DOOR QTY [50 ea]; DOOR ERECTOR SK [200 h] | 152,532 | 45 | REM | 1AP9IFFF45 | DUKHCON1AP9ARFF3370 | DUKHCONP1AZ9ARFF3370 | DH | CON | 1A | Z9 | FIN | IF | FF | B02 | B02-D06 | RES-1A |  |
| DUKHCONP1AZ9ARFF3375 |  | Carpentry & Joinery Works | 25d | 2014-10-28 | 2014-11-25 | DUKHCONP1AZ9ARFF3370 FF+5d, DUKHCONP1AZ9ARFF3370 SS+5d, DUKHCONP1AZ8ARFF3375 | -24d | 0d | LABOR- SUBCONTRACTOR [375 h]; CABINET QTY [30 ea]; COUNTER QTY [30 ea]; WARDROBE QTY [50 ea]; SHELVES QTY [30 ea]; JOINERY WORK SK [880 h]; COUNTER SK [120 h] | 289,913 | 51 | REM | 1AP9IFFF51 | DUKHCON1AP9ARFF3375 | DUKHCONP1AZ9ARFF3375 | DH | CON | 1A | Z9 | FIN | IF | FF | B02 | B02-D05 | RES-1A |  |
| DUKHCONP1AZ9ARFF3380 |  | Aluminum windows | 20d | 2014-10-29 | 2014-11-20 | DUKHCONP1AZ9ARFF3370 FF+6d, DUKHCONP1AZ9ARFF3370 SS+6d | -20d | 4d | LABOR- SUBCONTRACTOR [55.5 h]; ALUMINIUM WINDOWS QTY [55 ea]; WINDOW ERECTOR SK [147 h] | 69,720 | 48 | REM | 1AP9IFFF48 | DUKHCON1AP9ARFF3380 | DUKHCONP1AZ9ARFF3380 | DH | CON | 1A | Z9 | FIN | IF | FF | B02 | B02-D06 | RES-1A |  |
| DUKHCONP1AZ9ARFF3385 |  | Handrail & Balustrade | 20d | 2014-11-09 | 2014-12-01 | DUKHCONP1AZ9ARFF3375 FF+5d, DUKHCONP1AZ9ARFF3350 SS+7d, DUKHCONP1AZ9ARFF3350 FF+7d, DUKHCONP1AZ9ARFF3375 SS+5d | -24d | 0d | LABOR- SUBCONTRACTOR [354.75 h]; S.S.BALUSTRADE QTY [315 lm]; HANDRAIL ERECTOR SKILLED [630 h] | 385,560 | 57 | REM | 1AP9IFFF57 | DUKHCON1AP9ARFF3385 | DUKHCONP1AZ9ARFF3385 | DH | CON | 1A | Z9 | FIN | IF | FF | B02 | B02-D06 | RES-1A |  |
| DUKHCONP1AZ9ARFF3390 |  | Installation of Granite Counter Top | 20d | 2014-11-09 | 2014-12-01 | DUKHCONP1AZ9ARFF3375 SS+6d, DUKHCONP1AZ9ARFF3375 FF+5d | -23d | 1d | GRANITE MASON SK [80 h]; LABOR- SUBCONTRACTOR [30 h]; GRANITE COUNTER TOP QTY [20 ea] | 9,492 | 54 | REM | 1AP9IFFF54 | DUKHCON1AP9ARFF3390 | DUKHCONP1AZ9ARFF3390 | DH | CON | 1A | Z9 | FIN | IF | FF | B02 | B02-D10 | RES-1A |  |
| DUKHCONP1AZ9ARFF3395 |  | Final Painting | 25d | 2014-11-15 | 2014-12-13 | DUKHCONP1AZ8ARFF3395, DUKHCONP1AZ9ARFF3390 SS+4d, DUKHCONP1AZ9ARFF3365 FF+8d, DUKHCONP1AZ9ARFF3380 FF+10d, DUKHCONP1AZ9ARFF3335 FF+8d, DUKHCONP1AZ9ARFF3350 FF+8d, DUKHCONP1AZ9ARFF3390 FF+6d, DUKHCONP1AZ9ARFF3360 SS+10d, DUKHCONP1AZ9ARFF3350 SS+8d, DUKHCONP1AZ9ACFF4625 FF+6d, DUKHCONP1AZ9ARFF3375 FF+8d, DUKHCONP1AZ9ARFF3375 SS+8d, DUKHCONP1AZ9ARFF3385 SS+5d, DUKHCONP1AZ9ARFF3330 SS+10d, DUKHCONP1AZ9ELFF4055, DUKHCONP1AZ9ARFF3380 SS+10d, DUKHCONP1AZ9ARFF3385 FF+5d, DUKHCONP1AZ9ARFF3330 FF+10d, DUKHCONP1AZ9ACFF4625 SS+6d, DUKHCONP1AZ9ARFF3360 FF+10d, DUKHCONP1AZ9ARFF3365 SS+8d, DUKHCONP1AZ9ARFF3335 SS+8d | -24d | 0d | LABOR- SUBCONTRACTOR [1616.78 h]; PAINT QTY [5389.21 Sqm]; PAINTERS SK [4311.4 h] | 63,503 | 60 | REM | 1AP9IFFF60 | DUKHCON1AP9ARFF3395 | DUKHCONP1AZ9ARFF3395 | DH | CON | 1A | Z9 | FIN | IF | FF | B02 | B02-D11 | RES-1A | PNT |
|  | 20 | **ROOF** |  | 2014-08-06 | 2014-10-12 |  |  |  |  |  |  |  |  |  |  |  |  |  |  |  |  |  |  |  |  |  |
| DUKHCONP1AZ9ARRF3600 |  | Block work | 20d | 2014-08-06 | 2014-08-28 | DUKHCONP1AZ8ARRF3600, DUKHCONP1AZ9STRF2055 FF+21d, DUKHCONP1AZ9STRF2055 SS+21d | 24d | 0d | BLOCK MASON SK [560 h]; LABOR- SUBCONTRACTOR [315 h]; BLOCK QTY [280 Sqm] | 22,235 | 10 | REM | 1AP9IFRF10 | DUKHCON1AP9ARRF3600 | DUKHCONP1AZ9ARRF3600 | DH | CON | 1A | Z9 | FIN | IF | RF | B02 | B02-D03 | RES-1A |  |
| DUKHCONP1AZ9ARRF3605 |  | Plastering work | 20d | 2014-08-14 | 2014-09-06 | DUKHCONP1AZ9ARRF3600 SS+7d, DUKHCONP1AZ9ARRF3600 FF+7d | 24d | 0d | PLASTER MASON SK [1428 h]; LABOR- SUBCONTRACTOR [803.25 h]; PLASTER QTY [892 Sqm] | 11,596 | 20 | REM | 1AP9IFRF20 | DUKHCON1AP9ARRF3605 | DUKHCONP1AZ9ARRF3605 | DH | CON | 1A | Z9 | FIN | IF | RF | B02 | B02-D10 | RES-1A |  |
| DUKHCONP1AZ9ARRF3610 |  | Flooring screed | 15d | 2014-08-28 | 2014-09-14 | DUKHCONP1AZ9ARRF3605 SS+7d, DUKHCONP1AZ9ARRF3605 FF+7d | 29d | 0d | SCREED MASON SK [124 h]; LABOR- SUBCONTRACTOR [46.5 h]; FLOORING SCREED QTY [154 Sqm] | 5,070 | 30 | REM | 1AP9IFRF30 | DUKHCON1AP9ARRF3610 | DUKHCONP1AZ9ARRF3610 | DH | CON | 1A | Z9 | FIN | IF | RF | B02 | B02-D10 | RES-1A |  |
| DUKHCONP1AZ9ARRF3695 |  | Painting -Storage area | 20d | 2014-09-06 | 2014-09-28 | DUKHCONP1AZ9ARRF3610 SS+7d, DUKHCONP1AZ9ARRF3610 FF+7d | 29d | 0d | LABOR- SUBCONTRACTOR [570 h]; PAINT QTY [1840 Sqm]; PAINTERS SK [1480 h] | 9,944 | 40 |  | 1AP9IFRF40 | DUKHCON1AP9ARRF3695 | DUKHCONP1AZ9ARRF3695 | DH | CON | 1A | Z9 | FIN | IF | RF | B02 | B02-D11 | RES-1A |  |
| DUKHCONP1AZ9ARRF3620 |  | Epoxy Painting -Storage area | 15d | 2014-09-23 | 2014-10-12 | DUKHCONP1AZ9ARRF3695 FF+10d, DUKHCONP1AZ9ARRF3695 SS+10d | 29d | 53d | LABOR- SUBCONTRACTOR [16.5 h]; EPOXY QTY [80 Sqm]; EPOXY SK [43 h] | 4,020 | 50 | REM | 1AP9IFRF50 | DUKHCON1AP9ARRF3620 | DUKHCONP1AZ9ARRF3620 | DH | CON | 1A | Z9 | FIN | IF | RF | B02 | B02-D11 | RES-1A |  |

Notes:
- DUKHCONP1AZ9ARFF3300: Expenses: P1A-Block work 159608
- DUKHCONP1AZ9ARFF3305: Expenses: P1A-Finishes 58689
- DUKHCONP1AZ9ARFF3310: Expenses: P1A-Finishes 45590
- DUKHCONP1AZ9ARFF3330: Expenses: P1A-Painting and Decorating 33261
- DUKHCONP1AZ9ARFF3315: Expenses: P1A-Finishes 45880
- DUKHCONP1AZ9ARFF3320: Expenses: P1A-Finishes 53676
- DUKHCONP1AZ9ARFF3325: Expenses: P1A-Finishes 93653
- DUKHCONP1AZ9ARFF3345: Expenses: P1A-Finishes 24560
- DUKHCONP1AZ9ARFF3335: Expenses: P1A-Finishes 25505
- DUKHCONP1AZ9ARFF3360: Expenses: P1A-Finishes 76025
- DUKHCONP1AZ9ARFF3350: Expenses: P1A-Finishes 116996
- DUKHCONP1AZ9ARFF3365: Expenses: P1A-Carpentry and Joinery 190495
- DUKHCONP1AZ9ARFF3370: Expenses: P1A-Metal work 152532
- DUKHCONP1AZ9ARFF3375: Expenses: P1A-Carpentry and Joinery 289913
- DUKHCONP1AZ9ARFF3380: Expenses: P1A-Metal work 69720
- DUKHCONP1AZ9ARFF3385: Expenses: P1A-Metal work 385560
- DUKHCONP1AZ9ARFF3390: Expenses: P1A-Finishes 9492
- DUKHCONP1AZ9ARFF3395: Expenses: P1A-Painting and Decorating 63503
- DUKHCONP1AZ9ARRF3600: Expenses: P1A-Block work 22235
- DUKHCONP1AZ9ARRF3605: Expenses: P1A-Finishes 11596
- DUKHCONP1AZ9ARRF3610: Expenses: P1A-Finishes 5070
- DUKHCONP1AZ9ARRF3695: Expenses: P1A-Painting and Decorating 9944
- DUKHCONP1AZ9ARRF3620: Expenses: P1A-Painting and Decorating 4020

| ID | WBS | Activity | Duration | Start | Finish | Predecessors | Total float | Free float | Resources | Cost | CODE | rem | P3 ACTID | P6 ID (old) | NP61D | PROJECT | PHASES | PACKAGE | PART | ELEMENTS | STEP | FLOORS | BILL NOS | BILL DIVISION | RES PACK |
| --- | --- | --- | --- | --- | --- | --- | --- | --- | --- | --- | --- | --- | --- | --- | --- | --- | --- | --- | --- | --- | --- | --- | --- | --- | --- |
|  | 15 | **EXTERNAL FINISHES** |  | 2014-08-24 | 2014-11-12 |  |  |  |  |  |  |  |  |  |  |  |  |  |  |  |  |  |  |  |  |
|  | 10 | **ROOF** |  | 2014-09-07 | 2014-11-12 |  |  |  |  |  |  |  |  |  |  |  |  |  |  |  |  |  |  |  |  |
| DUKHCONP1AZ9ARRF3630 |  | Leveling Screed for Waterproofing | 25d | 2014-09-07 | 2014-10-05 | DUKHCONP1AZ9STRF2065 FF+10d, DUKHCONP1AZ8ARRF3630, DUKHCONP1AZ9STRF2060 SS+10d, DUKHCONP1AZ9STRF2060 FF+10d, DUKHCONP1AZ9STRF2065 SS+10d | -3d | 0d | SCREED MASON SK [640 h]; LABOR- SUBCONTRACTOR [360 h]; ROOF WP SCREED QTY [1600 Sqm] | 70,990 | 10 | REM | 1AP9EFRF10 | DUKHCON1AP9ARRF3630 | DUKHCONP1AZ9ARRF3630 | DH | CON | 1A | Z9 | FIN | EF | RF | B02 | B02-D04 | RES-1A |
| DUKHCONP1AZ9ARRF3635 |  | Laying of Waterproofing Membrane | 25d | 2014-09-10 | 2014-10-08 | DUKHCONP1AZ9ARRF3630 SS+3d, DUKHCONP1AZ9ARRF3630 FF+3d | -3d | 0d | LABOR- SUBCONTRACTOR [388.5 h]; ROOF WP MEMBRANE QTY [1940 Sqm]; WATERPROOFING SPECIALIST SK [1035 h] | 54,992 | 15 | REM | 1AP9EFRF15 | DUKHCON1AP9ARRF3635 | DUKHCONP1AZ9ARRF3635 | DH | CON | 1A | Z9 | FIN | EF | RF | B02 | B02-D04 | RES-1A |
| DUKHCONP1AZ9ARRF3640 |  | Installation of Insulation & Protection | 25d | 2014-09-15 | 2014-10-15 | DUKHCONP1AZ9ARRF3635 FF+4d, DUKHCONP1AZ9ARRF3635 SS+4d | -3d | 0d | LABOR- SUBCONTRACTOR [480 h]; ROOF WP INSULATION QTY [3200 Sqm]; WATERPROOFING SPECIALIST SK [1280 h] | 69,920 | 20 | REM | 1AP9EFRF20 | DUKHCON1AP9ARRF3640 | DUKHCONP1AZ9ARRF3640 | DH | CON | 1A | Z9 | FIN | EF | RF | B02 | B02-D04 | RES-1A |
| DUKHCONP1AZ9ARRF3645 |  | Lime Stone Chips & Paving slab Installation | 25d | 2014-09-20 | 2014-10-20 | DUKHCONP1AZ9ARRF3640 FF+4d, DUKHCONP1AZ9ARRF3640 SS+4d | -3d | 0d | TILE MASON SK [56 h]; LABOR- SUBCONTRACTOR [234 h]; LIME STONE QTY [140 Sqm]; PRECAST PAVING SLAB QTY [1420 Sqm]; PRE CAST CONCRETE SK [568 h] | 104,180 | 25 | REM | 1AP9EFRF25 | DUKHCON1AP9ARRF3645 | DUKHCONP1AZ9ARRF3645 | DH | CON | 1A | Z9 | FIN | EF | RF | B02 | B02-D04 | RES-1A |
| DUKHCONP1AZ9ARRF3650 |  | Install. of Gal. Frame & Aluminum Slat Screen | 25d | 2014-09-28 | 2014-10-28 | DUKHCONP1AZ9ARRF3645 FF+7d, DUKHCONP1AZ9ARRF3645 SS+7d | -3d | 0d | LABOR- SUBCONTRACTOR [560.25 h]; ALUMINIUM SCREEN QTY [280 Sqm]; DOOR ERECTOR SK [747 h] | 79,184 | 35 | REM | 1AP9EFRF35 | DUKHCON1AP9ARRF3650 | DUKHCONP1AZ9ARRF3650 | DH | CON | 1A | Z9 | FIN | EF | RF | B02 | B02-D06 | RES-1A |
| DUKHCONP1AZ9ARRF3655 |  | Installation of Pumps Protection cabinets | 20d | 2014-10-15 | 2014-11-06 | DUKHCONP1AZ9ARRF3650 FF+8d, DUKHCONP1AZ8ARRF3655, DUKHCONP1AZ9ARRF3645 FF+7d, DUKHCONP1AZ9ARRF3650 SS+8d, DUKHCONP1AZ9ARRF3645 SS+7d | -3d | 0d | LABOR- SUBCONTRACTOR [210 h]; CABINET QTY [70 ea]; JOINERY WORK SK [560 h] | 33,250 | 30 | REM | 1AP9EFRF30 | DUKHCON1AP9ARRF3655 | DUKHCONP1AZ9ARRF3655 | DH | CON | 1A | Z9 | FIN | EF | RF | B02 | B02-D04 | RES-1A |
| DUKHCONP1AZ9ARRF3660 |  | Installation of Access Ladder | 15d | 2014-10-27 | 2014-11-12 | DUKHCONP1AZ9ARRF3655 FF+5d, DUKHCONP1AZ9ARRF3655 SS+5d | 2d | 26d | LABOR- SUBCONTRACTOR [60 h]; LADDER QTY [20 ea]; LADDER ERECTOR SK [160 h] | 66,506 | 40 | REM | 1AP9EFRF40 | DUKHCON1AP9ARRF3660 | DUKHCONP1AZ9ARRF3660 | DH | CON | 1A | Z9 | FIN | EF | RF | B02 | B02-D06 | RES-1A |
|  | 15 | **ELEVATION** |  | 2014-08-24 | 2014-10-16 |  |  |  |  |  |  |  |  |  |  |  |  |  |  |  |  |  |  |  |  |
| DUKHCONP1AZ9AREL3665 |  | External Plastering | 25d | 2014-08-24 | 2014-09-21 | DUKHCONP1AZ9ARRF3605 SS+7d, DUKHCONP1AZ9STRF2065 FF+7d, DUKHCONP1AZ8AREL3665, DUKHCONP1AZ9STRF2065 SS+7d, DUKHCONP1AZ9ARFF3305 SS+7d, DUKHCONP1AZ9ARFF3305 FF+7d | 23d | 0d | PLASTER MASON SK [11420 h]; LABOR- SUBCONTRACTOR [6423.75 h]; EXTERNAL PLASTER QTY [5710 Sqm] | 136,118 | 10 | REM | 1AP9EFEL10 | DUKHCON1AP9AREL3665 | DUKHCONP1AZ9AREL3665 | DH | CON | 1A | Z9 | FIN | EF | EL | B02 | B02-D10 | RES-1A |
| DUKHCONP1AZ9AREL3670 |  | External stone cladding works | 20d | 2014-09-10 | 2014-10-02 | DUKHCONP1AZ9AREL3665 SS+10d, DUKHCONP1AZ9AREL3665 FF+10d, DUKHCONP1AZ8AREL3670 | 25d | 0d | TILE MASON SK [900 h]; LABOR- SUBCONTRACTOR [337.5 h]; STONE CLADDING QTY [450 Sqm] | 89,774 | 15 | REM | 1AP9EFEL15 | DUKHCON1AP9AREL3670 | DUKHCONP1AZ9AREL3670 | DH | CON | 1A | Z9 | FIN | EF | EL | B02 | B02-D10 | RES-1A |
| DUKHCONP1AZ9AREL3680 |  | External Painting | 20d | 2014-09-22 | 2014-10-16 | DUKHCONP1AZ9AREL3670 SS+10d, DUKHCONP1AZ9ARRF3695 FF+4d, DUKHCONP1AZ8AREL3680, DUKHCONP1AZ9AREL3670 FF+10d, DUKHCONP1AZ9ARRF3695 SS+4d | 25d | 49d | LABOR- SUBCONTRACTOR [1290 h]; PAINT QTY [4280 Sqm]; PAINTERS SK [3440 h] | 107,508 | 20 |  | 1AP9EFEL20 | DUKHCON1AP9AREL3680 | DUKHCONP1AZ9AREL3680 | DH | CON | 1A | Z9 | FIN | EF | EL | B02 | B02-D11 | RES-1A |
|  | 20 | **MEP WORKS** |  | 2014-02-26 | 2014-12-11 |  |  |  |  |  |  |  |  |  |  |  |  |  |  |  |  |  |  |  |  |
|  | 10 | **ELECTRICAL WORKS** |  | 2014-06-09 | 2014-12-11 |  |  |  |  |  |  |  |  |  |  |  |  |  |  |  |  |  |  |  |  |
|  | 10 | **GROUND FLOOR** |  | 2014-06-09 | 2014-10-21 |  |  |  |  |  |  |  |  |  |  |  |  |  |  |  |  |  |  |  |  |
| DUKHCONP1AZ9ELGF4000 |  | Fixing of wall conduits & switch socket boxes | 25d | 2014-06-09 | 2014-07-07 | DUKHCONP1AZ9ARGF3000 SS+5d, DUKHCONP1AZ9ARGF3000 FF+5d | 3d | 0d | LABOR- SUBCONTRACTOR [240 h]; ELECTRICIANS SK [1288 h]; SOCKET BOXES QTY [905 ea]; CODUITS QTY [230 lm] | 41,346 | 10 |  | 1AP9EWGF10 | DUKHCON1AP9ELGF4000 | DUKHCONP1AZ9ELGF4000 | DH | CON | 1A | Z9 | MEP | EW | GF | B02 | B02-D09 | RES-1A |
| DUKHCONP1AZ9ELGF4005 |  | Cable tray & trunking installation | 20d | 2014-06-21 | 2014-07-13 | DUKHCONP1AZ8ELGF4005, DUKHCONP1AZ9ELGF4000 SS+5d, DUKHCONP1AZ9ELGF4000 FF+5d | 21d | 0d | LABOR- SUBCONTRACTOR [360 h]; ELECTRICIANS SK [1288 h]; CABLE TRAY QTY [230 lm] | 9,420 | 15 |  | 1AP9EWGF15 | DUKHCON1AP9ELGF4005 | DUKHCONP1AZ9ELGF4005 | DH | CON | 1A | Z9 | MEP | EW | GF | B02 | B02-D09 | RES-1A |
| DUKHCONP1AZ9ELGF4010 |  | Installation of wiring & Main Cabling | 25d | 2014-06-29 | 2014-07-27 | DUKHCONP1AZ9ELGF4005 SS+7d, DUKHCONP1AZ9ELGF4005 FF+7d | 21d | 27d | LABOR- SUBCONTRACTOR [90 h]; ELECTRICIANS SK [280 h]; CABLE QTY [230 lm] | 140,022 | 20 |  | 1AP9EWGF20 | DUKHCON1AP9ELGF4010 | DUKHCONP1AZ9ELGF4010 | DH | CON | 1A | Z9 | MEP | EW | GF | B02 | B02-D09 | RES-1A |
| DUKHCONP1AZ9ELGF4015 |  | Install. of CAMS & Fire Fighting Accessories | 25d | 2014-09-03 | 2014-10-01 | DUKHCONP1AZ9ARGF3055 SS+7d, DUKHCONP1AZ9ARGF3060 FF+7d, DUKHCONP1AZ9ARGF3055 FF+7d, DUKHCONP1AZ9ARGF3060 SS+7d, DUKHCONP1AZ8ELGF4015 | 6d | 29d | MECHANICALS SK [864 h]; SMOKE DETECTOR POINTS QTY [115 ea]; FIRE EXTINGUISHER QTY [35 ea]; LABOR- SUBCONTRACTOR [480 h] | 88,958 | 35 |  | 1AP9EWGF35 | DUKHCON1AP9ELGF4015 | DUKHCONP1AZ9ELGF4015 | DH | CON | 1A | Z9 | MEP | EW | GF | B02 | B02-D09 | RES-1A |
| DUKHCONP1AZ9ELGF4020 |  | Installation of DBS,MCCB Accessories. | 20d | 2014-09-09 | 2014-10-01 | DUKHCONP1AZ9ARGF3060 SS+7d, DUKHCONP1AZ9ARGF3055 SS+7d, DUKHCONP1AZ9ELGF4010 FF+5d, DUKHCONP1AZ9ARGF3055 FF+7d, DUKHCONP1AZ9ELGF4010 SS+5d, DUKHCONP1AZ9ARGF3060 FF+7d | -6d | 0d | LABOR- SUBCONTRACTOR [60 h]; ELECTRICIANS SK [224 h]; MCCB QTY [80 ea]; DB QTY [10 ea] | 32,561 | 25 |  | 1AP9EWGF25 | DUKHCON1AP9ELGF4020 | DUKHCONP1AZ9ELGF4020 | DH | CON | 1A | Z9 | MEP | EW | GF | B02 | B02-D09 | RES-1A |
| DUKHCONP1AZ9ELGF4025 |  | Installation of Lighting fixtures & Accessories | 25d | 2014-09-21 | 2014-10-21 | DUKHCONP1AZ9ARGF3060 FF+10d, DUKHCONP1AZ9ELGF4020 SS+10d, DUKHCONP1AZ9ELGF4020 FF+10d, DUKHCONP1AZ9ARGF3055 SS+10d, DUKHCONP1AZ9ARGF3060 SS+10d, DUKHCONP1AZ9ARGF3055 FF+10d, DUKHCONP1AZ8ELGF4025 | 1d | 24d | LABOR- SUBCONTRACTOR [720 h]; ELECTRICIANS SK [1344 h]; LIGHTS QTY [600 ea] | 192,893 | 30 |  | 1AP9EWGF30 | DUKHCON1AP9ELGF4025 | DUKHCONP1AZ9ELGF4025 | DH | CON | 1A | Z9 | MEP | EW | GF | B02 | B02-D09 | RES-1A |
| DUKHCONP1AZ9ELGF4030 |  | Installation of Telephone System | 20d | 2014-09-21 | 2014-10-15 | DUKHCONP1AZ9ELGF4020 FF+10d, DUKHCONP1AZ9ARGF3060 FF+5d, DUKHCONP1AZ9ELGF4020 SS+10d, DUKHCONP1AZ9ARGF3060 SS+5d, DUKHCONP1AZ8ELGF4030 | -6d | 9d | LABOR- SUBCONTRACTOR [90 h]; ELECTRICIANS SK [560 h]; TELEPHONE SOCKETS QTY [50 ea] | 47,702 | 40 |  | 1AP9EWGF40 | DUKHCON1AP9ELGF4030 | DUKHCONP1AZ9ELGF4030 | DH | CON | 1A | Z9 | MEP | EW | GF | B02 | B02-D09 | RES-1A |
|  | 15 | **FIRST FLOORS** |  | 2014-07-21 | 2014-11-24 |  |  |  |  |  |  |  |  |  |  |  |  |  |  |  |  |  |  |  |  |
| DUKHCONP1AZ9ELFF4035 |  | Fixing of wall conduits & switch socket boxes | 25d | 2014-07-21 | 2014-08-21 | DUKHCONP1AZ9ARFF3300 SS+5d, DUKHCONP1AZ9ARFF3300 FF+5d | -13d | 0d | LABOR- SUBCONTRACTOR [240 h]; ELECTRICIANS SK [1288 h]; SOCKET BOXES QTY [905 ea]; CODUITS QTY [230 lm] | 40,824 | 10 |  | 1AP9EWFF10 | DUKHCON1AP9ELFF4035 | DUKHCONP1AZ9ELFF4035 | DH | CON | 1A | Z9 | MEP | EW | FF | B02 | B02-D09 | RES-1A |
| DUKHCONP1AZ9ELFF4040 |  | Cable tray & trunking installation | 20d | 2014-08-05 | 2014-08-27 | DUKHCONP1AZ9ELFF4035 SS+5d, DUKHCONP1AZ9ELFF4035 FF+5d | 5d | 2d | LABOR- SUBCONTRACTOR [360 h]; ELECTRICIANS SK [1288 h]; CABLE TRAY QTY [230 lm] | 9,400 | 15 |  | 1AP9EWFF15 | DUKHCON1AP9ELFF4040 | DUKHCONP1AZ9ELFF4040 | DH | CON | 1A | Z9 | MEP | EW | FF | B02 | B02-D09 | RES-1A |
| DUKHCONP1AZ9ELFF4045 |  | Installation of wiring & Main Cabling | 25d | 2014-08-16 | 2014-09-13 | DUKHCONP1AZ8ELFF4045, DUKHCONP1AZ9ELFF4040 SS+7d, DUKHCONP1AZ9ELFF4040 FF+7d | 3d | 27d | LABOR- SUBCONTRACTOR [90 h]; ELECTRICIANS SK [280 h]; CABLE QTY [230 lm] | 137,979 | 20 |  | 1AP9EWFF20 | DUKHCON1AP9ELFF4045 | DUKHCONP1AZ9ELFF4045 | DH | CON | 1A | Z9 | MEP | EW | FF | B02 | B02-D09 | RES-1A |
| DUKHCONP1AZ9ELFF4050 |  | Installation of Telephone System | 25d | 2014-10-15 | 2014-11-12 | DUKHCONP1AZ9ELGF4030 SS+10d, DUKHCONP1AZ9MSEX5010, DUKHCONP1AZ9ELGF4030 FF+10d, DUKHCONP1AZ9ARFF3360 FF+5d, DUKHCONP1AZ9ARFF3360 SS+5d | -15d | 8d | LABOR- SUBCONTRACTOR [60 h]; ELECTRICIANS SK [504 h]; TELEPHONE SOCKETS QTY [45 ea] | 45,656 | 40 |  | 1AP9EWFF40 | DUKHCON1AP9ELFF4050 | DUKHCONP1AZ9ELFF4050 | DH | CON | 1A | Z9 | MEP | EW | FF | B02 | B02-D09 | RES-1A |
| DUKHCONP1AZ9ELFF4055 |  | Install. of CAMS & Fire Fighting Accessories | 25d | 2014-10-15 | 2014-11-12 | DUKHCONP1AZ9ARFF3360 FF+7d, DUKHCONP1AZ9ELGF4015 FF+5d, DUKHCONP1AZ8ELFF4055, DUKHCONP1AZ9ARFF3360 SS+7d, DUKHCONP1AZ9ELGF4015 SS+5d | -23d | 1d | LABOR- SUBCONTRACTOR [450 h]; MECHANICALS SK [810 h]; SMOKE DETECTOR POINTS QTY [115 ea]; FIRE EXTINGUISHER QTY [30 ea] | 88,928 | 35 |  | 1AP9EWFF35 | DUKHCON1AP9ELFF4055 | DUKHCONP1AZ9ELFF4055 | DH | CON | 1A | Z9 | MEP | EW | FF | B02 | B02-D09 | RES-1A |
| DUKHCONP1AZ9ELFF4060 |  | Installation of DBS,MCCB Accessories. | 20d | 2014-10-19 | 2014-11-10 | DUKHCONP1AZ9ARFF3360 FF+5d, DUKHCONP1AZ8ELFF4060, DUKHCONP1AZ9ELFF4045 SS+5d, DUKHCONP1AZ9ELFF4045 FF+5d, DUKHCONP1AZ9ARFF3360 SS+8d | -21d | 2d | LABOR- SUBCONTRACTOR [60 h]; ELECTRICIANS SK [224 h]; MCCB QTY [80 ea]; DB QTY [10 ea] | 32,549 | 25 |  | 1AP9EWFF25 | DUKHCON1AP9ELFF4060 | DUKHCONP1AZ9ELFF4060 | DH | CON | 1A | Z9 | MEP | EW | FF | B02 | B02-D09 | RES-1A |
| DUKHCONP1AZ9ELFF4065 |  | Installation of Lighting fixtures & Accessories | 25d | 2014-10-27 | 2014-11-24 | DUKHCONP1AZ9ARFF3360 SS+10d, DUKHCONP1AZ9ARFF3360 FF+10d, DUKHCONP1AZ8ELFF4065, DUKHCONP1AZ9ELGF4025 SS+5d, DUKHCONP1AZ9ELFF4060 FF+5d, DUKHCONP1AZ9ELGF4025 FF+5d, DUKHCONP1AZ9ELFF4060 SS+5d | -23d | 0d | LABOR- SUBCONTRACTOR [720 h]; ELECTRICIANS SK [1344 h]; LIGHTS QTY [600 ea] | 192,876 | 30 |  | 1AP9EWFF30 | DUKHCON1AP9ELFF4065 | DUKHCONP1AZ9ELFF4065 | DH | CON | 1A | Z9 | MEP | EW | FF | B02 | B02-D09 | RES-1A |

Notes:
- DUKHCONP1AZ9ARRF3630: Expenses: P1A-Roofing 70990
- DUKHCONP1AZ9ARRF3635: Expenses: P1A-Roofing 54992
- DUKHCONP1AZ9ARRF3640: Expenses: P1A-Roofing 69920
- DUKHCONP1AZ9ARRF3645: Expenses: P1A-Roofing 104180
- DUKHCONP1AZ9ARRF3650: Expenses: P1A-Metal work 79184
- DUKHCONP1AZ9ARRF3655: Expenses: P1A-Roofing 33250
- DUKHCONP1AZ9ARRF3660: Expenses: P1A-Metal work 66506
- DUKHCONP1AZ9AREL3665: Expenses: P1A-Finishes 136118
- DUKHCONP1AZ9AREL3670: Expenses: P1A-Finishes 89774
- DUKHCONP1AZ9AREL3680: Expenses: P1A-Painting and Decorating 107508
- DUKHCONP1AZ9ELGF4000: Expenses: P1A-Electrical Installations 41346
- DUKHCONP1AZ9ELGF4005: Expenses: P1A-Electrical Installations 9420
- DUKHCONP1AZ9ELGF4010: Expenses: P1A-Electrical Installations 140022
- DUKHCONP1AZ9ELGF4015: Expenses: P1A-Electrical Installations 88958
- DUKHCONP1AZ9ELGF4020: Expenses: P1A-Electrical Installations 32561
- DUKHCONP1AZ9ELGF4025: Expenses: P1A-Electrical Installations 192893
- DUKHCONP1AZ9ELGF4030: Expenses: P1A-Electrical Installations 47702
- DUKHCONP1AZ9ELFF4035: Expenses: P1A-Electrical Installations 40824
- DUKHCONP1AZ9ELFF4040: Expenses: P1A-Electrical Installations 9400
- DUKHCONP1AZ9ELFF4045: Expenses: P1A-Electrical Installations 137979
- DUKHCONP1AZ9ELFF4050: Expenses: P1A-Electrical Installations 45656
- DUKHCONP1AZ9ELFF4055: Expenses: P1A-Electrical Installations 88928
- DUKHCONP1AZ9ELFF4060: Expenses: P1A-Electrical Installations 32549
- DUKHCONP1AZ9ELFF4065: Expenses: P1A-Electrical Installations 192876

| ID | WBS | Activity | Duration | Start | Finish | Predecessors | Total float | Free float | Resources | Cost | CODE | P3 ACTID | P6 ID (old) | NP61D | PROJECT | PHASES | PACKAGE | PART | ELEMENTS | STEP | FLOORS | BILL NOS | BILL DIVISION | RES PACK |
| --- | --- | --- | --- | --- | --- | --- | --- | --- | --- | --- | --- | --- | --- | --- | --- | --- | --- | --- | --- | --- | --- | --- | --- | --- |
|  | 20 | **ROOF** |  | 2014-11-10 | 2014-12-11 |  |  |  |  |  |  |  |  |  |  |  |  |  |  |  |  |  |  |  |
| DUKHCONP1AZ9ELRF4070 |  | Installation of Isolator | 18d | 2014-11-10 | 2014-11-30 | DUKHCONP1AZ9ELFF4065 FF+5d, DUKHCONP1AZ9ELFF4050 SS+5d, DUKHCONP1AZ9ELFF4065 SS+5d, DUKHCONP1AZ9ELFF4045 FF+10d, DUKHCONP1AZ9ARRF3645 FF+7d, DUKHCONP1AZ9ELFF4050 FF+7d, DUKHCONP1AZ9ARRF3645 SS+7d, DUKHCONP1AZ9ELFF4045 SS+10d | -23d | 0d | LABOR- SUBCONTRACTOR [180 h]; ELECTRICIANS SK [336 h]; ISOLATOR QTY [55 ea] | 68,362 | 10 | 1AP9EWRF10 | DUKHCON1AP9ELRF4070 | DUKHCONP1AZ9ELRF4070 | DH | CON | 1A | Z9 | MEP | EW | RF | B02 | B02-D09 | RES-1A |
| DUKHCONP1AZ9ELRF4075 |  | Installation of TV Dish Antenna | 23d | 2014-11-16 | 2014-12-11 | DUKHCONP1AZ9ELRF4070 FF+5d, DUKHCONP1AZ9ELRF4070 SS+5d | -23d | 1d | LABOR- SUBCONTRACTOR [300 h]; ELECTRICIANS SK [616 h]; CONTROL BOX QTY [15 ea]; SWITCHING BOX QTY [40 ea] | 50,745 | 15 | 1AP9EWRF15 | DUKHCON1AP9ELRF4075 | DUKHCONP1AZ9ELRF4075 | DH | CON | 1A | Z9 | MEP | EW | RF | B02 | B02-D09 | RES-1A |
|  | 15 | **PLUMBING, DRAINAGE & FIRE FIGHTING WORKS** |  | 2014-02-26 | 2014-12-11 |  |  |  |  |  |  |  |  |  |  |  |  |  |  |  |  |  |  |  |
|  | 10 | **GROUND FLOOR** |  | 2014-02-26 | 2014-10-21 |  |  |  |  |  |  |  |  |  |  |  |  |  |  |  |  |  |  |  |
| DUKHCONP1AZ9PLUG4300 |  | Drainage / Storm Pipes in Grade Slab | 16d | 2014-02-26 | 2014-03-16 | DUKHCONP1AZ9STUG1040 SS+10d, DUKHCONP1AZ9STUG1040 FF+10d | -24d | 0d | LABOR- SUBCONTRACTOR [30 h]; MECHANICALS SK [54 h]; DRAINAGE PIPES QTY [100 lm] | 44,331 | 10 | 1AP9PLUG10 | DUKHCON1AP9SBUG4300 | DUKHCONP1AZ9PLUG4300 | DH | CON | 1A | Z9 | ST | SB | UG | B02 | B02-D07 | RES-1A |
| DUKHCONP1AZ9PLGF4305 |  | Installation of Plumbing pipes & testing | 18d | 2014-06-19 | 2014-07-09 | DUKHCONP1AZ9ARGF3000 SS+7d, DUKHCONP1AZ8PLGF4305, DUKHCONP1AZ9ARGF3000 FF+7d | -6d | 0d | LABOR- SUBCONTRACTOR [120 h]; MECHANICALS SK [432 h]; PLUMB PIPES QTY [410 lm] | 107,465 | 10 | 1AP9PLGF10 | DUKHCON1AP9PLGF4305 | DUKHCONP1AZ9PLGF4305 | DH | CON | 1A | Z9 | MEP | PL | GF | B02 | B02-D07 | RES-1A |
| DUKHCONP1AZ9PLGF4310 |  | Installation of Drainage pipes &testing | 18d | 2014-06-19 | 2014-07-09 | DUKHCONP1AZ9ARGF3000 FF+7d, DUKHCONP1AZ9ARGF3000 SS+7d, DUKHCONP1AZ9PLGF4305 SS, DUKHCONP1AZ9PLGF4305 FF | -3d | 12d | LABOR- SUBCONTRACTOR [60 h]; MECHANICALS SK [162 h]; DRAINAGE PIPES QTY [310 lm] | 3,708 | 15 | 1AP9PLGF15 | DUKHCON1AP9PLGF4310 | DUKHCONP1AZ9PLGF4310 | DH | CON | 1A | Z9 | MEP | PL | GF | B02 | B02-D07 | RES-1A |
| DUKHCONP1AZ9PLGF4315 |  | Sanitary Fittings & Accessories | 20d | 2014-09-21 | 2014-10-15 | DUKHCONP1AZ9PLGF4310 FF+5d, DUKHCONP1AZ8PLGF4315, DUKHCONP1AZ9ARGF3065 SS+5d, DUKHCONP1AZ9PLGF4310 SS+5d, DUKHCONP1AZ9ARGF3065 FF+5d | 21d | 0d | LABOR- SUBCONTRACTOR [60 h]; MECHANICALS SK [108 h]; SANITARY ACC QTY [75 ea] | 130,364 | 20 | 1AP9PLGF20 | DUKHCON1AP9PLGF4315 | DUKHCONP1AZ9PLGF4315 | DH | CON | 1A | Z9 | MEP | PL | GF | B02 | B02-D07 | RES-1A |
| DUKHCONP1AZ9PLGF4320 |  | Installation of Water Heater | 15d | 2014-10-02 | 2014-10-21 | DUKHCONP1AZ9ARGF3060 SS+5d, DUKHCONP1AZ9PLGF4315 FF+5d, DUKHCONP1AZ9ARGF3060 FF+5d, DUKHCONP1AZ8PLGF4320, DUKHCONP1AZ9PLGF4315 SS+5d | 21d | 45d | LABOR- SUBCONTRACTOR [60 h]; MECHANICALS SK [108 h]; WATER HEATER QTY [15 ea] | 11,164 | 25 | 1AP9PLGF25 | DUKHCON1AP9PLGF4320 | DUKHCONP1AZ9PLGF4320 | DH | CON | 1A | Z9 | MEP | PL | GF | B02 | B02-D07 | RES-1A |
|  | 15 | **FIRST FLOORS** |  | 2014-08-05 | 2014-11-19 |  |  |  |  |  |  |  |  |  |  |  |  |  |  |  |  |  |  |  |
| DUKHCONP1AZ9PLFF4325 |  | Installation of Plumbing pipes & testing | 18d | 2014-08-05 | 2014-08-25 | DUKHCONP1AZ9ARFF3300 FF+8d, DUKHCONP1AZ9ARFF3300 SS+7d | -24d | 0d | LABOR- SUBCONTRACTOR [120 h]; MECHANICALS SK [432 h]; PLUMB PIPES QTY [410 lm] | 104,681 | 10 | 1AP9PLFF10 | DUKHCON1AP9PLFF4325 | DUKHCONP1AZ9PLFF4325 | DH | CON | 1A | Z9 | MEP | PL | FF | B02 | B02-D07 | RES-1A |
| DUKHCONP1AZ9PLFF4330 |  | Installation of Drainage pipes & testing | 18d | 2014-08-05 | 2014-08-25 | DUKHCONP1AZ9ARFF3300 FF+7d, DUKHCONP1AZ9ARFF3300 SS+7d, DUKHCONP1AZ9PLFF4325 SS, DUKHCONP1AZ8PLFF4330, DUKHCONP1AZ9PLFF4325 FF | -2d | 22d | LABOR- SUBCONTRACTOR [60 h]; MECHANICALS SK [162 h]; DRAINAGE PIPES QTY [310 lm] | 3,177 | 15 | 1AP9PLFF15 | DUKHCON1AP9PLFF4330 | DUKHCONP1AZ9PLFF4330 | DH | CON | 1A | Z9 | MEP | PL | FF | B02 | B02-D07 | RES-1A |
| DUKHCONP1AZ9PLFF4335 |  | Sanitary Fittings & Accessories | 20d | 2014-10-22 | 2014-11-13 | DUKHCONP1AZ9PLFF4330 SS+5d, DUKHCONP1AZ9ARFF3365 SS, DUKHCONP1AZ9ARFF3365 FF+5d, DUKHCONP1AZ9PLFF4330 FF+5d | -19d | 0d | LABOR- SUBCONTRACTOR [30 h]; MECHANICALS SK [54 h]; SANITARY ACC QTY [70 ea] | 141,370 | 20 | 1AP9PLFF20 | DUKHCON1AP9PLFF4335 | DUKHCONP1AZ9PLFF4335 | DH | CON | 1A | Z9 | MEP | PL | FF | B02 | B02-D07 | RES-1A |
| DUKHCONP1AZ9PLFF4340 |  | Installation of Water Heater | 15d | 2014-11-03 | 2014-11-19 | DUKHCONP1AZ9PLFF4335 FF+5d, DUKHCONP1AZ9ARFF3360 SS+5d, DUKHCONP1AZ9ARFF3360 FF+5d, DUKHCONP1AZ9PLFF4335 SS+5d, DUKHCONP1AZ8PLFF4340 | -19d | 4d | WATER HEATER QTY [10 ea]; LABOR- SUBCONTRACTOR [30 h]; MECHANICALS SK [54 h] | 8,756 | 25 | 1AP9PLFF25 | DUKHCON1AP9PLFF4340 | DUKHCONP1AZ9PLFF4340 | DH | CON | 1A | Z9 | MEP | PL | FF | B02 | B02-D07 | RES-1A |
|  | 20 | **ROOF** |  | 2014-08-28 | 2014-12-11 |  |  |  |  |  |  |  |  |  |  |  |  |  |  |  |  |  |  |  |
| DUKHCONP1AZ9PLRF4345 |  | Installation of Plumbing pipes & fittings | 15d | 2014-08-28 | 2014-09-14 | DUKHCONP1AZ9ARRF3605 FF+7d, DUKHCONP1AZ9ARRF3605 SS+7d | 28d | 26d | LABOR- SUBCONTRACTOR [30 h]; MECHANICALS SK [108 h]; PLUMB PIPES QTY [120 lm] | 16,128 | 10 | 1AP9PLRF10 | DUKHCON1AP9PLRF4345 | DUKHCONP1AZ9PLRF4345 | DH | CON | 1A | Z9 | MEP | PL | RF | B02 | B02-D07 | RES-1A |
| DUKHCONP1AZ9PLRF4350 |  | Installation of Rain water Pipes | 15d | 2014-10-07 | 2014-10-26 | DUKHCONP1AZ9PLRF4345 SS+8d, DUKHCONP1AZ9AREL3665 SS+7d, DUKHCONP1AZ9ARRF3645 SS+5d, DUKHCONP1AZ9ARRF3645 FF+5d, DUKHCONP1AZ8PLRF4350, DUKHCONP1AZ9AREL3665 FF+7d, DUKHCONP1AZ9PLFF4330 SS+5d, DUKHCONP1AZ9PLFF4330 FF+5d, DUKHCONP1AZ9PLRF4345 FF+8d | 2d | 17d | LABOR- SUBCONTRACTOR [30 h]; MECHANICALS SK [54 h]; DRAINAGE PIPES QTY [100 lm] | 117,396 | 15 | 1AP9PLRF15 | DUKHCON1AP9PLRF4350 | DUKHCONP1AZ9PLRF4350 | DH | CON | 1A | Z9 | MEP | PL | RF | B02 | B02-D07 | RES-1A |
| DUKHCONP1AZ9PLRF4355 |  | Roof Water Tank Installation & Connections | 25d | 2014-11-13 | 2014-12-11 | DUKHCONP1AZ9ARRF3655 SS+5d, DUKHCONP1AZ9PLFF4340 FF+5d, DUKHCONP1AZ9ARRF3655 FF+5d, DUKHCONP1AZ9PLRF4345 SS+8d, DUKHCONP1AZ8PLRF4355, DUKHCONP1AZ9PLRF4345 FF+8d, DUKHCONP1AZ9PLFF4340 SS+5d, DUKHCONP1AZ9PLRF4350 SS+5d, DUKHCONP1AZ9PLRF4350 FF+5d | -23d | 1d | LABOR- SUBCONTRACTOR [150 h]; MECHANICALS SK [270 h]; WATER TANK QTY [25 ea] | 740,746 | 20 | 1AP9PLRF20 | DUKHCON1AP9PLRF4355 | DUKHCONP1AZ9PLRF4355 | DH | CON | 1A | Z9 | MEP | PL | RF | B02 | B02-D07 | RES-1A |
|  | 20 | **AC WORKS** |  | 2014-07-09 | 2014-12-09 |  |  |  |  |  |  |  |  |  |  |  |  |  |  |  |  |  |  |  |
|  | 10 | **GROUND FLOOR** |  | 2014-07-09 | 2014-10-19 |  |  |  |  |  |  |  |  |  |  |  |  |  |  |  |  |  |  |  |
| DUKHCONP1AZ9ACGF4600 |  | Installation AC Pipes | 20d | 2014-07-09 | 2014-07-31 | DUKHCONP1AZ9ARGF3005 SS+7d, DUKHCONP1AZ8ACGF4600, DUKHCONP1AZ9ARGF3005 FF+7d | 25d | 28d | LABOR- SUBCONTRACTOR [270 h]; AC TECHNICIAN SK [952 h]; AC PIPES QTY [2510 lm] | 10,085 | 10 | 1AP9ACGF10 | DUKHCON1AP9ACGF4600 | DUKHCONP1AZ9ACGF4600 | DH | CON | 1A | Z9 | MEP | AC | GF | B02 | B02-D08 | RES-1A |
| DUKHCONP1AZ9ACGF4605 |  | Fixing of Ventilation Equipments | 25d | 2014-09-03 | 2014-10-01 | DUKHCONP1AZ9ARGF3055 SS+7d, DUKHCONP1AZ9ARGF3055 FF+7d, DUKHCONP1AZ9ACGF4600 SS+10d, DUKHCONP1AZ8ACGF4605, DUKHCONP1AZ9ACGF4600 FF+10d, DUKHCONP1AZ9ARGF3060 FF+7d, DUKHCONP1AZ9ARGF3060 SS+7d | 8d | 0d | VENTILIATION EQP QTY [50 ea]; LABOR- SUBCONTRACTOR [60 h]; AC TECHNICIAN SK [168 h] | 21,611 | 15 | 1AP9ACGF15 | DUKHCON1AP9ACGF4605 | DUKHCONP1AZ9ACGF4605 | DH | CON | 1A | Z9 | MEP | AC | GF | B02 | B02-D08 | RES-1A |
| DUKHCONP1AZ9ACGF4610 |  | Fixing of Split AC | 20d | 2014-09-24 | 2014-10-19 | DUKHCONP1AZ8ACGF4610, DUKHCONP1AZ9ACGF4605 SS+13d, DUKHCONP1AZ9ACGF4605 FF+13d | 8d | 11d | LABOR- SUBCONTRACTOR [90 h]; AC TECHNICIAN SK [280 h]; SPLIT UNIT QTY [50 ea] | 61,116 | 20 | 1AP9ACGF20 | DUKHCON1AP9ACGF4610 | DUKHCONP1AZ9ACGF4610 | DH | CON | 1A | Z9 | MEP | AC | GF | B02 | B02-D08 | RES-1A |

Notes:
- DUKHCONP1AZ9ELRF4070: Expenses: P1A-Electrical Installations 68362
- DUKHCONP1AZ9ELRF4075: Expenses: P1A-Electrical Installations 50745
- DUKHCONP1AZ9PLUG4300: Expenses: P1A-Plumbing and Drainage works 44331
- DUKHCONP1AZ9PLGF4305: Expenses: P1A-Plumbing and Drainage works 107465
- DUKHCONP1AZ9PLGF4310: Expenses: P1A-Plumbing and Drainage works 3708
- DUKHCONP1AZ9PLGF4315: Expenses: P1A-Plumbing and Drainage works 130364
- DUKHCONP1AZ9PLGF4320: Expenses: P1A-Plumbing and Drainage works 11164
- DUKHCONP1AZ9PLFF4325: Expenses: P1A-Plumbing and Drainage works 104681
- DUKHCONP1AZ9PLFF4330: Expenses: P1A-Plumbing and Drainage works 3177
- DUKHCONP1AZ9PLFF4335: Expenses: P1A-Plumbing and Drainage works 141370
- DUKHCONP1AZ9PLFF4340: Expenses: P1A-Plumbing and Drainage works 8756
- DUKHCONP1AZ9PLRF4345: Expenses: P1A-Plumbing and Drainage works 16128
- DUKHCONP1AZ9PLRF4350: Expenses: P1A-Plumbing and Drainage works 117396
- DUKHCONP1AZ9PLRF4355: Expenses: P1A-Plumbing and Drainage works 740746
- DUKHCONP1AZ9ACGF4600: Expenses: P1A-Air-conditioning and Ventilation works 10085
- DUKHCONP1AZ9ACGF4605: Expenses: P1A-Air-conditioning and Ventilation works 21611
- DUKHCONP1AZ9ACGF4610: Expenses: P1A-Air-conditioning and Ventilation works 61116

| ID | WBS | Activity | Duration | Start | Finish | Predecessors | Total float | Free float | Resources | Cost | CODE | P3 ACTID | P6 ID (old) | NP61D | PROJECT | PHASES | PACKAGE | PART | ELEMENTS | STEP | FLOORS | BILL NOS | BILL DIVISION | RES PACK |
| --- | --- | --- | --- | --- | --- | --- | --- | --- | --- | --- | --- | --- | --- | --- | --- | --- | --- | --- | --- | --- | --- | --- | --- | --- |
|  | 15 | **FIRST FLOORS** |  | 2014-08-26 | 2014-11-27 |  |  |  |  |  |  |  |  |  |  |  |  |  |  |  |  |  |  |  |
| DUKHCONP1AZ9ACFF4615 |  | Installation AC Pipes | 20d | 2014-08-26 | 2014-09-17 | DUKHCONP1AZ8ACFF4615, DUKHCONP1AZ9ARFF3305 FF+7d, DUKHCONP1AZ9ARFF3305 SS+7d | 3d | 21d | LABOR- SUBCONTRACTOR [270 h]; AC TECHNICIAN SK [952 h]; AC PIPES QTY [2510 lm] | 9,444 | 10 | 1AP9ACFF10 | DUKHCON1AP9ACFF4615 | DUKHCONP1AZ9ACFF4615 | DH | CON | 1A | Z9 | MEP | AC | FF | B02 | B02-D08 | RES-1A |
| DUKHCONP1AZ9ACFF4620 |  | Fixing of Ventilation Equipments | 25d | 2014-10-15 | 2014-11-12 | DUKHCONP1AZ9ACFF4615 FF+10d, DUKHCONP1AZ8ACFF4620, DUKHCONP1AZ9ACFF4615 SS+10d, DUKHCONP1AZ9ARFF3360 SS+7d, DUKHCONP1AZ9ARFF3360 FF+7d | -22d | 0d | LABOR- SUBCONTRACTOR [30 h]; AC TECHNICIAN SK [112 h]; VENTILIATION EQP QTY [30 ea] | 21,354 | 15 | 1AP9ACFF15 | DUKHCON1AP9ACFF4620 | DUKHCONP1AZ9ACFF4620 | DH | CON | 1A | Z9 | MEP | AC | FF | B02 | B02-D08 | RES-1A |
| DUKHCONP1AZ9ACFF4625 |  | Fixing of Split AC | 20d | 2014-11-05 | 2014-11-27 | DUKHCONP1AZ9ACFF4620 SS+13d, DUKHCONP1AZ8ACFF4625, DUKHCONP1AZ9ACFF4620 FF+13d | -22d | 0d | LABOR- SUBCONTRACTOR [90 h]; AC TECHNICIAN SK [280 h]; SPLIT UNIT QTY [50 ea] | 67,612 | 20 | 1AP9ACFF20 | DUKHCON1AP9ACFF4625 | DUKHCONP1AZ9ACFF4625 | DH | CON | 1A | Z9 | MEP | AC | FF | B02 | B02-D08 | RES-1A |
|  | 20 | **ROOF** |  | 2014-09-28 | 2014-12-09 |  |  |  |  |  |  |  |  |  |  |  |  |  |  |  |  |  |  |  |
| DUKHCONP1AZ9ACRF4630 |  | Installation of Refrigerant Pipes | 25d | 2014-09-28 | 2014-10-28 | DUKHCONP1AZ9ACGF4600 SS+7d, DUKHCONP1AZ9ACGF4600 FF+7d, DUKHCONP1AZ9ARRF3645 FF+7d, DUKHCONP1AZ8ACRF4630, DUKHCONP1AZ9ACFF4615 FF+7d, DUKHCONP1AZ9ARRF3645 SS+7d, DUKHCONP1AZ9ACFF4615 SS+7d | 10d | 31d | LABOR- SUBCONTRACTOR [120 h]; AC TECHNICIAN SK [392 h]; AC PIPES QTY [1060 lm] | 31,100 | 10 | 1AP9ACRF10 | DUKHCON1AP9ACRF4630 | DUKHCONP1AZ9ACRF4630 | DH | CON | 1A | Z9 | MEP | AC | RF | B02 | B02-D08 | RES-1A |
| DUKHCONP1AZ9ACRF4635 |  | Installation of Condensing Unit | 25d | 2014-11-11 | 2014-12-09 | DUKHCONP1AZ9ACGF4610 SS+5d, DUKHCONP1AZ9ACFF4625 SS+5d, DUKHCONP1AZ8ACRF4635, DUKHCONP1AZ9ACRF4630 FF+5d, DUKHCONP1AZ9ACGF4610 FF+5d, DUKHCONP1AZ9ACFF4625 FF+5d, DUKHCONP1AZ9ACRF4630 SS+5d | -21d | 3d | LABOR- SUBCONTRACTOR [150 h]; AC TECHNICIAN SK [560 h]; AC UNITS QTY [100 ea] | 168,273 | 15 | 1AP9ACRF15 | DUKHCON1AP9ACRF4635 | DUKHCONP1AZ9ACRF4635 | DH | CON | 1A | Z9 | MEP | AC | RF | B02 | B02-D08 | RES-1A |
|  | 25 | **EXTERNAL WORKS** |  | 2014-07-15 | 2014-12-02 |  |  |  |  |  |  |  |  |  |  |  |  |  |  |  |  |  |  |  |
|  | 10 | **MISCELLANEOUS** |  | 2014-07-15 | 2014-12-02 |  |  |  |  |  |  |  |  |  |  |  |  |  |  |  |  |  |  |  |
| DUKHCONP1AZ9MSEX5000 |  | Construction of Manholes | 25d | 2014-07-15 | 2014-08-16 | DUKHCONP1AZ9STRF2055 SS+5d, DUKHCONP1AZ9PLGF4310 SS+10d, DUKHCONP1AZ9PLGF4310 FF+10d, DUKHCONP1AZ9STRF2055 FF+5d | -15d | 0d | MANHOLES SK [480 h]; LABOR- SUBCONTRACTOR [180 h]; MANHOLES QTY [60 ea] | 70,214 | 25 | 1AP9MSEX25 | DUKHCON1AP9MS005000 | DUKHCONP1AZ9MSEX5000 | DH | CON | 1A | Z9 | EX | MS |  | B02 | B02-D12 | RES-1A |
| DUKHCONP1AZ9MSEX5005 |  | Construction of Soak pit, Chambers | 25d | 2014-07-29 | 2014-08-30 | DUKHCONP1AZ9MSEX5000 SS+12d, DUKHCONP1AZ9MSEX5000 FF+12d | -15d | 0d | MANHOLES SK [160 h]; LABOR- SUBCONTRACTOR [60 h]; SOAKPIT QTY [20 ea] | 41,290 | 30 | 1AP9MSEX30 | DUKHCON1AP9MS005005 | DUKHCONP1AZ9MSEX5005 | DH | CON | 1A | Z9 | EX | MS |  | B02 | B02-D12 | RES-1A |
| DUKHCONP1AZ9MSEX5015 |  | Construction of grease Trap | 20d | 2014-08-21 | 2014-09-13 | DUKHCONP1AZ9MSEX5005 FF+12d, DUKHCONP1AZ9MSEX5005 SS+12d | -15d | 0d | LABOR- SUBCONTRACTOR [30 h]; GREASE TRAP QTY [20 lm]; HANDRAIL ERECTOR SKILLED [40 h] | 28,370 | 20 | 1AP9MSEX20 | DUKHCON1AP9MS005015 | DUKHCONP1AZ9MSEX5015 | DH | CON | 1A | Z9 | EX | MS |  | B02 | B02-D07 | RES-1A |
| DUKHCONP1AZ9MSEX5020 |  | Construction Entrance Ramp | 25d | 2014-09-09 | 2014-10-07 | DUKHCONP1AZ9STRF2055 SS, DUKHCONP1AZ9STRF2055 FF, DUKHCONP1AZ8MSEX5020 | -8d | 0d | SCREED MASON SK [120 h]; CONCRETE MASON SK [240 h]; INTERLOCK MASON SK [160 h]; LABOR- SUBCONTRACTOR [240 h]; LABOR- SUBCONTRACTOR [60 h]; SCREED QTY [140 Sqm]; CONCRETE QTY [120 Cum]; INTERLOCK QTY [190 Sqm] | 39,710 | 10 | 1AP9MSEX10 | DUKHCON1AP9MS005020 | DUKHCONP1AZ9MSEX5020 | DH | CON | 1A | Z9 | EX | MS |  | B02 | B02-D12 | RES-1A |
| DUKHCONP1AZ9MSEX5010 |  | Telephone cable laying | 25d | 2014-09-14 | 2014-10-14 | DUKHCONP1AZ9MSEX5015 | -15d | 0d | LABOR- SUBCONTRACTOR [125 h]; ELECTRICIANS SK [125 h]; CONCRETE MASON SK [125 h] | 4,446 |  | 1AP9MSEX40 | DUKHCON1AP9MS005010 | DUKHCONP1AZ9MSEX5010 | DH | CON | 1A | Z9 | EX | MS |  | B02 | B02-D12 | RES-1A |
| DUKHCONP1AZ9MSEX5025 |  | SS.Handrails and Balustrades | 20d | 2014-09-27 | 2014-10-21 | DUKHCONP1AZ9MSEX5020 FF+10d, DUKHCONP1AZ9MSEX5020 SS+10d | -5d | 0d | LABOR- SUBCONTRACTOR [30 h]; S.S.BALUSTRADE QTY [20 lm]; HANDRAIL ERECTOR SKILLED [40 h] | 101,774 | 15 | 1AP9MSEX15 | DUKHCON1AP9MS005025 | DUKHCONP1AZ9MSEX5025 | DH | CON | 1A | Z9 | EX | MS |  | B02 | B02-D12 | RES-1A |
| DUKHCONP1AZ9MSEX5335 |  | Aluminum Roll-up Shutter with 2m Wall | 25d | 2014-11-04 | 2014-12-02 | DUKHCONP1AZ8MSEX5335 SS+7d, DUKHCONI1AZ5BWGL5325 SS+10d | 10d | 34d | LABOR- SUBCONTRACTOR [200 h]; DOOR ERECTOR SK [200 h]; ROLLING SHUTTER QTY [10 ea] | 74,408 | 25 | 1AP9BWFR25 | DUKHCON1AP9MS005335 | DUKHCONP1AZ9MSEX5335 | DH | CON | 1A | Z9 | EX | MS |  | B02 | B02-D12 | RES-1A |
|  | 15 | **WATER TANK ENCLOSURE** |  | 2014-07-28 | 2014-12-02 |  |  |  |  |  |  |  |  |  |  |  |  |  |  |  |  |  |  |  |
| DUKHCONP1AZ9WEEX5030 |  | Excavation | 20d | 2014-07-28 | 2014-08-23 | DUKHCONP1AZ9STRF2055 FF+5d, DUKHCONP1AZ9STRF2055 SS+5d, DUKHCONP1AZ8WEEX5030 | 24d | 0d | LABOR- SUBCONTRACTOR [30 h]; EXCAVATION QTY [50 Cum]; LOADER [10 h]; POCLAIN [20 h]; TRUCK [10 h]; EQUIP OPERATORS [40 h] | 1,120 | 10 | 1AP9WEEX10 | DUKHCON1AP9WE005030 | DUKHCONP1AZ9WEEX5030 | DH | CON | 1A | Z9 | EX | WE |  | B02 | B02-D12 | RES-1A |
| DUKHCONP1AZ9WEEX5035 |  | Construction of Raft | 25d | 2014-08-06 | 2014-09-03 | DUKHCONP1AZ9WEEX5030 FF+10d, DUKHCONP1AZ9WEEX5030 SS+5d | 24d | 0d | STEEL FIXERS SK [80 h]; CARPENTERS SK [480 h]; CONCRETE MASON SK [40 h]; LABOR- SUBCONTRACTOR [450 h]; REINFORCEMENT BARS QTY [780 kg]; FORMWORK QTY [230 Sqm]; CONCRETE QTY [25 Cum] | 19,020 | 15 | 1AP9WEEX15 | DUKHCON1AP9WE005035 | DUKHCONP1AZ9WEEX5035 | DH | CON | 1A | Z9 | EX | WE |  | B02 | B02-D12 | RES-1A |
| DUKHCONP1AZ9WEEX5040 |  | Block works & Plastering | 25d | 2014-08-16 | 2014-09-13 | DUKHCONP1AZ9WEEX5035 SS+8d, DUKHCONP1AZ9WEEX5035 FF+8d | 24d | 0d | BLOCK MASON SK [160 h]; PLASTER MASON SK [240 h]; LABOR- SUBCONTRACTOR [240 h]; BLOCK QTY [70 Sqm]; PLASTER QTY [140 Sqm] | 16,978 | 20 | 1AP9WEEX20 | DUKHCON1AP9WE005040 | DUKHCONP1AZ9WEEX5040 | DH | CON | 1A | Z9 | EX | WE |  | B02 | B02-D12 | RES-1A |
| DUKHCONP1AZ9WEEX5045 |  | Flooring & Painting | 25d | 2014-08-23 | 2014-09-20 | DUKHCONP1AZ9WEEX5040 SS+6d, DUKHCONP1AZ9WEEX5040 FF+6d | 24d | 29d | LABOR- SUBCONTRACTOR [90 h]; PAINT QTY [195 Sqm]; EPOXY QTY [55 Sqm]; PAINTERS SK [160 h]; EPOXY SK [40 h] | 15,930 | 25 | 1AP9WEEX25 | DUKHCON1AP9WE005045 | DUKHCONP1AZ9WEEX5045 | DH | CON | 1A | Z9 | EX | WE |  | B02 | B02-D12 | RES-1A |
| DUKHCONP1AZ9WEEX5050 |  | Installation of Steel Gate | 20d | 2014-10-08 | 2014-11-02 | DUKHCONP1AZ9MSEX5025 FF+10d, DUKHCONP1AZ9WEEX5045 SS+5d, DUKHCONP1AZ9WEEX5045 FF+6d | -5d | 9d | LABOR- SUBCONTRACTOR [30 h]; GATE QTY [5 ea]; GATE ERECTOR SK [40 h] | 89,840 | 30 | 1AP9WEEX30 | DUKHCON1AP9WE005050 | DUKHCONP1AZ9WEEX5050 | DH | CON | 1A | Z9 | EX | WE |  | B02 | B02-D12 | RES-1A |
| DUKHCONP1AZ9WEEX5060 |  | Structural steel & SS Shed cover installation | 25d | 2014-10-27 | 2014-11-24 | DUKHCONP1AZ9WEEX5050 SS+5d, DUKHCONP1AZ9MSEX5025 FF+10d, DUKHCONP1AZ9WEEX5050 FF+10d, DUKHCONP1AZ8WEEX5060 | -14d | 1d | LABOR- SUBCONTRACTOR [180 h]; STRUCTURAL STEEL QTY [160 kg]; SS SHED COVER QTY [50 Sqm]; STEEL ERECTOR SK [240 h] | 56,824 | 35 | 1AP9WEEX35 | DUKHCON1AP9WE005060 | DUKHCONP1AZ9WEEX5060 | DH | CON | 1A | Z9 | EX | WE |  | B02 | B02-D12 | RES-1A |
| DUKHCONP1AZ9WEEX5065 |  | Install. of Water Tank,Chiller,Pump & Meter | 25d | 2014-11-04 | 2014-12-02 | DUKHCONP1AZ9MSEX5015 FF+5d, DUKHCONP1AZ9WEEX5060 FF+6d, DUKHCONP1AZ9MSEX5015 SS+5d, DUKHCONP1AZ9PLRF4350 SS+5d, DUKHCONP1AZ8WEEX5065, DUKHCONP1AZ9WEEX5060 SS+6d, DUKHCONP1AZ9PLRF4350 FF+5d | -15d | 9d | LABOR- SUBCONTRACTOR [90 h]; AC TECHNICIAN SK [56 h]; MECHANICALS SK [108 h]; WATER TANK QTY [5 ea]; CHILLER QTY [50 ea]; PUMP QTY [5 ea] | 152,942 | 40 | 1AP9WEEX40 | DUKHCON1AP9WE005065 | DUKHCONP1AZ9WEEX5065 | DH | CON | 1A | Z9 | EX | WE |  | B02 | B02-D07 | RES-1A |

Notes:
- DUKHCONP1AZ9ACFF4615: Expenses: P1A-Air-conditioning and Ventilation works 9444
- DUKHCONP1AZ9ACFF4620: Expenses: P1A-Air-conditioning and Ventilation works 21354
- DUKHCONP1AZ9ACFF4625: Expenses: P1A-Air-conditioning and Ventilation works 67612
- DUKHCONP1AZ9ACRF4630: Expenses: P1A-Air-conditioning and Ventilation works 31100
- DUKHCONP1AZ9ACRF4635: Expenses: P1A-Air-conditioning and Ventilation works 168273
- DUKHCONP1AZ9MSEX5000: Expenses: P1A-External works within the Plot Curtilage 70214
- DUKHCONP1AZ9MSEX5005: Expenses: P1A-External works within the Plot Curtilage 41290
- DUKHCONP1AZ9MSEX5015: Expenses: P1A-Plumbing and Drainage works 28370
- DUKHCONP1AZ9MSEX5020: Expenses: P1A-External works within the Plot Curtilage 39710
- DUKHCONP1AZ9MSEX5010: Expenses: P1A-External works within the Plot Curtilage 4446
- DUKHCONP1AZ9MSEX5025: Expenses: P1A-External works within the Plot Curtilage 101774
- DUKHCONP1AZ9MSEX5335: Expenses: P1A-External works within the Plot Curtilage 74408
- DUKHCONP1AZ9WEEX5030: Expenses: P1A-External works within the Plot Curtilage 1120
- DUKHCONP1AZ9WEEX5035: Expenses: P1A-External works within the Plot Curtilage 19020
- DUKHCONP1AZ9WEEX5040: Expenses: P1A-External works within the Plot Curtilage 16978
- DUKHCONP1AZ9WEEX5045: Expenses: P1A-External works within the Plot Curtilage 15930
- DUKHCONP1AZ9WEEX5050: Expenses: P1A-External works within the Plot Curtilage 89840
- DUKHCONP1AZ9WEEX5060: Expenses: P1A-External works within the Plot Curtilage 56824
- DUKHCONP1AZ9WEEX5065: Expenses: P1A-Plumbing and Drainage works 152942

| ID | WBS | Activity | Duration | Start | Finish | Predecessors | Total float | Free float | Resources | Cost | CODE | P3 ACTID | P6 ID (old) | NP61D | PROJECT | PHASES | PACKAGE | PART | ELEMENTS | STEP | BILL NOS | BILL DIVISION | RES PACK |
| --- | --- | --- | --- | --- | --- | --- | --- | --- | --- | --- | --- | --- | --- | --- | --- | --- | --- | --- | --- | --- | --- | --- | --- |
|  | 20 | **HARD LANDSCAPING** |  | 2014-09-23 | 2014-11-05 |  |  |  |  |  |  |  |  |  |  |  |  |  |  |  |  |  |  |
| DUKHCONP1AZ9HDEX5090 |  | kerb works | 20d | 2014-09-23 | 2014-10-18 | DUKHCONP1AZ8HDEX5090, DUKHCONP1AZ9MSEX5020 SS+7d, DUKHCONP1AZ9MSEX5020 FF+7d | -8d | 0d | KERBSTONE MASON SK [280 h]; LABOR- SUBCONTRACTOR [150 h]; KERBSTONE QTY [360 lm] | 16,604 | 10 | 1AP9HDEX10 | DUKHCON1AP9HD005090 | DUKHCONP1AZ9HDEX5090 | DH | CON | 1A | Z9 | EX | HD | B02 | B02-D12 | RES-1A |
| DUKHCONP1AZ9HDEX5095 |  | Cobble Stone Works | 20d | 2014-10-05 | 2014-10-29 | DUKHCONP1AZ9HDEX5090 SS+10d, DUKHCONP1AZ9HDEX5090 FF+10d | -8d | 0d | TILE MASON SK [160 h]; LABOR- SUBCONTRACTOR [90 h]; COBBLE STONE QTY [110 Sqm] | 15,290 | 15 | 1AP9HDEX15 | DUKHCON1AP9HD005095 | DUKHCONP1AZ9HDEX5095 | DH | CON | 1A | Z9 | EX | HD | B02 | B02-D12 | RES-1A |
| DUKHCONP1AZ9HDEX5100 |  | Interlock works | 20d | 2014-10-14 | 2014-11-05 | DUKHCONP1AZ9HDEX5095 FF+6d, DUKHCONP1AZ9HDEX5095 SS+6d | -8d | 0d | INTERLOCK MASON SK [200 h]; LABOR- SUBCONTRACTOR [90 h]; INTERLOCK QTY [230 Sqm] | 19,664 | 20 | 1AP9HDEX20 | DUKHCON1AP9HD005100 | DUKHCONP1AZ9HDEX5100 | DH | CON | 1A | Z9 | EX | HD | B02 | B02-D12 | RES-1A |
|  | 25 | **SOFT LANDSCAPING** |  | 2014-10-20 | 2014-11-24 |  |  |  |  |  |  |  |  |  |  |  |  |  |  |  |  |  |  |
| DUKHCONP1AZ9SLEX5105 |  | Laying of Grass/ green area | 25d | 2014-10-20 | 2014-11-17 | DUKHCONP1AZ9HDEX5100 FF+5d, DUKHCONP1AZ9HDEX5100 SS+5d | -8d | 0d | LABOR- SUBCONTRACTOR [1470 h]; SWEET SOIL QTY [420 Cum]; GRASS QTY [420 Sqm]; LANDSCAPING SK [1960 h] | 51,660 | 10 | 1AP9SLEX10 | DUKHCON1AP9SL005105 | DUKHCONP1AZ9SLEX5105 | DH | CON | 1A | Z9 | EX | SL | B02 | B02-D12 | RES-1A |
| DUKHCONP1AZ9SLEX5110 |  | Laying of Palm tree | 25d | 2014-10-27 | 2014-11-24 | DUKHCONP1AZ9SLEX5105 SS+6d, DUKHCONP1AZ9SLEX5105 FF+6d | -8d | 16d | LABOR- SUBCONTRACTOR [90 h]; SWEET SOIL QTY [60 Cum]; PLAM TREES QTY [20 ea]; LANDSCAPING SK [120 h] | 60,840 | 15 | 1AP9SLEX15 | DUKHCON1AP9SL005110 | DUKHCONP1AZ9SLEX5110 | DH | CON | 1A | Z9 | EX | SL | B02 | B02-D12 | RES-1A |
|  | 30 | **TESTING AND COMMISSIONING** |  | 2014-12-14 | 2015-01-12 |  |  |  |  |  |  |  |  |  |  |  |  |  |  |  |  |  |  |
| DUKHCONP1AZ9ACTC8000 |  | Pre-Commissioning & Testing of AC Works | 25d | 2014-12-14 | 2015-01-12 | DUKHCONP1AZ9ARGF3095, DUKHCONP1AZ8ACTC8000, DUKHCONP1AZ9HDEX5100, DUKHCONP1AZ9SLEX5110, DUKHCONP1AZ9ACFF4625, DUKHCONP1AZ9AREL3680, DUKHCONP1AZ9ACRF4635, DUKHCONP1AZ9ARRF3620, DUKHCONP1AZ9ARFF3395, DUKHCONP1AZ9MSEX5005, DUKHMOBI1APS00002065 FF, DUKHCONP1AZ9SLEX5105, DUKHMOBP1APS00002030 FF | -24d | 0d | LABOR- SUBCONTRACTOR [500 h]; AC TECHNICIAN SK [1000 h] | 3,960 |  | 1AP9ACU100 | DUKHCON1AP9AC008000 | DUKHCONP1AZ9ACTC8000 | DH | CON | 1A | Z9 | TES |  | B02 | B02-D08 | RES-1A |
| DUKHCONP1AZ9ELTC8010 |  | Pre-Commissioning & Testing of Electrical Works | 25d | 2014-12-14 | 2015-01-12 | DUKHCONP1AZ9SLEX5105, DUKHCONP1AZ9SLEX5110, DUKHCONP1AZ9ARRF3655, DUKHCONP1AZ9ELFF4055, DUKHMOBI1APS00002065 FF, DUKHMOBP1APS00002030 FF, DUKHCONP1AZ9ELGF4030, DUKHCONP1AZ9ELRF4075, DUKHCONP1AZ9ARRF3620, DUKHCONP1AZ8ELTC8010, DUKHCONP1AZ9MSEX5005, DUKHCONP1AZ9ELFF4050, DUKHCONP1AZ9ARRF3660, DUKHCONP1AZ9ARGF3095, DUKHCONP1AZ9ARFF3395, DUKHCONP1AZ9HDEX5100, DUKHCONP1AZ9ELGF4025, DUKHCONP1AZ9ELGF4015, DUKHCONP1AZ9AREL3680, DUKHCONP1AZ9ELFF4065 | -24d | 0d | LABOR- SUBCONTRACTOR [1000 h]; ELECTRICIANS SK [2000 h] | 50,820 |  | 1AP9ELE100 | DUKHCON1AP9EL008010 | DUKHCONP1AZ9ELTC8010 | DH | CON | 1A | Z9 | TES |  | B02 | B02-D09 | RES-1A |
| DUKHCONP1AZ9PLTC8005 |  | Pre-Commissioning & Testing of Plumbing Works | 25d | 2014-12-14 | 2015-01-12 | DUKHCONP1AZ9ARRF3655, DUKHCONP1AZ9ARRF3620, DUKHCONP1AZ8PLTC8005, DUKHCONP1AZ9PLRF4350, DUKHCONP1AZ9ARRF3660, DUKHCONP1AZ9ARFF3395, DUKHCONP1AZ9MSEX5005, DUKHCONP1AZ9HDEX5100, DUKHCONP1AZ9SLEX5110, DUKHCONP1AZ9PLGF4320, DUKHMOBI1APS00002065 FF, DUKHCONP1AZ9ARGF3095, DUKHCONP1AZ9PLRF4355, DUKHCONP1AZ9AREL3680, DUKHCONP1AZ9WEEX5065, DUKHMOBP1APS00002030 FF, DUKHCONP1AZ9SLEX5105 | -24d | 0d | LABOR- SUBCONTRACTOR [1000 h]; MECHANICALS SK [2000 h] | 11,260 |  | 1AP9PLU100 | DUKHCON1AP9PL008005 | DUKHCONP1AZ9PLTC8005 | DH | CON | 1A | Z9 | TES |  | B02 | B02-D07 | RES-1A |
|  | L20 | **PACKAGE-1A INFRASTRUCTURE WORKS** |  | 2013-09-21 | 2015-01-19 |  |  |  |  |  |  |  |  |  |  |  |  |  |  |  |  |  |  |
|  | 10 | **ZONE - 1** |  | 2013-09-21 | 2014-06-18 |  |  |  |  |  |  |  |  |  |  |  |  |  |  |  |  |  |  |
|  | 10 | **INFRASTRUCTURE WORKS** |  | 2013-09-21 | 2014-06-18 |  |  |  |  |  |  |  |  |  |  |  |  |  |  |  |  |  |  |
|  | 10 | **DRAINAGE LINES** |  | 2013-09-21 | 2013-11-19 |  |  |  |  |  |  |  |  |  |  |  |  |  |  |  |  |  |  |
| DUKHCONI1AZ1DRGL5115 |  | Excavation for Drainage line | 25d | 2013-09-21 | 2013-10-21 | DUKHENGI1ADWDRAP4250, DUKHCONP1AZ2STGF2010 SS | -4d | 0d | LABOR- SUBCONTRACTOR [180 h]; EXCAVATION QTY [296 Cum]; LOADER [63 h]; POCLAIN [125 h]; TRUCK [63 h]; EQUIP OPERATORS [251 h] | 13,573.2 | 10 | 1AP1DRFR10 | DUKHCON1AP1DRGL5115 | DUKHCONI1AZ1DRGL5115 | DH | CON | 1AF | Z1 | FR | DR | B03 | B03-D06 | RES-1A |
| DUKHCONI1AZ1DRGL5120 |  | Laying of Drainage line | 25d | 2013-10-02 | 2013-11-02 | DUKHCONI1AZ1DRGL5115 FF+10d, DUKHCONI1AZ1DRGL5115 SS+10d | -4d | 0d | LABOR- SUBCONTRACTOR [60 h]; MECHANICALS SK [216 h]; DRAINAGE PIPES QTY [386 lm] | 40,093 | 15 | 1AP1DRFR15 | DUKHCON1AP1DRGL5120 | DUKHCONI1AZ1DRGL5120 | DH | CON | 1AF | Z1 | FR | DR | B03 | B03-D06 | RES-1A |
| DUKHCONI1AZ1DRGL5125 |  | Testing of Drainage line | 25d | 2013-10-14 | 2013-11-13 | DUKHCONI1AZ1DRGL5120 FF+10d, DUKHCONI1AZ1DRGL5120 SS+10d | -4d | 0d | LABOR- SUBCONTRACTOR [48 h]; MECHANICALS SK [86.4 h]; DRAINAGE PIPES TEST QTY [386 lm] | 4,454.6 | 20 | 1AP1DRFR20 | DUKHCON1AP1DRGL5125 | DUKHCONI1AZ1DRGL5125 | DH | CON | 1AF | Z1 | FR | DR | B03 | B03-D06 | RES-1A |
| DUKHCONI1AZ1DRGL5130 |  | Backfilling Drainage line | 15d | 2013-11-03 | 2013-11-19 | DUKHCONI1AZ1DRGL5125 SS+10d, DUKHCONI1AZ1DRGL5125 FF+5d | -4d | 0d | LABOR- SUBCONTRACTOR [72 h]; BACKFILLING QTY [296 Cum]; BOBCAT [150 h]; PLATE COMPACTOR [150 h]; TRUCK [30 h]; EQUIP OPERATORS [330 h] | 14,840.6 | 25 | 1AP1DRFR25 | DUKHCON1AP1DRGL5130 | DUKHCONI1AZ1DRGL5130 | DH | CON | 1AF | Z1 | FR | DR | B03 | B03-D06 | RES-1A |
|  | 15 | **MANHOLES & SOAKAWAY** |  | 2013-11-03 | 2014-01-23 |  |  |  |  |  |  |  |  |  |  |  |  |  |  |  |  |  |  |
| DUKHCONI1AZ1SAGL5135 |  | Construction of manholes Drainage | 25d | 2013-11-03 | 2013-12-01 | DUKHCONI1AZ1DRGL5130 FF+10d, DUKHENGI1ADWDRAP4250, DUKHCONI1AZ1DRGL5115, DUKHENGI03DWDRAP5810 | 68d | 25d | LABOR- SUBCONTRACTOR [6 h]; EXCAVATION QTY [8 Cum] | 38,935 | 10 | 1AP1SAFR10 | DUKHCON1AP1SAGL5135 | DUKHCONI1AZ1SAGL5135 | DH | CON | 1AF | Z1 | FR | SA | B03 | B03-D06 | RES-1A |
| DUKHCONI1AZ1SAGL5140 |  | Construction of soakaways | 25d | 2013-11-03 | 2013-12-01 | DUKHCONI1AZ1DRGL5115, DUKHCONI1AZ1DRGL5130 FF+10d | -4d | 0d | MANHOLES SK [112 h]; LABOR- SUBCONTRACTOR [42 h]; SOAKPIT QTY [14 ea] | 183,740.8 | 15 | 1AP1SAFR15 | DUKHCON1AP1SAGL5140 | DUKHCONI1AZ1SAGL5140 | DH | CON | 1AF | Z1 | FR | SA | B03 | B03-D06 | RES-1A |
| DUKHCONI1AZ1SAGL5145 |  | Construction of Road gullies | 25d | 2013-12-02 | 2013-12-31 | DUKHCONI1AZ1SAGL5140 | -4d | 0d | MANHOLES SK [128 h]; LABOR- SUBCONTRACTOR [48 h]; ROAD GULLY QTY [16 ea] | 28,743.2 | 20 | 1AP1SAFR20 | DUKHCON1AP1SAGL5145 | DUKHCONI1AZ1SAGL5145 | DH | CON | 1AF | Z1 | FR | SA | B03 | B03-D06 | RES-1A |
| DUKHCONI1AZ1SAGL5150 |  | Connection with existing sewer manhole | 20d | 2014-01-01 | 2014-01-23 | DUKHCONI1AZ1SAGL5145, DUKHCONI1AZ1SAGL5135 | 43d | 39d | LABOR- SUBCONTRACTOR [6 h]; BACKFILLING QTY [9 Cum] | 2,270.6 | 25 | 1AP1SAFR25 | DUKHCON1AP1SAGL5150 | DUKHCONI1AZ1SAGL5150 | DH | CON | 1AF | Z1 | FR | SA | B03 | B03-D06 | RES-1A |

Notes:
- DUKHCONP1AZ9HDEX5090: Expenses: P1A-External works within the Plot Curtilage 16604
- DUKHCONP1AZ9HDEX5095: Expenses: P1A-External works within the Plot Curtilage 15290
- DUKHCONP1AZ9HDEX5100: Expenses: P1A-External works within the Plot Curtilage 19664
- DUKHCONP1AZ9SLEX5105: Expenses: P1A-External works within the Plot Curtilage 51660
- DUKHCONP1AZ9SLEX5110: Expenses: P1A-External works within the Plot Curtilage 60840
- DUKHCONP1AZ9ACTC8000: Expenses: P1A-Air-conditioning and Ventilation works 3960
- DUKHCONP1AZ9ELTC8010: Expenses: P1A-Electrical Installations 50820
- DUKHCONP1AZ9PLTC8005: Expenses: P1A-Plumbing and Drainage works 11260
- DUKHCONI1AZ1DRGL5115: Expenses: I1A-Surface Water drainage and Sewerage system 13573.2
- DUKHCONI1AZ1DRGL5120: Expenses: I1A-Surface Water drainage and Sewerage system 40093
- DUKHCONI1AZ1DRGL5125: Expenses: I1A-Surface Water drainage and Sewerage system 4454.6
- DUKHCONI1AZ1DRGL5130: Expenses: I1A-Surface Water drainage and Sewerage system 14840.6
- DUKHCONI1AZ1SAGL5135: Expenses: I1A-Surface Water drainage and Sewerage system 38935
- DUKHCONI1AZ1SAGL5140: Expenses: I1A-Surface Water drainage and Sewerage system 183741
- DUKHCONI1AZ1SAGL5145: Expenses: I1A-Surface Water drainage and Sewerage system 28743.2
- DUKHCONI1AZ1SAGL5150: Expenses: I1A-Surface Water drainage and Sewerage system 2270.6

| ID | WBS | Activity | Duration | Start | Finish | Predecessors | Total float | Free float | Resources | Cost | CODE | P3 ACTID | P6 ID (old) | NP61D | PROJECT | PHASES | PACKAGE | PART | ELEMENTS | STEP | BILL NOS | BILL DIVISION | RES PACK |
| --- | --- | --- | --- | --- | --- | --- | --- | --- | --- | --- | --- | --- | --- | --- | --- | --- | --- | --- | --- | --- | --- | --- | --- |
|  | 20 | **WATER SUPPLY SYSTEM** |  | 2013-11-14 | 2014-01-29 |  |  |  |  |  |  |  |  |  |  |  |  |  |  |  |  |  |  |
| DUKHCONI1AZ1WSGL5155 |  | Excavation for water line | 25d | 2013-11-14 | 2013-12-12 | DUKHCONI1AZ1DRGL5130 SS+10d, DUKHENGI1ADWWSAP4270 | -4d | 0d | LABOR- SUBCONTRACTOR [150 h]; EXCAVATION QTY [249 Cum]; LOADER [63 h]; POCLAIN [125 h]; TRUCK [63 h]; EQUIP OPERATORS [251 h] | 9,752.4 | 10 | 1AP1WSFR10 | DUKHCON1AP1WSGL5155 | DUKHCONI1AZ1WSGL5155 | DH | CON | 1AF | Z1 | FR | WS | B03 | B03-D07 | RES-1A |
| DUKHCONI1AZ1WSGL5160 |  | Laying of water line | 25d | 2013-11-20 | 2013-12-19 | DUKHCONI1AZ1WSGL5155 SS+5d | -4d | 0d | LABOR- SUBCONTRACTOR [102 h]; MECHANICALS SK [183.6 h]; WATER PIPES QTY [251 lm] | 42,577.6 | 15 | 1AP1WSFR15 | DUKHCON1AP1WSGL5160 | DUKHCONI1AZ1WSGL5160 | DH | CON | 1AF | Z1 | FR | WS | B03 | B03-D07 | RES-1A |
| DUKHCONI1AZ1WSGL5165 |  | Testing of potable water line | 25d | 2013-11-26 | 2013-12-25 | DUKHCONI1AZ1WSGL5160 SS+5d | -4d | 0d | LABOR- SUBCONTRACTOR [30 h]; MECHANICALS SK [54 h]; DRAINAGE PIPES TEST QTY [251 lm] | 3,433 | 20 | 1AP1WSFR20 | DUKHCON1AP1WSGL5165 | DUKHCONI1AZ1WSGL5165 | DH | CON | 1AF | Z1 | FR | WS | B03 | B03-D07 | RES-1A |
| DUKHCONI1AZ1WSGL5170 |  | Backfilling potable water line | 25d | 2013-12-02 | 2013-12-31 | DUKHCONI1AZ1SAGL5145 FF, DUKHCONI1AZ1WSGL5165 SS+5d | -4d | 0d | LABOR- SUBCONTRACTOR [60 h]; BACKFILLING QTY [251 Cum]; BOBCAT [125 h]; PLATE COMPACTOR [125 h]; TRUCK [25 h]; EQUIP OPERATORS [275 h] | 2,438 | 25 | 1AP1WSFR25 | DUKHCON1AP1WSGL5170 | DUKHCONI1AZ1WSGL5170 | DH | CON | 1AF | Z1 | FR | WS | B03 | B03-D07 | RES-1A |
| DUKHCONI1AZ1WSGL5175 |  | Construction of valve chambers & Thrust Blocks | 25d | 2013-12-08 | 2014-01-06 | DUKHCONI1AZ1WSGL5170 FF+5d, DUKHCONI1AZ1WSGL5155 SS+10d | 38d | 0d | MANHOLES SK [96 h]; LABOR- SUBCONTRACTOR [36 h]; MANHOLES QTY [12 ea] | 2,838.6 | 30 | 1AP1WSFR30 | DUKHCON1AP1WSGL5175 | DUKHCONI1AZ1WSGL5175 | DH | CON | 1AF | Z1 | FR | WS | B03 | B03-D07 | RES-1A |
| DUKHCONI1AZ1WSGL5180 |  | Installation of meter ,Accessories & Connection | 20d | 2014-01-07 | 2014-01-29 | DUKHCONI1AZ1WSGL5175 | 38d | 12d | LABOR- SUBCONTRACTOR [18 h]; MECHANICALS SK [32.4 h]; CHAMPER QTY [10 lm] | 7,877 | 35 | 1AP1WSFR35 | DUKHCON1AP1WSGL5180 | DUKHCONI1AZ1WSGL5180 | DH | CON | 1AF | Z1 | FR | WS | B03 | B03-D07 | RES-1A |
|  | 25 | **FIREFIGHTING LINES** |  | 2013-12-14 | 2014-02-13 |  |  |  |  |  |  |  |  |  |  |  |  |  |  |  |  |  |  |
| DUKHCONI1AZ1FFGL5185 |  | Excavation for firefighting line | 25d | 2013-12-14 | 2014-01-12 | DUKHCONI1AZ1WSGL5170 SS+10d, DUKHENGI1ADWFFAP4260 | -4d | 0d | EQUIP OPERATORS [151 h]; LABOR- SUBCONTRACTOR [132 h]; EXCAVATION QTY [215 Cum]; LOADER [38 h]; POCLAIN [75 h]; TRUCK [38 h] | 24,149 | 10 | 1AP1FFFR10 | DUKHCON1AP1FFGL5185 | DUKHCONI1AZ1FFGL5185 | DH | CON | 1AF | Z1 | FR | FF | B03 | B03-D07 | RES-1A |
| DUKHCONI1AZ1FFGL5190 |  | Laying of firefighting line | 25d | 2013-12-23 | 2014-01-20 | DUKHCONI1AZ1FFGL5185 SS+7d, DUKHPROGEN00PRDV3540, DUKHPROGEN00PRDV3650 | -4d | 0d | LABOR- SUBCONTRACTOR [66 h]; MECHANICALS SK [237.6 h]; PLUMB PIPES QTY [215 lm] | 31,835.6 | 15 | 1AP1FFFR15 | DUKHCON1AP1FFGL5190 | DUKHCONI1AZ1FFGL5190 | DH | CON | 1AF | Z1 | FR | FF | B03 | B03-D07 | RES-1A |
| DUKHCONI1AZ1FFGL5195 |  | Testing of firefighting line | 25d | 2013-12-29 | 2014-01-26 | DUKHCONI1AZ1FFGL5190 SS+5d | -4d | 0d | LABOR- SUBCONTRACTOR [30 h]; MECHANICALS SK [54 h]; DRAINAGE PIPES TEST QTY [215 lm] | 3,034.2 | 20 | 1AP1FFFR20 | DUKHCON1AP1FFGL5195 | DUKHCONI1AZ1FFGL5195 | DH | CON | 1AF | Z1 | FR | FF | B03 | B03-D07 | RES-1A |
| DUKHCONI1AZ1FFGL5200 |  | Backfilling firefighting line | 25d | 2014-01-04 | 2014-02-01 | DUKHCONI1AZ1FFGL5195 SS+5d | -4d | 0d | LABOR- SUBCONTRACTOR [54 h]; BACKFILLING QTY [215 Cum]; BOBCAT [125 h]; PLATE COMPACTOR [125 h]; TRUCK [25 h]; EQUIP OPERATORS [275 h] | 6,037 | 25 | 1AP1FFFR25 | DUKHCON1AP1FFGL5200 | DUKHCONI1AZ1FFGL5200 | DH | CON | 1AF | Z1 | FR | FF | B03 | B03-D07 | RES-1A |
| DUKHCONI1AZ1FFGL5205 |  | Construction of valve chambers & Thrust Blocks | 25d | 2014-01-09 | 2014-02-06 | DUKHCONI1AZ1FFGL5185 SS+10d, DUKHCONI1AZ1FFGL5200 FF+5d, DUKHPROGEN00PRDV3690 | 26d | 0d | STEEL FIXERS SK [40 h]; CARPENTERS SK [56 h]; CONCRETE MASON SK [16 h]; LABOR- SUBCONTRACTOR [90 h]; EXCAVATION QTY [13 Cum]; REINFORCEMENT BARS QTY [502 kg]; FORMWORK QTY [27 Sqm]; CONCRETE QTY [8 Cum] | 3,293.2 | 30 | 1AP1FFFR30 | DUKHCON1AP1FFGL5205 | DUKHCONI1AZ1FFGL5205 | DH | CON | 1AF | Z1 | FR | FF | B03 | B03-D07 | RES-1A |
| DUKHCONI1AZ1FFGL5210 |  | Connection with existing Firewater System | 25d | 2014-01-15 | 2014-02-13 | DUKHCONI1AZ1FFGL5205 FF+5d, DUKHCONI1AZ1WSGL5180 FF | 26d | 22d | LABOR- SUBCONTRACTOR [48 h]; MECHANICALS SK [86.4 h]; FIRE EXTINGUISHER QTY [16 ea] | 11,721.4 | 35 | 1AP1FFFR35 | DUKHCON1AP1FFGL5210 | DUKHCONI1AZ1FFGL5210 | DH | CON | 1AF | Z1 | FR | FF | B03 | B03-D07 | RES-1A |
|  | 30 | **ELECTRICAL LINES** |  | 2014-01-12 | 2014-03-12 |  |  |  |  |  |  |  |  |  |  |  |  |  |  |  |  |  |  |
| DUKHCONI1AZ1ELGL5215 |  | Excavation Cable Trenches & Duct Banks | 25d | 2014-01-12 | 2014-02-09 | DUKHENGI1ADWELAP4280, DUKHCONI1AZ1FFGL5200 SS+7d | 4d | 0d | LABOR- SUBCONTRACTOR [774 h]; EXCAVATION QTY [1285 Cum]; LOADER [150 h]; POCLAIN [300 h]; TRUCK [150 h]; EQUIP OPERATORS [600 h] | 14,248.6 | 10 | 1AP1ECFR10 | DUKHCON1AP1ELGL5215 | DUKHCONI1AZ1ELGL5215 | DH | CON | 1AF | Z1 | FR | EC | B03 | B03-D04 | RES-1A |
| DUKHCONI1AZ1ELGL5220 |  | Laying of electrical cables | 25d | 2014-01-18 | 2014-02-16 | DUKHCONI1AZ1ELGL5215 SS+5d | 7d | 0d | LABOR- SUBCONTRACTOR [390 h]; ELECTRICIANS SK [1444.8 h]; CABLE QTY [1285 lm] | 689,477.4 | 15 | 1AP1ECFR15 | DUKHCON1AP1ELGL5220 | DUKHCONI1AZ1ELGL5220 | DH | CON | 1AF | Z1 | FR | EC | B03 | B03-D04 | RES-1A |
| DUKHCONI1AZ1ELGL5225 |  | Backfilling Electrical trench | 25d | 2014-01-26 | 2014-02-24 | DUKHCONI1AZ1ELGL5220 SS+7d, DUKHCONI1AZ1ELGL5215 FF+7d | 7d | 0d | LABOR- SUBCONTRACTOR [312 h]; BACKFILLING QTY [1285 Cum]; BOBCAT [250 h]; PLATE COMPACTOR [250 h]; TRUCK [50 h]; EQUIP OPERATORS [550 h] | 6,105.6 | 20 | 1AP1ECFR20 | DUKHCON1AP1ELGL5225 | DUKHCONI1AZ1ELGL5225 | DH | CON | 1AF | Z1 | FR | EC | B03 | B03-D04 | RES-1A |
| DUKHCONI1AZ1ELGL5230 |  | Construction of Submain Board & Feeder Pillar | 25d | 2014-02-12 | 2014-03-12 | DUKHCONI1AZ1ELGL5225 FF+14d, DUKHCONI1AZ1ELGL5225 SS | 71d | 0d | STEEL FIXERS SK [8 h]; CARPENTERS SK [40 h]; CONCRETE MASON SK [8 h]; LABOR- SUBCONTRACTOR [30 h]; LABOR- SUBCONTRACTOR [42 h]; REINFORCEMENT BARS QTY [21 kg]; FORMWORK QTY [17 Sqm]; CONCRETE QTY [2 Cum]; ALUMINIUM DOOR QTY [2 ea]; DOOR ERECTOR SK [8 h]; EXPANSION JOINT QTY [11 Sqm]; EXPANSION JOINT SKILLED SK [88 h] | 75,578.6 | 25 | 1AP1ECFR25 | DUKHCON1AP1ELGL5230 | DUKHCONI1AZ1ELGL5230 | DH | CON | 1AF | Z1 | FR | EC | B03 | B03-D04 | RES-1A |
|  | 35 | **STREET LIGHTING** |  | 2014-01-12 | 2014-05-05 |  |  |  |  |  |  |  |  |  |  |  |  |  |  |  |  |  |  |
| DUKHCONI1AZ1STGL5235 |  | Excavation for Street lighting | 25d | 2014-01-12 | 2014-02-09 | DUKHENGI1ADWSTAP4290, DUKHCONI1AZ1ELGL5215 SS | 4d | 0d | LABOR- SUBCONTRACTOR [18 h]; EXCAVATION QTY [29 Cum]; LOADER [13 h]; POCLAIN [25 h]; TRUCK [13 h]; EQUIP OPERATORS [51 h] | 2,692.2 | 10 | 1AP1STFR10 | DUKHCON1AP1STGL5235 | DUKHCONI1AZ1STGL5235 | DH | CON | 1AF | Z1 | FR | ST | B03 | B03-D09 | RES-1A |
| DUKHCONI1AZ1STGL5240 |  | Construction of Duct Banks | 25d | 2014-01-18 | 2014-02-16 | DUKHCONI1AZ1STGL5235 SS+5d | 4d | 0d | LABOR- SUBCONTRACTOR [252 h]; ELECTRICIANS SK [940.8 h]; DUCT BANK QTY [336 lm] | 89,884.6 | 15 | 1AP1STFR15 | DUKHCON1AP1STGL5240 | DUKHCONI1AZ1STGL5240 | DH | CON | 1AF | Z1 | FR | ST | B03 | B03-D09 | RES-1A |
| DUKHCONI1AZ1STGL5245 |  | Construction of Foundation | 25d | 2014-01-18 | 2014-02-16 | DUKHCONI1AZ1STGL5240 SS | 4d | 0d | MANHOLES SK [464 h]; LABOR- SUBCONTRACTOR [174 h]; COLUMN BASE QTY [29 ea] | 29,280.8 | 20 | 1AP1STFR20 | DUKHCON1AP1STGL5245 | DUKHCONI1AZ1STGL5245 | DH | CON | 1AF | Z1 | FR | ST | B03 | B03-D09 | RES-1A |
| DUKHCONI1AZ1STGL5250 |  | Backfilling Street Lighting | 25d | 2014-01-23 | 2014-02-22 | DUKHCONI1AZ1STGL5235 FF+5d, DUKHCONI1AZ1STGL5245 SS+5d | 4d | 0d | LABOR- SUBCONTRACTOR [12 h]; BACKFILLING QTY [29 Cum]; BOBCAT [125 h]; PLATE COMPACTOR [125 h]; TRUCK [25 h]; EQUIP OPERATORS [275 h] | 2,692.2 | 25 | 1AP1STFR25 | DUKHCON1AP1STGL5250 | DUKHCONI1AZ1STGL5250 | DH | CON | 1AF | Z1 | FR | ST | B03 | B03-D09 | RES-1A |
| DUKHCONI1AZ1STGL5255 |  | Installation of light Post | 25d | 2014-03-01 | 2014-03-29 | DUKHPROGEN00PRDV3250, DUKHCONI1AZ1STGL5250 SS+10d, DUKHPROGEN00PRDV3350, DUKHCONI1AZ1ELGL5230 FF+14d | 71d | 0d | LABOR- SUBCONTRACTOR [48 h]; ELECTRICIANS SK [168 h]; LIGHTPOST COLUMN QTY [29 ea] | 379,406.8 | 30 | 1AP1STFR30 | DUKHCON1AP1STGL5255 | DUKHCONI1AZ1STGL5255 | DH | CON | 1AF | Z1 | FR | ST | B03 | B03-D09 | RES-1A |
| DUKHCONI1AZ1STGL5260 |  | Electrical Works | 25d | 2014-04-07 | 2014-05-05 | DUKHCONI1AZ1ELGL5230, DUKHCONI1AZ1STGL5255 FS+7d | 71d | 0d | LABOR- SUBCONTRACTOR [174 h]; ELECTRICIANS SK [649.6 h]; CABLE QTY [577 lm] | 19,485 | 35 | 1AP1STFR35 | DUKHCON1AP1STGL5260 | DUKHCONI1AZ1STGL5260 | DH | CON | 1AF | Z1 | FR | ST | B03 | B03-D09 | RES-1A |

Notes:
- DUKHCONI1AZ1WSGL5155: Expenses: I1A-Water supply system 9752.4
- DUKHCONI1AZ1WSGL5160: Expenses: I1A-Water supply system 42577.6
- DUKHCONI1AZ1WSGL5165: Expenses: I1A-Water supply system 3433
- DUKHCONI1AZ1WSGL5170: Expenses: I1A-Water supply system 2438
- DUKHCONI1AZ1WSGL5175: Expenses: I1A-Water supply system 2838.6
- DUKHCONI1AZ1WSGL5180: Expenses: I1A-Water supply system 7877
- DUKHCONI1AZ1FFGL5185: Expenses: I1A-Water supply system 24149
- DUKHCONI1AZ1FFGL5190: Expenses: I1A-Water supply system 31835.6
- DUKHCONI1AZ1FFGL5195: Expenses: I1A-Water supply system 3034.2
- DUKHCONI1AZ1FFGL5200: Expenses: I1A-Water supply system 6037
- DUKHCONI1AZ1FFGL5205: Expenses: I1A-Water supply system 3293.2
- DUKHCONI1AZ1FFGL5210: Expenses: I1A-Water supply system 11721.4
- DUKHCONI1AZ1ELGL5215: Expenses: I1A-Electrical power supply and distribution 14248.6
- DUKHCONI1AZ1ELGL5220: Expenses: I1A-Electrical power supply and distribution 689477
- DUKHCONI1AZ1ELGL5225: Expenses: I1A-Electrical power supply and distribution 6105.6
- DUKHCONI1AZ1ELGL5230: Expenses: I1A-Electrical power supply and distribution 75578.6
- DUKHCONI1AZ1STGL5235: Expenses: I1A-Street lighting 2692.2
- DUKHCONI1AZ1STGL5240: Expenses: I1A-Street lighting 89884.6
- DUKHCONI1AZ1STGL5245: Expenses: I1A-Street lighting 29280.8
- DUKHCONI1AZ1STGL5250: Expenses: I1A-Street lighting 2692.2
- DUKHCONI1AZ1STGL5255: Expenses: I1A-Street lighting 379407
- DUKHCONI1AZ1STGL5260: Expenses: I1A-Street lighting 19485

| ID | WBS | Activity | Duration | Start | Finish | Predecessors | Total float | Free float | Resources | Cost | CODE | P3 ACTID | P6 ID (old) | NP61D | PROJECT | PHASES | PACKAGE | PART | ELEMENTS | STEP | BILL NOS | BILL DIVISION | RES PACK |
| --- | --- | --- | --- | --- | --- | --- | --- | --- | --- | --- | --- | --- | --- | --- | --- | --- | --- | --- | --- | --- | --- | --- | --- |
|  | 40 | **IRRIGATION LINES** |  | 2014-02-25 | 2014-05-01 |  |  |  |  |  |  |  |  |  |  |  |  |  |  |  |  |  |  |
| DUKHCONI1AZ1IRGL5265 |  | Excavation for irrigation line | 25d | 2014-02-25 | 2014-03-25 | DUKHCONI1AZ1ELGL5225, DUKHENGI1ADWIRAP4310 | 29d | 0d | EQUIP OPERATORS [500 h]; LABOR- SUBCONTRACTOR [312 h]; EXCAVATION QTY [514 Cum]; LOADER [125 h]; POCLAIN [250 h]; TRUCK [125 h] | 9,606.6 | 10 | 1AP1IRFR10 | DUKHCON1AP1IRGL5265 | DUKHCONI1AZ1IRGL5265 | DH | CON | 1AF | Z1 | FR | IR | B03 | B03-D07 | RES-1A |
| DUKHCONI1AZ1IRGL5270 |  | Laying of irrigationline | 25d | 2014-03-03 | 2014-03-31 | DUKHPROGEN00PRDV3670, DUKHCONI1AZ1IRGL5265 SS+5d | 29d | 0d | LABOR- SUBCONTRACTOR [138 h]; MECHANICALS SK [248.4 h]; IRRIGATION PIPES QTY [923 lm] | 15,345 | 15 | 1AP1IRFR15 | DUKHCON1AP1IRGL5270 | DUKHCONI1AZ1IRGL5270 | DH | CON | 1AF | Z1 | FR | IR | B03 | B03-D07 | RES-1A |
| DUKHCONI1AZ1IRGL5275 |  | Testing of irrigation line | 25d | 2014-03-09 | 2014-04-06 | DUKHCONI1AZ1IRGL5270 SS+5d | 29d | 0d | LABOR- SUBCONTRACTOR [114 h]; MECHANICALS SK [205.2 h]; DRAINAGE PIPES TEST QTY [923 lm] | 2,168.8 | 20 | 1AP1IRFR20 | DUKHCON1AP1IRGL5275 | DUKHCONI1AZ1IRGL5275 | DH | CON | 1AF | Z1 | FR | IR | B03 | B03-D07 | RES-1A |
| DUKHCONI1AZ1IRGL5280 |  | Backfilling irrigation line | 25d | 2014-03-15 | 2014-04-12 | DUKHCONI1AZ1IRGL5275 SS+5d | 29d | 0d | LABOR- SUBCONTRACTOR [126 h]; BACKFILLING QTY [514 Cum]; BOBCAT [250 h]; PLATE COMPACTOR [250 h]; TRUCK [50 h]; EQUIP OPERATORS [550 h] | 2,401.6 | 25 | 1AP1IRFR25 | DUKHCON1AP1IRGL5280 | DUKHCONI1AZ1IRGL5280 | DH | CON | 1AF | Z1 | FR | IR | B03 | B03-D07 | RES-1A |
| DUKHCONI1AZ1IRGL5285 |  | Construction of Thrust Blocks,Pull boxes | 25d | 2014-03-26 | 2014-04-23 | DUKHCONI1AZ1IRGL5280 FF+10d, DUKHCONI1AZ1ELGL5225 SS+10d | 49d | 0d | LABOR- SUBCONTRACTOR [30 h]; ELECTRICIANS SK [22.4 h]; THRUST BLOCKS QTY [2 ea]; PULL BOX QTY [8 ea]; PULL BOX SK [64 h] | 9,988.6 | 30 | 1AP1IRFR30 | DUKHCON1AP1IRGL5285 | DUKHCONI1AZ1IRGL5285 | DH | CON | 1AF | Z1 | FR | IR | B03 | B03-D07 | RES-1A |
| DUKHCONI1AZ1IRGL5290 |  | Irrigation Fittings (Nozzle,Values) | 25d | 2014-04-03 | 2014-05-01 | DUKHPROGEN00PRDV3860, DUKHCONI1AZ1IRGL5285 SS+7d, DUKHPROGEN00PRDV3830, DUKHPROGEN00PRDV3810, DUKHPROGEN00PRDV3840, DUKHPROGEN00PRDV3870, DUKHPROGEN00PRDV3760, DUKHCONI1AZ1IRGL5280 SS+10d | 49d | 11d | LABOR- SUBCONTRACTOR [102 h]; MECHANICALS SK [183.6 h]; CHAMPER QTY [65 lm] | 26,800.6 | 35 | 1AP1IRFR35 | DUKHCON1AP1IRGL5290 | DUKHCONI1AZ1IRGL5290 | DH | CON | 1AF | Z1 | FR | IR | B03 | B03-D07 | RES-1A |
|  | 45 | **TELECOMMUNICATION LINES** |  | 2014-02-04 | 2014-03-23 |  |  |  |  |  |  |  |  |  |  |  |  |  |  |  |  |  |  |
| DUKHCONI1AZ1TCGL5295 |  | Excavation Telecommunication trenches | 20d | 2014-02-04 | 2014-02-27 | DUKHENGI1ADWTCAP4300, DUKHCONI1AZ1STGL5250 SS+10d | 4d | 0d | LABOR- SUBCONTRACTOR [228 h]; EXCAVATION QTY [372 Cum]; LOADER [75 h]; POCLAIN [150 h]; TRUCK [75 h]; EQUIP OPERATORS [300 h] | 9,563.6 | 10 | 1AP1TCFR10 | DUKHCON1AP1TCGL5295 | DUKHCONI1AZ1TCGL5295 | DH | CON | 1AF | Z1 | FR | TC | B03 | B03-D05 | RES-1A |
| DUKHCONI1AZ1TCGL5300 |  | Laying of cables | 20d | 2014-02-10 | 2014-03-05 | DUKHCONI1AZ1TCGL5295 SS+5d | 4d | 0d | LABOR- SUBCONTRACTOR [168 h]; ELECTRICIANS SK [627.2 h]; CABLE QTY [558 lm] | 3,124 | 15 | 1AP1TCFR15 | DUKHCON1AP1TCGL5300 | DUKHCONI1AZ1TCGL5300 | DH | CON | 1AF | Z1 | FR | TC | B03 | B03-D05 | RES-1A |
| DUKHCONI1AZ1TCGL5305 |  | Backfilling telecommunication trench | 20d | 2014-02-17 | 2014-03-11 | DUKHCONI1AZ1TCGL5300 SS+5d | 4d | 0d | LABOR- SUBCONTRACTOR [90 h]; BACKFILLING QTY [372 Cum]; BOBCAT [200 h]; PLATE COMPACTOR [200 h]; TRUCK [40 h]; EQUIP OPERATORS [440 h] | 4,099 | 20 | 1AP1TCFR20 | DUKHCON1AP1TCGL5305 | DUKHCONI1AZ1TCGL5305 | DH | CON | 1AF | Z1 | FR | TC | B03 | B03-D05 | RES-1A |
| DUKHCONI1AZ1TCGL5310 |  | Connection & Installation | 20d | 2014-03-01 | 2014-03-23 | DUKHCONI1AZ1TCGL5305 FF+10d, DUKHCONI1AZ1TCGL5305 SS+10d | 9d | 5d | LABOR- SUBCONTRACTOR [42 h]; ELECTRICIANS SK [302.4 h]; TELEPHONE SOCKETS QTY [27 ea] | 50,979.6 | 25 | 1AP1TCFR25 | DUKHCON1AP1TCGL5310 | DUKHCONI1AZ1TCGL5310 | DH | CON | 1AF | Z1 | FR | TC | B03 | B03-D05 | RES-1A |
|  | 50 | **BOUNDARY WALL** |  | 2014-02-04 | 2014-05-01 |  |  |  |  |  |  |  |  |  |  |  |  |  |  |  |  |  |  |
| DUKHCONI1AZ1BWGL5315 |  | Construction of Boundary Wall (Ht-3m) | 25d | 2014-02-04 | 2014-03-05 | DUKHPROGEN00PRDV3820, DUKHCONI1AZ1STGL5250 SS+10d, DUKHENGI1ADWBWAP4330 | 75d | 0d | BOUNDARY WIRE MESH QTY [304 Sqm]; STEEL FIXERS SK [128 h]; LABOR- SUBCONTRACTOR [96 h] | 459,539.2 | 10 | 1AP1BWFR10 | DUKHCON1AP1ARGL5315 | DUKHCONI1AZ1BWGL5315 | DH | CON | 1AF | Z1 | FR | BW | B03 | B03-D11 | RES-1A |
| DUKHCONI1AZ1BWGL5320 |  | Install.Steel Gate,Entance Barrier (3m Wall) | 25d | 2014-02-22 | 2014-03-22 | DUKHCONI1AZ1BWGL5315 SS+14d, DUKHPROGEN00PRDV3800 | 75d | 0d | LABOR- SUBCONTRACTOR [12 h]; GATE QTY [2 ea]; GATE ERECTOR SK [16 h] | 5,993 | 15 | 1AP1BWFR15 | DUKHCON1AP1ARGL5320 | DUKHCONI1AZ1BWGL5320 | DH | CON | 1AF | Z1 | FR | BW | B03 | B03-D11 | RES-1A |
| DUKHCONI1AZ1BWGL5325 |  | Const. of Villa Front Boundary Wall (Ht-2m) | 25d | 2014-03-23 | 2014-04-20 | DUKHCONI1AZ1BWGL5315 SS+5d, DUKHCONI1AZ1BWGL5320 | 75d | 0d | STEEL FIXERS SK [96 h]; LABOR- SUBCONTRACTOR [72 h]; BOUNDARY WIRE MESH QTY [231 Sqm] | 414,398.4 | 20 | 1AP1BWFR20 | DUKHCON1AP1ARGL5325 | DUKHCONI1AZ1BWGL5325 | DH | CON | 1AF | Z1 | FR | BW | B03 | B03-D11 | RES-1A |
| DUKHCONI1AZ1BWGL5330 |  | Const. of Blockwork fence Wall (Ht-1.85m) | 25d | 2014-04-03 | 2014-05-01 | DUKHCONI1AZ1BWGL5320, DUKHCONI1AZ1BWGL5325 FF+10d, DUKHCONI1AZ1BWGL5325 SS+10d | 75d | 25d | STEEL FIXERS SK [88 h]; LABOR- SUBCONTRACTOR [66 h]; BOUNDARY WIRE MESH QTY [206 Sqm] | 293,348.6 | 30 | 1AP1BWFR30 | DUKHCON1AP1ARGL5330 | DUKHCONI1AZ1BWGL5330 | DH | CON | 1AF | Z1 | FR | BW | B03 | B03-D11 | RES-1A |
|  | 55 | **ROAD WORKS** |  | 2014-03-12 | 2014-05-26 |  |  |  |  |  |  |  |  |  |  |  |  |  |  |  |  |  |  |
| DUKHCONI1AZ1RWGL6000 |  | Excavation & Earth Filling | 10d | 2014-03-12 | 2014-03-23 | DUKHCONI1AZ1TCGL5310 SS+5d, DUKHENGI1ADWBWAP4330, DUKHCONI1AZ1STGL5250, DUKHCONI1AZ1ELGL5225, DUKHCONI1AZ1SAGL5150, DUKHCONI1AZ1FFGL5200, DUKHPROGEN00PRDV3750, DUKHCONI1AZ1FFGL5210, DUKHCONI1AZ1TCGL5305 | 4d | 0d | LABOR- SUBCONTRACTOR [732 h]; EXCAVATION QTY [1162 Cum]; BACKFILLING QTY [127 Cum]; LOADER [125 h]; POCLAIN [250 h]; TRUCK [125 h]; EQUIP OPERATORS [500 h] | 107,162 | 10 | 1AP1RDFR10 | DUKHCON1AP1RDGL6000 | DUKHCONI1AZ1RWGL6000 | DH | CON | 1AF | Z1 | FR | RD | B03 | B03-D08 | RES-1A |
| DUKHCONI1AZ1RWGL6005 |  | Laying of Sub Grade | 25d | 2014-03-24 | 2014-04-21 | DUKHCONI1AZ1RWGL6000 | 4d | 0d | LABOR- SUBCONTRACTOR [24 h]; SUBGRADE QTY [394 Sqm] | 120,812.8 | 15 | 1AP1RDFR15 | DUKHCON1AP1RDGL6005 | DUKHCONI1AZ1RWGL6005 | DH | CON | 1AF | Z1 | FR | RD | B03 | B03-D08 | RES-1A |
| DUKHCONI1AZ1RWGL6010 |  | Laying of Precast Kerbs | 25d | 2014-04-05 | 2014-05-03 | DUKHCONI1AZ1RWGL6005 SS+10d | 4d | 0d | LABOR- SUBCONTRACTOR [24 h]; GRANULAR SUBBASE QTY [340 Sqm] | 110,764.6 | 20 | 1AP1RDFR20 | DUKHCON1AP1RDGL6010 | DUKHCONI1AZ1RWGL6010 | DH | CON | 1AF | Z1 | FR | RD | B03 | B03-D08 | RES-1A |
| DUKHCONI1AZ1RWGL6015 |  | Laying of Granular Sub Base Coarse | 20d | 2014-04-16 | 2014-05-08 | DUKHCONI1AZ1RWGL6010 SS+10d | 4d | 0d | KERBSTONE MASON SK [776 h]; LABOR- SUBCONTRACTOR [438 h]; KERBSTONE QTY [485 lm]; EDGE STONE QTY [485 Sqm]; HEAVY ROLLER [400 h]; LOADER [100 h]; TRUCK [100 h]; EQUIP OPERATORS [600 h] | 60,406.4 | 25 | 1AP1RDFR25 | DUKHCON1AP1RDGL6015 | DUKHCONI1AZ1RWGL6015 | DH | CON | 1AF | Z1 | FR | RD | B03 | B03-D08 | RES-1A |
| DUKHCONI1AZ1RWGL6020 |  | Laying of Road Base Asphalt Concrete | 5d | 2014-05-10 | 2014-05-14 | DUKHCONI1AZ1RWGL6015 | 64d | 0d | ASPHALT CONCRETE QTY [1967 Cum]; ASPHALT PAVER MACHINE [50 h]; HAND ROLLER [100 h]; EQUIP OPERATORS [150 h]; LABOR- SUBCONTRACTOR [24 h] | 153,671 | 30 | 1AP1RDFR30 | DUKHCON1AP1RDGL6020 | DUKHCONI1AZ1RWGL6020 | DH | CON | 1AF | Z1 | FR | RD | B03 | B03-D08 | RES-1A |
| DUKHCONI1AZ1RWGL6025 |  | Laying of Asphalt Wearing Coarse | 5d | 2014-05-15 | 2014-05-20 | DUKHCONI1AZ1RWGL6020 | 73d | 0d | LABOR- SUBCONTRACTOR [24 h]; ASPHALT WEARING COURSE QTY [1967 Sqm]; ASPHALT PAVER MACHINE [50 h]; HAND ROLLER [100 h]; EQUIP OPERATORS [150 h] | 80,057 | 35 | 1AP1RDFR35 | DUKHCON1AP1RDGL6025 | DUKHCONI1AZ1RWGL6025 | DH | CON | 1AF | Z1 | FR | RD | B03 | B03-D08 | RES-1A |
| DUKHCONI1AZ1RWGL6030 |  | Traffic Signage & Road Marking | 5d | 2014-05-21 | 2014-05-26 | DUKHPROGEN00PRDV3710, DUKHCONI1AZ1RWGL6025, DUKHPROGEN00PRDV3720, DUKHPROGEN00PRDV3700 | 79d | 15d | LABOR- SUBCONTRACTOR [366 h]; STEEL ERECTOR SK [448 h]; TRAFFIC SIGN QTY [279 ea]; ROAD MARKING QTY [100 lm]; ASPHALT SK [160 h] | 83,033.6 | 40 | 1AP1RDFR40 | DUKHCON1AP1RDGL6030 | DUKHCONI1AZ1RWGL6030 | DH | CON | 1AF | Z1 | FR | RD | B03 | B03-D08 | RES-1A |

Notes:
- DUKHCONI1AZ1IRGL5265: Expenses: I1A-Water supply system 9606.6
- DUKHCONI1AZ1IRGL5270: Expenses: I1A-Water supply system 15345
- DUKHCONI1AZ1IRGL5275: Expenses: I1A-Water supply system 2168.8
- DUKHCONI1AZ1IRGL5280: Expenses: I1A-Water supply system 2401.6
- DUKHCONI1AZ1IRGL5285: Expenses: I1A-Water supply system 9988.6
- DUKHCONI1AZ1IRGL5290: Expenses: I1A-Water supply system 26800.6
- DUKHCONI1AZ1TCGL5295: Expenses: I1A-Telecommunication 9563.6
- DUKHCONI1AZ1TCGL5300: Expenses: I1A-Telecommunication 3124
- DUKHCONI1AZ1TCGL5305: Expenses: I1A-Telecommunication 4099
- DUKHCONI1AZ1TCGL5310: Expenses: I1A-Telecommunication 50979.6
- DUKHCONI1AZ1BWGL5315: Expenses: I1A-Hard and soft landscaping 459539
- DUKHCONI1AZ1BWGL5320: Expenses: I1A-Hard and soft landscaping 5993
- DUKHCONI1AZ1BWGL5325: Expenses: I1A-Hard and soft landscaping 414398
- DUKHCONI1AZ1BWGL5330: Expenses: I1A-Hard and soft landscaping 293349
- DUKHCONI1AZ1RWGL6000: Expenses: I1A-Road work 107162
- DUKHCONI1AZ1RWGL6005: Expenses: I1A-Road work 120813
- DUKHCONI1AZ1RWGL6010: Expenses: I1A-Road work 110765
- DUKHCONI1AZ1RWGL6015: Expenses: I1A-Road work 60406.4
- DUKHCONI1AZ1RWGL6020: Expenses: I1A-Road work 153671
- DUKHCONI1AZ1RWGL6025: Expenses: I1A-Road work 80057
- DUKHCONI1AZ1RWGL6030: Expenses: I1A-Road work 83033.6

| ID | WBS | Activity | Duration | Start | Finish | Predecessors | Total float | Free float | Resources | Cost | CODE | P3 ACTID | P6 ID (old) | NP61D | PROJECT | PHASES | PACKAGE | PART | ELEMENTS | STEP | BILL NOS | BILL DIVISION | RES PACK |
| --- | --- | --- | --- | --- | --- | --- | --- | --- | --- | --- | --- | --- | --- | --- | --- | --- | --- | --- | --- | --- | --- | --- | --- |
|  | 60 | **PARKING SHED** |  | 2014-04-22 | 2014-06-18 |  |  |  |  |  |  |  |  |  |  |  |  |  |  |  |  |  |  |
| DUKHCONI1AZ1PSGL7000 |  | Excavation | 15d | 2014-04-22 | 2014-05-08 | DUKHENGI1ADWPSAP4340, DUKHCONI1AZ1RWGL6015 SS+5d | 69d | 5d | LABOR- SUBCONTRACTOR [72 h]; EXCAVATION QTY [112 Cum]; LOADER [19 h]; POCLAIN [38 h]; TRUCK [19 h]; EQUIP OPERATORS [76 h] | 33,089.6 | 10 | 1AP1PSFR10 | DUKHCON1AP1PSGL7000 | DUKHCONI1AZ1PSGL7000 | DH | CON | 1AF | Z1 | FR | PS | B03 | B03-D08 | RES-1A |
| DUKHCONI1AZ1PSGL7005 |  | Foundation casting | 15d | 2014-05-04 | 2014-05-20 | DUKHCONI1AZ1PSGL7000 SS+5d, DUKHCONI1AZ1PSGL7000 FF+5d, DUKHCONI1AZ1RWGL6015 FF+10d | 64d | 0d | STEEL FIXERS SK [72 h]; CARPENTERS SK [48 h]; CONCRETE MASON SK [24 h]; LABOR- SUBCONTRACTOR [108 h]; REINFORCEMENT BARS QTY [896 kg]; FORMWORK QTY [23 Sqm]; CONCRETE QTY [12 Cum] | 33,089.6 | 15 | 1AP1PSFR15 | DUKHCON1AP1PSGL7005 | DUKHCONI1AZ1PSGL7005 | DH | CON | 1AF | Z1 | FR | PS | B03 | B03-D08 | RES-1A |
| DUKHCONI1AZ1PSGL7010 |  | Column, Frame& Fabrics Erection | 25d | 2014-05-15 | 2014-06-12 | DUKHPROGEN00PRDV3730, DUKHCONI1AZ1BWGL5330 FF+10d, DUKHCONI1AZ1PSGL7005 SS+10d, DUKHCONI1AZ1RWGL6020, DUKHCONI1AZ1RWGL6030 FF | 64d | 0d | LABOR- SUBCONTRACTOR [102 h]; STEEL ERECTOR SK [184 h]; PARKING SHED QTY [560 ea] | 165,447.6 | 20 | 1AP1PSFR20 | DUKHCON1AP1PSGL7010 | DUKHCONI1AZ1PSGL7010 | DH | CON | 1AF | Z1 | FR | PS | B03 | B03-D08 | RES-1A |
| DUKHCONI1AZ1PSGL7015 |  | Electrical Works-Parking Shed | 25d | 2014-05-21 | 2014-06-18 | DUKHCONI1AZ1PSGL7010 SS+5d, DUKHCONI1AZ1STGL5260 | 64d | 25d | LIGHTS QTY [15 ea]; LABOR- SUBCONTRACTOR [18 h]; ELECTRICIANS SK [33.6 h] | 16,545 | 25 | 1AP1PSFR25 | DUKHCON1AP1PSGL7015 | DUKHCONI1AZ1PSGL7015 | DH | CON | 1AF | Z1 | FR | PS | B03 | B03-D08 | RES-1A |
|  | 65 | **HARD LANDSCAPING** |  | 2014-03-12 | 2014-06-12 |  |  |  |  |  |  |  |  |  |  |  |  |  |  |  |  |  |  |
| DUKHCONI1AZ1HDGL7020 |  | Precast Concrete Kerbs works | 20d | 2014-03-12 | 2014-04-03 | DUKHENGI1ADWSLAP4320, DUKHCONI1AZ1RWGL6000 SS | 38d | 0d | KERBSTONE MASON SK [752 h]; LABOR- SUBCONTRACTOR [426 h]; KERBSTONE QTY [940 lm] | 112,518 | 10 | 1AP1HDFR10 | DUKHCON1AP1HDGL7020 | DUKHCONI1AZ1HDGL7020 | DH | CON | 1AF | Z1 | FR | HD | B03 | B03-D11 | RES-1A |
| DUKHCONI1AZ1HDGL7025 |  | Interlocking for Walkways | 25d | 2014-03-24 | 2014-04-21 | DUKHCONI1AZ1HDGL7020 SS+10d | 38d | 0d | INTERLOCK MASON SK [584 h]; LABOR- SUBCONTRACTOR [222 h]; INTERLOCK QTY [728 Sqm] | 88,756 | 15 | 1AP1HDFR15 | DUKHCON1AP1HDGL7025 | DUKHCONI1AZ1HDGL7025 | DH | CON | 1AF | Z1 | FR | HD | B03 | B03-D11 | RES-1A |
| DUKHCONI1AZ1HDGL7030 |  | Construction of Retaining wall | 25d | 2014-04-05 | 2014-05-03 | DUKHCONI1AZ1HDGL7025 SS+10d | 38d | 0d | STEEL FIXERS SK [120 h]; CARPENTERS SK [272 h]; CONCRETE MASON SK [40 h]; LABOR- SUBCONTRACTOR [324 h]; EXCAVATION QTY [14 Cum]; REINFORCEMENT BARS QTY [1445 kg]; FORMWORK QTY [134 Sqm]; CONCRETE QTY [17 Cum] | 22,937.8 | 20 | 1AP1HDFR20 | DUKHCON1AP1HDGL7030 | DUKHCONI1AZ1HDGL7030 | DH | CON | 1AF | Z1 | FR | HD | B03 | B03-D11 | RES-1A |
| DUKHCONI1AZ1HDGL7035 |  | Construction of Wash Stone Boulders | 25d | 2014-04-05 | 2014-05-03 | DUKHCONI1AZ1HDGL7030 SS, DUKHPROGEN00PRDV3740 | 38d | 0d | TILE MASON SK [64 h]; LABOR- SUBCONTRACTOR [24 h]; STONE BOULDERS QTY [32 Sqm] | 19,037 | 25 | 1AP1HDFR25 | DUKHCON1AP1HDGL7035 | DUKHCONI1AZ1HDGL7035 | DH | CON | 1AF | Z1 | FR | HD | B03 | B03-D11 | RES-1A |
| DUKHCONI1AZ1HDGL7040 |  | Construction of Speed Humps | 20d | 2014-05-21 | 2014-06-12 | DUKHPROGEN00PRDV3750, DUKHCONI1AZ1RWGL6025, DUKHCONI1AZ1HDGL7035 SS | 73d | 0d | CONCRETE MASON SK [8 h]; LABOR- SUBCONTRACTOR [6 h]; SPEED HUMPS [3 ea] | 3,420 | 30 | 1AP1HDFR30 | DUKHCON1AP1HDGL7040 | DUKHCONI1AZ1HDGL7040 | DH | CON | 1AF | Z1 | FR | HD | B03 | B03-D11 | RES-1A |
|  | 70 | **SOFT LANDSCAPING** |  | 2014-04-16 | 2014-06-12 |  |  |  |  |  |  |  |  |  |  |  |  |  |  |  |  |  |  |
| DUKHCONI1AZ1SLGL7200 |  | Excavation | 25d | 2014-04-16 | 2014-05-14 | DUKHCONI1AZ1HDGL7035 SS+10d, DUKHCONI1AZ1IRGL5290 SS, DUKHENGI1ADWSLAP4320 | 38d | 0d | LABOR- SUBCONTRACTOR [246 h]; EXCAVATION QTY [407 Cum]; LOADER [63 h]; POCLAIN [125 h]; TRUCK [63 h]; EQUIP OPERATORS [251 h] | 24,965.8 | 10 | 1AP1SLFR10 | DUKHCON1AP1SLGL7200 | DUKHCONI1AZ1SLGL7200 | DH | CON | 1AF | Z1 | FR | SL | B03 | B03-D11 | RES-1A |
| DUKHCONI1AZ1SLGL7205 |  | Sweet Soil Laying | 25d | 2014-04-28 | 2014-05-26 | DUKHCONI1AZ1SLGL7200 SS+10d, DUKHPROGEN00PRDV3790 | 38d | 5d | LABOR- SUBCONTRACTOR [1020 h]; SWEET SOIL QTY [2034 Cum]; LANDSCAPING SK [1360 h] | 141,473.2 | 15 | 1AP1SLFR15 | DUKHCON1AP1SLGL7205 | DUKHCONI1AZ1SLGL7205 | DH | CON | 1AF | Z1 | FR | SL | B03 | B03-D11 | RES-1A |
| DUKHCONI1AZ1SLGL7210 |  | Plantation works | 25d | 2014-05-15 | 2014-06-12 | DUKHCONI1AZ1HDGL7040 FF, DUKHCONI1AZ1SLGL7205 SS+10d | 73d | 20d | LABOR- SUBCONTRACTOR [252 h]; PLAM TREES QTY [16 ea]; LANDSCAPING SK [336 h]; GROUND COVER QTY [1960 Sqm]; SHRUBS QTY [147 ea] | 112,789.6 | 20 | 1AP1SLFR20 | DUKHCON1AP1SLGL7210 | DUKHCONI1AZ1SLGL7210 | DH | CON | 1AF | Z1 | FR | SL | B03 | B03-D11 | RES-1A |
|  | 15 | **ZONE- 2** |  | 2013-12-04 | 2014-08-19 |  |  |  |  |  |  |  |  |  |  |  |  |  |  |  |  |  |  |
|  | 10 | **INFRASTRUCTURE WORKS** |  | 2013-12-04 | 2014-08-19 |  |  |  |  |  |  |  |  |  |  |  |  |  |  |  |  |  |  |
|  | 10 | **DRAINAGE LINES** |  | 2013-12-04 | 2014-01-23 |  |  |  |  |  |  |  |  |  |  |  |  |  |  |  |  |  |  |
| DUKHCONI1AZ2DRGL5115 |  | Excavation for Drainage line | 25d | 2013-12-04 | 2014-01-02 | DUKHCONI1AZ1DRGL5130, DUKHCONP1AZ3STFF2030 SS | -15d | 0d | LABOR- SUBCONTRACTOR [180 h]; EXCAVATION QTY [296 Cum]; LOADER [63 h]; POCLAIN [125 h]; TRUCK [63 h]; EQUIP OPERATORS [251 h] | 13,573.2 | 10 | 1AP2DRFR10 | DUKHCON1AP2DRGL5115 | DUKHCONI1AZ2DRGL5115 | DH | CON | 1AF | Z2 | FR | DR | B03 | B03-D06 | RES-1A |
| DUKHCONI1AZ2DRGL5120 |  | Laying of Drainage line | 25d | 2013-12-11 | 2014-01-09 | DUKHCONI1AZ2DRGL5115 SS+6d, DUKHCONI1AZ2DRGL5115 FF+6d | -15d | 0d | LABOR- SUBCONTRACTOR [60 h]; MECHANICALS SK [216 h]; DRAINAGE PIPES QTY [386 lm] | 40,093 | 15 | 1AP2DRFR15 | DUKHCON1AP2DRGL5120 | DUKHCONI1AZ2DRGL5120 | DH | CON | 1AF | Z2 | FR | DR | B03 | B03-D06 | RES-1A |
| DUKHCONI1AZ2DRGL5125 |  | Testing of Drainage line | 25d | 2013-12-21 | 2014-01-18 | DUKHCONI1AZ2DRGL5120 FF+7d, DUKHCONI1AZ2DRGL5120 SS+7d | -15d | 0d | LABOR- SUBCONTRACTOR [48 h]; MECHANICALS SK [86.4 h]; DRAINAGE PIPES TEST QTY [386 lm] | 4,454.6 | 20 | 1AP2DRFR20 | DUKHCON1AP2DRGL5125 | DUKHCONI1AZ2DRGL5125 | DH | CON | 1AF | Z2 | FR | DR | B03 | B03-D06 | RES-1A |
| DUKHCONI1AZ2DRGL5130 |  | Backfilling Drainage line | 15d | 2014-01-07 | 2014-01-23 | DUKHCONI1AZ2DRGL5125 SS+10d, DUKHCONI1AZ2DRGL5125 FF+5d | -15d | 0d | LABOR- SUBCONTRACTOR [72 h]; BACKFILLING QTY [296 Cum]; BOBCAT [150 h]; PLATE COMPACTOR [150 h]; TRUCK [30 h]; EQUIP OPERATORS [330 h] | 14,840.6 | 25 | 1AP2DRFR25 | DUKHCON1AP2DRGL5130 | DUKHCONI1AZ2DRGL5130 | DH | CON | 1AF | Z2 | FR | DR | B03 | B03-D06 | RES-1A |
|  | 15 | **MANHOLES & SOAKAWAY** |  | 2014-01-05 | 2014-03-27 |  |  |  |  |  |  |  |  |  |  |  |  |  |  |  |  |  |  |
| DUKHCONI1AZ2SAGL5140 |  | Construction of soakaways | 25d | 2014-01-05 | 2014-02-02 | DUKHCONI1AZ2DRGL5115, DUKHCONI1AZ2DRGL5130 FF+8d | -10d | 0d | MANHOLES SK [112 h]; LABOR- SUBCONTRACTOR [42 h]; SOAKPIT QTY [14 ea] | 183,740.8 | 15 | 1AP2SAFR15 | DUKHCON1AP2SAGL5140 | DUKHCONI1AZ2SAGL5140 | DH | CON | 1AF | Z2 | FR | SA | B03 | B03-D06 | RES-1A |
| DUKHCONI1AZ2SAGL5135 |  | Construction of manholes Drainage | 25d | 2014-01-07 | 2014-02-04 | DUKHCONI1AZ1SAGL5135, DUKHCONI1AZ2DRGL5130 FF+10d, DUKHCONI1AZ2DRGL5115 | 53d | 18d | LABOR- SUBCONTRACTOR [6 h]; EXCAVATION QTY [8 Cum] | 38,935 | 10 | 1AP2SAFR10 | DUKHCON1AP2SAGL5135 | DUKHCONI1AZ2SAGL5135 | DH | CON | 1AF | Z2 | FR | SA | B03 | B03-D06 | RES-1A |
| DUKHCONI1AZ2SAGL5145 |  | Construction of Road gullies | 25d | 2014-02-03 | 2014-03-04 | DUKHCONI1AZ1SAGL5145, DUKHCONI1AZ2SAGL5140 | -10d | 0d | MANHOLES SK [128 h]; LABOR- SUBCONTRACTOR [48 h]; ROAD GULLY QTY [16 ea] | 28,743.2 | 20 | 1AP2SAFR20 | DUKHCON1AP2SAGL5145 | DUKHCONI1AZ2SAGL5145 | DH | CON | 1AF | Z2 | FR | SA | B03 | B03-D06 | RES-1A |
| DUKHCONI1AZ2SAGL5150 |  | Connection with existing sewer manhole | 20d | 2014-03-05 | 2014-03-27 | DUKHCONI1AZ2SAGL5135, DUKHCONI1AZ2SAGL5145 | 30d | 36d | LABOR- SUBCONTRACTOR [6 h]; BACKFILLING QTY [9 Cum] | 2,270.6 | 25 | 1AP2SAFR25 | DUKHCON1AP2SAGL5150 | DUKHCONI1AZ2SAGL5150 | DH | CON | 1AF | Z2 | FR | SA | B03 | B03-D06 | RES-1A |

Notes:
- DUKHCONI1AZ1PSGL7000: Expenses: I1A-Road work 33089.6
- DUKHCONI1AZ1PSGL7005: Expenses: I1A-Road work 33089.6
- DUKHCONI1AZ1PSGL7010: Expenses: I1A-Road work 165448
- DUKHCONI1AZ1PSGL7015: Expenses: I1A-Road work 16545
- DUKHCONI1AZ1HDGL7020: Expenses: I1A-Hard and soft landscaping 112518
- DUKHCONI1AZ1HDGL7025: Expenses: I1A-Hard and soft landscaping 88756
- DUKHCONI1AZ1HDGL7030: Expenses: I1A-Hard and soft landscaping 22937.8
- DUKHCONI1AZ1HDGL7035: Expenses: I1A-Hard and soft landscaping 19037
- DUKHCONI1AZ1HDGL7040: Expenses: I1A-Hard and soft landscaping 3420
- DUKHCONI1AZ1SLGL7200: Expenses: I1A-Hard and soft landscaping 24965.8
- DUKHCONI1AZ1SLGL7205: Expenses: I1A-Hard and soft landscaping 141473
- DUKHCONI1AZ1SLGL7210: Expenses: I1A-Hard and soft landscaping 112790
- DUKHCONI1AZ2DRGL5115: Expenses: I1A-Surface Water drainage and Sewerage system 13573.2
- DUKHCONI1AZ2DRGL5120: Expenses: I1A-Surface Water drainage and Sewerage system 40093
- DUKHCONI1AZ2DRGL5125: Expenses: I1A-Surface Water drainage and Sewerage system 4454.6
- DUKHCONI1AZ2DRGL5130: Expenses: I1A-Surface Water drainage and Sewerage system 14840.6
- DUKHCONI1AZ2SAGL5140: Expenses: I1A-Surface Water drainage and Sewerage system 183741
- DUKHCONI1AZ2SAGL5135: Expenses: I1A-Surface Water drainage and Sewerage system 38935
- DUKHCONI1AZ2SAGL5145: Expenses: I1A-Surface Water drainage and Sewerage system 28743.2
- DUKHCONI1AZ2SAGL5150: Expenses: I1A-Surface Water drainage and Sewerage system 2270.6

| ID | WBS | Activity | Duration | Start | Finish | Predecessors | Total float | Free float | Resources | Cost | CODE | P3 ACTID | P6 ID (old) | NP61D | PROJECT | PHASES | PACKAGE | PART | ELEMENTS | STEP | BILL NOS | BILL DIVISION | RES PACK |
| --- | --- | --- | --- | --- | --- | --- | --- | --- | --- | --- | --- | --- | --- | --- | --- | --- | --- | --- | --- | --- | --- | --- | --- |
|  | 20 | **WATER SUPPLY SYSTEM** |  | 2014-01-19 | 2014-04-05 |  |  |  |  |  |  |  |  |  |  |  |  |  |  |  |  |  |  |
| DUKHCONI1AZ2WSGL5155 |  | Excavation for water line | 25d | 2014-01-19 | 2014-02-17 | DUKHCONI1AZ1WSGL5170, DUKHCONI1AZ2DRGL5130 SS+10d | -12d | 0d | LABOR- SUBCONTRACTOR [150 h]; EXCAVATION QTY [249 Cum]; LOADER [63 h]; POCLAIN [125 h]; TRUCK [63 h]; EQUIP OPERATORS [251 h] | 9,752.4 | 10 | 1AP2WSFR10 | DUKHCON1AP2WSGL5155 | DUKHCONI1AZ2WSGL5155 | DH | CON | 1AF | Z2 | FR | WS | B03 | B03-D07 | RES-1A |
| DUKHCONI1AZ2WSGL5160 |  | Laying of water line | 25d | 2014-01-25 | 2014-02-23 | DUKHCONI1AZ2WSGL5155 SS+5d | -12d | 0d | MECHANICALS SK [183.6 h]; WATER PIPES QTY [251 lm]; LABOR- SUBCONTRACTOR [102 h] | 42,577.6 | 15 | 1AP2WSFR15 | DUKHCON1AP2WSGL5160 | DUKHCONI1AZ2WSGL5160 | DH | CON | 1AF | Z2 | FR | WS | B03 | B03-D07 | RES-1A |
| DUKHCONI1AZ2WSGL5165 |  | Testing of potable water line | 25d | 2014-01-30 | 2014-03-01 | DUKHCONI1AZ2WSGL5160 SS+5d | -12d | 0d | LABOR- SUBCONTRACTOR [30 h]; MECHANICALS SK [54 h]; DRAINAGE PIPES TEST QTY [251 lm] | 3,433 | 20 | 1AP2WSFR20 | DUKHCON1AP2WSGL5165 | DUKHCONI1AZ2WSGL5165 | DH | CON | 1AF | Z2 | FR | WS | B03 | B03-D07 | RES-1A |
| DUKHCONI1AZ2WSGL5170 |  | Backfilling potable water line | 25d | 2014-02-05 | 2014-03-06 | DUKHCONI1AZ2SAGL5145 FF, DUKHCONI1AZ2WSGL5165 SS+5d | -12d | 0d | LABOR- SUBCONTRACTOR [60 h]; BACKFILLING QTY [251 Cum]; BOBCAT [125 h]; PLATE COMPACTOR [125 h]; TRUCK [25 h]; EQUIP OPERATORS [275 h] | 2,438 | 25 | 1AP2WSFR25 | DUKHCON1AP2WSGL5170 | DUKHCONI1AZ2WSGL5170 | DH | CON | 1AF | Z2 | FR | WS | B03 | B03-D07 | RES-1A |
| DUKHCONI1AZ2WSGL5175 |  | Construction of valve chambers & Thrust Blocks | 25d | 2014-02-12 | 2014-03-12 | DUKHCONI1AZ2WSGL5170 FF+5d, DUKHCONI1AZ1WSGL5175, DUKHCONI1AZ2WSGL5155 SS+10d | 23d | 0d | MANHOLES SK [96 h]; LABOR- SUBCONTRACTOR [36 h]; MANHOLES QTY [12 ea] | 2,838.6 | 30 | 1AP2WSFR30 | DUKHCON1AP2WSGL5175 | DUKHCONI1AZ2WSGL5175 | DH | CON | 1AF | Z2 | FR | WS | B03 | B03-D07 | RES-1A |
| DUKHCONI1AZ2WSGL5180 |  | Installation of meter ,Accessories & Connection | 20d | 2014-03-13 | 2014-04-05 | DUKHCONI1AZ2WSGL5175, DUKHCONI1AZ1WSGL5180 | 23d | 7d | LABOR- SUBCONTRACTOR [18 h]; MECHANICALS SK [32.4 h]; CHAMPER QTY [10 lm] | 7,877 | 35 | 1AP2WSFR35 | DUKHCON1AP2WSGL5180 | DUKHCONI1AZ2WSGL5180 | DH | CON | 1AF | Z2 | FR | WS | B03 | B03-D07 | RES-1A |
|  | 25 | **FIREFIGHTING LINES** |  | 2014-02-12 | 2014-04-13 |  |  |  |  |  |  |  |  |  |  |  |  |  |  |  |  |  |  |
| DUKHCONI1AZ2FFGL5185 |  | Excavation for firefighting line | 25d | 2014-02-12 | 2014-03-12 | DUKHCONI1AZ2WSGL5170 SS+5d, DUKHCONI1AZ1FFGL5200 | -12d | 0d | TRUCK [38 h]; EQUIP OPERATORS [151 h]; POCLAIN [75 h]; LABOR- SUBCONTRACTOR [132 h]; EXCAVATION QTY [215 Cum]; LOADER [38 h] | 24,149 | 10 | 1AP2FFFR10 | DUKHCON1AP2FFGL5185 | DUKHCONI1AZ2FFGL5185 | DH | CON | 1AF | Z2 | FR | FF | B03 | B03-D07 | RES-1A |
| DUKHCONI1AZ2FFGL5190 |  | Laying of firefighting line | 25d | 2014-02-20 | 2014-03-20 | DUKHCONI1AZ2FFGL5185 SS+7d | -12d | 0d | LABOR- SUBCONTRACTOR [66 h]; MECHANICALS SK [237.6 h]; PLUMB PIPES QTY [215 lm] | 31,835.6 | 15 | 1AP2FFFR15 | DUKHCON1AP2FFGL5190 | DUKHCONI1AZ2FFGL5190 | DH | CON | 1AF | Z2 | FR | FF | B03 | B03-D07 | RES-1A |
| DUKHCONI1AZ2FFGL5195 |  | Testing of firefighting line | 25d | 2014-02-26 | 2014-03-26 | DUKHCONI1AZ2FFGL5190 SS+5d | -12d | 0d | LABOR- SUBCONTRACTOR [30 h]; MECHANICALS SK [54 h]; DRAINAGE PIPES TEST QTY [215 lm] | 3,034.2 | 20 | 1AP2FFFR20 | DUKHCON1AP2FFGL5195 | DUKHCONI1AZ2FFGL5195 | DH | CON | 1AF | Z2 | FR | FF | B03 | B03-D07 | RES-1A |
| DUKHCONI1AZ2FFGL5200 |  | Backfilling firefighting line | 25d | 2014-03-04 | 2014-04-01 | DUKHCONI1AZ2FFGL5195 SS+5d | -12d | 0d | LABOR- SUBCONTRACTOR [54 h]; BACKFILLING QTY [215 Cum]; BOBCAT [125 h]; PLATE COMPACTOR [125 h]; TRUCK [25 h]; EQUIP OPERATORS [275 h] | 6,037 | 25 | 1AP2FFFR25 | DUKHCON1AP2FFGL5200 | DUKHCONI1AZ2FFGL5200 | DH | CON | 1AF | Z2 | FR | FF | B03 | B03-D07 | RES-1A |
| DUKHCONI1AZ2FFGL5205 |  | Construction of valve chambers & Thrust Blocks | 25d | 2014-03-10 | 2014-04-07 | DUKHCONI1AZ2FFGL5200 FF+5d, DUKHCONI1AZ1FFGL5205, DUKHCONI1AZ2FFGL5185 SS+10d | 16d | 0d | STEEL FIXERS SK [40 h]; CARPENTERS SK [56 h]; CONCRETE MASON SK [16 h]; LABOR- SUBCONTRACTOR [90 h]; EXCAVATION QTY [13 Cum]; REINFORCEMENT BARS QTY [502 kg]; FORMWORK QTY [27 Sqm]; CONCRETE QTY [8 Cum] | 3,293.2 | 30 | 1AP2FFFR30 | DUKHCON1AP2FFGL5205 | DUKHCONI1AZ2FFGL5205 | DH | CON | 1AF | Z2 | FR | FF | B03 | B03-D07 | RES-1A |
| DUKHCONI1AZ2FFGL5210 |  | Connection with existing Firewater System | 25d | 2014-03-16 | 2014-04-13 | DUKHCONI1AZ1FFGL5210, DUKHCONI1AZ2FFGL5205 FF+5d, DUKHCONI1AZ2WSGL5180 FF | 16d | 18d | LABOR- SUBCONTRACTOR [48 h]; MECHANICALS SK [86.4 h]; FIRE EXTINGUISHER QTY [16 ea] | 11,721.4 | 35 | 1AP2FFFR35 | DUKHCON1AP2FFGL5210 | DUKHCONI1AZ2FFGL5210 | DH | CON | 1AF | Z2 | FR | FF | B03 | B03-D07 | RES-1A |
|  | 30 | **ELECTRICAL LINES** |  | 2014-03-12 | 2014-05-05 |  |  |  |  |  |  |  |  |  |  |  |  |  |  |  |  |  |  |
| DUKHCONI1AZ2ELGL5215 |  | Excavation Cable Trenches & Duct Banks | 25d | 2014-03-12 | 2014-04-09 | DUKHCONI1AZ1ELGL5225, DUKHCONI1AZ2FFGL5200 SS+7d | -6d | 0d | LABOR- SUBCONTRACTOR [774 h]; EXCAVATION QTY [1285 Cum]; LOADER [150 h]; POCLAIN [300 h]; TRUCK [150 h]; EQUIP OPERATORS [600 h] | 14,248.6 | 10 | 1AP2ECFR10 | DUKHCON1AP2ELGL5215 | DUKHCONI1AZ2ELGL5215 | DH | CON | 1AF | Z2 | FR | EC | B03 | B03-D04 | RES-1A |
| DUKHCONI1AZ2ELGL5220 |  | Laying of electrical cables | 25d | 2014-03-18 | 2014-04-15 | DUKHCONI1AZ2ELGL5215 SS+5d | -3d | 0d | LABOR- SUBCONTRACTOR [390 h]; ELECTRICIANS SK [1444.8 h]; CABLE QTY [1285 lm] | 689,477.4 | 15 | 1AP2ECFR15 | DUKHCON1AP2ELGL5220 | DUKHCONI1AZ2ELGL5220 | DH | CON | 1AF | Z2 | FR | EC | B03 | B03-D04 | RES-1A |
| DUKHCONI1AZ2ELGL5225 |  | Backfilling Electrical trench | 25d | 2014-03-26 | 2014-04-23 | DUKHCONI1AZ2ELGL5215 FF+7d, DUKHCONI1AZ2ELGL5220 SS+7d | -3d | 0d | TRUCK [50 h]; EQUIP OPERATORS [550 h]; LABOR- SUBCONTRACTOR [312 h]; BACKFILLING QTY [1285 Cum]; BOBCAT [250 h]; PLATE COMPACTOR [250 h] | 6,105.6 | 20 | 1AP2ECFR20 | DUKHCON1AP2ELGL5225 | DUKHCONI1AZ2ELGL5225 | DH | CON | 1AF | Z2 | FR | EC | B03 | B03-D04 | RES-1A |
| DUKHCONI1AZ2ELGL5230 |  | Construction of Submain Board & Feeder Pillar | 25d | 2014-04-07 | 2014-05-05 | DUKHCONI1AZ1ELGL5230, DUKHCONI1AZ2ELGL5225 FF+10d, DUKHCONI1AZ2ELGL5225 SS+10d | 71d | 0d | STEEL FIXERS SK [8 h]; CARPENTERS SK [40 h]; CONCRETE MASON SK [8 h]; LABOR- SUBCONTRACTOR [30 h]; LABOR- SUBCONTRACTOR [42 h]; REINFORCEMENT BARS QTY [21 kg]; FORMWORK QTY [17 Sqm]; CONCRETE QTY [2 Cum]; ALUMINIUM DOOR QTY [2 ea]; DOOR ERECTOR SK [8 h]; EXPANSION JOINT QTY [11 Sqm]; EXPANSION JOINT SKILLED SK [88 h] | 75,578.6 | 25 | 1AP2ECFR25 | DUKHCON1AP2ELGL5230 | DUKHCONI1AZ2ELGL5230 | DH | CON | 1AF | Z2 | FR | EC | B03 | B03-D04 | RES-1A |
|  | 35 | **STREET LIGHTING** |  | 2014-03-12 | 2014-06-03 |  |  |  |  |  |  |  |  |  |  |  |  |  |  |  |  |  |  |
| DUKHCONI1AZ2STGL5235 |  | Excavation for Street lighting | 25d | 2014-03-12 | 2014-04-09 | DUKHCONI1AZ1STGL5250 SS+10d, DUKHCONI1AZ2ELGL5215 SS | -6d | 0d | LABOR- SUBCONTRACTOR [18 h]; EXCAVATION QTY [29 Cum]; LOADER [13 h]; POCLAIN [25 h]; TRUCK [13 h]; EQUIP OPERATORS [51 h] | 2,692.2 | 10 | 1AP2STFR10 | DUKHCON1AP2STGL5235 | DUKHCONI1AZ2STGL5235 | DH | CON | 1AF | Z2 | FR | ST | B03 | B03-D09 | RES-1A |
| DUKHCONI1AZ2STGL5240 |  | Construction of Duct Banks | 25d | 2014-03-18 | 2014-04-15 | DUKHCONI1AZ2STGL5235 SS+5d | -6d | 0d | LABOR- SUBCONTRACTOR [252 h]; ELECTRICIANS SK [940.8 h]; DUCT BANK QTY [336 lm] | 89,884.6 | 15 | 1AP2STFR15 | DUKHCON1AP2STGL5240 | DUKHCONI1AZ2STGL5240 | DH | CON | 1AF | Z2 | FR | ST | B03 | B03-D09 | RES-1A |
| DUKHCONI1AZ2STGL5245 |  | Construction of Foundation | 25d | 2014-03-18 | 2014-04-15 | DUKHCONI1AZ2STGL5240 SS | -6d | 0d | MANHOLES SK [464 h]; LABOR- SUBCONTRACTOR [174 h]; COLUMN BASE QTY [29 ea] | 29,280.8 | 20 | 1AP2STFR20 | DUKHCON1AP2STGL5245 | DUKHCONI1AZ2STGL5245 | DH | CON | 1AF | Z2 | FR | ST | B03 | B03-D09 | RES-1A |
| DUKHCONI1AZ2STGL5250 |  | Backfilling Street Lighting | 25d | 2014-03-24 | 2014-04-21 | DUKHCONI1AZ2STGL5245 SS+5d, DUKHCONI1AZ2STGL5235 FF+5d | -6d | 0d | LABOR- SUBCONTRACTOR [12 h]; BACKFILLING QTY [29 Cum]; BOBCAT [125 h]; PLATE COMPACTOR [125 h]; TRUCK [25 h]; EQUIP OPERATORS [275 h] | 2,692.2 | 25 | 1AP2STFR25 | DUKHCON1AP2STGL5250 | DUKHCONI1AZ2STGL5250 | DH | CON | 1AF | Z2 | FR | ST | B03 | B03-D09 | RES-1A |
| DUKHCONI1AZ2STGL5255 |  | Installation of light Post | 25d | 2014-04-09 | 2014-05-07 | DUKHCONI1AZ1STGL5255, DUKHCONI1AZ2STGL5250 FF+14d, DUKHCONI1AZ2STGL5250 SS+10d | 69d | 9d | LABOR- SUBCONTRACTOR [48 h]; ELECTRICIANS SK [168 h]; LIGHTPOST COLUMN QTY [29 ea] | 379,406.8 | 30 | 1AP2STFR30 | DUKHCON1AP2STGL5255 | DUKHCONI1AZ2STGL5255 | DH | CON | 1AF | Z2 | FR | ST | B03 | B03-D09 | RES-1A |
| DUKHCONI1AZ2STGL5260 |  | Electrical Works | 25d | 2014-05-06 | 2014-06-03 | DUKHCONI1AZ1STGL5260, DUKHCONI1AZ2ELGL5230, DUKHCONI1AZ2STGL5255 SS+14d, DUKHCONI1AZ2STGL5255 FF+10d | 71d | 18d | LABOR- SUBCONTRACTOR [174 h]; ELECTRICIANS SK [649.6 h]; CABLE QTY [577 lm] | 19,485 | 35 | 1AP2STFR35 | DUKHCON1AP2STGL5260 | DUKHCONI1AZ2STGL5260 | DH | CON | 1AF | Z2 | FR | ST | B03 | B03-D09 | RES-1A |

Notes:
- DUKHCONI1AZ2WSGL5155: Expenses: I1A-Water supply system 9752.4
- DUKHCONI1AZ2WSGL5160: Expenses: I1A-Water supply system 42577.6
- DUKHCONI1AZ2WSGL5165: Expenses: I1A-Water supply system 3433
- DUKHCONI1AZ2WSGL5170: Expenses: I1A-Water supply system 2438
- DUKHCONI1AZ2WSGL5175: Expenses: I1A-Water supply system 2838.6
- DUKHCONI1AZ2WSGL5180: Expenses: I1A-Water supply system 7877
- DUKHCONI1AZ2FFGL5185: Expenses: I1A-Water supply system 24149
- DUKHCONI1AZ2FFGL5190: Expenses: I1A-Water supply system 31835.6
- DUKHCONI1AZ2FFGL5195: Expenses: I1A-Water supply system 3034.2
- DUKHCONI1AZ2FFGL5200: Expenses: I1A-Water supply system 6037
- DUKHCONI1AZ2FFGL5205: Expenses: I1A-Water supply system 3293.2
- DUKHCONI1AZ2FFGL5210: Expenses: I1A-Water supply system 11721.4
- DUKHCONI1AZ2ELGL5215: Expenses: I1A-Electrical power supply and distribution 14248.6
- DUKHCONI1AZ2ELGL5220: Expenses: I1A-Electrical power supply and distribution 689477
- DUKHCONI1AZ2ELGL5225: Expenses: I1A-Electrical power supply and distribution 6105.6
- DUKHCONI1AZ2ELGL5230: Expenses: I1A-Electrical power supply and distribution 75578.6
- DUKHCONI1AZ2STGL5235: Expenses: I1A-Street lighting 2692.2
- DUKHCONI1AZ2STGL5240: Expenses: I1A-Street lighting 89884.6
- DUKHCONI1AZ2STGL5245: Expenses: I1A-Street lighting 29280.8
- DUKHCONI1AZ2STGL5250: Expenses: I1A-Street lighting 2692.2
- DUKHCONI1AZ2STGL5255: Expenses: I1A-Street lighting 379407
- DUKHCONI1AZ2STGL5260: Expenses: I1A-Street lighting 19485

| ID | WBS | Activity | Duration | Start | Finish | Predecessors | Total float | Free float | Resources | Cost | CODE | P3 ACTID | P6 ID (old) | NP61D | PROJECT | PHASES | PACKAGE | PART | ELEMENTS | STEP | BILL NOS | BILL DIVISION | RES PACK |
| --- | --- | --- | --- | --- | --- | --- | --- | --- | --- | --- | --- | --- | --- | --- | --- | --- | --- | --- | --- | --- | --- | --- | --- |
|  | 40 | **IRRIGATION LINES** |  | 2014-04-24 | 2014-06-29 |  |  |  |  |  |  |  |  |  |  |  |  |  |  |  |  |  |  |
| DUKHCONI1AZ2IRGL5265 |  | Excavation for irrigation line | 25d | 2014-04-24 | 2014-05-22 | DUKHCONI1AZ2ELGL5225, DUKHCONI1AZ1IRGL5280 | 19d | 0d | LABOR- SUBCONTRACTOR [312 h]; EXCAVATION QTY [514 Cum]; LOADER [125 h]; POCLAIN [250 h]; TRUCK [125 h]; EQUIP OPERATORS [500 h] | 9,606.6 | 10 | 1AP2IRFR10 | DUKHCON1AP2IRGL5265 | DUKHCONI1AZ2IRGL5265 | DH | CON | 1AF | Z2 | FR | IR | B03 | B03-D07 | RES-1A |
| DUKHCONI1AZ2IRGL5270 |  | Laying of irrigationline | 25d | 2014-04-30 | 2014-05-28 | DUKHCONI1AZ2IRGL5265 SS+5d | 19d | 0d | LABOR- SUBCONTRACTOR [138 h]; MECHANICALS SK [248.4 h]; IRRIGATION PIPES QTY [923 lm] | 15,345 | 15 | 1AP2IRFR15 | DUKHCON1AP2IRGL5270 | DUKHCONI1AZ2IRGL5270 | DH | CON | 1AF | Z2 | FR | IR | B03 | B03-D07 | RES-1A |
| DUKHCONI1AZ2IRGL5275 |  | Testing of irrigation line | 25d | 2014-05-06 | 2014-06-03 | DUKHCONI1AZ2IRGL5270 SS+5d | 19d | 0d | LABOR- SUBCONTRACTOR [114 h]; MECHANICALS SK [205.2 h]; DRAINAGE PIPES TEST QTY [923 lm] | 2,168.8 | 20 | 1AP2IRFR20 | DUKHCON1AP2IRGL5275 | DUKHCONI1AZ2IRGL5275 | DH | CON | 1AF | Z2 | FR | IR | B03 | B03-D07 | RES-1A |
| DUKHCONI1AZ2IRGL5280 |  | Backfilling irrigation line | 25d | 2014-05-12 | 2014-06-09 | DUKHCONI1AZ2IRGL5275 SS+5d | 19d | 0d | LABOR- SUBCONTRACTOR [126 h]; BACKFILLING QTY [514 Cum]; BOBCAT [250 h]; PLATE COMPACTOR [250 h]; TRUCK [50 h]; EQUIP OPERATORS [550 h] | 2,401.6 | 25 | 1AP2IRFR25 | DUKHCON1AP2IRGL5280 | DUKHCONI1AZ2IRGL5280 | DH | CON | 1AF | Z2 | FR | IR | B03 | B03-D07 | RES-1A |
| DUKHCONI1AZ2IRGL5285 |  | Construction of Thrust Blocks,Pull boxes | 25d | 2014-05-24 | 2014-06-21 | DUKHCONI1AZ2ELGL5225 SS+10d, DUKHCONI1AZ2IRGL5280 FF+10d | 34d | 0d | LABOR- SUBCONTRACTOR [30 h]; ELECTRICIANS SK [22.4 h]; THRUST BLOCKS QTY [2 ea]; PULL BOX QTY [8 ea]; PULL BOX SK [64 h] | 9,988.6 | 30 | 1AP2IRFR30 | DUKHCON1AP2IRGL5285 | DUKHCONI1AZ2IRGL5285 | DH | CON | 1AF | Z2 | FR | IR | B03 | B03-D07 | RES-1A |
| DUKHCONI1AZ2IRGL5290 |  | Irrigation Fittings (Nozzle,Values) | 25d | 2014-06-01 | 2014-06-29 | DUKHCONI1AZ2IRGL5285 SS+7d, DUKHCONI1AZ2IRGL5280 SS+10d | 34d | 11d | LABOR- SUBCONTRACTOR [102 h]; MECHANICALS SK [183.6 h]; CHAMPER QTY [65 lm] | 26,800.6 | 35 | 1AP2IRFR35 | DUKHCON1AP2IRGL5290 | DUKHCONI1AZ2IRGL5290 | DH | CON | 1AF | Z2 | FR | IR | B03 | B03-D07 | RES-1A |
|  | 45 | **TELECOMMUNICATION LINES** |  | 2014-04-05 | 2014-05-20 |  |  |  |  |  |  |  |  |  |  |  |  |  |  |  |  |  |  |
| DUKHCONI1AZ2TCGL5295 |  | Excavation Telecommunication trenches | 20d | 2014-04-05 | 2014-04-27 | DUKHCONI1AZ1TCGL5305, DUKHCONI1AZ2STGL5250 SS+10d | -6d | 0d | LABOR- SUBCONTRACTOR [228 h]; EXCAVATION QTY [372 Cum]; LOADER [75 h]; POCLAIN [150 h]; TRUCK [75 h]; EQUIP OPERATORS [300 h] | 9,563.6 | 10 | 1AP2TCFR10 | DUKHCON1AP2TCGL5295 | DUKHCONI1AZ2TCGL5295 | DH | CON | 1AF | Z2 | FR | TC | B03 | B03-D05 | RES-1A |
| DUKHCONI1AZ2TCGL5300 |  | Laying of cables | 20d | 2014-04-10 | 2014-05-03 | DUKHCONI1AZ2TCGL5295 SS+5d | -6d | 0d | LABOR- SUBCONTRACTOR [168 h]; ELECTRICIANS SK [627.2 h]; CABLE QTY [558 lm] | 3,124 | 15 | 1AP2TCFR15 | DUKHCON1AP2TCGL5300 | DUKHCONI1AZ2TCGL5300 | DH | CON | 1AF | Z2 | FR | TC | B03 | B03-D05 | RES-1A |
| DUKHCONI1AZ2TCGL5305 |  | Backfilling telecommunication trench | 20d | 2014-04-16 | 2014-05-08 | DUKHCONI1AZ2TCGL5300 SS+5d | -6d | 0d | LABOR- SUBCONTRACTOR [90 h]; BACKFILLING QTY [372 Cum]; BOBCAT [200 h]; PLATE COMPACTOR [200 h]; TRUCK [40 h]; EQUIP OPERATORS [440 h] | 4,099 | 20 | 1AP2TCFR20 | DUKHCON1AP2TCGL5305 | DUKHCONI1AZ2TCGL5305 | DH | CON | 1AF | Z2 | FR | TC | B03 | B03-D05 | RES-1A |
| DUKHCONI1AZ2TCGL5310 |  | Connection & Installation | 20d | 2014-04-28 | 2014-05-20 | DUKHCONI1AZ1TCGL5310, DUKHCONI1AZ2TCGL5305 SS+10d | 73d | 23d | LABOR- SUBCONTRACTOR [42 h]; ELECTRICIANS SK [302.4 h]; TELEPHONE SOCKETS QTY [27 ea] | 50,979.6 | 25 | 1AP2TCFR25 | DUKHCON1AP2TCGL5310 | DUKHCONI1AZ2TCGL5310 | DH | CON | 1AF | Z2 | FR | TC | B03 | B03-D05 | RES-1A |
|  | 50 | **BOUNDARY WALL** |  | 2014-04-05 | 2014-06-29 |  |  |  |  |  |  |  |  |  |  |  |  |  |  |  |  |  |  |
| DUKHCONI1AZ2BWGL5315 |  | Construction of Boundary Wall (Ht-3m) | 25d | 2014-04-05 | 2014-05-03 | DUKHCONI1AZ2STGL5250 SS+10d, DUKHCONI1AZ1BWGL5315 | 50d | 0d | STEEL FIXERS SK [128 h]; LABOR- SUBCONTRACTOR [96 h]; BOUNDARY WIRE MESH QTY [304 Sqm] | 459,539.2 | 10 | 1AP2BWFR10 | DUKHCON1AP2ARGL5315 | DUKHCONI1AZ2BWGL5315 | DH | CON | 1AF | Z2 | FR | BW | B03 | B03-D11 | RES-1A |
| DUKHCONI1AZ2BWGL5320 |  | Install.Steel Gate,Entance Barrier (3m Wall) | 25d | 2014-04-21 | 2014-05-19 | DUKHCONI1AZ2BWGL5315 SS+14d | 50d | 0d | LABOR- SUBCONTRACTOR [12 h]; GATE QTY [2 ea]; GATE ERECTOR SK [16 h] | 5,993 | 15 | 1AP2BWFR15 | DUKHCON1AP2ARGL5320 | DUKHCONI1AZ2BWGL5320 | DH | CON | 1AF | Z2 | FR | BW | B03 | B03-D11 | RES-1A |
| DUKHCONI1AZ2BWGL5325 |  | Const. of Villa Front Boundary Wall (Ht-2m) | 25d | 2014-05-20 | 2014-06-17 | DUKHCONI1AZ2BWGL5320, DUKHCONI1AZ2BWGL5315 SS+5d, DUKHCONI1AZ1BWGL5325 | 50d | 0d | STEEL FIXERS SK [96 h]; LABOR- SUBCONTRACTOR [72 h]; BOUNDARY WIRE MESH QTY [231 Sqm] | 414,398.4 | 20 | 1AP2BWFR20 | DUKHCON1AP2ARGL5325 | DUKHCONI1AZ2BWGL5325 | DH | CON | 1AF | Z2 | FR | BW | B03 | B03-D11 | RES-1A |
| DUKHCONI1AZ2BWGL5330 |  | Const. of Blockwork fence Wall (Ht-1.85m) | 25d | 2014-06-01 | 2014-06-29 | DUKHCONI1AZ1BWGL5330, DUKHCONI1AZ2BWGL5325 SS+10d | 50d | 11d | STEEL FIXERS SK [88 h]; LABOR- SUBCONTRACTOR [66 h]; BOUNDARY WIRE MESH QTY [206 Sqm] | 293,348.6 | 30 | 1AP2BWFR30 | DUKHCON1AP2ARGL5330 | DUKHCONI1AZ2BWGL5330 | DH | CON | 1AF | Z2 | FR | BW | B03 | B03-D11 | RES-1A |
|  | 55 | **ROAD WORKS** |  | 2014-05-10 | 2014-07-23 |  |  |  |  |  |  |  |  |  |  |  |  |  |  |  |  |  |  |
| DUKHCONI1AZ2RWGL6000 |  | Excavation & Earth Filling | 10d | 2014-05-10 | 2014-05-20 | DUKHCONI1AZ1RWGL6015 SS+10d, DUKHCONI1AZ2ELGL5225, DUKHCONI1AZ2STGL5250, DUKHCONI1AZ2FFGL5200, DUKHCONI1AZ2TCGL5305, DUKHCONI1AZ2SAGL5150, DUKHCONI1AZ2FFGL5210 | -6d | 0d | LABOR- SUBCONTRACTOR [732 h]; EXCAVATION QTY [1162 Cum]; BACKFILLING QTY [127 Cum]; LOADER [125 h]; POCLAIN [250 h]; TRUCK [125 h]; EQUIP OPERATORS [500 h] | 107,162 | 10 | 1AP2RDFR10 | DUKHCON1AP2RDGL6000 | DUKHCONI1AZ2RWGL6000 | DH | CON | 1AF | Z2 | FR | RD | B03 | B03-D08 | RES-1A |
| DUKHCONI1AZ2RWGL6005 |  | Laying of Sub Grade | 25d | 2014-05-21 | 2014-06-18 | DUKHCONI1AZ2RWGL6000 | -6d | 0d | LABOR- SUBCONTRACTOR [24 h]; SUBGRADE QTY [394 Sqm] | 120,812.8 | 15 | 1AP2RDFR15 | DUKHCON1AP2RDGL6005 | DUKHCONI1AZ2RWGL6005 | DH | CON | 1AF | Z2 | FR | RD | B03 | B03-D08 | RES-1A |
| DUKHCONI1AZ2RWGL6010 |  | Laying of Precast Kerbs | 25d | 2014-06-02 | 2014-06-30 | DUKHCONI1AZ2RWGL6005 SS+10d | -6d | 0d | LABOR- SUBCONTRACTOR [24 h]; GRANULAR SUBBASE QTY [340 Sqm] | 110,764.6 | 20 | 1AP2RDFR20 | DUKHCON1AP2RDGL6010 | DUKHCONI1AZ2RWGL6010 | DH | CON | 1AF | Z2 | FR | RD | B03 | B03-D08 | RES-1A |
| DUKHCONI1AZ2RWGL6015 |  | Laying of Granular Sub Base Coarse | 20d | 2014-06-14 | 2014-07-06 | DUKHCONI1AZ2RWGL6010 SS+10d | -6d | 0d | KERBSTONE MASON SK [776 h]; LABOR- SUBCONTRACTOR [438 h]; KERBSTONE QTY [485 lm]; EDGE STONE QTY [485 Sqm]; HEAVY ROLLER [400 h]; LOADER [100 h]; TRUCK [100 h]; EQUIP OPERATORS [600 h] | 60,406.4 | 25 | 1AP2RDFR25 | DUKHCON1AP2RDGL6015 | DUKHCONI1AZ2RWGL6015 | DH | CON | 1AF | Z2 | FR | RD | B03 | B03-D08 | RES-1A |
| DUKHCONI1AZ2RWGL6020 |  | Laying of Road Base Asphalt Concrete | 5d | 2014-07-07 | 2014-07-12 | DUKHCONI1AZ2RWGL6015 | 39d | 0d | LABOR- SUBCONTRACTOR [24 h]; ASPHALT CONCRETE QTY [1967 Cum]; ASPHALT PAVER MACHINE [50 h]; HAND ROLLER [100 h]; EQUIP OPERATORS [150 h] | 153,671 | 30 | 1AP2RDFR30 | DUKHCON1AP2RDGL6020 | DUKHCONI1AZ2RWGL6020 | DH | CON | 1AF | Z2 | FR | RD | B03 | B03-D08 | RES-1A |
| DUKHCONI1AZ2RWGL6025 |  | Laying of Asphalt Wearing Coarse | 5d | 2014-07-13 | 2014-07-17 | DUKHCONI1AZ1RWGL6025, DUKHCONI1AZ2RWGL6020 | 54d | 0d | LABOR- SUBCONTRACTOR [24 h]; ASPHALT WEARING COURSE QTY [1967 Sqm]; ASPHALT PAVER MACHINE [50 h]; HAND ROLLER [100 h]; EQUIP OPERATORS [150 h] | 80,057 | 35 | 1AP2RDFR35 | DUKHCON1AP2RDGL6025 | DUKHCONI1AZ2RWGL6025 | DH | CON | 1AF | Z2 | FR | RD | B03 | B03-D08 | RES-1A |
| DUKHCONI1AZ2RWGL6030 |  | Traffic Signage & Road Marking | 5d | 2014-07-19 | 2014-07-23 | DUKHCONI1AZ2RWGL6025, DUKHCONI1AZ1RWGL6030 | 54d | 15d | LABOR- SUBCONTRACTOR [366 h]; STEEL ERECTOR SK [448 h]; TRAFFIC SIGN QTY [279 ea]; ROAD MARKING QTY [100 lm]; ASPHALT SK [160 h] | 83,033.6 | 40 | 1AP2RDFR40 | DUKHCON1AP2RDGL6030 | DUKHCONI1AZ2RWGL6030 | DH | CON | 1AF | Z2 | FR | RD | B03 | B03-D08 | RES-1A |

Notes:
- DUKHCONI1AZ2IRGL5265: Expenses: I1A-Water supply system 9606.6
- DUKHCONI1AZ2IRGL5270: Expenses: I1A-Water supply system 15345
- DUKHCONI1AZ2IRGL5275: Expenses: I1A-Water supply system 2168.8
- DUKHCONI1AZ2IRGL5280: Expenses: I1A-Water supply system 2401.6
- DUKHCONI1AZ2IRGL5285: Expenses: I1A-Water supply system 9988.6
- DUKHCONI1AZ2IRGL5290: Expenses: I1A-Water supply system 26800.6
- DUKHCONI1AZ2TCGL5295: Expenses: I1A-Telecommunication 9563.6
- DUKHCONI1AZ2TCGL5300: Expenses: I1A-Telecommunication 3124
- DUKHCONI1AZ2TCGL5305: Expenses: I1A-Telecommunication 4099
- DUKHCONI1AZ2TCGL5310: Expenses: I1A-Telecommunication 50979.6
- DUKHCONI1AZ2BWGL5315: Expenses: I1A-Hard and soft landscaping 459539
- DUKHCONI1AZ2BWGL5320: Expenses: I1A-Hard and soft landscaping 5993
- DUKHCONI1AZ2BWGL5325: Expenses: I1A-Hard and soft landscaping 414398
- DUKHCONI1AZ2BWGL5330: Expenses: I1A-Hard and soft landscaping 293349
- DUKHCONI1AZ2RWGL6000: Expenses: I1A-Road work 107162
- DUKHCONI1AZ2RWGL6005: Expenses: I1A-Road work 120813
- DUKHCONI1AZ2RWGL6010: Expenses: I1A-Road work 110765
- DUKHCONI1AZ2RWGL6015: Expenses: I1A-Road work 60406.4
- DUKHCONI1AZ2RWGL6020: Expenses: I1A-Road work 153671
- DUKHCONI1AZ2RWGL6025: Expenses: I1A-Road work 80057
- DUKHCONI1AZ2RWGL6030: Expenses: I1A-Road work 83033.6

| ID | WBS | Activity | Duration | Start | Finish | Predecessors | Total float | Free float | Resources | Cost | CODE | P3 ACTID | P6 ID (old) | NP61D | PROJECT | PHASES | PACKAGE | PART | ELEMENTS | STEP | BILL NOS | BILL DIVISION | RES PACK |
| --- | --- | --- | --- | --- | --- | --- | --- | --- | --- | --- | --- | --- | --- | --- | --- | --- | --- | --- | --- | --- | --- | --- | --- |
|  | 60 | **PARKING SHED** |  | 2014-06-19 | 2014-08-19 |  |  |  |  |  |  |  |  |  |  |  |  |  |  |  |  |  |  |
| DUKHCONI1AZ2PSGL7000 |  | Excavation | 15d | 2014-06-19 | 2014-07-06 | DUKHCONI1AZ1PSGL7005, DUKHCONI1AZ2RWGL6015 SS+5d | 44d | 5d | LABOR- SUBCONTRACTOR [72 h]; EXCAVATION QTY [112 Cum]; LOADER [19 h]; POCLAIN [38 h]; TRUCK [19 h]; EQUIP OPERATORS [76 h] | 33,089.6 | 10 | 1AP2PSFR10 | DUKHCON1AP2PSGL7000 | DUKHCONI1AZ2PSGL7000 | DH | CON | 1AF | Z2 | FR | PS | B03 | B03-D08 | RES-1A |
| DUKHCONI1AZ2PSGL7005 |  | Foundation casting | 15d | 2014-07-01 | 2014-07-17 | DUKHCONI1AZ2PSGL7000 FF+5d, DUKHCONI1AZ2PSGL7000 SS+5d, DUKHCONI1AZ2RWGL6015 FF+10d | 39d | 0d | STEEL FIXERS SK [72 h]; CARPENTERS SK [48 h]; CONCRETE MASON SK [24 h]; LABOR- SUBCONTRACTOR [108 h]; REINFORCEMENT BARS QTY [896 kg]; FORMWORK QTY [23 Sqm]; CONCRETE QTY [12 Cum] | 33,089.6 | 15 | 1AP2PSFR15 | DUKHCON1AP2PSGL7005 | DUKHCONI1AZ2PSGL7005 | DH | CON | 1AF | Z2 | FR | PS | B03 | B03-D08 | RES-1A |
| DUKHCONI1AZ2PSGL7010 |  | Column, Frame& Fabrics Erection | 25d | 2014-07-13 | 2014-08-13 | DUKHCONI1AZ2BWGL5330, DUKHCONI1AZ2PSGL7005 SS+10d, DUKHCONI1AZ2RWGL6020, DUKHCONI1AZ2RWGL6030 FF, DUKHCONI1AZ1PSGL7010 | 39d | 0d | LABOR- SUBCONTRACTOR [102 h]; STEEL ERECTOR SK [184 h]; PARKING SHED QTY [560 ea] | 165,447.6 | 20 | 1AP2PSFR20 | DUKHCON1AP2PSGL7010 | DUKHCONI1AZ2PSGL7010 | DH | CON | 1AF | Z2 | FR | PS | B03 | B03-D08 | RES-1A |
| DUKHCONI1AZ2PSGL7015 |  | Electrical Works-Parking Shed | 25d | 2014-07-19 | 2014-08-19 | DUKHCONI1AZ2PSGL7010 SS+5d, DUKHCONI1AZ2STGL5260, DUKHCONI1AZ1PSGL7015 | 39d | 18d | LABOR- SUBCONTRACTOR [18 h]; ELECTRICIANS SK [33.6 h]; LIGHTS QTY [15 ea] | 16,545 | 25 | 1AP2PSFR25 | DUKHCON1AP2PSGL7015 | DUKHCONI1AZ2PSGL7015 | DH | CON | 1AF | Z2 | FR | PS | B03 | B03-D08 | RES-1A |
|  | 65 | **HARD LANDSCAPING** |  | 2014-05-10 | 2014-08-13 |  |  |  |  |  |  |  |  |  |  |  |  |  |  |  |  |  |  |
| DUKHCONI1AZ2HDGL7020 |  | Precast Concrete Kerbs works | 20d | 2014-05-10 | 2014-06-01 | DUKHCONI1AZ2RWGL6000 SS | 23d | 0d | KERBSTONE MASON SK [752 h]; LABOR- SUBCONTRACTOR [426 h]; KERBSTONE QTY [940 lm] | 112,518 | 10 | 1AP2HDFR10 | DUKHCON1AP2HDGL7020 | DUKHCONI1AZ2HDGL7020 | DH | CON | 1AF | Z2 | FR | HD | B03 | B03-D11 | RES-1A |
| DUKHCONI1AZ2HDGL7025 |  | Interlocking for Walkways | 25d | 2014-05-21 | 2014-06-18 | DUKHCONI1AZ2HDGL7020 SS+10d | 23d | 0d | INTERLOCK MASON SK [584 h]; LABOR- SUBCONTRACTOR [222 h]; INTERLOCK QTY [728 Sqm] | 88,756 | 15 | 1AP2HDFR15 | DUKHCON1AP2HDGL7025 | DUKHCONI1AZ2HDGL7025 | DH | CON | 1AF | Z2 | FR | HD | B03 | B03-D11 | RES-1A |
| DUKHCONI1AZ2HDGL7030 |  | Construction of Retaining wall | 25d | 2014-06-02 | 2014-06-30 | DUKHCONI1AZ1HDGL7030, DUKHCONI1AZ2HDGL7025 SS+10d | 23d | 0d | STEEL FIXERS SK [120 h]; CARPENTERS SK [272 h]; CONCRETE MASON SK [40 h]; LABOR- SUBCONTRACTOR [324 h]; EXCAVATION QTY [14 Cum]; REINFORCEMENT BARS QTY [1445 kg]; FORMWORK QTY [134 Sqm]; CONCRETE QTY [17 Cum] | 22,937.8 | 20 | 1AP2HDFR20 | DUKHCON1AP2HDGL7030 | DUKHCONI1AZ2HDGL7030 | DH | CON | 1AF | Z2 | FR | HD | B03 | B03-D11 | RES-1A |
| DUKHCONI1AZ2HDGL7035 |  | Construction of Wash Stone Boulders | 25d | 2014-06-02 | 2014-06-30 | DUKHCONI1AZ2HDGL7030 SS, DUKHCONI1AZ1HDGL7035 | 23d | 0d | TILE MASON SK [64 h]; LABOR- SUBCONTRACTOR [24 h]; STONE BOULDERS QTY [32 Sqm] | 19,037 | 25 | 1AP2HDFR25 | DUKHCON1AP2HDGL7035 | DUKHCONI1AZ2HDGL7035 | DH | CON | 1AF | Z2 | FR | HD | B03 | B03-D11 | RES-1A |
| DUKHCONI1AZ2HDGL7040 |  | Construction of Speed Humps | 20d | 2014-07-19 | 2014-08-13 | DUKHCONI1AZ1HDGL7040, DUKHCONI1AZ2RWGL6025, DUKHCONI1AZ2HDGL7035 SS | 73d | 23d | CONCRETE MASON SK [8 h]; LABOR- SUBCONTRACTOR [6 h]; SPEED HUMPS [3 ea] | 3,420 | 30 | 1AP2HDFR30 | DUKHCON1AP2HDGL7040 | DUKHCONI1AZ2HDGL7040 | DH | CON | 1AF | Z2 | FR | HD | B03 | B03-D11 | RES-1A |
|  | 70 | **SOFT LANDSCAPING** |  | 2014-06-14 | 2014-08-07 |  |  |  |  |  |  |  |  |  |  |  |  |  |  |  |  |  |  |
| DUKHCONI1AZ2SLGL7200 |  | Excavation | 25d | 2014-06-14 | 2014-07-12 | DUKHCONI1AZ1SLGL7205, DUKHCONI1AZ2IRGL5290 SS, DUKHCONI1AZ2HDGL7035 SS+10d | 23d | 0d | LABOR- SUBCONTRACTOR [246 h]; EXCAVATION QTY [407 Cum]; LOADER [63 h]; POCLAIN [125 h]; TRUCK [63 h]; EQUIP OPERATORS [251 h] | 24,965.8 | 10 | 1AP2SLFR10 | DUKHCON1AP2SLGL7200 | DUKHCONI1AZ2SLGL7200 | DH | CON | 1AF | Z2 | FR | SL | B03 | B03-D11 | RES-1A |
| DUKHCONI1AZ2SLGL7205 |  | Sweet Soil Laying | 25d | 2014-06-25 | 2014-07-23 | DUKHCONI1AZ2SLGL7200 SS+10d | 23d | 0d | LABOR- SUBCONTRACTOR [1020 h]; SWEET SOIL QTY [2034 Cum]; LANDSCAPING SK [1360 h] | 141,473.2 | 15 | 1AP2SLFR15 | DUKHCON1AP2SLGL7205 | DUKHCONI1AZ2SLGL7205 | DH | CON | 1AF | Z2 | FR | SL | B03 | B03-D11 | RES-1A |
| DUKHCONI1AZ2SLGL7210 |  | Plantation works | 25d | 2014-07-07 | 2014-08-07 | DUKHCONI1AZ1SLGL7210, DUKHCONI1AZ2SLGL7205 SS+10d | 53d | 18d | LABOR- SUBCONTRACTOR [252 h]; PLAM TREES QTY [16 ea]; LANDSCAPING SK [336 h]; GROUND COVER QTY [1960 Sqm]; SHRUBS QTY [147 ea] | 112,789.6 | 20 | 1AP2SLFR20 | DUKHCON1AP2SLGL7210 | DUKHCONI1AZ2SLGL7210 | DH | CON | 1AF | Z2 | FR | SL | B03 | B03-D11 | RES-1A |
|  | 20 | **ZONE - 3** |  | 2014-01-25 | 2014-10-08 |  |  |  |  |  |  |  |  |  |  |  |  |  |  |  |  |  |  |
|  | 10 | **INFRASTRUCTURE WORKS** |  | 2014-01-25 | 2014-10-08 |  |  |  |  |  |  |  |  |  |  |  |  |  |  |  |  |  |  |
|  | 10 | **DRAINAGE LINES** |  | 2014-01-25 | 2014-03-16 |  |  |  |  |  |  |  |  |  |  |  |  |  |  |  |  |  |  |
| DUKHCONI1AZ3DRGL5115 |  | Excavation for Drainage line | 25d | 2014-01-25 | 2014-02-23 | DUKHCONI1AZ2DRGL5130, DUKHCONP1AZ5STFF2025 SS | -15d | 0d | LABOR- SUBCONTRACTOR [180 h]; EXCAVATION QTY [296 Cum]; LOADER [63 h]; POCLAIN [125 h]; TRUCK [63 h]; EQUIP OPERATORS [251 h] | 13,573.2 | 10 | 1AP3DRFR10 | DUKHCON1AP3DRGL5115 | DUKHCONI1AZ3DRGL5115 | DH | CON | 1AF | Z3 | FR | DR | B03 | B03-D06 | RES-1A |
| DUKHCONI1AZ3DRGL5120 |  | Laying of Drainage line | 25d | 2014-02-01 | 2014-03-02 | DUKHCONI1AZ3DRGL5115 FF+6d, DUKHCONI1AZ3DRGL5115 SS+6d | -15d | 0d | LABOR- SUBCONTRACTOR [60 h]; MECHANICALS SK [216 h]; DRAINAGE PIPES QTY [386 lm] | 40,093 | 15 | 1AP3DRFR15 | DUKHCON1AP3DRGL5120 | DUKHCONI1AZ3DRGL5120 | DH | CON | 1AF | Z3 | FR | DR | B03 | B03-D06 | RES-1A |
| DUKHCONI1AZ3DRGL5125 |  | Testing of Drainage line | 25d | 2014-02-09 | 2014-03-10 | DUKHCONI1AZ3DRGL5120 SS+7d, DUKHCONI1AZ3DRGL5120 FF+7d | -15d | 0d | DRAINAGE PIPES TEST QTY [386 lm]; LABOR- SUBCONTRACTOR [48 h]; MECHANICALS SK [86.4 h] | 4,454.6 | 20 | 1AP3DRFR20 | DUKHCON1AP3DRGL5125 | DUKHCONI1AZ3DRGL5125 | DH | CON | 1AF | Z3 | FR | DR | B03 | B03-D06 | RES-1A |
| DUKHCONI1AZ3DRGL5130 |  | Backfilling Drainage line | 15d | 2014-02-27 | 2014-03-16 | DUKHCONI1AZ3DRGL5125 FF+5d, DUKHCONI1AZ3DRGL5125 SS+10d | -15d | 0d | LABOR- SUBCONTRACTOR [72 h]; BACKFILLING QTY [296 Cum]; BOBCAT [150 h]; PLATE COMPACTOR [150 h]; TRUCK [30 h]; EQUIP OPERATORS [330 h] | 14,840.6 | 25 | 1AP3DRFR25 | DUKHCON1AP3DRGL5130 | DUKHCONI1AZ3DRGL5130 | DH | CON | 1AF | Z3 | FR | DR | B03 | B03-D06 | RES-1A |
|  | 15 | **MANHOLES & SOAKAWAY** |  | 2014-02-25 | 2014-05-17 |  |  |  |  |  |  |  |  |  |  |  |  |  |  |  |  |  |  |
| DUKHCONI1AZ3SAGL5140 |  | Construction of soakaways | 25d | 2014-02-25 | 2014-03-25 | DUKHCONI1AZ3DRGL5115, DUKHCONI1AZ3DRGL5130 FF+8d | -11d | 0d | MANHOLES SK [112 h]; LABOR- SUBCONTRACTOR [42 h]; SOAKPIT QTY [14 ea] | 183,740.8 | 15 | 1AP3SAFR15 | DUKHCON1AP3SAGL5140 | DUKHCONI1AZ3SAGL5140 | DH | CON | 1AF | Z3 | FR | SA | B03 | B03-D06 | RES-1A |
| DUKHCONI1AZ3SAGL5135 |  | Construction of manholes Drainage | 25d | 2014-02-27 | 2014-03-27 | DUKHCONI1AZ3DRGL5115, DUKHCONI1AZ2SAGL5135, DUKHCONI1AZ3DRGL5130 FF+10d | 50d | 18d | LABOR- SUBCONTRACTOR [6 h]; EXCAVATION QTY [8 Cum] | 38,935 | 10 | 1AP3SAFR10 | DUKHCON1AP3SAGL5135 | DUKHCONI1AZ3SAGL5135 | DH | CON | 1AF | Z3 | FR | SA | B03 | B03-D06 | RES-1A |
| DUKHCONI1AZ3SAGL5145 |  | Construction of Road gullies | 25d | 2014-03-26 | 2014-04-23 | DUKHCONI1AZ3SAGL5140, DUKHCONI1AZ2SAGL5145 | -11d | 0d | MANHOLES SK [128 h]; LABOR- SUBCONTRACTOR [48 h]; ROAD GULLY QTY [16 ea] | 28,743.2 | 20 | 1AP3SAFR20 | DUKHCON1AP3SAGL5145 | DUKHCONI1AZ3SAGL5145 | DH | CON | 1AF | Z3 | FR | SA | B03 | B03-D06 | RES-1A |
| DUKHCONI1AZ3SAGL5150 |  | Connection with existing sewer manhole | 20d | 2014-04-24 | 2014-05-17 | DUKHCONI1AZ3SAGL5135, DUKHCONI1AZ3SAGL5145 | 27d | 36d | LABOR- SUBCONTRACTOR [6 h]; BACKFILLING QTY [9 Cum] | 2,270.6 | 25 | 1AP3SAFR25 | DUKHCON1AP3SAGL5150 | DUKHCONI1AZ3SAGL5150 | DH | CON | 1AF | Z3 | FR | SA | B03 | B03-D06 | RES-1A |

Notes:
- DUKHCONI1AZ2PSGL7000: Expenses: I1A-Road work 33089.6
- DUKHCONI1AZ2PSGL7005: Expenses: I1A-Road work 33089.6
- DUKHCONI1AZ2PSGL7010: Expenses: I1A-Road work 165448
- DUKHCONI1AZ2PSGL7015: Expenses: I1A-Road work 16545
- DUKHCONI1AZ2HDGL7020: Expenses: I1A-Hard and soft landscaping 112518
- DUKHCONI1AZ2HDGL7025: Expenses: I1A-Hard and soft landscaping 88756
- DUKHCONI1AZ2HDGL7030: Expenses: I1A-Hard and soft landscaping 22937.8
- DUKHCONI1AZ2HDGL7035: Expenses: I1A-Hard and soft landscaping 19037
- DUKHCONI1AZ2HDGL7040: Expenses: I1A-Hard and soft landscaping 3420
- DUKHCONI1AZ2SLGL7200: Expenses: I1A-Hard and soft landscaping 24965.8
- DUKHCONI1AZ2SLGL7205: Expenses: I1A-Hard and soft landscaping 141473
- DUKHCONI1AZ2SLGL7210: Expenses: I1A-Hard and soft landscaping 112790
- DUKHCONI1AZ3DRGL5115: Expenses: I1A-Surface Water drainage and Sewerage system 13573.2
- DUKHCONI1AZ3DRGL5120: Expenses: I1A-Surface Water drainage and Sewerage system 40093
- DUKHCONI1AZ3DRGL5125: Expenses: I1A-Surface Water drainage and Sewerage system 4454.6
- DUKHCONI1AZ3DRGL5130: Expenses: I1A-Surface Water drainage and Sewerage system 14840.6
- DUKHCONI1AZ3SAGL5140: Expenses: I1A-Surface Water drainage and Sewerage system 183741
- DUKHCONI1AZ3SAGL5135: Expenses: I1A-Surface Water drainage and Sewerage system 38935
- DUKHCONI1AZ3SAGL5145: Expenses: I1A-Surface Water drainage and Sewerage system 28743.2
- DUKHCONI1AZ3SAGL5150: Expenses: I1A-Surface Water drainage and Sewerage system 2270.6

| ID | WBS | Activity | Duration | Start | Finish | Predecessors | Total float | Free float | Resources | Cost | CODE | P3 ACTID | P6 ID (old) | NP61D | PROJECT | PHASES | PACKAGE | PART | ELEMENTS | STEP | BILL NOS | BILL DIVISION | RES PACK |
| --- | --- | --- | --- | --- | --- | --- | --- | --- | --- | --- | --- | --- | --- | --- | --- | --- | --- | --- | --- | --- | --- | --- | --- |
|  | 20 | **WATER SUPPLY SYSTEM** |  | 2014-03-11 | 2014-05-25 |  |  |  |  |  |  |  |  |  |  |  |  |  |  |  |  |  |  |
| DUKHCONI1AZ3WSGL5155 |  | Excavation for water line | 25d | 2014-03-11 | 2014-04-08 | DUKHCONI1AZ3DRGL5130 SS+10d, DUKHCONI1AZ2WSGL5170 | -13d | 0d | LABOR- SUBCONTRACTOR [150 h]; EXCAVATION QTY [249 Cum]; LOADER [63 h]; POCLAIN [125 h]; TRUCK [63 h]; EQUIP OPERATORS [251 h] | 9,752.4 | 10 | 1AP3WSFR10 | DUKHCON1AP3WSGL5155 | DUKHCONI1AZ3WSGL5155 | DH | CON | 1AF | Z3 | FR | WS | B03 | B03-D07 | RES-1A |
| DUKHCONI1AZ3WSGL5160 |  | Laying of water line | 25d | 2014-03-17 | 2014-04-14 | DUKHCONI1AZ3WSGL5155 SS+5d | -13d | 0d | LABOR- SUBCONTRACTOR [102 h]; MECHANICALS SK [183.6 h]; WATER PIPES QTY [251 lm] | 42,577.6 | 15 | 1AP3WSFR15 | DUKHCON1AP3WSGL5160 | DUKHCONI1AZ3WSGL5160 | DH | CON | 1AF | Z3 | FR | WS | B03 | B03-D07 | RES-1A |
| DUKHCONI1AZ3WSGL5165 |  | Testing of potable water line | 25d | 2014-03-23 | 2014-04-20 | DUKHCONI1AZ3WSGL5160 SS+5d | -13d | 0d | LABOR- SUBCONTRACTOR [30 h]; MECHANICALS SK [54 h]; DRAINAGE PIPES TEST QTY [251 lm] | 3,433 | 20 | 1AP3WSFR20 | DUKHCON1AP3WSGL5165 | DUKHCONI1AZ3WSGL5165 | DH | CON | 1AF | Z3 | FR | WS | B03 | B03-D07 | RES-1A |
| DUKHCONI1AZ3WSGL5170 |  | Backfilling potable water line | 25d | 2014-03-29 | 2014-04-26 | DUKHCONI1AZ3SAGL5145 FF, DUKHCONI1AZ3WSGL5165 SS+5d | -13d | 0d | LABOR- SUBCONTRACTOR [60 h]; BACKFILLING QTY [251 Cum]; BOBCAT [125 h]; PLATE COMPACTOR [125 h]; TRUCK [25 h]; EQUIP OPERATORS [275 h] | 2,438 | 25 | 1AP3WSFR25 | DUKHCON1AP3WSGL5170 | DUKHCONI1AZ3WSGL5170 | DH | CON | 1AF | Z3 | FR | WS | B03 | B03-D07 | RES-1A |
| DUKHCONI1AZ3WSGL5175 |  | Construction of valve chambers & Thrust Blocks | 25d | 2014-04-03 | 2014-05-01 | DUKHCONI1AZ3WSGL5155 SS+10d, DUKHCONI1AZ3WSGL5170 FF+5d, DUKHCONI1AZ2WSGL5175 | 20d | 0d | MANHOLES SK [96 h]; LABOR- SUBCONTRACTOR [36 h]; MANHOLES QTY [12 ea] | 2,838.6 | 30 | 1AP3WSFR30 | DUKHCON1AP3WSGL5175 | DUKHCONI1AZ3WSGL5175 | DH | CON | 1AF | Z3 | FR | WS | B03 | B03-D07 | RES-1A |
| DUKHCONI1AZ3WSGL5180 |  | Installation of meter ,Accessories & Connection | 20d | 2014-05-03 | 2014-05-25 | DUKHCONI1AZ2WSGL5180, DUKHCONI1AZ3WSGL5175 | 20d | 7d | LABOR- SUBCONTRACTOR [18 h]; MECHANICALS SK [32.4 h]; CHAMPER QTY [10 lm] | 7,877 | 35 | 1AP3WSFR35 | DUKHCON1AP3WSGL5180 | DUKHCONI1AZ3WSGL5180 | DH | CON | 1AF | Z3 | FR | WS | B03 | B03-D07 | RES-1A |
|  | 25 | **FIREFIGHTING LINES** |  | 2014-04-03 | 2014-06-02 |  |  |  |  |  |  |  |  |  |  |  |  |  |  |  |  |  |  |
| DUKHCONI1AZ3FFGL5185 |  | Excavation for firefighting line | 25d | 2014-04-03 | 2014-05-01 | DUKHCONI1AZ3WSGL5170 SS+5d, DUKHCONI1AZ2FFGL5200 | -13d | 0d | LABOR- SUBCONTRACTOR [132 h]; EXCAVATION QTY [215 Cum]; LOADER [38 h]; POCLAIN [75 h]; TRUCK [38 h]; EQUIP OPERATORS [151 h] | 24,149 | 10 | 1AP3FFFR10 | DUKHCON1AP3FFGL5185 | DUKHCONI1AZ3FFGL5185 | DH | CON | 1AF | Z3 | FR | FF | B03 | B03-D07 | RES-1A |
| DUKHCONI1AZ3FFGL5190 |  | Laying of firefighting line | 25d | 2014-04-12 | 2014-05-10 | DUKHCONI1AZ3FFGL5185 SS+7d | -13d | 0d | LABOR- SUBCONTRACTOR [66 h]; MECHANICALS SK [237.6 h]; PLUMB PIPES QTY [215 lm] | 31,835.6 | 15 | 1AP3FFFR15 | DUKHCON1AP3FFGL5190 | DUKHCONI1AZ3FFGL5190 | DH | CON | 1AF | Z3 | FR | FF | B03 | B03-D07 | RES-1A |
| DUKHCONI1AZ3FFGL5195 |  | Testing of firefighting line | 25d | 2014-04-17 | 2014-05-15 | DUKHCONI1AZ3FFGL5190 SS+5d | -13d | 0d | LABOR- SUBCONTRACTOR [30 h]; MECHANICALS SK [54 h]; DRAINAGE PIPES TEST QTY [215 lm] | 3,034.2 | 20 | 1AP3FFFR20 | DUKHCON1AP3FFGL5195 | DUKHCONI1AZ3FFGL5195 | DH | CON | 1AF | Z3 | FR | FF | B03 | B03-D07 | RES-1A |
| DUKHCONI1AZ3FFGL5200 |  | Backfilling firefighting line | 25d | 2014-04-23 | 2014-05-21 | DUKHCONI1AZ3FFGL5195 SS+5d | -13d | 0d | LABOR- SUBCONTRACTOR [54 h]; BACKFILLING QTY [215 Cum]; BOBCAT [125 h]; PLATE COMPACTOR [125 h]; TRUCK [25 h]; EQUIP OPERATORS [275 h] | 6,037 | 25 | 1AP3FFFR25 | DUKHCON1AP3FFGL5200 | DUKHCONI1AZ3FFGL5200 | DH | CON | 1AF | Z3 | FR | FF | B03 | B03-D07 | RES-1A |
| DUKHCONI1AZ3FFGL5205 |  | Construction of valve chambers & Thrust Blocks | 25d | 2014-04-29 | 2014-05-27 | DUKHCONI1AZ3FFGL5185 SS+10d, DUKHCONI1AZ2FFGL5205, DUKHCONI1AZ3FFGL5200 FF+5d | 13d | 0d | STEEL FIXERS SK [40 h]; CARPENTERS SK [56 h]; CONCRETE MASON SK [16 h]; LABOR- SUBCONTRACTOR [90 h]; EXCAVATION QTY [13 Cum]; REINFORCEMENT BARS QTY [502 kg]; FORMWORK QTY [27 Sqm]; CONCRETE QTY [8 Cum] | 3,293.2 | 30 | 1AP3FFFR30 | DUKHCON1AP3FFGL5205 | DUKHCONI1AZ3FFGL5205 | DH | CON | 1AF | Z3 | FR | FF | B03 | B03-D07 | RES-1A |
| DUKHCONI1AZ3FFGL5210 |  | Connection with existing Firewater System | 25d | 2014-05-05 | 2014-06-02 | DUKHCONI1AZ2FFGL5210, DUKHCONI1AZ3FFGL5205 FF+5d, DUKHCONI1AZ3WSGL5180 FF | 13d | 18d | LABOR- SUBCONTRACTOR [48 h]; MECHANICALS SK [86.4 h]; FIRE EXTINGUISHER QTY [16 ea] | 11,721.4 | 35 | 1AP3FFFR35 | DUKHCON1AP3FFGL5210 | DUKHCONI1AZ3FFGL5210 | DH | CON | 1AF | Z3 | FR | FF | B03 | B03-D07 | RES-1A |
|  | 30 | **ELECTRICAL LINES** |  | 2014-05-01 | 2014-06-24 |  |  |  |  |  |  |  |  |  |  |  |  |  |  |  |  |  |  |
| DUKHCONI1AZ3ELGL5215 |  | Excavation Cable Trenches & Duct Banks | 25d | 2014-05-01 | 2014-05-29 | DUKHCONI1AZ3FFGL5200 SS+7d, DUKHCONI1AZ2ELGL5225 | -9d | 0d | LABOR- SUBCONTRACTOR [774 h]; EXCAVATION QTY [1285 Cum]; LOADER [150 h]; POCLAIN [300 h]; TRUCK [150 h]; EQUIP OPERATORS [600 h] | 14,248.6 | 10 | 1AP3ECFR10 | DUKHCON1AP3ELGL5215 | DUKHCONI1AZ3ELGL5215 | DH | CON | 1AF | Z3 | FR | EC | B03 | B03-D04 | RES-1A |
| DUKHCONI1AZ3ELGL5220 |  | Laying of electrical cables | 25d | 2014-05-07 | 2014-06-04 | DUKHCONI1AZ3ELGL5215 SS+5d | -6d | 0d | LABOR- SUBCONTRACTOR [390 h]; ELECTRICIANS SK [1444.8 h]; CABLE QTY [1285 lm] | 689,477.4 | 15 | 1AP3ECFR15 | DUKHCON1AP3ELGL5220 | DUKHCONI1AZ3ELGL5220 | DH | CON | 1AF | Z3 | FR | EC | B03 | B03-D04 | RES-1A |
| DUKHCONI1AZ3ELGL5225 |  | Backfilling Electrical trench | 25d | 2014-05-15 | 2014-06-12 | DUKHCONI1AZ3ELGL5215 FF+7d, DUKHCONI1AZ3ELGL5220 SS+7d | -6d | 0d | LABOR- SUBCONTRACTOR [312 h]; BACKFILLING QTY [1285 Cum]; BOBCAT [250 h]; PLATE COMPACTOR [250 h]; TRUCK [50 h]; EQUIP OPERATORS [550 h] | 6,105.6 | 20 | 1AP3ECFR20 | DUKHCON1AP3ELGL5225 | DUKHCONI1AZ3ELGL5225 | DH | CON | 1AF | Z3 | FR | EC | B03 | B03-D04 | RES-1A |
| DUKHCONI1AZ3ELGL5230 |  | Construction of Submain Board & Feeder Pillar | 25d | 2014-05-27 | 2014-06-24 | DUKHCONI1AZ2ELGL5230, DUKHCONI1AZ3ELGL5225 SS+10d, DUKHCONI1AZ3ELGL5225 FF+10d | 53d | 0d | STEEL FIXERS SK [8 h]; CARPENTERS SK [40 h]; CONCRETE MASON SK [8 h]; LABOR- SUBCONTRACTOR [30 h]; LABOR- SUBCONTRACTOR [42 h]; REINFORCEMENT BARS QTY [21 kg]; FORMWORK QTY [17 Sqm]; CONCRETE QTY [2 Cum]; ALUMINIUM DOOR QTY [2 ea]; DOOR ERECTOR SK [8 h]; EXPANSION JOINT QTY [11 Sqm]; EXPANSION JOINT SKILLED SK [88 h] | 75,578.6 | 25 | 1AP3ECFR25 | DUKHCON1AP3ELGL5230 | DUKHCONI1AZ3ELGL5230 | DH | CON | 1AF | Z3 | FR | EC | B03 | B03-D04 | RES-1A |
|  | 35 | **STREET LIGHTING** |  | 2014-05-01 | 2014-07-23 |  |  |  |  |  |  |  |  |  |  |  |  |  |  |  |  |  |  |
| DUKHCONI1AZ3STGL5235 |  | Excavation for Street lighting | 25d | 2014-05-01 | 2014-05-29 | DUKHCONI1AZ3ELGL5215 SS, DUKHCONI1AZ2STGL5250 SS+10d | -9d | 0d | TRUCK [13 h]; EQUIP OPERATORS [51 h]; LABOR- SUBCONTRACTOR [18 h]; EXCAVATION QTY [29 Cum]; LOADER [13 h]; POCLAIN [25 h] | 2,692.2 | 10 | 1AP3STFR10 | DUKHCON1AP3STGL5235 | DUKHCONI1AZ3STGL5235 | DH | CON | 1AF | Z3 | FR | ST | B03 | B03-D09 | RES-1A |
| DUKHCONI1AZ3STGL5240 |  | Construction of Duct Banks | 25d | 2014-05-07 | 2014-06-04 | DUKHCONI1AZ3STGL5235 SS+5d | -9d | 0d | LABOR- SUBCONTRACTOR [252 h]; ELECTRICIANS SK [940.8 h]; DUCT BANK QTY [336 lm] | 89,884.6 | 15 | 1AP3STFR15 | DUKHCON1AP3STGL5240 | DUKHCONI1AZ3STGL5240 | DH | CON | 1AF | Z3 | FR | ST | B03 | B03-D09 | RES-1A |
| DUKHCONI1AZ3STGL5245 |  | Construction of Foundation | 25d | 2014-05-07 | 2014-06-04 | DUKHCONI1AZ3STGL5240 SS | -9d | 0d | MANHOLES SK [464 h]; LABOR- SUBCONTRACTOR [174 h]; COLUMN BASE QTY [29 ea] | 29,280.8 | 20 | 1AP3STFR20 | DUKHCON1AP3STGL5245 | DUKHCONI1AZ3STGL5245 | DH | CON | 1AF | Z3 | FR | ST | B03 | B03-D09 | RES-1A |
| DUKHCONI1AZ3STGL5250 |  | Backfilling Street Lighting | 25d | 2014-05-13 | 2014-06-10 | DUKHCONI1AZ3STGL5235 FF+5d, DUKHCONI1AZ3STGL5245 SS+5d | -9d | 0d | LABOR- SUBCONTRACTOR [12 h]; BACKFILLING QTY [29 Cum]; BOBCAT [125 h]; PLATE COMPACTOR [125 h]; TRUCK [25 h]; EQUIP OPERATORS [275 h] | 2,692.2 | 25 | 1AP3STFR25 | DUKHCON1AP3STGL5250 | DUKHCONI1AZ3STGL5250 | DH | CON | 1AF | Z3 | FR | ST | B03 | B03-D09 | RES-1A |
| DUKHCONI1AZ3STGL5255 |  | Installation of light Post | 25d | 2014-05-25 | 2014-06-22 | DUKHCONI1AZ2STGL5255, DUKHCONI1AZ3STGL5250 SS+10d | 55d | 2d | LABOR- SUBCONTRACTOR [48 h]; ELECTRICIANS SK [168 h]; LIGHTPOST COLUMN QTY [29 ea] | 379,406.8 | 30 | 1AP3STFR30 | DUKHCON1AP3STGL5255 | DUKHCONI1AZ3STGL5255 | DH | CON | 1AF | Z3 | FR | ST | B03 | B03-D09 | RES-1A |
| DUKHCONI1AZ3STGL5260 |  | Electrical Works | 25d | 2014-06-25 | 2014-07-23 | DUKHCONI1AZ3ELGL5230, DUKHCONI1AZ2STGL5260, DUKHCONI1AZ3STGL5255 | 53d | 18d | LABOR- SUBCONTRACTOR [174 h]; ELECTRICIANS SK [649.6 h]; CABLE QTY [577 lm] | 19,485 | 35 | 1AP3STFR35 | DUKHCON1AP3STGL5260 | DUKHCONI1AZ3STGL5260 | DH | CON | 1AF | Z3 | FR | ST | B03 | B03-D09 | RES-1A |

Notes:
- DUKHCONI1AZ3WSGL5155: Expenses: I1A-Water supply system 9752.4
- DUKHCONI1AZ3WSGL5160: Expenses: I1A-Water supply system 42577.6
- DUKHCONI1AZ3WSGL5165: Expenses: I1A-Water supply system 3433
- DUKHCONI1AZ3WSGL5170: Expenses: I1A-Water supply system 2438
- DUKHCONI1AZ3WSGL5175: Expenses: I1A-Water supply system 2838.6
- DUKHCONI1AZ3WSGL5180: Expenses: I1A-Water supply system 7877
- DUKHCONI1AZ3FFGL5185: Expenses: I1A-Water supply system 24149
- DUKHCONI1AZ3FFGL5190: Expenses: I1A-Water supply system 31835.6
- DUKHCONI1AZ3FFGL5195: Expenses: I1A-Water supply system 3034.2
- DUKHCONI1AZ3FFGL5200: Expenses: I1A-Water supply system 6037
- DUKHCONI1AZ3FFGL5205: Expenses: I1A-Water supply system 3293.2
- DUKHCONI1AZ3FFGL5210: Expenses: I1A-Water supply system 11721.4
- DUKHCONI1AZ3ELGL5215: Expenses: I1A-Electrical power supply and distribution 14248.6
- DUKHCONI1AZ3ELGL5220: Expenses: I1A-Electrical power supply and distribution 689477
- DUKHCONI1AZ3ELGL5225: Expenses: I1A-Electrical power supply and distribution 6105.6
- DUKHCONI1AZ3ELGL5230: Expenses: I1A-Electrical power supply and distribution 75578.6
- DUKHCONI1AZ3STGL5235: Expenses: I1A-Street lighting 2692.2
- DUKHCONI1AZ3STGL5240: Expenses: I1A-Street lighting 89884.6
- DUKHCONI1AZ3STGL5245: Expenses: I1A-Street lighting 29280.8
- DUKHCONI1AZ3STGL5250: Expenses: I1A-Street lighting 2692.2
- DUKHCONI1AZ3STGL5255: Expenses: I1A-Street lighting 379407
- DUKHCONI1AZ3STGL5260: Expenses: I1A-Street lighting 19485

| ID | WBS | Activity | Duration | Start | Finish | Predecessors | Total float | Free float | Resources | Cost | CODE | P3 ACTID | P6 ID (old) | NP61D | PROJECT | PHASES | PACKAGE | PART | ELEMENTS | STEP | BILL NOS | BILL DIVISION | RES PACK |
| --- | --- | --- | --- | --- | --- | --- | --- | --- | --- | --- | --- | --- | --- | --- | --- | --- | --- | --- | --- | --- | --- | --- | --- |
|  | 40 | **IRRIGATION LINES** |  | 2014-06-14 | 2014-08-21 |  |  |  |  |  |  |  |  |  |  |  |  |  |  |  |  |  |  |
| DUKHCONI1AZ3IRGL5265 |  | Excavation for irrigation line | 25d | 2014-06-14 | 2014-07-12 | DUKHCONI1AZ3ELGL5225, DUKHCONI1AZ2IRGL5280 | 16d | 0d | LABOR- SUBCONTRACTOR [312 h]; EXCAVATION QTY [514 Cum]; LOADER [125 h]; POCLAIN [250 h]; TRUCK [125 h]; EQUIP OPERATORS [500 h] | 9,606.6 | 10 | 1AP3IRFR10 | DUKHCON1AP3IRGL5265 | DUKHCONI1AZ3IRGL5265 | DH | CON | 1AF | Z3 | FR | IR | B03 | B03-D07 | RES-1A |
| DUKHCONI1AZ3IRGL5270 |  | Laying of irrigationline | 25d | 2014-06-19 | 2014-07-17 | DUKHCONI1AZ3IRGL5265 SS+5d | 16d | 0d | LABOR- SUBCONTRACTOR [138 h]; MECHANICALS SK [248.4 h]; IRRIGATION PIPES QTY [923 lm] | 15,116 | 15 | 1AP3IRFR15 | DUKHCON1AP3IRGL5270 | DUKHCONI1AZ3IRGL5270 | DH | CON | 1AF | Z3 | FR | IR | B03 | B03-D07 | RES-1A |
| DUKHCONI1AZ3IRGL5275 |  | Testing of irrigation line | 25d | 2014-06-25 | 2014-07-23 | DUKHCONI1AZ3IRGL5270 SS+5d | 16d | 0d | LABOR- SUBCONTRACTOR [114 h]; MECHANICALS SK [205.2 h]; DRAINAGE PIPES TEST QTY [923 lm] | 2,168.8 | 20 | 1AP3IRFR20 | DUKHCON1AP3IRGL5275 | DUKHCONI1AZ3IRGL5275 | DH | CON | 1AF | Z3 | FR | IR | B03 | B03-D07 | RES-1A |
| DUKHCONI1AZ3IRGL5280 |  | Backfilling irrigation line | 25d | 2014-07-01 | 2014-07-29 | DUKHCONI1AZ3IRGL5275 SS+5d | 16d | 0d | LABOR- SUBCONTRACTOR [126 h]; BACKFILLING QTY [514 Cum]; BOBCAT [250 h]; PLATE COMPACTOR [250 h]; TRUCK [50 h]; EQUIP OPERATORS [550 h] | 2,401.6 | 25 | 1AP3IRFR25 | DUKHCON1AP3IRGL5280 | DUKHCONI1AZ3IRGL5280 | DH | CON | 1AF | Z3 | FR | IR | B03 | B03-D07 | RES-1A |
| DUKHCONI1AZ3IRGL5285 |  | Construction of Thrust Blocks,Pull boxes | 25d | 2014-07-13 | 2014-08-13 | DUKHCONI1AZ3ELGL5225 SS+10d, DUKHCONI1AZ3IRGL5280 FF+10d | 26d | 0d | LABOR- SUBCONTRACTOR [30 h]; ELECTRICIANS SK [22.4 h]; THRUST BLOCKS QTY [2 ea]; PULL BOX QTY [8 ea]; PULL BOX SK [64 h] | 9,988.6 | 30 | 1AP3IRFR30 | DUKHCON1AP3IRGL5285 | DUKHCONI1AZ3IRGL5285 | DH | CON | 1AF | Z3 | FR | IR | B03 | B03-D07 | RES-1A |
| DUKHCONI1AZ3IRGL5290 |  | Irrigation Fittings (Nozzle,Values) | 25d | 2014-07-21 | 2014-08-21 | DUKHCONI1AZ3IRGL5280 SS+10d, DUKHCONI1AZ3IRGL5285 SS+7d | 26d | 11d | LABOR- SUBCONTRACTOR [102 h]; MECHANICALS SK [183.6 h]; CHAMPER QTY [65 lm] | 26,800.6 | 35 | 1AP3IRFR35 | DUKHCON1AP3IRGL5290 | DUKHCONI1AZ3IRGL5290 | DH | CON | 1AF | Z3 | FR | IR | B03 | B03-D07 | RES-1A |
|  | 45 | **TELECOMMUNICATION LINES** |  | 2014-05-25 | 2014-07-09 |  |  |  |  |  |  |  |  |  |  |  |  |  |  |  |  |  |  |
| DUKHCONI1AZ3TCGL5295 |  | Excavation Telecommunication trenches | 20d | 2014-05-25 | 2014-06-16 | DUKHCONI1AZ2TCGL5305, DUKHCONI1AZ3STGL5250 SS+10d | -9d | 0d | LABOR- SUBCONTRACTOR [228 h]; EXCAVATION QTY [372 Cum]; LOADER [75 h]; POCLAIN [150 h]; TRUCK [75 h]; EQUIP OPERATORS [300 h] | 9,563.6 | 10 | 1AP3TCFR10 | DUKHCON1AP3TCGL5295 | DUKHCONI1AZ3TCGL5295 | DH | CON | 1AF | Z3 | FR | TC | B03 | B03-D05 | RES-1A |
| DUKHCONI1AZ3TCGL5300 |  | Laying of cables | 20d | 2014-05-31 | 2014-06-22 | DUKHCONI1AZ3TCGL5295 SS+5d | -9d | 0d | LABOR- SUBCONTRACTOR [168 h]; ELECTRICIANS SK [627.2 h]; CABLE QTY [558 lm] | 3,124 | 15 | 1AP3TCFR15 | DUKHCON1AP3TCGL5300 | DUKHCONI1AZ3TCGL5300 | DH | CON | 1AF | Z3 | FR | TC | B03 | B03-D05 | RES-1A |
| DUKHCONI1AZ3TCGL5305 |  | Backfilling telecommunication trench | 20d | 2014-06-05 | 2014-06-28 | DUKHCONI1AZ3TCGL5300 SS+5d | -9d | 0d | LABOR- SUBCONTRACTOR [90 h]; BACKFILLING QTY [372 Cum]; BOBCAT [200 h]; PLATE COMPACTOR [200 h]; TRUCK [40 h]; EQUIP OPERATORS [440 h] | 4,099 | 20 | 1AP3TCFR20 | DUKHCON1AP3TCGL5305 | DUKHCONI1AZ3TCGL5305 | DH | CON | 1AF | Z3 | FR | TC | B03 | B03-D05 | RES-1A |
| DUKHCONI1AZ3TCGL5310 |  | Connection & Installation | 20d | 2014-06-17 | 2014-07-09 | DUKHCONI1AZ3TCGL5305 SS+10d, DUKHCONI1AZ2TCGL5310 | 50d | 23d | LABOR- SUBCONTRACTOR [42 h]; ELECTRICIANS SK [302.4 h]; TELEPHONE SOCKETS QTY [27 ea] | 50,979.6 | 25 | 1AP3TCFR25 | DUKHCON1AP3TCGL5310 | DUKHCONI1AZ3TCGL5310 | DH | CON | 1AF | Z3 | FR | TC | B03 | B03-D05 | RES-1A |
|  | 50 | **BOUNDARY WALL** |  | 2014-05-25 | 2014-08-21 |  |  |  |  |  |  |  |  |  |  |  |  |  |  |  |  |  |  |
| DUKHCONI1AZ3BWGL5315 |  | Construction of Boundary Wall (Ht-3m) | 25d | 2014-05-25 | 2014-06-22 | DUKHCONI1AZ3STGL5250 SS+10d, DUKHCONI1AZ2BWGL5315 | 46d | 0d | STEEL FIXERS SK [128 h]; LABOR- SUBCONTRACTOR [96 h]; BOUNDARY WIRE MESH QTY [304 Sqm] | 459,539.2 | 10 | 1AP3BWFR10 | DUKHCON1AP3ARGL5315 | DUKHCONI1AZ3BWGL5315 | DH | CON | 1AF | Z3 | FR | BW | B03 | B03-D11 | RES-1A |
| DUKHCONI1AZ3BWGL5320 |  | Install.Steel Gate,Entance Barrier (3m Wall) | 25d | 2014-06-10 | 2014-07-08 | DUKHCONI1AZ3BWGL5315 SS+14d | 46d | 0d | LABOR- SUBCONTRACTOR [12 h]; GATE QTY [2 ea]; GATE ERECTOR SK [16 h] | 5,993 | 15 | 1AP3BWFR15 | DUKHCON1AP3ARGL5320 | DUKHCONI1AZ3BWGL5320 | DH | CON | 1AF | Z3 | FR | BW | B03 | B03-D11 | RES-1A |
| DUKHCONI1AZ3BWGL5325 |  | Const. of Villa Front Boundary Wall (Ht-2m) | 25d | 2014-07-09 | 2014-08-10 | DUKHCONI1AZ3BWGL5315 SS+5d, DUKHCONI1AZ2BWGL5325, DUKHCONI1AZ3BWGL5320 | 46d | 0d | STEEL FIXERS SK [96 h]; LABOR- SUBCONTRACTOR [72 h]; BOUNDARY WIRE MESH QTY [231 Sqm] | 414,398.4 | 20 | 1AP3BWFR20 | DUKHCON1AP3ARGL5325 | DUKHCONI1AZ3BWGL5325 | DH | CON | 1AF | Z3 | FR | BW | B03 | B03-D11 | RES-1A |
| DUKHCONI1AZ3BWGL5330 |  | Const. of Blockwork fence Wall (Ht-1.85m) | 25d | 2014-07-21 | 2014-08-21 | DUKHCONI1AZ2BWGL5330, DUKHCONI1AZ3BWGL5325 SS+10d | 57d | 18d | STEEL FIXERS SK [88 h]; LABOR- SUBCONTRACTOR [66 h]; BOUNDARY WIRE MESH QTY [206 Sqm] | 293,348.6 | 30 | 1AP3BWFR30 | DUKHCON1AP3ARGL5330 | DUKHCONI1AZ3BWGL5330 | DH | CON | 1AF | Z3 | FR | BW | B03 | B03-D11 | RES-1A |
|  | 55 | **ROAD WORKS** |  | 2014-06-29 | 2014-09-15 |  |  |  |  |  |  |  |  |  |  |  |  |  |  |  |  |  |  |
| DUKHCONI1AZ3RWGL6000 |  | Excavation & Earth Filling | 10d | 2014-06-29 | 2014-07-09 | DUKHCONI1AZ2RWGL6015 SS+10d, DUKHCONI1AZ3ELGL5225, DUKHCONI1AZ3FFGL5200, DUKHCONI1AZ3TCGL5305, DUKHCONI1AZ3SAGL5150, DUKHCONI1AZ3STGL5250, DUKHCONI1AZ3FFGL5210 | -9d | 0d | EXCAVATION QTY [1162 Cum]; BACKFILLING QTY [127 Cum]; LOADER [125 h]; POCLAIN [250 h]; TRUCK [125 h]; EQUIP OPERATORS [500 h]; LABOR- SUBCONTRACTOR [732 h] | 107,162 | 10 | 1AP3RDFR10 | DUKHCON1AP3RDGL6000 | DUKHCONI1AZ3RWGL6000 | DH | CON | 1AF | Z3 | FR | RD | B03 | B03-D08 | RES-1A |
| DUKHCONI1AZ3RWGL6005 |  | Laying of Sub Grade | 25d | 2014-07-10 | 2014-08-11 | DUKHCONI1AZ3RWGL6000 | -9d | 0d | LABOR- SUBCONTRACTOR [24 h]; SUBGRADE QTY [394 Sqm] | 120,812.8 | 15 | 1AP3RDFR15 | DUKHCON1AP3RDGL6005 | DUKHCONI1AZ3RWGL6005 | DH | CON | 1AF | Z3 | FR | RD | B03 | B03-D08 | RES-1A |
| DUKHCONI1AZ3RWGL6010 |  | Laying of Precast Kerbs | 25d | 2014-07-22 | 2014-08-23 | DUKHCONI1AZ3RWGL6005 SS+10d | -9d | 0d | LABOR- SUBCONTRACTOR [24 h]; GRANULAR SUBBASE QTY [340 Sqm] | 110,764.6 | 20 | 1AP3RDFR20 | DUKHCON1AP3RDGL6010 | DUKHCONI1AZ3RWGL6010 | DH | CON | 1AF | Z3 | FR | RD | B03 | B03-D08 | RES-1A |
| DUKHCONI1AZ3RWGL6015 |  | Laying of Granular Sub Base Coarse | 20d | 2014-08-06 | 2014-08-28 | DUKHCONI1AZ3RWGL6010 SS+10d | -9d | 0d | KERBSTONE MASON SK [776 h]; LABOR- SUBCONTRACTOR [438 h]; KERBSTONE QTY [485 lm]; EDGE STONE QTY [485 Sqm]; HEAVY ROLLER [400 h]; LOADER [100 h]; TRUCK [100 h]; EQUIP OPERATORS [600 h] | 60,406.4 | 25 | 1AP3RDFR25 | DUKHCON1AP3RDGL6015 | DUKHCONI1AZ3RWGL6015 | DH | CON | 1AF | Z3 | FR | RD | B03 | B03-D08 | RES-1A |
| DUKHCONI1AZ3RWGL6020 |  | Laying of Road Base Asphalt Concrete | 5d | 2014-08-30 | 2014-09-03 | DUKHCONI1AZ3RWGL6015 | 21d | 0d | LABOR- SUBCONTRACTOR [24 h]; ASPHALT CONCRETE QTY [1967 Cum]; ASPHALT PAVER MACHINE [50 h]; HAND ROLLER [100 h]; EQUIP OPERATORS [150 h] | 153,671 | 30 | 1AP3RDFR30 | DUKHCON1AP3RDGL6020 | DUKHCONI1AZ3RWGL6020 | DH | CON | 1AF | Z3 | FR | RD | B03 | B03-D08 | RES-1A |
| DUKHCONI1AZ3RWGL6025 |  | Laying of Asphalt Wearing Coarse | 5d | 2014-09-04 | 2014-09-09 | DUKHCONI1AZ2RWGL6025, DUKHCONI1AZ3RWGL6020 | 36d | 0d | LABOR- SUBCONTRACTOR [24 h]; ASPHALT WEARING COURSE QTY [1967 Sqm]; ASPHALT PAVER MACHINE [50 h]; HAND ROLLER [100 h]; EQUIP OPERATORS [150 h] | 80,057 | 35 | 1AP3RDFR35 | DUKHCON1AP3RDGL6025 | DUKHCONI1AZ3RWGL6025 | DH | CON | 1AF | Z3 | FR | RD | B03 | B03-D08 | RES-1A |
| DUKHCONI1AZ3RWGL6030 |  | Traffic Signage & Road Marking | 5d | 2014-09-10 | 2014-09-15 | DUKHCONI1AZ2RWGL6030, DUKHCONI1AZ3RWGL6025 | 36d | 15d | LABOR- SUBCONTRACTOR [366 h]; STEEL ERECTOR SK [448 h]; TRAFFIC SIGN QTY [279 ea]; ROAD MARKING QTY [100 lm]; ASPHALT SK [160 h] | 83,033.6 | 40 | 1AP3RDFR40 | DUKHCON1AP3RDGL6030 | DUKHCONI1AZ3RWGL6030 | DH | CON | 1AF | Z3 | FR | RD | B03 | B03-D08 | RES-1A |

Notes:
- DUKHCONI1AZ3IRGL5265: Expenses: I1A-Water supply system 9606.6
- DUKHCONI1AZ3IRGL5270: Expenses: I1A-Water supply system 15116
- DUKHCONI1AZ3IRGL5275: Expenses: I1A-Water supply system 2168.8
- DUKHCONI1AZ3IRGL5280: Expenses: I1A-Water supply system 2401.6
- DUKHCONI1AZ3IRGL5285: Expenses: I1A-Water supply system 9988.6
- DUKHCONI1AZ3IRGL5290: Expenses: I1A-Water supply system 26800.6
- DUKHCONI1AZ3TCGL5295: Expenses: I1A-Telecommunication 9563.6
- DUKHCONI1AZ3TCGL5300: Expenses: I1A-Telecommunication 3124
- DUKHCONI1AZ3TCGL5305: Expenses: I1A-Telecommunication 4099
- DUKHCONI1AZ3TCGL5310: Expenses: I1A-Telecommunication 50979.6
- DUKHCONI1AZ3BWGL5315: Expenses: I1A-Hard and soft landscaping 459539
- DUKHCONI1AZ3BWGL5320: Expenses: I1A-Hard and soft landscaping 5993
- DUKHCONI1AZ3BWGL5325: Expenses: I1A-Hard and soft landscaping 414398
- DUKHCONI1AZ3BWGL5330: Expenses: I1A-Hard and soft landscaping 293349
- DUKHCONI1AZ3RWGL6000: Expenses: I1A-Road work 107162
- DUKHCONI1AZ3RWGL6005: Expenses: I1A-Road work 120813
- DUKHCONI1AZ3RWGL6010: Expenses: I1A-Road work 110765
- DUKHCONI1AZ3RWGL6015: Expenses: I1A-Road work 60406.4
- DUKHCONI1AZ3RWGL6020: Expenses: I1A-Road work 153671
- DUKHCONI1AZ3RWGL6025: Expenses: I1A-Road work 80057
- DUKHCONI1AZ3RWGL6030: Expenses: I1A-Road work 83033.6

| ID | WBS | Activity | Duration | Start | Finish | Predecessors | Total float | Free float | Resources | Cost | CODE | P3 ACTID | P6 ID (old) | NP61D | PROJECT | PHASES | PACKAGE | PART | ELEMENTS | STEP | BILL NOS | BILL DIVISION | RES PACK |
| --- | --- | --- | --- | --- | --- | --- | --- | --- | --- | --- | --- | --- | --- | --- | --- | --- | --- | --- | --- | --- | --- | --- | --- |
|  | 60 | **PARKING SHED** |  | 2014-08-12 | 2014-10-08 |  |  |  |  |  |  |  |  |  |  |  |  |  |  |  |  |  |  |
| DUKHCONI1AZ3PSGL7000 |  | Excavation | 15d | 2014-08-12 | 2014-08-28 | DUKHCONI1AZ2PSGL7005, DUKHCONI1AZ3RWGL6015 SS+5d | 26d | 5d | LABOR- SUBCONTRACTOR [72 h]; EXCAVATION QTY [112 Cum]; LOADER [19 h]; POCLAIN [38 h]; TRUCK [19 h]; EQUIP OPERATORS [76 h] | 33,089.6 | 10 | 1AP3PSFR10 | DUKHCON1AP3PSGL7000 | DUKHCONI1AZ3PSGL7000 | DH | CON | 1AF | Z3 | FR | PS | B03 | B03-D08 | RES-1A |
| DUKHCONI1AZ3PSGL7005 |  | Foundation casting | 15d | 2014-08-24 | 2014-09-09 | DUKHCONI1AZ3PSGL7000 SS+5d, DUKHCONI1AZ3RWGL6015 FF+10d, DUKHCONI1AZ3PSGL7000 FF+5d | 21d | 0d | STEEL FIXERS SK [72 h]; CARPENTERS SK [48 h]; CONCRETE MASON SK [24 h]; LABOR- SUBCONTRACTOR [108 h]; REINFORCEMENT BARS QTY [896 kg]; FORMWORK QTY [23 Sqm]; CONCRETE QTY [12 Cum] | 33,089.6 | 15 | 1AP3PSFR15 | DUKHCON1AP3PSGL7005 | DUKHCONI1AZ3PSGL7005 | DH | CON | 1AF | Z3 | FR | PS | B03 | B03-D08 | RES-1A |
| DUKHCONI1AZ3PSGL7010 |  | Column, Frame& Fabrics Erection | 25d | 2014-09-04 | 2014-10-02 | DUKHCONI1AZ3RWGL6020, DUKHCONI1AZ3PSGL7005 SS+10d, DUKHCONI1AZ3BWGL5330 FF, DUKHCONI1AZ3RWGL6030 FF, DUKHCONI1AZ2PSGL7010 | 21d | 0d | LABOR- SUBCONTRACTOR [102 h]; STEEL ERECTOR SK [184 h]; PARKING SHED QTY [560 ea] | 165,447.6 | 20 | 1AP3PSFR20 | DUKHCON1AP3PSGL7010 | DUKHCONI1AZ3PSGL7010 | DH | CON | 1AF | Z3 | FR | PS | B03 | B03-D08 | RES-1A |
| DUKHCONI1AZ3PSGL7015 |  | Electrical Works-Parking Shed | 25d | 2014-09-10 | 2014-10-08 | DUKHCONI1AZ3PSGL7010 SS+5d, DUKHCONI1AZ2PSGL7015, DUKHCONI1AZ3STGL5260 | 21d | 18d | LABOR- SUBCONTRACTOR [18 h]; ELECTRICIANS SK [33.6 h]; LIGHTS QTY [15 ea] | 16,545 | 25 | 1AP3PSFR25 | DUKHCON1AP3PSGL7015 | DUKHCONI1AZ3PSGL7015 | DH | CON | 1AF | Z3 | FR | PS | B03 | B03-D08 | RES-1A |
|  | 65 | **HARD LANDSCAPING** |  | 2014-06-29 | 2014-09-21 |  |  |  |  |  |  |  |  |  |  |  |  |  |  |  |  |  |  |
| DUKHCONI1AZ3HDGL7020 |  | Precast Concrete Kerbs works | 20d | 2014-06-29 | 2014-07-21 | DUKHCONI1AZ3RWGL6000 SS | 15d | 0d | KERBSTONE MASON SK [752 h]; LABOR- SUBCONTRACTOR [426 h]; KERBSTONE QTY [940 lm] | 112,518 | 10 | 1AP3HDFR10 | DUKHCON1AP3HDGL7020 | DUKHCONI1AZ3HDGL7020 | DH | CON | 1AF | Z3 | FR | HD | B03 | B03-D11 | RES-1A |
| DUKHCONI1AZ3HDGL7025 |  | Interlocking for Walkways | 25d | 2014-07-10 | 2014-08-11 | DUKHCONI1AZ3HDGL7020 SS+10d | 15d | 0d | INTERLOCK MASON SK [584 h]; LABOR- SUBCONTRACTOR [222 h]; INTERLOCK QTY [728 Sqm] | 88,756 | 15 | 1AP3HDFR15 | DUKHCON1AP3HDGL7025 | DUKHCONI1AZ3HDGL7025 | DH | CON | 1AF | Z3 | FR | HD | B03 | B03-D11 | RES-1A |
| DUKHCONI1AZ3HDGL7030 |  | Construction of Retaining wall | 25d | 2014-07-22 | 2014-08-23 | DUKHCONI1AZ2HDGL7030, DUKHCONI1AZ3HDGL7025 SS+10d | 15d | 0d | STEEL FIXERS SK [120 h]; CARPENTERS SK [272 h]; CONCRETE MASON SK [40 h]; LABOR- SUBCONTRACTOR [324 h]; EXCAVATION QTY [14 Cum]; REINFORCEMENT BARS QTY [1445 kg]; FORMWORK QTY [134 Sqm]; CONCRETE QTY [17 Cum] | 22,937.8 | 20 | 1AP3HDFR20 | DUKHCON1AP3HDGL7030 | DUKHCONI1AZ3HDGL7030 | DH | CON | 1AF | Z3 | FR | HD | B03 | B03-D11 | RES-1A |
| DUKHCONI1AZ3HDGL7035 |  | Construction of Wash Stone Boulders | 25d | 2014-07-22 | 2014-08-23 | DUKHCONI1AZ3HDGL7030 SS, DUKHCONI1AZ2HDGL7035 | 15d | 0d | TILE MASON SK [64 h]; LABOR- SUBCONTRACTOR [24 h]; STONE BOULDERS QTY [32 Sqm] | 19,037 | 25 | 1AP3HDFR25 | DUKHCON1AP3HDGL7035 | DUKHCONI1AZ3HDGL7035 | DH | CON | 1AF | Z3 | FR | HD | B03 | B03-D11 | RES-1A |
| DUKHCONI1AZ3HDGL7040 |  | Construction of Speed Humps | 10d | 2014-09-10 | 2014-09-21 | DUKHCONI1AZ3HDGL7035 SS, DUKHCONI1AZ2HDGL7040, DUKHCONI1AZ3RWGL6025 | 50d | 33d | CONCRETE MASON SK [8 h]; LABOR- SUBCONTRACTOR [6 h]; SPEED HUMPS [3 ea] | 3,420 | 30 | 1AP3HDFR30 | DUKHCON1AP3HDGL7040 | DUKHCONI1AZ3HDGL7040 | DH | CON | 1AF | Z3 | FR | HD | B03 | B03-D11 | RES-1A |
|  | 70 | **SOFT LANDSCAPING** |  | 2014-08-06 | 2014-09-27 |  |  |  |  |  |  |  |  |  |  |  |  |  |  |  |  |  |  |
| DUKHCONI1AZ3SLGL7200 |  | Excavation | 25d | 2014-08-06 | 2014-09-03 | DUKHCONI1AZ3HDGL7035 SS+10d, DUKHCONI1AZ3IRGL5290 SS, DUKHCONI1AZ2SLGL7205 | 15d | 0d | LABOR- SUBCONTRACTOR [246 h]; EXCAVATION QTY [407 Cum]; LOADER [63 h]; POCLAIN [125 h]; TRUCK [63 h]; EQUIP OPERATORS [251 h] | 24,965.8 | 10 | 1AP3SLFR10 | DUKHCON1AP3SLGL7200 | DUKHCONI1AZ3SLGL7200 | DH | CON | 1AF | Z3 | FR | SL | B03 | B03-D11 | RES-1A |
| DUKHCONI1AZ3SLGL7205 |  | Sweet Soil Laying | 25d | 2014-08-18 | 2014-09-15 | DUKHCONI1AZ3SLGL7200 SS+10d | 15d | 0d | LABOR- SUBCONTRACTOR [1020 h]; SWEET SOIL QTY [2034 Cum]; LANDSCAPING SK [1360 h] | 141,473.2 | 15 | 1AP3SLFR15 | DUKHCON1AP3SLGL7205 | DUKHCONI1AZ3SLGL7205 | DH | CON | 1AF | Z3 | FR | SL | B03 | B03-D11 | RES-1A |
| DUKHCONI1AZ3SLGL7210 |  | Plantation works | 25d | 2014-08-30 | 2014-09-27 | DUKHCONI1AZ2SLGL7210, DUKHCONI1AZ3SLGL7205 SS+10d | 35d | 18d | LABOR- SUBCONTRACTOR [252 h]; PLAM TREES QTY [16 ea]; LANDSCAPING SK [336 h]; GROUND COVER QTY [1960 Sqm]; SHRUBS QTY [147 ea] | 112,789.6 | 20 | 1AP3SLFR20 | DUKHCON1AP3SLGL7210 | DUKHCONI1AZ3SLGL7210 | DH | CON | 1AF | Z3 | FR | SL | B03 | B03-D11 | RES-1A |
|  | 25 | **ZONE - 4** |  | 2014-03-17 | 2014-11-30 |  |  |  |  |  |  |  |  |  |  |  |  |  |  |  |  |  |  |
|  | 10 | **INFRASTRUCTURE WORKS** |  | 2014-03-17 | 2014-11-30 |  |  |  |  |  |  |  |  |  |  |  |  |  |  |  |  |  |  |
|  | 10 | **DRAINAGE LINES** |  | 2014-03-17 | 2014-05-05 |  |  |  |  |  |  |  |  |  |  |  |  |  |  |  |  |  |  |
| DUKHCONI1AZ4DRGL5115 |  | Excavation for Drainage line | 25d | 2014-03-17 | 2014-04-14 | DUKHCONP1AZ1STGF2005 SS, DUKHCONI1AZ3DRGL5130 | -15d | 0d | LABOR- SUBCONTRACTOR [180 h]; EXCAVATION QTY [296 Cum]; LOADER [63 h]; POCLAIN [125 h]; TRUCK [63 h]; EQUIP OPERATORS [251 h] | 13,573.2 | 10 | 1AP4DRFR10 | DUKHCON1AP4DRGL5115 | DUKHCONI1AZ4DRGL5115 | DH | CON | 1AF | Z4 | FR | DR | B03 | B03-D06 | RES-1A |
| DUKHCONI1AZ4DRGL5120 |  | Laying of Drainage line | 25d | 2014-03-24 | 2014-04-21 | DUKHCONI1AZ4DRGL5115 FF+6d, DUKHCONI1AZ4DRGL5115 SS+6d | -15d | 0d | LABOR- SUBCONTRACTOR [60 h]; MECHANICALS SK [216 h]; DRAINAGE PIPES QTY [386 lm] | 40,093 | 15 | 1AP4DRFR15 | DUKHCON1AP4DRGL5120 | DUKHCONI1AZ4DRGL5120 | DH | CON | 1AF | Z4 | FR | DR | B03 | B03-D06 | RES-1A |
| DUKHCONI1AZ4DRGL5125 |  | Testing of Drainage line | 25d | 2014-04-01 | 2014-04-29 | DUKHCONI1AZ4DRGL5120 FF+7d, DUKHCONI1AZ4DRGL5120 SS+7d | -15d | 0d | LABOR- SUBCONTRACTOR [48 h]; MECHANICALS SK [86.4 h]; DRAINAGE PIPES TEST QTY [386 lm] | 4,454.6 | 20 | 1AP4DRFR20 | DUKHCON1AP4DRGL5125 | DUKHCONI1AZ4DRGL5125 | DH | CON | 1AF | Z4 | FR | DR | B03 | B03-D06 | RES-1A |
| DUKHCONI1AZ4DRGL5130 |  | Backfilling Drainage line | 15d | 2014-04-19 | 2014-05-05 | DUKHCONI1AZ4DRGL5125 FF+5d, DUKHCONI1AZ4DRGL5125 SS+10d | -15d | 0d | LABOR- SUBCONTRACTOR [72 h]; BACKFILLING QTY [296 Cum]; BOBCAT [150 h]; PLATE COMPACTOR [150 h]; TRUCK [30 h]; EQUIP OPERATORS [330 h] | 14,840.6 | 25 | 1AP4DRFR25 | DUKHCON1AP4DRGL5130 | DUKHCONI1AZ4DRGL5130 | DH | CON | 1AF | Z4 | FR | DR | B03 | B03-D06 | RES-1A |
|  | 15 | **MANHOLES & SOAKAWAY** |  | 2014-04-16 | 2014-07-06 |  |  |  |  |  |  |  |  |  |  |  |  |  |  |  |  |  |  |
| DUKHCONI1AZ4SAGL5140 |  | Construction of soakaways | 25d | 2014-04-16 | 2014-05-14 | DUKHCONI1AZ4DRGL5115, DUKHCONI1AZ4DRGL5130 FF+8d | -12d | 0d | MANHOLES SK [112 h]; LABOR- SUBCONTRACTOR [42 h]; SOAKPIT QTY [14 ea] | 183,740.8 | 15 | 1AP4SAFR15 | DUKHCON1AP4SAGL5140 | DUKHCONI1AZ4SAGL5140 | DH | CON | 1AF | Z4 | FR | SA | B03 | B03-D06 | RES-1A |
| DUKHCONI1AZ4SAGL5135 |  | Construction of manholes Drainage | 25d | 2014-04-19 | 2014-05-17 | DUKHCONI1AZ4DRGL5130 FF+10d, DUKHCONI1AZ3SAGL5135, DUKHCONI1AZ4DRGL5115 | 47d | 18d | LABOR- SUBCONTRACTOR [6 h]; EXCAVATION QTY [8 Cum] | 38,935 | 10 | 1AP4SAFR10 | DUKHCON1AP4SAGL5135 | DUKHCONI1AZ4SAGL5135 | DH | CON | 1AF | Z4 | FR | SA | B03 | B03-D06 | RES-1A |
| DUKHCONI1AZ4SAGL5145 |  | Construction of Road gullies | 25d | 2014-05-15 | 2014-06-12 | DUKHCONI1AZ4SAGL5140, DUKHCONI1AZ3SAGL5145 | -12d | 0d | MANHOLES SK [128 h]; LABOR- SUBCONTRACTOR [48 h]; ROAD GULLY QTY [16 ea] | 28,743.2 | 20 | 1AP4SAFR20 | DUKHCON1AP4SAGL5145 | DUKHCONI1AZ4SAGL5145 | DH | CON | 1AF | Z4 | FR | SA | B03 | B03-D06 | RES-1A |
| DUKHCONI1AZ4SAGL5150 |  | Connection with existing sewer manhole | 20d | 2014-06-14 | 2014-07-06 | DUKHCONI1AZ4SAGL5145, DUKHCONI1AZ4SAGL5135 | 24d | 36d | LABOR- SUBCONTRACTOR [6 h]; BACKFILLING QTY [9 Cum] | 2,270.6 | 25 | 1AP4SAFR25 | DUKHCON1AP4SAGL5150 | DUKHCONI1AZ4SAGL5150 | DH | CON | 1AF | Z4 | FR | SA | B03 | B03-D06 | RES-1A |

Notes:
- DUKHCONI1AZ3PSGL7000: Expenses: I1A-Road work 33089.6
- DUKHCONI1AZ3PSGL7005: Expenses: I1A-Road work 33089.6
- DUKHCONI1AZ3PSGL7010: Expenses: I1A-Road work 165448
- DUKHCONI1AZ3PSGL7015: Expenses: I1A-Road work 16545
- DUKHCONI1AZ3HDGL7020: Expenses: I1A-Hard and soft landscaping 112518
- DUKHCONI1AZ3HDGL7025: Expenses: I1A-Hard and soft landscaping 88756
- DUKHCONI1AZ3HDGL7030: Expenses: I1A-Hard and soft landscaping 22937.8
- DUKHCONI1AZ3HDGL7035: Expenses: I1A-Hard and soft landscaping 19037
- DUKHCONI1AZ3HDGL7040: Expenses: I1A-Hard and soft landscaping 3420
- DUKHCONI1AZ3SLGL7200: Expenses: I1A-Hard and soft landscaping 24965.8
- DUKHCONI1AZ3SLGL7205: Expenses: I1A-Hard and soft landscaping 141473
- DUKHCONI1AZ3SLGL7210: Expenses: I1A-Hard and soft landscaping 112790
- DUKHCONI1AZ4DRGL5115: Expenses: I1A-Surface Water drainage and Sewerage system 13573.2
- DUKHCONI1AZ4DRGL5120: Expenses: I1A-Surface Water drainage and Sewerage system 40093
- DUKHCONI1AZ4DRGL5125: Expenses: I1A-Surface Water drainage and Sewerage system 4454.6
- DUKHCONI1AZ4DRGL5130: Expenses: I1A-Surface Water drainage and Sewerage system 14840.6
- DUKHCONI1AZ4SAGL5140: Expenses: I1A-Surface Water drainage and Sewerage system 183741
- DUKHCONI1AZ4SAGL5135: Expenses: I1A-Surface Water drainage and Sewerage system 38935
- DUKHCONI1AZ4SAGL5145: Expenses: I1A-Surface Water drainage and Sewerage system 28743.2
- DUKHCONI1AZ4SAGL5150: Expenses: I1A-Surface Water drainage and Sewerage system 2270.6

| ID | WBS | Activity | Duration | Start | Finish | Predecessors | Total float | Free float | Resources | Cost | CODE | P3 ACTID | P6 ID (old) | NP61D | PROJECT | PHASES | PACKAGE | PART | ELEMENTS | STEP | BILL NOS | BILL DIVISION | RES PACK |
| --- | --- | --- | --- | --- | --- | --- | --- | --- | --- | --- | --- | --- | --- | --- | --- | --- | --- | --- | --- | --- | --- | --- | --- |
|  | 20 | **WATER SUPPLY SYSTEM** |  | 2014-04-30 | 2014-07-14 |  |  |  |  |  |  |  |  |  |  |  |  |  |  |  |  |  |  |
| DUKHCONI1AZ4WSGL5155 |  | Excavation for water line | 25d | 2014-04-30 | 2014-05-28 | DUKHCONI1AZ4DRGL5130 SS+10d, DUKHCONI1AZ3WSGL5170 | -14d | 0d | LABOR- SUBCONTRACTOR [150 h]; EXCAVATION QTY [249 Cum]; LOADER [63 h]; POCLAIN [125 h]; TRUCK [63 h]; EQUIP OPERATORS [251 h] | 9,752.4 | 10 | 1AP4WSFR10 | DUKHCON1AP4WSGL5155 | DUKHCONI1AZ4WSGL5155 | DH | CON | 1AF | Z4 | FR | WS | B03 | B03-D07 | RES-1A |
| DUKHCONI1AZ4WSGL5160 |  | Laying of water line | 25d | 2014-05-06 | 2014-06-03 | DUKHCONI1AZ4WSGL5155 SS+5d | -14d | 0d | LABOR- SUBCONTRACTOR [102 h]; MECHANICALS SK [183.6 h]; WATER PIPES QTY [251 lm] | 42,577.6 | 15 | 1AP4WSFR15 | DUKHCON1AP4WSGL5160 | DUKHCONI1AZ4WSGL5160 | DH | CON | 1AF | Z4 | FR | WS | B03 | B03-D07 | RES-1A |
| DUKHCONI1AZ4WSGL5165 |  | Testing of potable water line | 25d | 2014-05-12 | 2014-06-09 | DUKHCONI1AZ4WSGL5160 SS+5d | -14d | 0d | LABOR- SUBCONTRACTOR [30 h]; MECHANICALS SK [54 h]; DRAINAGE PIPES TEST QTY [251 lm] | 3,433 | 20 | 1AP4WSFR20 | DUKHCON1AP4WSGL5165 | DUKHCONI1AZ4WSGL5165 | DH | CON | 1AF | Z4 | FR | WS | B03 | B03-D07 | RES-1A |
| DUKHCONI1AZ4WSGL5170 |  | Backfilling potable water line | 25d | 2014-05-18 | 2014-06-15 | DUKHCONI1AZ4WSGL5165 SS+5d, DUKHCONI1AZ4SAGL5145 FF | -14d | 0d | LABOR- SUBCONTRACTOR [60 h]; BACKFILLING QTY [251 Cum]; BOBCAT [125 h]; PLATE COMPACTOR [125 h]; TRUCK [25 h]; EQUIP OPERATORS [275 h] | 2,438 | 25 | 1AP4WSFR25 | DUKHCON1AP4WSGL5170 | DUKHCONI1AZ4WSGL5170 | DH | CON | 1AF | Z4 | FR | WS | B03 | B03-D07 | RES-1A |
| DUKHCONI1AZ4WSGL5175 |  | Construction of valve chambers & Thrust Blocks | 25d | 2014-05-24 | 2014-06-21 | DUKHCONI1AZ4WSGL5170 FF+5d, DUKHCONI1AZ3WSGL5175, DUKHCONI1AZ4WSGL5155 SS+10d | 17d | 0d | MANHOLES SK [96 h]; LABOR- SUBCONTRACTOR [36 h]; MANHOLES QTY [12 ea] | 2,838.6 | 30 | 1AP4WSFR30 | DUKHCON1AP4WSGL5175 | DUKHCONI1AZ4WSGL5175 | DH | CON | 1AF | Z4 | FR | WS | B03 | B03-D07 | RES-1A |
| DUKHCONI1AZ4WSGL5180 |  | Installation of meter ,Accessories & Connection | 20d | 2014-06-22 | 2014-07-14 | DUKHCONI1AZ4WSGL5175, DUKHCONI1AZ3WSGL5180 | 17d | 7d | LABOR- SUBCONTRACTOR [18 h]; MECHANICALS SK [32.4 h]; CHAMPER QTY [10 lm] | 7,877 | 35 | 1AP4WSFR35 | DUKHCON1AP4WSGL5180 | DUKHCONI1AZ4WSGL5180 | DH | CON | 1AF | Z4 | FR | WS | B03 | B03-D07 | RES-1A |
|  | 25 | **FIREFIGHTING LINES** |  | 2014-05-24 | 2014-07-22 |  |  |  |  |  |  |  |  |  |  |  |  |  |  |  |  |  |  |
| DUKHCONI1AZ4FFGL5185 |  | Excavation for firefighting line | 25d | 2014-05-24 | 2014-06-21 | DUKHCONI1AZ4WSGL5170 SS+5d, DUKHCONI1AZ3FFGL5200 | -14d | 0d | LABOR- SUBCONTRACTOR [132 h]; EXCAVATION QTY [215 Cum]; LOADER [38 h]; POCLAIN [75 h]; TRUCK [38 h]; EQUIP OPERATORS [151 h] | 24,149 | 10 | 1AP4FFFR10 | DUKHCON1AP4FFGL5185 | DUKHCONI1AZ4FFGL5185 | DH | CON | 1AF | Z4 | FR | FF | B03 | B03-D07 | RES-1A |
| DUKHCONI1AZ4FFGL5190 |  | Laying of firefighting line | 25d | 2014-06-01 | 2014-06-29 | DUKHCONI1AZ4FFGL5185 SS+7d | -14d | 0d | LABOR- SUBCONTRACTOR [66 h]; MECHANICALS SK [237.6 h]; PLUMB PIPES QTY [215 lm] | 31,835.6 | 15 | 1AP4FFFR15 | DUKHCON1AP4FFGL5190 | DUKHCONI1AZ4FFGL5190 | DH | CON | 1AF | Z4 | FR | FF | B03 | B03-D07 | RES-1A |
| DUKHCONI1AZ4FFGL5195 |  | Testing of firefighting line | 25d | 2014-06-07 | 2014-07-05 | DUKHCONI1AZ4FFGL5190 SS+5d | -14d | 0d | LABOR- SUBCONTRACTOR [30 h]; MECHANICALS SK [54 h]; DRAINAGE PIPES TEST QTY [215 lm] | 3,034.2 | 20 | 1AP4FFFR20 | DUKHCON1AP4FFGL5195 | DUKHCONI1AZ4FFGL5195 | DH | CON | 1AF | Z4 | FR | FF | B03 | B03-D07 | RES-1A |
| DUKHCONI1AZ4FFGL5200 |  | Backfilling firefighting line | 25d | 2014-06-12 | 2014-07-10 | DUKHCONI1AZ4FFGL5195 SS+5d | -14d | 0d | LABOR- SUBCONTRACTOR [54 h]; BACKFILLING QTY [215 Cum]; BOBCAT [125 h]; PLATE COMPACTOR [125 h]; TRUCK [25 h]; EQUIP OPERATORS [275 h] | 6,037 | 25 | 1AP4FFFR25 | DUKHCON1AP4FFGL5200 | DUKHCONI1AZ4FFGL5200 | DH | CON | 1AF | Z4 | FR | FF | B03 | B03-D07 | RES-1A |
| DUKHCONI1AZ4FFGL5205 |  | Construction of valve chambers & Thrust Blocks | 25d | 2014-06-18 | 2014-07-16 | DUKHCONI1AZ4FFGL5200 FF+5d, DUKHCONI1AZ4FFGL5185 SS+10d, DUKHCONI1AZ3FFGL5205 | 10d | 0d | STEEL FIXERS SK [40 h]; CARPENTERS SK [56 h]; CONCRETE MASON SK [16 h]; LABOR- SUBCONTRACTOR [90 h]; EXCAVATION QTY [13 Cum]; REINFORCEMENT BARS QTY [502 kg]; FORMWORK QTY [27 Sqm]; CONCRETE QTY [8 Cum] | 3,293.2 | 30 | 1AP4FFFR30 | DUKHCON1AP4FFGL5205 | DUKHCONI1AZ4FFGL5205 | DH | CON | 1AF | Z4 | FR | FF | B03 | B03-D07 | RES-1A |
| DUKHCONI1AZ4FFGL5210 |  | Connection with existing Firewater System | 25d | 2014-06-24 | 2014-07-22 | DUKHCONI1AZ3FFGL5210, DUKHCONI1AZ4FFGL5205 FF+5d, DUKHCONI1AZ4WSGL5180 FF | 10d | 18d | LABOR- SUBCONTRACTOR [48 h]; MECHANICALS SK [86.4 h]; FIRE EXTINGUISHER QTY [16 ea] | 11,721.4 | 35 | 1AP4FFFR35 | DUKHCON1AP4FFGL5210 | DUKHCONI1AZ4FFGL5210 | DH | CON | 1AF | Z4 | FR | FF | B03 | B03-D07 | RES-1A |
|  | 30 | **ELECTRICAL LINES** |  | 2014-06-21 | 2014-08-17 |  |  |  |  |  |  |  |  |  |  |  |  |  |  |  |  |  |  |
| DUKHCONI1AZ4ELGL5215 |  | Excavation Cable Trenches & Duct Banks | 25d | 2014-06-21 | 2014-07-19 | DUKHCONI1AZ4FFGL5200 SS+7d, DUKHCONI1AZ3ELGL5225 | -12d | 0d | LABOR- SUBCONTRACTOR [774 h]; EXCAVATION QTY [1285 Cum]; LOADER [150 h]; POCLAIN [300 h]; TRUCK [150 h]; EQUIP OPERATORS [600 h] | 14,248.6 | 10 | 1AP4ECFR10 | DUKHCON1AP4ELGL5215 | DUKHCONI1AZ4ELGL5215 | DH | CON | 1AF | Z4 | FR | EC | B03 | B03-D04 | RES-1A |
| DUKHCONI1AZ4ELGL5220 |  | Laying of electrical cables | 25d | 2014-06-26 | 2014-07-24 | DUKHCONI1AZ4ELGL5215 SS+5d | -9d | 0d | LABOR- SUBCONTRACTOR [390 h]; ELECTRICIANS SK [1444.8 h]; CABLE QTY [1285 lm] | 689,477.4 | 15 | 1AP4ECFR15 | DUKHCON1AP4ELGL5220 | DUKHCONI1AZ4ELGL5220 | DH | CON | 1AF | Z4 | FR | EC | B03 | B03-D04 | RES-1A |
| DUKHCONI1AZ4ELGL5225 |  | Backfilling Electrical trench | 25d | 2014-07-05 | 2014-08-05 | DUKHCONI1AZ4ELGL5215 FF+7d, DUKHCONI1AZ4ELGL5220 SS+7d | -9d | 0d | LABOR- SUBCONTRACTOR [312 h]; BACKFILLING QTY [1285 Cum]; BOBCAT [250 h]; PLATE COMPACTOR [250 h]; TRUCK [50 h]; EQUIP OPERATORS [550 h] | 6,105.6 | 20 | 1AP4ECFR20 | DUKHCON1AP4ELGL5225 | DUKHCONI1AZ4ELGL5225 | DH | CON | 1AF | Z4 | FR | EC | B03 | B03-D04 | RES-1A |
| DUKHCONI1AZ4ELGL5230 |  | Construction of Submain Board & Feeder Pillar | 25d | 2014-07-16 | 2014-08-17 | DUKHCONI1AZ4ELGL5225 SS+10d, DUKHCONI1AZ3ELGL5230, DUKHCONI1AZ4ELGL5225 FF+10d | 35d | 0d | FORMWORK QTY [17 Sqm]; CONCRETE QTY [2 Cum]; ALUMINIUM DOOR QTY [2 ea]; DOOR ERECTOR SK [8 h]; EXPANSION JOINT QTY [11 Sqm]; EXPANSION JOINT SKILLED SK [88 h]; STEEL FIXERS SK [8 h]; CARPENTERS SK [40 h]; CONCRETE MASON SK [8 h]; LABOR- SUBCONTRACTOR [30 h]; LABOR- SUBCONTRACTOR [42 h]; REINFORCEMENT BARS QTY [21 kg] | 75,578.6 | 25 | 1AP4ECFR25 | DUKHCON1AP4ELGL5230 | DUKHCONI1AZ4ELGL5230 | DH | CON | 1AF | Z4 | FR | EC | B03 | B03-D04 | RES-1A |
|  | 35 | **STREET LIGHTING** |  | 2014-06-21 | 2014-09-15 |  |  |  |  |  |  |  |  |  |  |  |  |  |  |  |  |  |  |
| DUKHCONI1AZ4STGL5235 |  | Excavation for Street lighting | 25d | 2014-06-21 | 2014-07-19 | DUKHCONI1AZ3STGL5250 SS+10d, DUKHCONI1AZ4ELGL5215 SS | -12d | 0d | LABOR- SUBCONTRACTOR [18 h]; EXCAVATION QTY [29 Cum]; LOADER [13 h]; POCLAIN [25 h]; TRUCK [13 h]; EQUIP OPERATORS [51 h] | 2,692.2 | 10 | 1AP4STFR10 | DUKHCON1AP4STGL5235 | DUKHCONI1AZ4STGL5235 | DH | CON | 1AF | Z4 | FR | ST | B03 | B03-D09 | RES-1A |
| DUKHCONI1AZ4STGL5240 |  | Construction of Duct Banks | 25d | 2014-06-26 | 2014-07-24 | DUKHCONI1AZ4STGL5235 SS+5d | -12d | 0d | LABOR- SUBCONTRACTOR [252 h]; ELECTRICIANS SK [940.8 h]; DUCT BANK QTY [336 lm] | 89,884.6 | 15 | 1AP4STFR15 | DUKHCON1AP4STGL5240 | DUKHCONI1AZ4STGL5240 | DH | CON | 1AF | Z4 | FR | ST | B03 | B03-D09 | RES-1A |
| DUKHCONI1AZ4STGL5245 |  | Construction of Foundation | 25d | 2014-06-26 | 2014-07-24 | DUKHCONI1AZ4STGL5240 SS | -12d | 0d | MANHOLES SK [464 h]; LABOR- SUBCONTRACTOR [174 h]; COLUMN BASE QTY [29 ea] | 29,280.8 | 20 | 1AP4STFR20 | DUKHCON1AP4STGL5245 | DUKHCONI1AZ4STGL5245 | DH | CON | 1AF | Z4 | FR | ST | B03 | B03-D09 | RES-1A |
| DUKHCONI1AZ4STGL5250 |  | Backfilling Street Lighting | 25d | 2014-07-02 | 2014-07-30 | DUKHCONI1AZ4STGL5235 FF+5d, DUKHCONI1AZ4STGL5245 SS+5d | -12d | 0d | LABOR- SUBCONTRACTOR [12 h]; BACKFILLING QTY [29 Cum]; BOBCAT [125 h]; PLATE COMPACTOR [125 h]; TRUCK [25 h]; EQUIP OPERATORS [275 h] | 2,692.2 | 25 | 1AP4STFR25 | DUKHCON1AP4STGL5250 | DUKHCONI1AZ4STGL5250 | DH | CON | 1AF | Z4 | FR | ST | B03 | B03-D09 | RES-1A |
| DUKHCONI1AZ4STGL5255 |  | Installation of light Post | 25d | 2014-07-14 | 2014-08-14 | DUKHCONI1AZ4STGL5250 SS+10d, DUKHCONI1AZ3STGL5255 | 52d | 18d | LABOR- SUBCONTRACTOR [48 h]; ELECTRICIANS SK [168 h]; LIGHTPOST COLUMN QTY [29 ea] | 379,406.8 | 30 | 1AP4STFR30 | DUKHCON1AP4STGL5255 | DUKHCONI1AZ4STGL5255 | DH | CON | 1AF | Z4 | FR | ST | B03 | B03-D09 | RES-1A |
| DUKHCONI1AZ4STGL5260 |  | Electrical Works | 25d | 2014-08-18 | 2014-09-15 | DUKHCONI1AZ4STGL5255 SS+7d, DUKHCONI1AZ4ELGL5230, DUKHCONI1AZ3STGL5260 | 35d | 18d | LABOR- SUBCONTRACTOR [174 h]; ELECTRICIANS SK [649.6 h]; CABLE QTY [577 lm] | 19,485 | 35 | 1AP4STFR35 | DUKHCON1AP4STGL5260 | DUKHCONI1AZ4STGL5260 | DH | CON | 1AF | Z4 | FR | ST | B03 | B03-D09 | RES-1A |

Notes:
- DUKHCONI1AZ4WSGL5155: Expenses: I1A-Water supply system 9752.4
- DUKHCONI1AZ4WSGL5160: Expenses: I1A-Water supply system 42577.6
- DUKHCONI1AZ4WSGL5165: Expenses: I1A-Water supply system 3433
- DUKHCONI1AZ4WSGL5170: Expenses: I1A-Water supply system 2438
- DUKHCONI1AZ4WSGL5175: Expenses: I1A-Water supply system 2838.6
- DUKHCONI1AZ4WSGL5180: Expenses: I1A-Water supply system 7877
- DUKHCONI1AZ4FFGL5185: Expenses: I1A-Water supply system 24149
- DUKHCONI1AZ4FFGL5190: Expenses: I1A-Water supply system 31835.6
- DUKHCONI1AZ4FFGL5195: Expenses: I1A-Water supply system 3034.2
- DUKHCONI1AZ4FFGL5200: Expenses: I1A-Water supply system 6037
- DUKHCONI1AZ4FFGL5205: Expenses: I1A-Water supply system 3293.2
- DUKHCONI1AZ4FFGL5210: Expenses: I1A-Water supply system 11721.4
- DUKHCONI1AZ4ELGL5215: Expenses: I1A-Electrical power supply and distribution 14248.6
- DUKHCONI1AZ4ELGL5220: Expenses: I1A-Electrical power supply and distribution 689477
- DUKHCONI1AZ4ELGL5225: Expenses: I1A-Electrical power supply and distribution 6105.6
- DUKHCONI1AZ4ELGL5230: Expenses: I1A-Electrical power supply and distribution 75578.6
- DUKHCONI1AZ4STGL5235: Expenses: I1A-Street lighting 2692.2
- DUKHCONI1AZ4STGL5240: Expenses: I1A-Street lighting 89884.6
- DUKHCONI1AZ4STGL5245: Expenses: I1A-Street lighting 29280.8
- DUKHCONI1AZ4STGL5250: Expenses: I1A-Street lighting 2692.2
- DUKHCONI1AZ4STGL5255: Expenses: I1A-Street lighting 379407
- DUKHCONI1AZ4STGL5260: Expenses: I1A-Street lighting 19485

| ID | WBS | Activity | Duration | Start | Finish | Predecessors | Total float | Free float | Resources | Cost | CODE | P3 ACTID | P6 ID (old) | NP61D | PROJECT | PHASES | PACKAGE | PART | ELEMENTS | STEP | BILL NOS | BILL DIVISION | RES PACK |
| --- | --- | --- | --- | --- | --- | --- | --- | --- | --- | --- | --- | --- | --- | --- | --- | --- | --- | --- | --- | --- | --- | --- | --- |
|  | 40 | **IRRIGATION LINES** |  | 2014-08-06 | 2014-10-13 |  |  |  |  |  |  |  |  |  |  |  |  |  |  |  |  |  |  |
| DUKHCONI1AZ4IRGL5265 |  | Excavation for irrigation line | 25d | 2014-08-06 | 2014-09-03 | DUKHCONI1AZ4ELGL5225, DUKHCONI1AZ3IRGL5280 | 13d | 0d | LABOR- SUBCONTRACTOR [312 h]; EXCAVATION QTY [514 Cum]; LOADER [125 h]; POCLAIN [250 h]; TRUCK [125 h]; EQUIP OPERATORS [500 h] | 9,606.6 | 10 | 1AP4IRFR10 | DUKHCON1AP4IRGL5265 | DUKHCONI1AZ4IRGL5265 | DH | CON | 1AF | Z4 | FR | IR | B03 | B03-D07 | RES-1A |
| DUKHCONI1AZ4IRGL5270 |  | Laying of irrigationline | 25d | 2014-08-12 | 2014-09-09 | DUKHCONI1AZ4IRGL5265 SS+5d | 13d | 0d | LABOR- SUBCONTRACTOR [138 h]; MECHANICALS SK [248.4 h]; IRRIGATION PIPES QTY [923 lm] | 15,116 | 15 | 1AP4IRFR15 | DUKHCON1AP4IRGL5270 | DUKHCONI1AZ4IRGL5270 | DH | CON | 1AF | Z4 | FR | IR | B03 | B03-D07 | RES-1A |
| DUKHCONI1AZ4IRGL5275 |  | Testing of irrigation line | 25d | 2014-08-18 | 2014-09-15 | DUKHCONI1AZ4IRGL5270 SS+5d | 13d | 0d | LABOR- SUBCONTRACTOR [114 h]; MECHANICALS SK [205.2 h]; DRAINAGE PIPES TEST QTY [923 lm] | 2,168.8 | 20 | 1AP4IRFR20 | DUKHCON1AP4IRGL5275 | DUKHCONI1AZ4IRGL5275 | DH | CON | 1AF | Z4 | FR | IR | B03 | B03-D07 | RES-1A |
| DUKHCONI1AZ4IRGL5280 |  | Backfilling irrigation line | 25d | 2014-08-24 | 2014-09-21 | DUKHCONI1AZ4IRGL5275 SS+5d | 13d | 0d | LABOR- SUBCONTRACTOR [126 h]; BACKFILLING QTY [514 Cum]; BOBCAT [250 h]; PLATE COMPACTOR [250 h]; TRUCK [50 h]; EQUIP OPERATORS [550 h] | 2,401.6 | 25 | 1AP4IRFR25 | DUKHCON1AP4IRGL5280 | DUKHCONI1AZ4IRGL5280 | DH | CON | 1AF | Z4 | FR | IR | B03 | B03-D07 | RES-1A |
| DUKHCONI1AZ4IRGL5285 |  | Construction of Thrust Blocks,Pull boxes | 25d | 2014-09-04 | 2014-10-02 | DUKHCONI1AZ4IRGL5280 FF+10d, DUKHCONI1AZ4ELGL5225 SS+10d | 18d | 0d | LABOR- SUBCONTRACTOR [30 h]; ELECTRICIANS SK [22.4 h]; THRUST BLOCKS QTY [2 ea]; PULL BOX QTY [8 ea]; PULL BOX SK [64 h] | 9,988.6 | 30 | 1AP4IRFR30 | DUKHCON1AP4IRGL5285 | DUKHCONI1AZ4IRGL5285 | DH | CON | 1AF | Z4 | FR | IR | B03 | B03-D07 | RES-1A |
| DUKHCONI1AZ4IRGL5290 |  | Irrigation Fittings (Nozzle,Values) | 25d | 2014-09-13 | 2014-10-13 | DUKHCONI1AZ4IRGL5285 SS+7d, DUKHCONI1AZ4IRGL5280 SS+10d | 18d | 11d | LABOR- SUBCONTRACTOR [102 h]; MECHANICALS SK [183.6 h]; CHAMPER QTY [65 lm] | 26,800.6 | 35 | 1AP4IRFR35 | DUKHCON1AP4IRGL5290 | DUKHCONI1AZ4IRGL5290 | DH | CON | 1AF | Z4 | FR | IR | B03 | B03-D07 | RES-1A |
|  | 45 | **TELECOMMUNICATION LINES** |  | 2014-07-14 | 2014-09-01 |  |  |  |  |  |  |  |  |  |  |  |  |  |  |  |  |  |  |
| DUKHCONI1AZ4TCGL5295 |  | Excavation Telecommunication trenches | 20d | 2014-07-14 | 2014-08-09 | DUKHCONI1AZ4STGL5250 SS+10d, DUKHCONI1AZ3TCGL5305 | -12d | 0d | LABOR- SUBCONTRACTOR [228 h]; EXCAVATION QTY [372 Cum]; LOADER [75 h]; POCLAIN [150 h]; TRUCK [75 h]; EQUIP OPERATORS [300 h] | 9,563.6 | 10 | 1AP4TCFR10 | DUKHCON1AP4TCGL5295 | DUKHCONI1AZ4TCGL5295 | DH | CON | 1AF | Z4 | FR | TC | B03 | B03-D05 | RES-1A |
| DUKHCONI1AZ4TCGL5300 |  | Laying of cables | 20d | 2014-07-20 | 2014-08-14 | DUKHCONI1AZ4TCGL5295 SS+5d | -12d | 0d | LABOR- SUBCONTRACTOR [168 h]; ELECTRICIANS SK [627.2 h]; CABLE QTY [558 lm] | 3,124 | 15 | 1AP4TCFR15 | DUKHCON1AP4TCGL5300 | DUKHCONI1AZ4TCGL5300 | DH | CON | 1AF | Z4 | FR | TC | B03 | B03-D05 | RES-1A |
| DUKHCONI1AZ4TCGL5305 |  | Backfilling telecommunication trench | 20d | 2014-07-26 | 2014-08-20 | DUKHCONI1AZ4TCGL5300 SS+5d | -12d | 0d | LABOR- SUBCONTRACTOR [90 h]; BACKFILLING QTY [372 Cum]; BOBCAT [200 h]; PLATE COMPACTOR [200 h]; TRUCK [40 h]; EQUIP OPERATORS [440 h] | 4,099 | 20 | 1AP4TCFR20 | DUKHCON1AP4TCGL5305 | DUKHCONI1AZ4TCGL5305 | DH | CON | 1AF | Z4 | FR | TC | B03 | B03-D05 | RES-1A |
| DUKHCONI1AZ4TCGL5310 |  | Connection & Installation | 20d | 2014-08-10 | 2014-09-01 | DUKHCONI1AZ3TCGL5310, DUKHCONI1AZ4TCGL5305 SS+10d | 27d | 23d | LABOR- SUBCONTRACTOR [42 h]; ELECTRICIANS SK [302.4 h]; TELEPHONE SOCKETS QTY [27 ea] | 50,979.6 | 25 | 1AP4TCFR25 | DUKHCON1AP4TCGL5310 | DUKHCONI1AZ4TCGL5310 | DH | CON | 1AF | Z4 | FR | TC | B03 | B03-D05 | RES-1A |
|  | 50 | **BOUNDARY WALL** |  | 2014-07-14 | 2014-10-13 |  |  |  |  |  |  |  |  |  |  |  |  |  |  |  |  |  |  |
| DUKHCONI1AZ4BWGL5315 |  | Construction of Boundary Wall (Ht-3m) | 25d | 2014-07-14 | 2014-08-14 | DUKHCONI1AZ3BWGL5315, DUKHCONI1AZ4STGL5250 SS+10d | 28d | 0d | STEEL FIXERS SK [128 h]; LABOR- SUBCONTRACTOR [96 h]; BOUNDARY WIRE MESH QTY [304 Sqm] | 459,539.2 | 10 | 1AP4BWFR10 | DUKHCON1AP4ARGL5315 | DUKHCONI1AZ4BWGL5315 | DH | CON | 1AF | Z4 | FR | BW | B03 | B03-D11 | RES-1A |
| DUKHCONI1AZ4BWGL5320 |  | Install.Steel Gate,Entance Barrier (3m Wall) | 25d | 2014-07-30 | 2014-08-31 | DUKHCONI1AZ4BWGL5315 SS+14d | 28d | 0d | LABOR- SUBCONTRACTOR [12 h]; GATE QTY [2 ea]; GATE ERECTOR SK [16 h] | 5,993 | 15 | 1AP4BWFR15 | DUKHCON1AP4ARGL5320 | DUKHCONI1AZ4BWGL5320 | DH | CON | 1AF | Z4 | FR | BW | B03 | B03-D11 | RES-1A |
| DUKHCONI1AZ4BWGL5325 |  | Const. of Villa Front Boundary Wall (Ht-2m) | 25d | 2014-09-01 | 2014-09-29 | DUKHCONI1AZ4BWGL5320, DUKHCONI1AZ4BWGL5315 SS+5d, DUKHCONI1AZ3BWGL5325 | 28d | 0d | STEEL FIXERS SK [96 h]; LABOR- SUBCONTRACTOR [72 h]; BOUNDARY WIRE MESH QTY [231 Sqm] | 414,398.4 | 20 | 1AP4BWFR20 | DUKHCON1AP4ARGL5325 | DUKHCONI1AZ4BWGL5325 | DH | CON | 1AF | Z4 | FR | BW | B03 | B03-D11 | RES-1A |
| DUKHCONI1AZ4BWGL5330 |  | Const. of Blockwork fence Wall (Ht-1.85m) | 25d | 2014-09-13 | 2014-10-13 | DUKHCONI1AZ3BWGL5330, DUKHCONI1AZ4BWGL5325 SS+10d | 39d | 18d | STEEL FIXERS SK [88 h]; LABOR- SUBCONTRACTOR [66 h]; BOUNDARY WIRE MESH QTY [206 Sqm] | 293,348.6 | 30 | 1AP4BWFR30 | DUKHCON1AP4ARGL5330 | DUKHCONI1AZ4BWGL5330 | DH | CON | 1AF | Z4 | FR | BW | B03 | B03-D11 | RES-1A |
|  | 55 | **ROAD WORKS** |  | 2014-08-21 | 2014-11-06 |  |  |  |  |  |  |  |  |  |  |  |  |  |  |  |  |  |  |
| DUKHCONI1AZ4RWGL6000 |  | Excavation & Earth Filling | 10d | 2014-08-21 | 2014-09-01 | DUKHCONI1AZ4SAGL5150, DUKHCONI1AZ2FFGL5210, DUKHCONI1AZ4FFGL5200, DUKHCONI1AZ3RWGL6015 SS+10d, DUKHCONI1AZ4ELGL5225, DUKHCONI1AZ4TCGL5305, DUKHCONI1AZ4FFGL5210, DUKHCONI1AZ4STGL5250 | -12d | 0d | LABOR- SUBCONTRACTOR [732 h]; EXCAVATION QTY [1162 Cum]; BACKFILLING QTY [127 Cum]; LOADER [125 h]; POCLAIN [250 h]; TRUCK [125 h]; EQUIP OPERATORS [500 h] | 107,162 | 10 | 1AP4RDFR10 | DUKHCON1AP4RDGL6000 | DUKHCONI1AZ4RWGL6000 | DH | CON | 1AF | Z4 | FR | RD | B03 | B03-D08 | RES-1A |
| DUKHCONI1AZ4RWGL6005 |  | Laying of Sub Grade | 25d | 2014-09-02 | 2014-09-30 | DUKHCONI1AZ4RWGL6000 | -12d | 0d | LABOR- SUBCONTRACTOR [24 h]; SUBGRADE QTY [394 Sqm] | 120,812.8 | 15 | 1AP4RDFR15 | DUKHCON1AP4RDGL6005 | DUKHCONI1AZ4RWGL6005 | DH | CON | 1AF | Z4 | FR | RD | B03 | B03-D08 | RES-1A |
| DUKHCONI1AZ4RWGL6010 |  | Laying of Precast Kerbs | 25d | 2014-09-14 | 2014-10-14 | DUKHCONI1AZ4RWGL6005 SS+10d | -12d | 0d | LABOR- SUBCONTRACTOR [24 h]; GRANULAR SUBBASE QTY [340 Sqm] | 110,764.6 | 20 | 1AP4RDFR20 | DUKHCON1AP4RDGL6010 | DUKHCONI1AZ4RWGL6010 | DH | CON | 1AF | Z4 | FR | RD | B03 | B03-D08 | RES-1A |
| DUKHCONI1AZ4RWGL6015 |  | Laying of Granular Sub Base Coarse | 20d | 2014-09-25 | 2014-10-20 | DUKHCONI1AZ4RWGL6010 SS+10d | -12d | 0d | KERBSTONE MASON SK [776 h]; LABOR- SUBCONTRACTOR [438 h]; KERBSTONE QTY [485 lm]; EDGE STONE QTY [485 Sqm]; HEAVY ROLLER [400 h]; LOADER [100 h]; TRUCK [100 h]; EQUIP OPERATORS [600 h] | 60,406.4 | 25 | 1AP4RDFR25 | DUKHCON1AP4RDGL6015 | DUKHCONI1AZ4RWGL6015 | DH | CON | 1AF | Z4 | FR | RD | B03 | B03-D08 | RES-1A |
| DUKHCONI1AZ4RWGL6020 |  | Laying of Road Base Asphalt Concrete | 5d | 2014-10-21 | 2014-10-26 | DUKHCONI1AZ4RWGL6015 | 3d | 0d | LABOR- SUBCONTRACTOR [24 h]; ASPHALT CONCRETE QTY [1967 Cum]; ASPHALT PAVER MACHINE [50 h]; HAND ROLLER [100 h]; EQUIP OPERATORS [150 h] | 153,671 | 30 | 1AP4RDFR30 | DUKHCON1AP4RDGL6020 | DUKHCONI1AZ4RWGL6020 | DH | CON | 1AF | Z4 | FR | RD | B03 | B03-D08 | RES-1A |
| DUKHCONI1AZ4RWGL6025 |  | Laying of Asphalt Wearing Coarse | 5d | 2014-10-27 | 2014-11-01 | DUKHCONI1AZ4RWGL6020, DUKHCONI1AZ3RWGL6025 | 17d | 0d | LABOR- SUBCONTRACTOR [24 h]; ASPHALT WEARING COURSE QTY [1967 Sqm]; ASPHALT PAVER MACHINE [50 h]; HAND ROLLER [100 h]; EQUIP OPERATORS [150 h] | 80,057 | 35 | 1AP4RDFR35 | DUKHCON1AP4RDGL6025 | DUKHCONI1AZ4RWGL6025 | DH | CON | 1AF | Z4 | FR | RD | B03 | B03-D08 | RES-1A |
| DUKHCONI1AZ4RWGL6030 |  | Traffic Signage & Road Marking | 5d | 2014-11-02 | 2014-11-06 | DUKHCONI1AZ3RWGL6030, DUKHCONI1AZ4RWGL6025 | 18d | 15d | LABOR- SUBCONTRACTOR [366 h]; STEEL ERECTOR SK [448 h]; TRAFFIC SIGN QTY [279 ea]; ROAD MARKING QTY [100 lm]; ASPHALT SK [160 h] | 83,033.6 | 40 | 1AP4RDFR40 | DUKHCON1AP4RDGL6030 | DUKHCONI1AZ4RWGL6030 | DH | CON | 1AF | Z4 | FR | RD | B03 | B03-D08 | RES-1A |

Notes:
- DUKHCONI1AZ4IRGL5265: Expenses: I1A-Water supply system 9606.6
- DUKHCONI1AZ4IRGL5270: Expenses: I1A-Water supply system 15116
- DUKHCONI1AZ4IRGL5275: Expenses: I1A-Water supply system 2168.8
- DUKHCONI1AZ4IRGL5280: Expenses: I1A-Water supply system 2401.6
- DUKHCONI1AZ4IRGL5285: Expenses: I1A-Water supply system 9988.6
- DUKHCONI1AZ4IRGL5290: Expenses: I1A-Water supply system 26800.6
- DUKHCONI1AZ4TCGL5295: Expenses: I1A-Telecommunication 9563.6
- DUKHCONI1AZ4TCGL5300: Expenses: I1A-Telecommunication 3124
- DUKHCONI1AZ4TCGL5305: Expenses: I1A-Telecommunication 4099
- DUKHCONI1AZ4TCGL5310: Expenses: I1A-Telecommunication 50979.6
- DUKHCONI1AZ4BWGL5315: Expenses: I1A-Hard and soft landscaping 459539
- DUKHCONI1AZ4BWGL5320: Expenses: I1A-Hard and soft landscaping 5993
- DUKHCONI1AZ4BWGL5325: Expenses: I1A-Hard and soft landscaping 414398
- DUKHCONI1AZ4BWGL5330: Expenses: I1A-Hard and soft landscaping 293349
- DUKHCONI1AZ4RWGL6000: Expenses: I1A-Road work 107162
- DUKHCONI1AZ4RWGL6005: Expenses: I1A-Road work 120813
- DUKHCONI1AZ4RWGL6010: Expenses: I1A-Road work 110765
- DUKHCONI1AZ4RWGL6015: Expenses: I1A-Road work 60406.4
- DUKHCONI1AZ4RWGL6020: Expenses: I1A-Road work 153671
- DUKHCONI1AZ4RWGL6025: Expenses: I1A-Road work 80057
- DUKHCONI1AZ4RWGL6030: Expenses: I1A-Road work 83033.6

| ID | WBS | Activity | Duration | Start | Finish | Predecessors | Total float | Free float | Resources | Cost | CODE | P3 ACTID | P6 ID (old) | NP61D | PROJECT | PHASES | PACKAGE | PART | ELEMENTS | STEP | BILL NOS | BILL DIVISION | RES PACK |
| --- | --- | --- | --- | --- | --- | --- | --- | --- | --- | --- | --- | --- | --- | --- | --- | --- | --- | --- | --- | --- | --- | --- | --- |
|  | 60 | **PARKING SHED** |  | 2014-10-01 | 2014-11-30 |  |  |  |  |  |  |  |  |  |  |  |  |  |  |  |  |  |  |
| DUKHCONI1AZ4PSGL7000 |  | Excavation | 15d | 2014-10-01 | 2014-10-20 | DUKHCONI1AZ4RWGL6015 SS+5d, DUKHCONI1AZ3PSGL7005 | 8d | 5d | LABOR- SUBCONTRACTOR [72 h]; EXCAVATION QTY [112 Cum]; LOADER [19 h]; POCLAIN [38 h]; TRUCK [19 h]; EQUIP OPERATORS [76 h] | 33,089.6 | 10 | 1AP4PSFR10 | DUKHCON1AP4PSGL7000 | DUKHCONI1AZ4PSGL7000 | DH | CON | 1AF | Z4 | FR | PS | B03 | B03-D08 | RES-1A |
| DUKHCONI1AZ4PSGL7005 |  | Foundation casting | 15d | 2014-10-15 | 2014-11-01 | DUKHCONI1AZ4PSGL7000 SS+5d, DUKHCONI1AZ4PSGL7000 FF+5d, DUKHCONI1AZ4RWGL6015 FF+10d | 3d | 0d | STEEL FIXERS SK [72 h]; CARPENTERS SK [48 h]; CONCRETE MASON SK [24 h]; LABOR- SUBCONTRACTOR [108 h]; FORMWORK QTY [23 Sqm]; CONCRETE QTY [12 Cum]; REINFORCEMENT BARS QTY [896 kg] | 33,089.6 | 15 | 1AP4PSFR15 | DUKHCON1AP4PSGL7005 | DUKHCONI1AZ4PSGL7005 | DH | CON | 1AF | Z4 | FR | PS | B03 | B03-D08 | RES-1A |
| DUKHCONI1AZ4PSGL7010 |  | Column, Frame& Fabrics Erection | 25d | 2014-10-27 | 2014-11-24 | DUKHCONI1AZ4PSGL7005 SS+10d, DUKHCONI1AZ4BWGL5330 FF, DUKHCONI1AZ4RWGL6020, DUKHCONI1AZ4RWGL6030 FF, DUKHCONI1AZ3PSGL7010 | 3d | 0d | LABOR- SUBCONTRACTOR [102 h]; STEEL ERECTOR SK [184 h]; PARKING SHED QTY [560 ea] | 165,447.6 | 20 | 1AP4PSFR20 | DUKHCON1AP4PSGL7010 | DUKHCONI1AZ4PSGL7010 | DH | CON | 1AF | Z4 | FR | PS | B03 | B03-D08 | RES-1A |
| DUKHCONI1AZ4PSGL7015 |  | Electrical Works-Parking Shed | 25d | 2014-11-02 | 2014-11-30 | DUKHCONI1AZ4PSGL7010 SS+5d, DUKHCONI1AZ3PSGL7015, DUKHCONI1AZ4STGL5260 | 3d | 17d | LABOR- SUBCONTRACTOR [18 h]; ELECTRICIANS SK [33.6 h]; LIGHTS QTY [15 ea] | 16,545 | 25 | 1AP4PSFR25 | DUKHCON1AP4PSGL7015 | DUKHCONI1AZ4PSGL7015 | DH | CON | 1AF | Z4 | FR | PS | B03 | B03-D08 | RES-1A |
|  | 65 | **HARD LANDSCAPING** |  | 2014-08-21 | 2014-11-12 |  |  |  |  |  |  |  |  |  |  |  |  |  |  |  |  |  |  |
| DUKHCONI1AZ4HDGL7020 |  | Precast Concrete Kerbs works | 20d | 2014-08-21 | 2014-09-13 | DUKHCONI1AZ4RWGL6000 SS | 7d | 0d | KERBSTONE MASON SK [752 h]; LABOR- SUBCONTRACTOR [426 h]; KERBSTONE QTY [940 lm] | 112,518 | 10 | 1AP4HDFR10 | DUKHCON1AP4HDGL7020 | DUKHCONI1AZ4HDGL7020 | DH | CON | 1AF | Z4 | FR | HD | B03 | B03-D11 | RES-1A |
| DUKHCONI1AZ4HDGL7025 |  | Interlocking for Walkways | 25d | 2014-09-02 | 2014-09-30 | DUKHCONI1AZ4HDGL7020 SS+10d | 7d | 0d | INTERLOCK MASON SK [584 h]; LABOR- SUBCONTRACTOR [222 h]; INTERLOCK QTY [728 Sqm] | 88,756 | 15 | 1AP4HDFR15 | DUKHCON1AP4HDGL7025 | DUKHCONI1AZ4HDGL7025 | DH | CON | 1AF | Z4 | FR | HD | B03 | B03-D11 | RES-1A |
| DUKHCONI1AZ4HDGL7030 |  | Construction of Retaining wall | 25d | 2014-09-14 | 2014-10-14 | DUKHCONI1AZ4HDGL7025 SS+10d, DUKHCONI1AZ3HDGL7030 | 7d | 0d | STEEL FIXERS SK [120 h]; CARPENTERS SK [272 h]; CONCRETE MASON SK [40 h]; LABOR- SUBCONTRACTOR [324 h]; EXCAVATION QTY [14 Cum]; REINFORCEMENT BARS QTY [1445 kg]; FORMWORK QTY [134 Sqm]; CONCRETE QTY [17 Cum] | 22,937.8 | 20 | 1AP4HDFR20 | DUKHCON1AP4HDGL7030 | DUKHCONI1AZ4HDGL7030 | DH | CON | 1AF | Z4 | FR | HD | B03 | B03-D11 | RES-1A |
| DUKHCONI1AZ4HDGL7035 |  | Construction of Wash Stone Boulders | 25d | 2014-09-14 | 2014-10-14 | DUKHCONI1AZ3HDGL7035, DUKHCONI1AZ4HDGL7030 SS | 7d | 0d | TILE MASON SK [64 h]; LABOR- SUBCONTRACTOR [24 h]; STONE BOULDERS QTY [32 Sqm] | 19,037 | 25 | 1AP4HDFR25 | DUKHCON1AP4HDGL7035 | DUKHCONI1AZ4HDGL7035 | DH | CON | 1AF | Z4 | FR | HD | B03 | B03-D11 | RES-1A |
| DUKHCONI1AZ4HDGL7040 |  | Construction of Speed Humps | 10d | 2014-11-02 | 2014-11-12 | DUKHCONI1AZ4HDGL7035 SS, DUKHCONI1AZ4RWGL6025, DUKHCONI1AZ3HDGL7040 | 17d | 32d | CONCRETE MASON SK [8 h]; LABOR- SUBCONTRACTOR [6 h]; SPEED HUMPS [3 ea] | 3,420 | 30 | 1AP4HDFR30 | DUKHCON1AP4HDGL7040 | DUKHCONI1AZ4HDGL7040 | DH | CON | 1AF | Z4 | FR | HD | B03 | B03-D11 | RES-1A |
|  | 70 | **SOFT LANDSCAPING** |  | 2014-09-25 | 2014-11-18 |  |  |  |  |  |  |  |  |  |  |  |  |  |  |  |  |  |  |
| DUKHCONI1AZ4SLGL7200 |  | Excavation | 25d | 2014-09-25 | 2014-10-26 | DUKHCONI1AZ4IRGL5290 SS, DUKHCONI1AZ4HDGL7035 SS+10d, DUKHCONI1AZ3SLGL7205 | 7d | 0d | LABOR- SUBCONTRACTOR [246 h]; EXCAVATION QTY [407 Cum]; LOADER [63 h]; POCLAIN [125 h]; TRUCK [63 h]; EQUIP OPERATORS [251 h] | 24,965.8 | 10 | 1AP4SLFR10 | DUKHCON1AP4SLGL7200 | DUKHCONI1AZ4SLGL7200 | DH | CON | 1AF | Z4 | FR | SL | B03 | B03-D11 | RES-1A |
| DUKHCONI1AZ4SLGL7205 |  | Sweet Soil Laying | 25d | 2014-10-07 | 2014-11-06 | DUKHCONI1AZ4SLGL7200 SS+10d | 7d | 0d | LABOR- SUBCONTRACTOR [1020 h]; SWEET SOIL QTY [2034 Cum]; LANDSCAPING SK [1360 h] | 141,473.2 | 15 | 1AP4SLFR15 | DUKHCON1AP4SLGL7205 | DUKHCONI1AZ4SLGL7205 | DH | CON | 1AF | Z4 | FR | SL | B03 | B03-D11 | RES-1A |
| DUKHCONI1AZ4SLGL7210 |  | Plantation works | 25d | 2014-10-21 | 2014-11-18 | DUKHCONI1AZ3SLGL7210, DUKHCONI1AZ4SLGL7205 SS+10d | 17d | 18d | LABOR- SUBCONTRACTOR [252 h]; PLAM TREES QTY [16 ea]; LANDSCAPING SK [336 h]; GROUND COVER QTY [1960 Sqm]; SHRUBS QTY [147 ea] | 112,789.6 | 20 | 1AP4SLFR20 | DUKHCON1AP4SLGL7210 | DUKHCONI1AZ4SLGL7210 | DH | CON | 1AF | Z4 | FR | SL | B03 | B03-D11 | RES-1A |
|  | 30 | **ZONE - 5** |  | 2014-05-06 | 2015-01-19 |  |  |  |  |  |  |  |  |  |  |  |  |  |  |  |  |  |  |
|  | 10 | **INFRASTRUCTURE WORKS** |  | 2014-05-06 | 2015-01-19 |  |  |  |  |  |  |  |  |  |  |  |  |  |  |  |  |  |  |
|  | 10 | **DRAINAGE LINES** |  | 2014-05-06 | 2014-06-24 |  |  |  |  |  |  |  |  |  |  |  |  |  |  |  |  |  |  |
| DUKHCONI1AZ5DRGL5115 |  | Excavation for Drainage line | 25d | 2014-05-06 | 2014-06-03 | DUKHCONP1AZ8STFF2030 SS, DUKHCONI1AZ4DRGL5130 | -15d | 0d | LABOR- SUBCONTRACTOR [180 h]; EXCAVATION QTY [296 Cum]; LOADER [63 h]; POCLAIN [125 h]; TRUCK [63 h]; EQUIP OPERATORS [251 h] | 13,573.2 | 10 | 1AP5DRFR10 | DUKHCON1AP5DRGL5115 | DUKHCONI1AZ5DRGL5115 | DH | CON | 1AF | Z5 | FR | DR | B03 | B03-D06 | RES-1A |
| DUKHCONI1AZ5DRGL5120 |  | Laying of Drainage line | 25d | 2014-05-13 | 2014-06-10 | DUKHCONI1AZ5DRGL5115 SS+6d, DUKHCONI1AZ5DRGL5115 FF+6d | -15d | 0d | LABOR- SUBCONTRACTOR [60 h]; MECHANICALS SK [216 h]; DRAINAGE PIPES QTY [386 lm] | 40,093 | 15 | 1AP5DRFR15 | DUKHCON1AP5DRGL5120 | DUKHCONI1AZ5DRGL5120 | DH | CON | 1AF | Z5 | FR | DR | B03 | B03-D06 | RES-1A |
| DUKHCONI1AZ5DRGL5125 |  | Testing of Drainage line | 25d | 2014-05-21 | 2014-06-18 | DUKHCONI1AZ5DRGL5120 SS+7d, DUKHCONI1AZ5DRGL5120 FF+7d | -15d | 0d | LABOR- SUBCONTRACTOR [48 h]; MECHANICALS SK [86.4 h]; DRAINAGE PIPES TEST QTY [386 lm] | 4,454.6 | 20 | 1AP5DRFR20 | DUKHCON1AP5DRGL5125 | DUKHCONI1AZ5DRGL5125 | DH | CON | 1AF | Z5 | FR | DR | B03 | B03-D06 | RES-1A |
| DUKHCONI1AZ5DRGL5130 |  | Backfilling Drainage line | 15d | 2014-06-08 | 2014-06-24 | DUKHCONI1AZ5DRGL5125 FF+5d, DUKHCONI1AZ5DRGL5125 SS+10d | -15d | 0d | LABOR- SUBCONTRACTOR [72 h]; BACKFILLING QTY [296 Cum]; BOBCAT [150 h]; PLATE COMPACTOR [150 h]; TRUCK [30 h]; EQUIP OPERATORS [330 h] | 14,840.6 | 25 | 1AP5DRFR25 | DUKHCON1AP5DRGL5130 | DUKHCONI1AZ5DRGL5130 | DH | CON | 1AF | Z5 | FR | DR | B03 | B03-D06 | RES-1A |
|  | 15 | **MANHOLES & SOAKAWAY** |  | 2014-06-05 | 2014-08-28 |  |  |  |  |  |  |  |  |  |  |  |  |  |  |  |  |  |  |
| DUKHCONI1AZ5SAGL5140 |  | Construction of soakaways | 25d | 2014-06-05 | 2014-07-03 | DUKHCONI1AZ5DRGL5130 FF+8d, DUKHCONI1AZ5DRGL5115 | -13d | 0d | MANHOLES SK [112 h]; LABOR- SUBCONTRACTOR [42 h]; SOAKPIT QTY [14 ea] | 183,740.8 | 15 | 1AP5SAFR15 | DUKHCON1AP5SAGL5140 | DUKHCONI1AZ5SAGL5140 | DH | CON | 1AF | Z5 | FR | SA | B03 | B03-D06 | RES-1A |
| DUKHCONI1AZ5SAGL5135 |  | Construction of manholes Drainage | 25d | 2014-06-08 | 2014-07-06 | DUKHCONI1AZ5DRGL5130 FF+10d, DUKHCONI1AZ4SAGL5135, DUKHCONI1AZ5DRGL5115 | 44d | 23d | LABOR- SUBCONTRACTOR [6 h]; EXCAVATION QTY [8 Cum] | 38,935 | 10 | 1AP5SAFR10 | DUKHCON1AP5SAGL5135 | DUKHCONI1AZ5SAGL5135 | DH | CON | 1AF | Z5 | FR | SA | B03 | B03-D06 | RES-1A |
| DUKHCONI1AZ5SAGL5145 |  | Construction of Road gullies | 25d | 2014-07-05 | 2014-08-05 | DUKHCONI1AZ4SAGL5145, DUKHCONI1AZ5SAGL5140 | -13d | 0d | MANHOLES SK [128 h]; LABOR- SUBCONTRACTOR [48 h]; ROAD GULLY QTY [16 ea] | 28,743.2 | 20 | 1AP5SAFR20 | DUKHCON1AP5SAGL5145 | DUKHCONI1AZ5SAGL5145 | DH | CON | 1AF | Z5 | FR | SA | B03 | B03-D06 | RES-1A |
| DUKHCONI1AZ5SAGL5150 |  | Connection with existing sewer manhole | 20d | 2014-08-06 | 2014-08-28 | DUKHCONI1AZ5SAGL5135, DUKHCONI1AZ5SAGL5145 | 21d | 36d | LABOR- SUBCONTRACTOR [6 h]; BACKFILLING QTY [9 Cum] | 2,270.6 | 25 | 1AP5SAFR25 | DUKHCON1AP5SAGL5150 | DUKHCONI1AZ5SAGL5150 | DH | CON | 1AF | Z5 | FR | SA | B03 | B03-D06 | RES-1A |

Notes:
- DUKHCONI1AZ4PSGL7000: Expenses: I1A-Road work 33089.6
- DUKHCONI1AZ4PSGL7005: Expenses: I1A-Road work 33089.6
- DUKHCONI1AZ4PSGL7010: Expenses: I1A-Road work 165448
- DUKHCONI1AZ4PSGL7015: Expenses: I1A-Road work 16545
- DUKHCONI1AZ4HDGL7020: Expenses: I1A-Hard and soft landscaping 112518
- DUKHCONI1AZ4HDGL7025: Expenses: I1A-Hard and soft landscaping 88756
- DUKHCONI1AZ4HDGL7030: Expenses: I1A-Hard and soft landscaping 22937.8
- DUKHCONI1AZ4HDGL7035: Expenses: I1A-Hard and soft landscaping 19037
- DUKHCONI1AZ4HDGL7040: Expenses: I1A-Hard and soft landscaping 3420
- DUKHCONI1AZ4SLGL7200: Expenses: I1A-Hard and soft landscaping 24965.8
- DUKHCONI1AZ4SLGL7205: Expenses: I1A-Hard and soft landscaping 141473
- DUKHCONI1AZ4SLGL7210: Expenses: I1A-Hard and soft landscaping 112790
- DUKHCONI1AZ5DRGL5115: Expenses: I1A-Surface Water drainage and Sewerage system 13573.2
- DUKHCONI1AZ5DRGL5120: Expenses: I1A-Surface Water drainage and Sewerage system 40093
- DUKHCONI1AZ5DRGL5125: Expenses: I1A-Surface Water drainage and Sewerage system 4454.6
- DUKHCONI1AZ5DRGL5130: Expenses: I1A-Surface Water drainage and Sewerage system 14840.6
- DUKHCONI1AZ5SAGL5140: Expenses: I1A-Surface Water drainage and Sewerage system 183741
- DUKHCONI1AZ5SAGL5135: Expenses: I1A-Surface Water drainage and Sewerage system 38935
- DUKHCONI1AZ5SAGL5145: Expenses: I1A-Surface Water drainage and Sewerage system 28743.2
- DUKHCONI1AZ5SAGL5150: Expenses: I1A-Surface Water drainage and Sewerage system 2270.6

| ID | WBS | Activity | Duration | Start | Finish | Predecessors | Total float | Free float | Resources | Cost | CODE | P3 ACTID | P6 ID (old) | NP61D | PROJECT | PHASES | PACKAGE | PART | ELEMENTS | STEP | BILL NOS | BILL DIVISION | RES PACK |
| --- | --- | --- | --- | --- | --- | --- | --- | --- | --- | --- | --- | --- | --- | --- | --- | --- | --- | --- | --- | --- | --- | --- | --- |
|  | 20 | **WATER SUPPLY SYSTEM** |  | 2014-06-19 | 2014-09-06 |  |  |  |  |  |  |  |  |  |  |  |  |  |  |  |  |  |  |
| DUKHCONI1AZ5WSGL5155 |  | Excavation for water line | 25d | 2014-06-19 | 2014-07-17 | DUKHCONI1AZ4WSGL5170, DUKHCONI1AZ5DRGL5130 SS+10d | -15d | 0d | LABOR- SUBCONTRACTOR [150 h]; EXCAVATION QTY [249 Cum]; LOADER [63 h]; POCLAIN [125 h]; TRUCK [63 h]; EQUIP OPERATORS [251 h] | 9,752.4 | 10 | 1AP5WSFR10 | DUKHCON1AP5WSGL5155 | DUKHCONI1AZ5WSGL5155 | DH | CON | 1AF | Z5 | FR | WS | B03 | B03-D07 | RES-1A |
| DUKHCONI1AZ5WSGL5160 |  | Laying of water line | 25d | 2014-06-25 | 2014-07-23 | DUKHCONI1AZ5WSGL5155 SS+5d | -15d | 0d | LABOR- SUBCONTRACTOR [102 h]; MECHANICALS SK [183.6 h]; WATER PIPES QTY [251 lm] | 42,577.6 | 15 | 1AP5WSFR15 | DUKHCON1AP5WSGL5160 | DUKHCONI1AZ5WSGL5160 | DH | CON | 1AF | Z5 | FR | WS | B03 | B03-D07 | RES-1A |
| DUKHCONI1AZ5WSGL5165 |  | Testing of potable water line | 25d | 2014-07-01 | 2014-07-29 | DUKHCONI1AZ5WSGL5160 SS+5d | -15d | 0d | LABOR- SUBCONTRACTOR [30 h]; MECHANICALS SK [54 h]; DRAINAGE PIPES TEST QTY [251 lm] | 3,433 | 20 | 1AP5WSFR20 | DUKHCON1AP5WSGL5165 | DUKHCONI1AZ5WSGL5165 | DH | CON | 1AF | Z5 | FR | WS | B03 | B03-D07 | RES-1A |
| DUKHCONI1AZ5WSGL5170 |  | Backfilling potable water line | 25d | 2014-07-07 | 2014-08-07 | DUKHCONI1AZ5WSGL5165 SS+5d, DUKHCONI1AZ5SAGL5145 FF | -15d | 0d | LABOR- SUBCONTRACTOR [60 h]; BACKFILLING QTY [251 Cum]; BOBCAT [125 h]; PLATE COMPACTOR [125 h]; TRUCK [25 h]; EQUIP OPERATORS [275 h] | 2,438 | 25 | 1AP5WSFR25 | DUKHCON1AP5WSGL5170 | DUKHCONI1AZ5WSGL5170 | DH | CON | 1AF | Z5 | FR | WS | B03 | B03-D07 | RES-1A |
| DUKHCONI1AZ5WSGL5175 |  | Construction of valve chambers & Thrust Blocks | 25d | 2014-07-13 | 2014-08-13 | DUKHCONI1AZ5WSGL5155 SS+10d, DUKHCONI1AZ5WSGL5170 FF+5d, DUKHCONI1AZ4WSGL5175 | 14d | 0d | MANHOLES SK [96 h]; LABOR- SUBCONTRACTOR [36 h]; MANHOLES QTY [12 ea] | 2,838.6 | 30 | 1AP5WSFR30 | DUKHCON1AP5WSGL5175 | DUKHCONI1AZ5WSGL5175 | DH | CON | 1AF | Z5 | FR | WS | B03 | B03-D07 | RES-1A |
| DUKHCONI1AZ5WSGL5180 |  | Installation of meter ,Accessories & Connection | 20d | 2014-08-14 | 2014-09-06 | DUKHCONI1AZ5WSGL5175, DUKHCONI1AZ4WSGL5180 | 14d | 7d | LABOR- SUBCONTRACTOR [18 h]; MECHANICALS SK [32.4 h]; CHAMPER QTY [10 lm] | 7,877 | 35 | 1AP5WSFR35 | DUKHCON1AP5WSGL5180 | DUKHCONI1AZ5WSGL5180 | DH | CON | 1AF | Z5 | FR | WS | B03 | B03-D07 | RES-1A |
|  | 25 | **FIREFIGHTING LINES** |  | 2014-07-13 | 2014-09-14 |  |  |  |  |  |  |  |  |  |  |  |  |  |  |  |  |  |  |
| DUKHCONI1AZ5FFGL5185 |  | Excavation for firefighting line | 25d | 2014-07-13 | 2014-08-13 | DUKHCONI1AZ4FFGL5200, DUKHCONI1AZ5WSGL5170 SS+5d | -15d | 0d | LABOR- SUBCONTRACTOR [132 h]; EXCAVATION QTY [215 Cum]; LOADER [38 h]; POCLAIN [75 h]; TRUCK [38 h]; EQUIP OPERATORS [151 h] | 24,149 | 10 | 1AP5FFFR10 | DUKHCON1AP5FFGL5185 | DUKHCONI1AZ5FFGL5185 | DH | CON | 1AF | Z5 | FR | FF | B03 | B03-D07 | RES-1A |
| DUKHCONI1AZ5FFGL5190 |  | Laying of firefighting line | 25d | 2014-07-21 | 2014-08-21 | DUKHCONI1AZ5FFGL5185 SS+7d | -15d | 0d | LABOR- SUBCONTRACTOR [66 h]; MECHANICALS SK [237.6 h]; PLUMB PIPES QTY [215 lm] | 31,835.6 | 15 | 1AP5FFFR15 | DUKHCON1AP5FFGL5190 | DUKHCONI1AZ5FFGL5190 | DH | CON | 1AF | Z5 | FR | FF | B03 | B03-D07 | RES-1A |
| DUKHCONI1AZ5FFGL5195 |  | Testing of firefighting line | 25d | 2014-07-27 | 2014-08-27 | DUKHCONI1AZ5FFGL5190 SS+5d | -15d | 0d | LABOR- SUBCONTRACTOR [30 h]; MECHANICALS SK [54 h]; DRAINAGE PIPES TEST QTY [215 lm] | 3,034.2 | 20 | 1AP5FFFR20 | DUKHCON1AP5FFGL5195 | DUKHCONI1AZ5FFGL5195 | DH | CON | 1AF | Z5 | FR | FF | B03 | B03-D07 | RES-1A |
| DUKHCONI1AZ5FFGL5200 |  | Backfilling firefighting line | 25d | 2014-08-05 | 2014-09-02 | DUKHCONI1AZ5FFGL5195 SS+5d | -15d | 0d | LABOR- SUBCONTRACTOR [54 h]; BACKFILLING QTY [215 Cum]; BOBCAT [125 h]; PLATE COMPACTOR [125 h]; TRUCK [25 h]; EQUIP OPERATORS [275 h] | 6,037 | 25 | 1AP5FFFR25 | DUKHCON1AP5FFGL5200 | DUKHCONI1AZ5FFGL5200 | DH | CON | 1AF | Z5 | FR | FF | B03 | B03-D07 | RES-1A |
| DUKHCONI1AZ5FFGL5205 |  | Construction of valve chambers & Thrust Blocks | 25d | 2014-08-11 | 2014-09-08 | DUKHCONI1AZ4FFGL5205, DUKHCONI1AZ5FFGL5200 FF+5d, DUKHCONI1AZ5FFGL5185 SS+10d | 7d | 0d | STEEL FIXERS SK [40 h]; CARPENTERS SK [56 h]; CONCRETE MASON SK [16 h]; LABOR- SUBCONTRACTOR [90 h]; EXCAVATION QTY [13 Cum]; REINFORCEMENT BARS QTY [502 kg]; FORMWORK QTY [27 Sqm]; CONCRETE QTY [8 Cum] | 3,293.2 | 30 | 1AP5FFFR30 | DUKHCON1AP5FFGL5205 | DUKHCONI1AZ5FFGL5205 | DH | CON | 1AF | Z5 | FR | FF | B03 | B03-D07 | RES-1A |
| DUKHCONI1AZ5FFGL5210 |  | Connection with existing Firewater System | 25d | 2014-08-17 | 2014-09-14 | DUKHCONI1AZ5FFGL5205 FF+5d, DUKHCONI1AZ5WSGL5180 FF, DUKHCONI1AZ4FFGL5210 | 7d | 22d | LABOR- SUBCONTRACTOR [48 h]; MECHANICALS SK [86.4 h]; FIRE EXTINGUISHER QTY [16 ea] | 11,721.4 | 35 | 1AP5FFFR35 | DUKHCON1AP5FFGL5210 | DUKHCONI1AZ5FFGL5210 | DH | CON | 1AF | Z5 | FR | FF | B03 | B03-D07 | RES-1A |
|  | 30 | **ELECTRICAL LINES** |  | 2014-08-13 | 2014-10-06 |  |  |  |  |  |  |  |  |  |  |  |  |  |  |  |  |  |  |
| DUKHCONI1AZ5ELGL5215 |  | Excavation Cable Trenches & Duct Banks | 25d | 2014-08-13 | 2014-09-10 | DUKHCONI1AZ4ELGL5225, DUKHCONI1AZ5FFGL5200 SS+7d | -15d | 0d | LABOR- SUBCONTRACTOR [774 h]; EXCAVATION QTY [1285 Cum]; LOADER [150 h]; POCLAIN [300 h]; TRUCK [150 h]; EQUIP OPERATORS [600 h] | 14,248.6 | 10 | 1AP5ECFR10 | DUKHCON1AP5ELGL5215 | DUKHCONI1AZ5ELGL5215 | DH | CON | 1AF | Z5 | FR | EC | B03 | B03-D04 | RES-1A |
| DUKHCONI1AZ5ELGL5220 |  | Laying of electrical cables | 25d | 2014-08-19 | 2014-09-16 | DUKHCONI1AZ5ELGL5215 SS+5d | -2d | 0d | LABOR- SUBCONTRACTOR [390 h]; ELECTRICIANS SK [1444.8 h]; CABLE QTY [1285 lm] | 689,477.4 | 15 | 1AP5ECFR15 | DUKHCON1AP5ELGL5220 | DUKHCONI1AZ5ELGL5220 | DH | CON | 1AF | Z5 | FR | EC | B03 | B03-D04 | RES-1A |
| DUKHCONI1AZ5ELGL5225 |  | Backfilling Electrical trench | 25d | 2014-08-27 | 2014-09-24 | DUKHCONI1AZ5ELGL5220 SS+7d, DUKHCONI1AZ5ELGL5215 FF+7d | -2d | 0d | LABOR- SUBCONTRACTOR [312 h]; BACKFILLING QTY [1285 Cum]; BOBCAT [250 h]; PLATE COMPACTOR [250 h]; TRUCK [50 h]; EQUIP OPERATORS [550 h] | 6,105.6 | 20 | 1AP5ECFR20 | DUKHCON1AP5ELGL5225 | DUKHCONI1AZ5ELGL5225 | DH | CON | 1AF | Z5 | FR | EC | B03 | B03-D04 | RES-1A |
| DUKHCONI1AZ5ELGL5230 |  | Construction of Submain Board & Feeder Pillar | 25d | 2014-09-08 | 2014-10-06 | DUKHCONI1AZ5ELGL5225 FF+10d, DUKHCONI1AZ4ELGL5230, DUKHCONI1AZ5ELGL5225 SS+10d | 17d | 0d | STEEL FIXERS SK [8 h]; CARPENTERS SK [40 h]; CONCRETE MASON SK [8 h]; LABOR- SUBCONTRACTOR [30 h]; LABOR- SUBCONTRACTOR [42 h]; REINFORCEMENT BARS QTY [21 kg]; FORMWORK QTY [17 Sqm]; CONCRETE QTY [2 Cum]; ALUMINIUM DOOR QTY [2 ea]; DOOR ERECTOR SK [8 h]; EXPANSION JOINT QTY [11 Sqm]; EXPANSION JOINT SKILLED SK [88 h] | 75,578.6 | 25 | 1AP5ECFR25 | DUKHCON1AP5ELGL5230 | DUKHCONI1AZ5ELGL5230 | DH | CON | 1AF | Z5 | FR | EC | B03 | B03-D04 | RES-1A |
|  | 35 | **STREET LIGHTING** |  | 2014-08-13 | 2014-11-06 |  |  |  |  |  |  |  |  |  |  |  |  |  |  |  |  |  |  |
| DUKHCONI1AZ5STGL5235 |  | Excavation for Street lighting | 25d | 2014-08-13 | 2014-09-10 | DUKHCONI1AZ5ELGL5215 SS, DUKHCONI1AZ4STGL5250 SS+10d | -15d | 0d | LABOR- SUBCONTRACTOR [18 h]; EXCAVATION QTY [29 Cum]; LOADER [13 h]; POCLAIN [25 h]; TRUCK [13 h]; EQUIP OPERATORS [51 h] | 2,692.2 | 10 | 1AP5STFR10 | DUKHCON1AP5STGL5235 | DUKHCONI1AZ5STGL5235 | DH | CON | 1AF | Z5 | FR | ST | B03 | B03-D09 | RES-1A |
| DUKHCONI1AZ5STGL5240 |  | Construction of Duct Banks | 25d | 2014-08-19 | 2014-09-16 | DUKHCONI1AZ5STGL5235 SS+5d | -15d | 0d | LABOR- SUBCONTRACTOR [252 h]; ELECTRICIANS SK [940.8 h]; DUCT BANK QTY [336 lm] | 89,884.6 | 15 | 1AP5STFR15 | DUKHCON1AP5STGL5240 | DUKHCONI1AZ5STGL5240 | DH | CON | 1AF | Z5 | FR | ST | B03 | B03-D09 | RES-1A |
| DUKHCONI1AZ5STGL5245 |  | Construction of Foundation | 25d | 2014-08-19 | 2014-09-16 | DUKHCONI1AZ5STGL5240 SS | -15d | 0d | MANHOLES SK [464 h]; LABOR- SUBCONTRACTOR [174 h]; COLUMN BASE QTY [29 ea] | 29,280.8 | 20 | 1AP5STFR20 | DUKHCON1AP5STGL5245 | DUKHCONI1AZ5STGL5245 | DH | CON | 1AF | Z5 | FR | ST | B03 | B03-D09 | RES-1A |
| DUKHCONI1AZ5STGL5250 |  | Backfilling Street Lighting | 25d | 2014-08-25 | 2014-09-22 | DUKHCONI1AZ5STGL5235 FF+5d, DUKHCONI1AZ5STGL5245 SS+5d | -15d | 0d | EQUIP OPERATORS [275 h]; TRUCK [25 h]; LABOR- SUBCONTRACTOR [12 h]; BACKFILLING QTY [29 Cum]; BOBCAT [125 h]; PLATE COMPACTOR [125 h] | 2,692.2 | 25 | 1AP5STFR25 | DUKHCON1AP5STGL5250 | DUKHCONI1AZ5STGL5250 | DH | CON | 1AF | Z5 | FR | ST | B03 | B03-D09 | RES-1A |
| DUKHCONI1AZ5STGL5255 |  | Installation of light Post | 25d | 2014-09-06 | 2014-10-04 | DUKHCONI1AZ5STGL5250 SS+10d, DUKHCONI1AZ4STGL5255 | 34d | 17d | LABOR- SUBCONTRACTOR [48 h]; ELECTRICIANS SK [168 h]; LIGHTPOST COLUMN QTY [29 ea] | 379,406.8 | 30 | 1AP5STFR30 | DUKHCON1AP5STGL5255 | DUKHCONI1AZ5STGL5255 | DH | CON | 1AF | Z5 | FR | ST | B03 | B03-D09 | RES-1A |
| DUKHCONI1AZ5STGL5260 |  | Electrical Works | 25d | 2014-10-07 | 2014-11-06 | DUKHCONI1AZ5STGL5255 FF+10d, DUKHCONI1AZ5STGL5255 SS+7d, DUKHCONI1AZ5ELGL5230, DUKHCONI1AZ4STGL5260 | 17d | 23d | LABOR- SUBCONTRACTOR [174 h]; ELECTRICIANS SK [649.6 h]; CABLE QTY [577 lm] | 19,485 | 35 | 1AP5STFR35 | DUKHCON1AP5STGL5260 | DUKHCONI1AZ5STGL5260 | DH | CON | 1AF | Z5 | FR | ST | B03 | B03-D09 | RES-1A |

Notes:
- DUKHCONI1AZ5WSGL5155: Expenses: I1A-Water supply system 9752.4
- DUKHCONI1AZ5WSGL5160: Expenses: I1A-Water supply system 42577.6
- DUKHCONI1AZ5WSGL5165: Expenses: I1A-Water supply system 3433
- DUKHCONI1AZ5WSGL5170: Expenses: I1A-Water supply system 2438
- DUKHCONI1AZ5WSGL5175: Expenses: I1A-Water supply system 2838.6
- DUKHCONI1AZ5WSGL5180: Expenses: I1A-Water supply system 7877
- DUKHCONI1AZ5FFGL5185: Expenses: I1A-Water supply system 24149
- DUKHCONI1AZ5FFGL5190: Expenses: I1A-Water supply system 31835.6
- DUKHCONI1AZ5FFGL5195: Expenses: I1A-Water supply system 3034.2
- DUKHCONI1AZ5FFGL5200: Expenses: I1A-Water supply system 6037
- DUKHCONI1AZ5FFGL5205: Expenses: I1A-Water supply system 3293.2
- DUKHCONI1AZ5FFGL5210: Expenses: I1A-Water supply system 11721.4
- DUKHCONI1AZ5ELGL5215: Expenses: I1A-Electrical power supply and distribution 14248.6
- DUKHCONI1AZ5ELGL5220: Expenses: I1A-Electrical power supply and distribution 689477
- DUKHCONI1AZ5ELGL5225: Expenses: I1A-Electrical power supply and distribution 6105.6
- DUKHCONI1AZ5ELGL5230: Expenses: I1A-Electrical power supply and distribution 75578.6
- DUKHCONI1AZ5STGL5235: Expenses: I1A-Street lighting 2692.2
- DUKHCONI1AZ5STGL5240: Expenses: I1A-Street lighting 89884.6
- DUKHCONI1AZ5STGL5245: Expenses: I1A-Street lighting 29280.8
- DUKHCONI1AZ5STGL5250: Expenses: I1A-Street lighting 2692.2
- DUKHCONI1AZ5STGL5255: Expenses: I1A-Street lighting 379407
- DUKHCONI1AZ5STGL5260: Expenses: I1A-Street lighting 19485

| ID | WBS | Activity | Duration | Start | Finish | Predecessors | Total float | Free float | Resources | Cost | CODE | P3 ACTID | P6 ID (old) | NP61D | PROJECT | PHASES | PACKAGE | PART | ELEMENTS | STEP | BILL NOS | BILL DIVISION | RES PACK |
| --- | --- | --- | --- | --- | --- | --- | --- | --- | --- | --- | --- | --- | --- | --- | --- | --- | --- | --- | --- | --- | --- | --- | --- |
|  | 40 | **IRRIGATION LINES** |  | 2014-09-25 | 2014-12-02 |  |  |  |  |  |  |  |  |  |  |  |  |  |  |  |  |  |  |
| DUKHCONI1AZ5IRGL5265 |  | Excavation for irrigation line | 25d | 2014-09-25 | 2014-10-26 | DUKHCONI1AZ5ELGL5225, DUKHCONI1AZ4IRGL5280 | 10d | 0d | LABOR- SUBCONTRACTOR [312 h]; EXCAVATION QTY [514 Cum]; LOADER [125 h]; POCLAIN [250 h]; TRUCK [125 h]; EQUIP OPERATORS [500 h] | 9,606.6 | 10 | 1AP5IRFR10 | DUKHCON1AP5IRGL5265 | DUKHCONI1AZ5IRGL5265 | DH | CON | 1AF | Z5 | FR | IR | B03 | B03-D07 | RES-1A |
| DUKHCONI1AZ5IRGL5270 |  | Laying of irrigationline | 25d | 2014-10-01 | 2014-11-01 | DUKHCONI1AZ5IRGL5265 SS+5d | 10d | 0d | LABOR- SUBCONTRACTOR [138 h]; MECHANICALS SK [248.4 h]; IRRIGATION PIPES QTY [923 lm] | 15,116 | 15 | 1AP5IRFR15 | DUKHCON1AP5IRGL5270 | DUKHCONI1AZ5IRGL5270 | DH | CON | 1AF | Z5 | FR | IR | B03 | B03-D07 | RES-1A |
| DUKHCONI1AZ5IRGL5275 |  | Testing of irrigation line | 25d | 2014-10-07 | 2014-11-06 | DUKHCONI1AZ5IRGL5270 SS+5d | 10d | 0d | LABOR- SUBCONTRACTOR [114 h]; MECHANICALS SK [205.2 h]; DRAINAGE PIPES TEST QTY [923 lm] | 2,168.8 | 20 | 1AP5IRFR20 | DUKHCON1AP5IRGL5275 | DUKHCONI1AZ5IRGL5275 | DH | CON | 1AF | Z5 | FR | IR | B03 | B03-D07 | RES-1A |
| DUKHCONI1AZ5IRGL5280 |  | Backfilling irrigation line | 25d | 2014-10-15 | 2014-11-12 | DUKHCONI1AZ5IRGL5275 SS+5d | 10d | 0d | LABOR- SUBCONTRACTOR [126 h]; BACKFILLING QTY [514 Cum]; BOBCAT [250 h]; PLATE COMPACTOR [250 h]; TRUCK [50 h]; EQUIP OPERATORS [550 h] | 2,401.6 | 25 | 1AP5IRFR25 | DUKHCON1AP5IRGL5280 | DUKHCONI1AZ5IRGL5280 | DH | CON | 1AF | Z5 | FR | IR | B03 | B03-D07 | RES-1A |
| DUKHCONI1AZ5IRGL5285 |  | Construction of Thrust Blocks,Pull boxes | 25d | 2014-10-27 | 2014-11-24 | DUKHCONI1AZ5ELGL5225 SS+10d, DUKHCONI1AZ5IRGL5280 FF+10d | 10d | 0d | LABOR- SUBCONTRACTOR [30 h]; ELECTRICIANS SK [22.4 h]; THRUST BLOCKS QTY [2 ea]; PULL BOX QTY [8 ea]; PULL BOX SK [64 h] | 9,988.6 | 30 | 1AP5IRFR30 | DUKHCON1AP5IRGL5285 | DUKHCONI1AZ5IRGL5285 | DH | CON | 1AF | Z5 | FR | IR | B03 | B03-D07 | RES-1A |
| DUKHCONI1AZ5IRGL5290 |  | Irrigation Fittings (Nozzle,Values) | 25d | 2014-11-04 | 2014-12-02 | DUKHCONI1AZ5IRGL5280 SS+10d, DUKHCONI1AZ5IRGL5285 SS+7d | 10d | 11d | LABOR- SUBCONTRACTOR [102 h]; MECHANICALS SK [183.6 h]; CHAMPER QTY [65 lm] | 26,800.6 | 35 | 1AP5IRFR35 | DUKHCON1AP5IRGL5290 | DUKHCONI1AZ5IRGL5290 | DH | CON | 1AF | Z5 | FR | IR | B03 | B03-D07 | RES-1A |
|  | 45 | **TELECOMMUNICATION LINES** |  | 2014-09-06 | 2014-10-23 |  |  |  |  |  |  |  |  |  |  |  |  |  |  |  |  |  |  |
| DUKHCONI1AZ5TCGL5295 |  | Excavation Telecommunication trenches | 20d | 2014-09-06 | 2014-09-28 | DUKHCONI1AZ4TCGL5305, DUKHCONI1AZ5STGL5250 SS+10d | -15d | 0d | LABOR- SUBCONTRACTOR [228 h]; EXCAVATION QTY [372 Cum]; LOADER [75 h]; POCLAIN [150 h]; TRUCK [75 h]; EQUIP OPERATORS [300 h] | 9,563.6 | 10 | 1AP5TCFR10 | DUKHCON1AP5TCGL5295 | DUKHCONI1AZ5TCGL5295 | DH | CON | 1AF | Z5 | FR | TC | B03 | B03-D05 | RES-1A |
| DUKHCONI1AZ5TCGL5300 |  | Laying of cables | 20d | 2014-09-11 | 2014-10-04 | DUKHCONI1AZ5TCGL5295 SS+5d | -15d | 0d | LABOR- SUBCONTRACTOR [168 h]; ELECTRICIANS SK [627.2 h]; CABLE QTY [558 lm] | 3,124 | 15 | 1AP5TCFR15 | DUKHCON1AP5TCGL5300 | DUKHCONI1AZ5TCGL5300 | DH | CON | 1AF | Z5 | FR | TC | B03 | B03-D05 | RES-1A |
| DUKHCONI1AZ5TCGL5305 |  | Backfilling telecommunication trench | 20d | 2014-09-17 | 2014-10-12 | DUKHCONI1AZ5TCGL5300 SS+5d | -15d | 0d | LABOR- SUBCONTRACTOR [90 h]; BACKFILLING QTY [372 Cum]; BOBCAT [200 h]; PLATE COMPACTOR [200 h]; TRUCK [40 h]; EQUIP OPERATORS [440 h] | 4,099 | 20 | 1AP5TCFR20 | DUKHCON1AP5TCGL5305 | DUKHCONI1AZ5TCGL5305 | DH | CON | 1AF | Z5 | FR | TC | B03 | B03-D05 | RES-1A |
| DUKHCONI1AZ5TCGL5310 |  | Connection & Installation | 20d | 2014-09-29 | 2014-10-23 | DUKHCONI1AZ4TCGL5310, DUKHCONI1AZ5TCGL5305 SS+10d | 4d | 2d | LABOR- SUBCONTRACTOR [42 h]; ELECTRICIANS SK [302.4 h]; TELEPHONE SOCKETS QTY [27 ea] | 50,979.6 | 25 | 1AP5TCFR25 | DUKHCON1AP5TCGL5310 | DUKHCONI1AZ5TCGL5310 | DH | CON | 1AF | Z5 | FR | TC | B03 | B03-D05 | RES-1A |
|  | 50 | **BOUNDARY WALL** |  | 2014-09-06 | 2014-12-02 |  |  |  |  |  |  |  |  |  |  |  |  |  |  |  |  |  |  |
| DUKHCONI1AZ5BWGL5315 |  | Construction of Boundary Wall (Ht-3m) | 25d | 2014-09-06 | 2014-10-04 | DUKHCONI1AZ4BWGL5315, DUKHCONI1AZ5STGL5250 SS+10d | 10d | 0d | LABOR- SUBCONTRACTOR [96 h]; BOUNDARY WIRE MESH QTY [304 Sqm]; STEEL FIXERS SK [128 h] | 459,539.2 | 10 | 1AP5BWFR10 | DUKHCON1AP5ARGL5315 | DUKHCONI1AZ5BWGL5315 | DH | CON | 1AF | Z5 | FR | BW | B03 | B03-D11 | RES-1A |
| DUKHCONI1AZ5BWGL5320 |  | Install.Steel Gate,Entance Barrier (3m Wall) | 25d | 2014-09-22 | 2014-10-22 | DUKHCONI1AZ5BWGL5315 SS+14d | 10d | 0d | LABOR- SUBCONTRACTOR [12 h]; GATE QTY [2 ea]; GATE ERECTOR SK [16 h] | 5,993 | 15 | 1AP5BWFR15 | DUKHCON1AP5ARGL5320 | DUKHCONI1AZ5BWGL5320 | DH | CON | 1AF | Z5 | FR | BW | B03 | B03-D11 | RES-1A |
| DUKHCONI1AZ5BWGL5325 |  | Const. of Villa Front Boundary Wall (Ht-2m) | 25d | 2014-10-23 | 2014-11-20 | DUKHCONI1AZ5BWGL5315 SS+5d, DUKHCONI1AZ5BWGL5320, DUKHCONI1AZ4BWGL5325 | 10d | 0d | STEEL FIXERS SK [96 h]; LABOR- SUBCONTRACTOR [72 h]; BOUNDARY WIRE MESH QTY [231 Sqm] | 414,398.4 | 20 | 1AP5BWFR20 | DUKHCON1AP5ARGL5325 | DUKHCONI1AZ5BWGL5325 | DH | CON | 1AF | Z5 | FR | BW | B03 | B03-D11 | RES-1A |
| DUKHCONI1AZ5BWGL5330 |  | Const. of Blockwork fence Wall (Ht-1.85m) | 25d | 2014-11-04 | 2014-12-02 | DUKHCONI1AZ5BWGL5325 SS+10d, DUKHCONI1AZ4BWGL5330 | 21d | 35d | STEEL FIXERS SK [88 h]; LABOR- SUBCONTRACTOR [66 h]; BOUNDARY WIRE MESH QTY [206 Sqm] | 293,348.6 | 30 | 1AP5BWFR30 | DUKHCON1AP5ARGL5330 | DUKHCONI1AZ5BWGL5330 | DH | CON | 1AF | Z5 | FR | BW | B03 | B03-D11 | RES-1A |
|  | 55 | **ROAD WORKS** |  | 2014-10-13 | 2014-12-27 |  |  |  |  |  |  |  |  |  |  |  |  |  |  |  |  |  |  |
| DUKHCONI1AZ5RWGL6000 |  | Excavation & Earth Filling | 10d | 2014-10-13 | 2014-10-23 | DUKHCONI1AZ5SAGL5150, DUKHCONI1AZ4RWGL6015 SS+10d, DUKHCONI1AZ5FFGL5200, DUKHCONI1AZ5ELGL5225, DUKHCONI1AZ5TCGL5305, DUKHCONI1AZ5STGL5250, DUKHCONI1AZ5FFGL5210 | -15d | 0d | LABOR- SUBCONTRACTOR [732 h]; EXCAVATION QTY [1162 Cum]; BACKFILLING QTY [127 Cum]; LOADER [125 h]; POCLAIN [250 h]; TRUCK [125 h]; EQUIP OPERATORS [500 h] | 107,162 | 10 | 1AP5RDFR10 | DUKHCON1AP5RDGL6000 | DUKHCONI1AZ5RWGL6000 | DH | CON | 1AF | Z5 | FR | RD | B03 | B03-D08 | RES-1A |
| DUKHCONI1AZ5RWGL6005 |  | Laying of Sub Grade | 25d | 2014-10-25 | 2014-11-22 | DUKHCONI1AZ5RWGL6000 | -15d | 0d | LABOR- SUBCONTRACTOR [24 h]; SUBGRADE QTY [394 Sqm] | 120,812.8 | 15 | 1AP5RDFR15 | DUKHCON1AP5RDGL6005 | DUKHCONI1AZ5RWGL6005 | DH | CON | 1AF | Z5 | FR | RD | B03 | B03-D08 | RES-1A |
| DUKHCONI1AZ5RWGL6010 |  | Laying of Precast Kerbs | 25d | 2014-11-05 | 2014-12-03 | DUKHCONI1AZ5RWGL6005 SS+10d | -15d | 0d | LABOR- SUBCONTRACTOR [24 h]; GRANULAR SUBBASE QTY [340 Sqm] | 110,764.6 | 20 | 1AP5RDFR20 | DUKHCON1AP5RDGL6010 | DUKHCONI1AZ5RWGL6010 | DH | CON | 1AF | Z5 | FR | RD | B03 | B03-D08 | RES-1A |
| DUKHCONI1AZ5RWGL6015 |  | Laying of Granular Sub Base Coarse | 20d | 2014-11-16 | 2014-12-08 | DUKHCONI1AZ5RWGL6010 SS+9d | -15d | 0d | KERBSTONE QTY [485 lm]; EDGE STONE QTY [485 Sqm]; HEAVY ROLLER [400 h]; LOADER [100 h]; TRUCK [100 h]; EQUIP OPERATORS [600 h]; KERBSTONE MASON SK [776 h]; LABOR- SUBCONTRACTOR [438 h] | 60,406.4 | 25 | 1AP5RDFR25 | DUKHCON1AP5RDGL6015 | DUKHCONI1AZ5RWGL6015 | DH | CON | 1AF | Z5 | FR | RD | B03 | B03-D08 | RES-1A |
| DUKHCONI1AZ5RWGL6020 |  | Laying of Road Base Asphalt Concrete | 5d | 2014-12-09 | 2014-12-14 | DUKHCONI1AZ5RWGL6015 | -15d | 0d | LABOR- SUBCONTRACTOR [24 h]; ASPHALT CONCRETE QTY [1967 Cum]; ASPHALT PAVER MACHINE [50 h]; HAND ROLLER [100 h]; EQUIP OPERATORS [150 h] | 153,671 | 30 | 1AP5RDFR30 | DUKHCON1AP5RDGL6020 | DUKHCONI1AZ5RWGL6020 | DH | CON | 1AF | Z5 | FR | RD | B03 | B03-D08 | RES-1A |
| DUKHCONI1AZ5RWGL6025 |  | Laying of Asphalt Wearing Coarse | 5d | 2014-12-15 | 2014-12-21 | DUKHCONI1AZ5RWGL6020, DUKHCONI1AZ4RWGL6025 | -15d | 0d | LABOR- SUBCONTRACTOR [24 h]; ASPHALT WEARING COURSE QTY [1967 Sqm]; ASPHALT PAVER MACHINE [50 h]; HAND ROLLER [100 h]; EQUIP OPERATORS [150 h] | 80,057 | 35 | 1AP5RDFR35 | DUKHCON1AP5RDGL6025 | DUKHCONI1AZ5RWGL6025 | DH | CON | 1AF | Z5 | FR | RD | B03 | B03-D08 | RES-1A |
| DUKHCONI1AZ5RWGL6030 |  | Traffic Signage & Road Marking | 5d | 2014-12-22 | 2014-12-27 | DUKHCONI1AZ4RWGL6030, DUKHCONI1AZ5RWGL6025 | 1d | 15d | LABOR- SUBCONTRACTOR [366 h]; STEEL ERECTOR SK [448 h]; TRAFFIC SIGN QTY [279 ea]; ROAD MARKING QTY [100 lm]; ASPHALT SK [160 h] | 83,033.6 | 40 | 1AP5RDFR40 | DUKHCON1AP5RDGL6030 | DUKHCONI1AZ5RWGL6030 | DH | CON | 1AF | Z5 | FR | RD | B03 | B03-D08 | RES-1A |

Notes:
- DUKHCONI1AZ5IRGL5265: Expenses: I1A-Water supply system 9606.6
- DUKHCONI1AZ5IRGL5270: Expenses: I1A-Water supply system 15116
- DUKHCONI1AZ5IRGL5275: Expenses: I1A-Water supply system 2168.8
- DUKHCONI1AZ5IRGL5280: Expenses: I1A-Water supply system 2401.6
- DUKHCONI1AZ5IRGL5285: Expenses: I1A-Water supply system 9988.6
- DUKHCONI1AZ5IRGL5290: Expenses: I1A-Water supply system 26800.6
- DUKHCONI1AZ5TCGL5295: Expenses: I1A-Telecommunication 9563.6
- DUKHCONI1AZ5TCGL5300: Expenses: I1A-Telecommunication 3124
- DUKHCONI1AZ5TCGL5305: Expenses: I1A-Telecommunication 4099
- DUKHCONI1AZ5TCGL5310: Expenses: I1A-Telecommunication 50979.6
- DUKHCONI1AZ5BWGL5315: Expenses: I1A-Hard and soft landscaping 459539
- DUKHCONI1AZ5BWGL5320: Expenses: I1A-Hard and soft landscaping 5993
- DUKHCONI1AZ5BWGL5325: Expenses: I1A-Hard and soft landscaping 414398
- DUKHCONI1AZ5BWGL5330: Expenses: I1A-Hard and soft landscaping 293349
- DUKHCONI1AZ5RWGL6000: Expenses: I1A-Road work 107162
- DUKHCONI1AZ5RWGL6005: Expenses: I1A-Road work 120813
- DUKHCONI1AZ5RWGL6010: Expenses: I1A-Road work 110765
- DUKHCONI1AZ5RWGL6015: Expenses: I1A-Road work 60406.4
- DUKHCONI1AZ5RWGL6020: Expenses: I1A-Road work 153671
- DUKHCONI1AZ5RWGL6025: Expenses: I1A-Road work 80057
- DUKHCONI1AZ5RWGL6030: Expenses: I1A-Road work 83033.6

| ID | WBS | Activity | Duration | Start | Finish | Predecessors | Total float | Free float | Resources | Cost | CODE | P3 ACTID | P6 ID (old) | NP61D | PROJECT | PHASES | PACKAGE | PART | ELEMENTS | STEP | BILL NOS | BILL DIVISION | RES PACK |
| --- | --- | --- | --- | --- | --- | --- | --- | --- | --- | --- | --- | --- | --- | --- | --- | --- | --- | --- | --- | --- | --- | --- | --- |
|  | 60 | **PARKING SHED** |  | 2014-11-22 | 2015-01-19 |  |  |  |  |  |  |  |  |  |  |  |  |  |  |  |  |  |  |
| DUKHCONI1AZ5PSGL7000 |  | Excavation | 15d | 2014-11-22 | 2014-12-08 | DUKHCONI1AZ4PSGL7005, DUKHCONI1AZ5RWGL6015 SS+5d | -9d | 5d | LABOR- SUBCONTRACTOR [72 h]; EXCAVATION QTY [112 Cum]; LOADER [19 h]; POCLAIN [38 h]; TRUCK [19 h]; EQUIP OPERATORS [76 h] | 33,089.6 | 10 | 1AP5PSFR10 | DUKHCON1AP5PSGL7000 | DUKHCONI1AZ5PSGL7000 | DH | CON | 1AF | Z5 | FR | PS | B03 | B03-D08 | RES-1A |
| DUKHCONI1AZ5PSGL7005 |  | Foundation casting | 15d | 2014-12-03 | 2014-12-21 | DUKHCONI1AZ5PSGL7000 SS+5d, DUKHCONI1AZ5PSGL7000 FF+5d, DUKHCONI1AZ5RWGL6015 FF+10d | -14d | 0d | CONCRETE MASON SK [24 h]; LABOR- SUBCONTRACTOR [108 h]; REINFORCEMENT BARS QTY [896 kg]; FORMWORK QTY [23 Sqm]; CONCRETE QTY [12 Cum]; STEEL FIXERS SK [72 h]; CARPENTERS SK [48 h] | 33,089.6 | 15 | 1AP5PSFR15 | DUKHCON1AP5PSGL7005 | DUKHCONI1AZ5PSGL7005 | DH | CON | 1AF | Z5 | FR | PS | B03 | B03-D08 | RES-1A |
| DUKHCONI1AZ5PSGL7010 |  | Column, Frame& Fabrics Erection | 25d | 2014-12-15 | 2015-01-13 | DUKHCONI1AZ5RWGL6020, DUKHCONI1AZ5PSGL7005 SS+10d, DUKHCONI1AZ5BWGL5330 FF, DUKHCONI1AZ4PSGL7010, DUKHCONI1AZ5RWGL6030 FF | -14d | 0d | LABOR- SUBCONTRACTOR [102 h]; STEEL ERECTOR SK [184 h]; PARKING SHED QTY [560 ea] | 165,447.6 | 20 | 1AP5PSFR20 | DUKHCON1AP5PSGL7010 | DUKHCONI1AZ5PSGL7010 | DH | CON | 1AF | Z5 | FR | PS | B03 | B03-D08 | RES-1A |
| DUKHCONI1AZ5PSGL7015 |  | Electrical Works-Parking Shed | 25d | 2014-12-22 | 2015-01-19 | DUKHCONI1AZ5PSGL7010 SS+5d, DUKHCONI1AZ5STGL5260, DUKHCONI1AZ4PSGL7015 | -14d | 10d | LABOR- SUBCONTRACTOR [18 h]; ELECTRICIANS SK [33.6 h]; LIGHTS QTY [15 ea] | 16,545 | 25 | 1AP5PSFR25 | DUKHCON1AP5PSGL7015 | DUKHCONI1AZ5PSGL7015 | DH | CON | 1AF | Z5 | FR | PS | B03 | B03-D08 | RES-1A |
|  | 65 | **HARD LANDSCAPING** |  | 2014-10-13 | 2015-01-01 |  |  |  |  |  |  |  |  |  |  |  |  |  |  |  |  |  |  |
| DUKHCONI1AZ5HDGL7020 |  | Precast Concrete Kerbs works | 20d | 2014-10-13 | 2014-11-04 | DUKHCONI1AZ5RWGL6000 SS | -1d | 0d | KERBSTONE MASON SK [752 h]; LABOR- SUBCONTRACTOR [426 h]; KERBSTONE QTY [940 lm] | 112,518 | 10 | 1AP5HDFR10 | DUKHCON1AP5HDGL7020 | DUKHCONI1AZ5HDGL7020 | DH | CON | 1AF | Z5 | FR | HD | B03 | B03-D11 | RES-1A |
| DUKHCONI1AZ5HDGL7025 |  | Interlocking for Walkways | 25d | 2014-10-25 | 2014-11-22 | DUKHCONI1AZ5HDGL7020 SS+10d, DUKHCONI1ASBGZGL7910 FF | -1d | 0d | INTERLOCK MASON SK [584 h]; LABOR- SUBCONTRACTOR [222 h]; INTERLOCK QTY [728 Sqm] | 82,228.18 | 15 | 1AP5HDFR15 | DUKHCON1AP5HDGL7025 | DUKHCONI1AZ5HDGL7025 | DH | CON | 1AF | Z5 | FR | HD | B03 | B03-D11 | RES-1A |
| DUKHCONI1AZ5HDGL7030 |  | Construction of Retaining wall | 25d | 2014-11-05 | 2014-12-03 | DUKHCONI1AZ4HDGL7030, DUKHCONI1AZ5HDGL7025 SS+10d | -1d | 0d | STEEL FIXERS SK [120 h]; CARPENTERS SK [272 h]; CONCRETE MASON SK [40 h]; LABOR- SUBCONTRACTOR [324 h]; EXCAVATION QTY [14 Cum]; REINFORCEMENT BARS QTY [1445 kg]; FORMWORK QTY [134 Sqm]; CONCRETE QTY [17 Cum] | 22,937.8 | 20 | 1AP5HDFR20 | DUKHCON1AP5HDGL7030 | DUKHCONI1AZ5HDGL7030 | DH | CON | 1AF | Z5 | FR | HD | B03 | B03-D11 | RES-1A |
| DUKHCONI1AZ5HDGL7035 |  | Construction of Wash Stone Boulders | 25d | 2014-11-05 | 2014-12-03 | DUKHCONI1AZ4HDGL7035, DUKHCONI1AZ5HDGL7030 SS | -1d | 0d | TILE MASON SK [64 h]; LABOR- SUBCONTRACTOR [24 h]; STONE BOULDERS QTY [32 Sqm] | 19,037 | 25 | 1AP5HDFR25 | DUKHCON1AP5HDGL7035 | DUKHCONI1AZ5HDGL7035 | DH | CON | 1AF | Z5 | FR | HD | B03 | B03-D11 | RES-1A |
| DUKHCONI1AZ5HDGL7040 |  | Construction of Speed Humps | 10d | 2014-12-22 | 2015-01-01 | DUKHCONI1AZ5RWGL6025, DUKHCONI1AZ5HDGL7035 SS, DUKHCONI1AZ4HDGL7040 | -15d | 9d | CONCRETE MASON SK [8 h]; LABOR- SUBCONTRACTOR [6 h]; SPEED HUMPS [3 ea] | 3,420 | 30 | 1AP5HDFR30 | DUKHCON1AP5HDGL7040 | DUKHCONI1AZ5HDGL7040 | DH | CON | 1AF | Z5 | FR | HD | B03 | B03-D11 | RES-1A |
|  | 70 | **SOFT LANDSCAPING** |  | 2014-11-17 | 2015-01-08 |  |  |  |  |  |  |  |  |  |  |  |  |  |  |  |  |  |  |
| DUKHCONI1AZ5SLGL7200 |  | Excavation for Landscaping | 25d | 2014-11-17 | 2014-12-15 | DUKHCONI1AZ5IRGL5290 SS, DUKHCONI1AZ4SLGL7205, DUKHCONI1AZ5HDGL7035 SS+10d | -1d | 0d | LABOR- SUBCONTRACTOR [246 h]; EXCAVATION QTY [407 Cum]; LOADER [63 h]; POCLAIN [125 h]; TRUCK [63 h]; EQUIP OPERATORS [251 h] | 24,965.8 | 10 | 1AP5SLFR10 | DUKHCON1AP5SLGL7200 | DUKHCONI1AZ5SLGL7200 | DH | CON | 1AF | Z5 | FR | SL | B03 | B03-D11 | RES-1A |
| DUKHCONI1AZ5SLGL7205 |  | Sweet Soil Laying | 25d | 2014-11-29 | 2014-12-28 | DUKHCONI1AZ5SLGL7200 SS+10d | -1d | 0d | LABOR- SUBCONTRACTOR [1020 h]; SWEET SOIL QTY [2034 Cum]; LANDSCAPING SK [1360 h] | 141,473.2 | 15 | 1AP5SLFR15 | DUKHCON1AP5SLGL7205 | DUKHCONI1AZ5SLGL7205 | DH | CON | 1AF | Z5 | FR | SL | B03 | B03-D11 | RES-1A |
| DUKHCONI1AZ5SLGL7210 |  | Plantation works | 25d | 2014-12-10 | 2015-01-08 | DUKHCONI1AZ5SLGL7205 SS+10d, DUKHCONI1ASBSSGL7935 FF, DUKHCONI1AZ4SLGL7210 | -1d | 23d | LABOR- SUBCONTRACTOR [252 h]; PLAM TREES QTY [16 ea]; LANDSCAPING SK [336 h]; GROUND COVER QTY [1960 Sqm]; SHRUBS QTY [147 ea] | 112,789.6 | 20 | 1AP5SLFR20 | DUKHCON1AP5SLGL7210 | DUKHCONI1AZ5SLGL7210 | DH | CON | 1AF | Z5 | FR | SL | B03 | B03-D11 | RES-1A |
|  | 35 | **SECONDARY BUILDINGS** |  | 2014-06-23 | 2014-12-25 |  |  |  |  |  |  |  |  |  |  |  |  |  |  |  |  |  |  |
|  | 10 | **INFRASTRUCTURE WORKS** |  | 2014-06-23 | 2014-12-25 |  |  |  |  |  |  |  |  |  |  |  |  |  |  |  |  |  |  |
|  | 10 | **IRRIGATION WATER TANK & PUMP ROOM** |  | 2014-06-23 | 2014-12-22 |  |  |  |  |  |  |  |  |  |  |  |  |  |  |  |  |  |  |
| DUKHCONI1ASBIWGL7400 |  | Excavation | 18d | 2014-06-23 | 2014-07-13 | DUKHENGI1ADWIWAP4360, DUKHCONP1AZ9STRF2040 SS | -6d | 0d | LABOR- SUBCONTRACTOR [144 h]; EXCAVATION QTY [235 Cum]; LOADER [45 h]; POCLAIN [90 h]; TRUCK [45 h]; EQUIP OPERATORS [180 h] | 25,532 | 10 | 1AOBIWFR10 | DUKHCON1AOBIWGL7400 | DUKHCONI1ASBIWGL7400 | DH | CON | 1AF | OB | FR | IW | B03 | B03-D07 | RES-1A |
| DUKHCONI1ASBIWGL7405 |  | Blinding & base waterproofing | 10d | 2014-07-14 | 2014-07-24 | DUKHCONI1ASBIWGL7400 | -6d | 0d | BLINDING MASON SK [64 h]; LABOR- SUBCONTRACTOR [48 h]; LABOR- SUBCONTRACTOR [24 h]; BLINDING QTY [78 Sqm]; WATERPROOFING QTY [78 Sqm]; WATERPROOFING SPECIALIST SK [64 h] | 11,821 | 15 | 1AOBIWFR15 | DUKHCON1AOBIWGL7405 | DUKHCONI1ASBIWGL7405 | DH | CON | 1AF | OB | FR | IW | B03 | B03-D07 | RES-1A |
| DUKHCONI1ASBIWGL7410 |  | Construction of Raft slab | 12d | 2014-07-26 | 2014-08-11 | DUKHCONI1ASBIWGL7405 | -6d | 0d | CONCRETE MASON SK [64 h]; LABOR- SUBCONTRACTOR [270 h]; REINFORCEMENT BARS QTY [3300 kg]; FORMWORK QTY [17 Sqm]; CONCRETE QTY [33 Cum]; STEEL FIXERS SK [264 h]; CARPENTERS SK [32 h] | 36,610 | 20 | 1AOBIWFR20 | DUKHCON1AOBIWGL7410 | DUKHCONI1ASBIWGL7410 | DH | CON | 1AF | OB | FR | IW | B03 | B03-D07 | RES-1A |
| DUKHCONI1ASBIWGL7415 |  | Construction of RCC Wall | 25d | 2014-08-12 | 2014-09-09 | DUKHCONI1ASBIWGL7410 | -6d | 0d | STEEL FIXERS SK [424 h]; CARPENTERS SK [448 h]; CONCRETE MASON SK [104 h]; LABOR- SUBCONTRACTOR [732 h]; REINFORCEMENT BARS QTY [5300 kg]; FORMWORK QTY [222 Sqm]; CONCRETE QTY [53 Cum] | 85,332 | 25 | 1AOBIWFR25 | DUKHCON1AOBIWGL7415 | DUKHCONI1ASBIWGL7415 | DH | CON | 1AF | OB | FR | IW | B03 | B03-D07 | RES-1A |
| DUKHCONI1ASBIWGL7420 |  | Construction of Roof Slab | 20d | 2014-09-10 | 2014-10-02 | DUKHCONI1ASBIWGL7415 | -6d | 0d | STEEL FIXERS SK [112 h]; CARPENTERS SK [136 h]; CONCRETE MASON SK [32 h]; LABOR- SUBCONTRACTOR [210 h]; REINFORCEMENT BARS QTY [1400 kg]; FORMWORK QTY [66 Sqm]; CONCRETE QTY [14 Cum] | 26,221 | 30 | 1AOBIWFR30 | DUKHCON1AOBIWGL7420 | DUKHCONI1ASBIWGL7420 | DH | CON | 1AF | OB | FR | IW | B03 | B03-D07 | RES-1A |
| DUKHCONI1ASBIWGL7425 |  | Waterproofing & Backfilling | 15d | 2014-10-04 | 2014-10-22 | DUKHCONI1ASBIWGL7420 | 0d |  | BOBCAT [75 h]; PLATE COMPACTOR [75 h]; TRUCK [15 h]; EQUIP OPERATORS [165 h]; LABOR- SUBCONTRACTOR [6 h]; LABOR- SUBCONTRACTOR [30 h]; WATERPROOFING QTY [93 Sqm]; BACKFILLING QTY [33 Cum]; WATERPROOFING SPECIALIST SK [72 h] | 22,556 | 35 | 1AOBIWFR35 | DUKHCON1AOBIWGL7425 | DUKHCONI1ASBIWGL7425 | DH | CON | 1AF | OB | FR | IW | B03 | B03-D07 | RES-1A |
| DUKHCONI1ASBIWGL7950 |  | Laying of Interlock | 10d | 2014-10-23 | 2014-11-03 | DUKHCONI1ASBIWGL7425 | 15d | 0d | INTERLOCK MASON SK [40 h]; LABOR- SUBCONTRACTOR [18 h]; INTERLOCK QTY [48 Sqm] | 7,253.82 | 75 | 1AOBIWFR75 | DUKHCON1AOBIWGL7950 | DUKHCONI1ASBIWGL7950 | DH | CON | 1AF | OB | FR | IW | B03 | B03-D11 | RES-1A |
| DUKHCONI1ASBIWGL7430 |  | Floor screed | 5d | 2014-10-30 | 2014-11-04 | DUKHCONI1ASBIWGL7425, DUKHCONI1ASBIWGL7420 FS+21d | -6d | 0d | SCREED MASON SK [48 h]; LABOR- SUBCONTRACTOR [18 h]; FLOORING SCREED QTY [64 Sqm] | 2,072 | 40 | 1AOBIWFR40 | DUKHCON1AOBIWGL7430 | DUKHCONI1ASBIWGL7430 | DH | CON | 1AF | OB | FR | IW | B03 | B03-D07 | RES-1A |
| DUKHCONI1ASBIWGL7435 |  | Installation of Boundary Fences | 15d | 2014-11-04 | 2014-11-20 | DUKHCONI1ASBIWGL7950, DUKHPROGEN00PRDV3850 | 15d | 21d | STEEL FIXERS SK [24 h]; LABOR- SUBCONTRACTOR [18 h]; BOUNDARY WIRE MESH QTY [55 Sqm] | 32,769 | 80 | 1AOBIWFR80 | DUKHCON1AOBIWGL7435 | DUKHCONI1ASBIWGL7435 | DH | CON | 1AF | OB | FR | IW | B03 | B03-D07 | RES-1A |
| DUKHCONI1ASBIWGL7440 |  | Plumbing , Drainage & Firefighting works | 25d | 2014-11-05 | 2014-12-03 | DUKHCONI1ASBIWGL7430, DUKHCONI1AZ3FFGL5210, DUKHCONI1AZ4FFGL5210, DUKHCONI1AZ2FFGL5210, DUKHCONI1AZ5FFGL5210, DUKHCONI1AZ1FFGL5210 | -6d | 0d | LABOR- SUBCONTRACTOR [18 h]; MECHANICALS SK [32.4 h]; PUMP QTY [3 ea] | 153,951 | 60 | 1AOBIWFR60 | DUKHCON1AOBIWGL7440 | DUKHCONI1ASBIWGL7440 | DH | CON | 1AF | OB | FR | IW | B03 | B03-D07 | RES-1A |
| DUKHCONI1ASBIWGL7445 |  | AC Works | 25d | 2014-11-05 | 2014-12-03 | DUKHCONI1ASBIWGL7440 SS | -6d | 0d | LABOR- SUBCONTRACTOR [36 h]; AC TECHNICIAN SK [123.2 h]; AC PIPES QTY [17 lm]; VENTILIATION EQP QTY [1 ea] | 2,231 | 65 | 1AOBIWFR65 | DUKHCON1AOBIWGL7445 | DUKHCONI1ASBIWGL7445 | DH | CON | 1AF | OB | FR | IW | B03 | B03-D07 | RES-1A |
| DUKHCONI1ASBIWGL7450 |  | Electrical Works | 25d | 2014-11-05 | 2014-12-03 | DUKHCONI1ASBIWGL7445 SS, DUKHCONI1AZ5TCGL5310, DUKHCONI1AZ5STGL5260 SS, DUKHCONI1AZ5ELGL5230 | -6d | 0d | LABOR- SUBCONTRACTOR [90 h]; ELECTRICIANS SK [235.2 h]; CODUITS QTY [60 lm]; CABLE QTY [50 lm]; DB QTY [2 ea]; LIGHTS QTY [31 ea]; ISOLATOR QTY [4 ea] | 9,645 | 70 | 1AOBIWFR70 | DUKHCON1AOBIWGL7450 | DUKHCONI1ASBIWGL7450 | DH | CON | 1AF | OB | FR | IW | B03 | B03-D07 | RES-1A |
| DUKHCONI1ASBIWGL7455 |  | Internal epoxy coating & Painting | 5d | 2014-12-04 | 2014-12-09 | DUKHCONI1ASBIWGL7450 | -6d | 0d | LABOR- SUBCONTRACTOR [12 h]; EPOXY QTY [64 Sqm]; EPOXY SK [32 h] | 6,198 | 45 | 1AOBIWFR45 | DUKHCON1AOBIWGL7455 | DUKHCONI1ASBIWGL7455 | DH | CON | 1AF | OB | FR | IW | B03 | B03-D07 | RES-1A |
| DUKHCONI1ASBIWGL7460 |  | Installation of Steel Ladder | 5d | 2014-12-10 | 2014-12-15 | DUKHPROGEN00PRDV3630, DUKHCONI1ASBIWGL7455 | -6d | 0d | LABOR- SUBCONTRACTOR [6 h]; LADDER QTY [1 ea]; LADDER ERECTOR SK [8 h] | 3,970 | 50 | 1AOBIWFR50 | DUKHCON1AOBIWGL7460 | DUKHCONI1ASBIWGL7460 | DH | CON | 1AF | OB | FR | IW | B03 | B03-D07 | RES-1A |
| DUKHCONI1ASBIWGL7465 |  | Installation of G.I Handrails | 5d | 2014-12-16 | 2014-12-22 | DUKHCONI1ASBIWGL7460, DUKHCONI1ASBIWGL7435 | -6d | 18d | LABOR- SUBCONTRACTOR [60 h]; STEEL ERECTOR SK [104 h]; HANDRAIL QTY [50 lm] | 18,447 | 55 | 1AOBIWFR55 | DUKHCON1AOBIWGL7465 | DUKHCONI1ASBIWGL7465 | DH | CON | 1AF | OB | FR | IW | B03 | B03-D07 | RES-1A |

Notes:
- DUKHCONI1AZ5PSGL7000: Expenses: I1A-Road work 33089.6
- DUKHCONI1AZ5PSGL7005: Expenses: I1A-Road work 33089.6
- DUKHCONI1AZ5PSGL7010: Expenses: I1A-Road work 165448
- DUKHCONI1AZ5PSGL7015: Expenses: I1A-Road work 16545
- DUKHCONI1AZ5HDGL7020: Expenses: I1A-Hard and soft landscaping 112518
- DUKHCONI1AZ5HDGL7025: Expenses: I1A-Hard and soft landscaping 82228.2
- DUKHCONI1AZ5HDGL7030: Expenses: I1A-Hard and soft landscaping 22937.8
- DUKHCONI1AZ5HDGL7035: Expenses: I1A-Hard and soft landscaping 19037
- DUKHCONI1AZ5HDGL7040: Expenses: I1A-Hard and soft landscaping 3420
- DUKHCONI1AZ5SLGL7200: Expenses: I1A-Hard and soft landscaping 24965.8
- DUKHCONI1AZ5SLGL7205: Expenses: I1A-Hard and soft landscaping 141473
- DUKHCONI1AZ5SLGL7210: Expenses: I1A-Hard and soft landscaping 112790
- DUKHCONI1ASBIWGL7400: Expenses: I1A-Water supply system 25532
- DUKHCONI1ASBIWGL7405: Expenses: I1A-Water supply system 11821
- DUKHCONI1ASBIWGL7410: Expenses: I1A-Water supply system 36610
- DUKHCONI1ASBIWGL7415: Expenses: I1A-Water supply system 85332
- DUKHCONI1ASBIWGL7420: Expenses: I1A-Water supply system 26221
- DUKHCONI1ASBIWGL7425: Expenses: I1A-Water supply system 22556
- DUKHCONI1ASBIWGL7950: Expenses: I1A-Hard and soft landscaping 7253.82
- DUKHCONI1ASBIWGL7430: Expenses: I1A-Water supply system 2072
- DUKHCONI1ASBIWGL7435: Expenses: I1A-Water supply system 32769
- DUKHCONI1ASBIWGL7440: Expenses: I1A-Water supply system 153951
- DUKHCONI1ASBIWGL7445: Expenses: I1A-Water supply system 2231
- DUKHCONI1ASBIWGL7450: Expenses: I1A-Water supply system 9645
- DUKHCONI1ASBIWGL7455: Expenses: I1A-Water supply system 6198
- DUKHCONI1ASBIWGL7460: Expenses: I1A-Water supply system 3970
- DUKHCONI1ASBIWGL7465: Expenses: I1A-Water supply system 18447

| ID | WBS | Activity | Duration | Start | Finish | Predecessors | Total float | Free float | Resources | Cost | CODE | P3 ACTID | P6 ID (old) | NP61D | PROJECT | PHASES | PACKAGE | PART | ELEMENTS | STEP | BILL NOS | BILL DIVISION | RES PACK |
| --- | --- | --- | --- | --- | --- | --- | --- | --- | --- | --- | --- | --- | --- | --- | --- | --- | --- | --- | --- | --- | --- | --- | --- |
|  | 15 | **TELECOMMUNICATION ROOM** |  | 2014-07-14 | 2014-11-30 |  |  |  |  |  |  |  |  |  |  |  |  |  |  |  |  |  |  |
| DUKHCONI1ASBTRGL7600 |  | Excavation | 10d | 2014-07-14 | 2014-07-24 | DUKHCONI1ASBIWGL7400, DUKHENGI1ADWTRAP4370 | 6d | 0d | LABOR- SUBCONTRACTOR [12 h]; EXCAVATION QTY [20 Cum]; LOADER [5 h]; POCLAIN [10 h]; TRUCK [5 h]; EQUIP OPERATORS [20 h] | 6,092 | 10 | 1AOBTRFR10 | DUKHCON1AOBTRGL7600 | DUKHCONI1ASBTRGL7600 | DH | CON | 1AF | OB | FR | TR | B03 | B03-D05 | RES-1A |
| DUKHCONI1ASBTRGL7605 |  | Construction of foundation & Grade slab | 20d | 2014-07-26 | 2014-08-20 | DUKHCONI1ASBTRGL7600 | 16d | 0d | STEEL FIXERS SK [32 h]; CARPENTERS SK [80 h]; CONCRETE MASON SK [48 h]; LABOR- SUBCONTRACTOR [120 h]; REINFORCEMENT BARS QTY [356 kg]; FORMWORK QTY [40 Sqm]; CONCRETE QTY [25 Cum] | 18,276 | 15 | 1AOBTRFR15 | DUKHCON1AOBTRGL7605 | DUKHCONI1ASBTRGL7605 | DH | CON | 1AF | OB | FR | TR | B03 | B03-D05 | RES-1A |
| DUKHCONI1ASBTRGL7610 |  | Construction Column,Beams & Roof Slab | 20d | 2014-08-21 | 2014-09-13 | DUKHCONI1ASBTRGL7605 | 16d | 0d | STEEL FIXERS SK [32 h]; CARPENTERS SK [80 h]; CONCRETE MASON SK [48 h]; LABOR- SUBCONTRACTOR [120 h]; REINFORCEMENT BARS QTY [356 kg]; FORMWORK QTY [40 Sqm]; CONCRETE QTY [25 Cum] | 18,276 | 20 | 1AOBTRFR20 | DUKHCON1AOBTRGL7610 | DUKHCONI1ASBTRGL7610 | DH | CON | 1AF | OB | FR | TR | B03 | B03-D05 | RES-1A |
| DUKHCONI1ASBTRGL7615 |  | Finishing Works | 25d | 2014-10-08 | 2014-11-08 | DUKHCONI1ASBTRGL7610 FS+21d | 16d | 4d | SCREED MASON SK [40 h]; PLASTER MASON SK [400 h]; LABOR- SUBCONTRACTOR [246 h]; LABOR- SUBCONTRACTOR [90 h]; SCREED QTY [52 Sqm]; PLASTER QTY [248 Sqm]; PAINT QTY [248 Sqm]; EPOXY QTY [52 Sqm]; PAINTERS SK [200 h]; EPOXY SK [24 h] | 12,183 | 25 | 1AOBTRFR25 | DUKHCON1AOBTRGL7615 | DUKHCONI1ASBTRGL7615 | DH | CON | 1AF | OB | FR | TR | B03 | B03-D05 | RES-1A |
| DUKHCONI1ASBTRGL7620 |  | Plumbing , Drainage & Firefighting works | 25d | 2014-10-27 | 2014-11-24 | DUKHCONI1ASBTRGL7615 SS+10d, DUKHCONI1AZ5IRGL5280 SS+10d | 12d | 0d | LABOR- SUBCONTRACTOR [78 h]; MECHANICALS SK [172.8 h]; CABINET QTY [4 ea]; DRAINAGE PIPES QTY [15 lm]; PLUMB PIPES QTY [97 lm]; WATER TANK QTY [1 ea]; PUMP QTY [4 ea]; JOINERY WORK SK [32 h] | 3,276 | 30 | 1AOBTRFR30 | DUKHCON1AOBTRGL7620 | DUKHCONI1ASBTRGL7620 | DH | CON | 1AF | OB | FR | TR | B03 | B03-D05 | RES-1A |
| DUKHCONI1ASBTRGL7625 |  | AC Works | 25d | 2014-10-27 | 2014-11-24 | DUKHCONI1ASBTRGL7620 SS | 12d | 0d | LABOR- SUBCONTRACTOR [60 h]; AC TECHNICIAN SK [224 h]; AC PIPES QTY [10 lm]; VENTILIATION EQP QTY [1 ea] | 2,194 | 35 | 1AOBTRFR35 | DUKHCON1AOBTRGL7625 | DUKHCONI1ASBTRGL7625 | DH | CON | 1AF | OB | FR | TR | B03 | B03-D05 | RES-1A |
| DUKHCONI1ASBTRGL7630 |  | Electrical Works-Telecom Room | 25d | 2014-10-27 | 2014-11-24 | DUKHCONI1AZ2TCGL5310, DUKHCONI1AZ1TCGL5310, DUKHCONI1ASBTRGL7625 SS, DUKHCONI1AZ3TCGL5310, DUKHCONI1AZ4TCGL5310, DUKHCONI1AZ5TCGL5310 | 12d | 0d | LABOR- SUBCONTRACTOR [114 h]; ELECTRICIANS SK [291.2 h]; MECHANICALS SK [10.8 h]; CABLE QTY [50 lm]; DB QTY [1 ea]; LIGHTS QTY [24 ea]; FIRE EXTINGUISHER QTY [2 ea]; ISOLATOR QTY [5 ea]; CABLE TRAY QTY [24 lm] | 6,722 | 40 | 1AOBTRFR40 | DUKHCON1AOBTRGL7630 | DUKHCONI1ASBTRGL7630 | DH | CON | 1AF | OB | FR | TR | B03 | B03-D05 | RES-1A |
| DUKHCONI1ASBTRGL7635 |  | Final Paintings | 5d | 2014-11-25 | 2014-11-30 | DUKHCONI1ASBTRGL7615, DUKHCONI1ASBTRGL7620, DUKHCONI1ASBTRGL7625, DUKHCONI1ASBTRGL7630 | 12d | 36d | LABOR- SUBCONTRACTOR [75 h]; PAINTERS SK [200 h] | 5,754 |  | 1AOBTRFR42 | DUKHCON1AOBTRGL7635 | DUKHCONI1ASBTRGL7635 | DH | CON | 1AF | OB | FR | TR | B03 | B03-D05 | RES-1A |
|  | 20 | **GUARD HOUSE** |  | 2014-07-26 | 2014-12-07 |  |  |  |  |  |  |  |  |  |  |  |  |  |  |  |  |  |  |
| DUKHCONI1ASBGHGL7800 |  | Excavation | 10d | 2014-07-26 | 2014-08-09 | DUKHCONI1ASBTRGL7600, DUKHENGI1ADWGHAP4390 | 6d | 0d | LOADER [5 h]; POCLAIN [10 h]; TRUCK [5 h]; EQUIP OPERATORS [20 h]; EXCAVATION QTY [20 Cum]; LABOR- SUBCONTRACTOR [12 h] | 1,676 | 10 | 1AOBGHFR10 | DUKHCON1AOBGHGL7800 | DUKHCONI1ASBGHGL7800 | DH | CON | 1AF | OB | FR | GH | B03 | B03-D11 | RES-1A |
| DUKHCONI1ASBGHGL7805 |  | Construction of foundation & Grade slab | 20d | 2014-08-10 | 2014-09-01 | DUKHCONI1ASBGHGL7800 | 6d | 0d | REINFORCEMENT BARS QTY [356 kg]; FORMWORK QTY [40 Sqm]; CONCRETE QTY [25 Cum]; STEEL FIXERS SK [32 h]; CARPENTERS SK [80 h]; CONCRETE MASON SK [48 h]; LABOR- SUBCONTRACTOR [120 h] | 6,704 | 15 | 1AOBGHFR15 | DUKHCON1AOBGHGL7805 | DUKHCONI1ASBGHGL7805 | DH | CON | 1AF | OB | FR | GH | B03 | B03-D11 | RES-1A |
| DUKHCONI1ASBGHGL7810 |  | Construction Column,Beams & Roof Slab | 20d | 2014-09-02 | 2014-09-24 | DUKHCONI1ASBGHGL7805 | 6d | 0d | REINFORCEMENT BARS QTY [356 kg]; FORMWORK QTY [40 Sqm]; CONCRETE QTY [25 Cum]; STEEL FIXERS SK [32 h]; CARPENTERS SK [80 h]; CONCRETE MASON SK [48 h]; LABOR- SUBCONTRACTOR [120 h] | 6,704 | 20 | 1AOBGHFR20 | DUKHCON1AOBGHGL7810 | DUKHCONI1ASBGHGL7810 | DH | CON | 1AF | OB | FR | GH | B03 | B03-D11 | RES-1A |
| DUKHCONI1ASBGHGL7815 |  | Finishing Works | 25d | 2014-10-22 | 2014-11-19 | DUKHCONI1ASBGHGL7810 FS+21d | 6d | 0d | SCREED QTY [52 Sqm]; PLASTER QTY [248 Sqm]; PAINT QTY [248 Sqm]; EPOXY QTY [52 Sqm]; SCREED MASON SK [40 h]; PLASTER MASON SK [400 h]; PAINTERS SK [200 h]; EPOXY SK [24 h]; LABOR- SUBCONTRACTOR [246 h]; LABOR- SUBCONTRACTOR [90 h] | 6,704 | 25 | 1AOBGHFR25 | DUKHCON1AOBGHGL7815 | DUKHCONI1ASBGHGL7815 | DH | CON | 1AF | OB | FR | GH | B03 | B03-D11 | RES-1A |
| DUKHCONI1ASBGHGL7820 |  | Plumbing , Drainage & Firefighting works | 25d | 2014-11-03 | 2014-12-01 | DUKHCONI1ASBGHGL7815 SS+10d | 6d | 0d | CABINET QTY [4 ea]; DRAINAGE PIPES QTY [15 lm]; PLUMB PIPES QTY [97 lm]; WATER TANK QTY [1 ea]; PUMP QTY [4 ea]; MECHANICALS SK [172.8 h]; JOINERY WORK SK [32 h]; LABOR- SUBCONTRACTOR [78 h] | 3,724 | 30 | 1AOBGHFR30 | DUKHCON1AOBGHGL7820 | DUKHCONI1ASBGHGL7820 | DH | CON | 1AF | OB | FR | GH | B03 | B03-D11 | RES-1A |
| DUKHCONI1ASBGHGL7825 |  | AC Works | 25d | 2014-11-03 | 2014-12-01 | DUKHCONI1ASBGHGL7820 SS | 6d | 0d | AC PIPES QTY [10 lm]; VENTILIATION EQP QTY [1 ea] | 3,724 | 35 | 1AOBGHFR35 | DUKHCON1AOBGHGL7825 | DUKHCONI1ASBGHGL7825 | DH | CON | 1AF | OB | FR | GH | B03 | B03-D11 | RES-1A |
| DUKHCONI1ASBGHGL7830 |  | Electrical Works-Telecom Room | 25d | 2014-11-03 | 2014-12-01 | DUKHCONI1ASBGHGL7825 SS | 6d | 0d | CABLE QTY [50 lm]; DB QTY [1 ea]; LIGHTS QTY [24 ea]; FIRE EXTINGUISHER QTY [2 ea]; ISOLATOR QTY [5 ea]; CABLE TRAY QTY [24 lm]; ELECTRICIANS SK [291.2 h]; MECHANICALS SK [10.8 h]; LABOR- SUBCONTRACTOR [114 h] | 3,724 | 40 | 1AOBGHFR40 | DUKHCON1AOBGHGL7830 | DUKHCONI1ASBGHGL7830 | DH | CON | 1AF | OB | FR | GH | B03 | B03-D11 | RES-1A |
| DUKHCONI1ASBGHGL7835 |  | Final Paintings | 5d | 2014-12-02 | 2014-12-07 | DUKHCONI1ASBGHGL7830, DUKHCONI1ASBGHGL7820, DUKHCONI1ASBGHGL7825, DUKHCONI1ASBGHGL7815 | 6d | 30d | LABOR- SUBCONTRACTOR [75 h]; PAINTERS SK [200 h] | 1,397 |  | 1AOBGHFR42 | DUKHCON1AOBGHGL7835 | DUKHCONI1ASBGHGL7835 | DH | CON | 1AF | OB | FR | GH | B03 | B03-D11 | RES-1A |
|  | 25 | **GAZEBO** |  | 2014-09-14 | 2014-11-12 |  |  |  |  |  |  |  |  |  |  |  |  |  |  |  |  |  |  |
| DUKHCONI1ASBGZGL7900 |  | Construction of Concrete structure | 20d | 2014-09-14 | 2014-10-06 | DUKHPROGEN00PRDV3780, DUKHCONI1AZ4HDGL7020, DUKHENGI1ADWGZAP4380 | 7d | 0d | STEEL FIXERS SK [8 h]; CARPENTERS SK [32 h]; CONCRETE MASON SK [24 h]; LABOR- SUBCONTRACTOR [60 h]; EXCAVATION QTY [20 Cum]; REINFORCEMENT BARS QTY [85 kg]; FORMWORK QTY [15 Sqm]; CONCRETE QTY [10 Cum] | 8,551 | 10 | 1AOBGZFR10 | DUKHCON1AOBGZGL7900 | DUKHCONI1ASBGZGL7900 | DH | CON | 1AF | OB | FR | GZ | B03 | B03-D11 | RES-1A |
| DUKHCONI1ASBGZGL7905 |  | Installation of Wooden Works | 25d | 2014-09-25 | 2014-10-26 | DUKHCONI1ASBGZGL7900 SS+10d | 7d | 0d | LABOR- SUBCONTRACTOR [100 h]; WOODEN WORKS QTY [1 ea]; DOOR WORK SK [200 h] | 85,510 | 15 | 1AOBGZFR15 | DUKHCON1AOBGZGL7905 | DUKHCONI1ASBGZGL7905 | DH | CON | 1AF | OB | FR | GZ | B03 | B03-D11 | RES-1A |
| DUKHCONI1ASBGZGL7915 |  | Park Benches Installation | 15d | 2014-09-25 | 2014-10-14 | DUKHCONI1ASBGZGL7905 SS | 17d | 10d | LABOR- SUBCONTRACTOR [120 h]; WOODEN WORKS QTY [5 ea] | 42,754 | 20 | 1AOBGZFR30 | DUKHCON1AOBGZGL7915 | DUKHCONI1ASBGZGL7915 | DH | CON | 1AF | OB | FR | GZ | B03 | B03-D11 | RES-1A |
| DUKHCONI1ASBGZGL7910 |  | Electrical Works-Gazebo | 15d | 2014-10-27 | 2014-11-12 | DUKHCONI1ASBGZGL7915, DUKHCONI1ASBGZGL7905 | 7d | 8d | LABOR- SUBCONTRACTOR [36 h]; ELECTRICIANS SK [89.6 h]; CABLE QTY [50 lm]; LIGHTS QTY [15 ea] | 34,204 | 20 | 1AOBGZFR20 | DUKHCON1AOBGZGL7910 | DUKHCONI1ASBGZGL7910 | DH | CON | 1AF | OB | FR | GZ | B03 | B03-D11 | RES-1A |
|  | 30 | **SUBSTATION-(LANDSCAPING,FENCES & CHANNEL WORKS)** |  | 2014-10-07 | 2014-12-25 |  |  |  |  |  |  |  |  |  |  |  |  |  |  |  |  |  |  |
| DUKHCONI1ASBSSGL7930 |  | Construction of Drainage Channel | 30d | 2014-10-07 | 2014-11-12 | DUKHCONI1ASBGZGL7900 | 11d | 0d | LABOR- SUBCONTRACTOR [240 h]; CONCRETE MASON SK [480 h] | 301,340 |  | 1AOBSBFR30 | DUKHCON1AOBSSGL7930 | DUKHCONI1ASBSSGL7930 | DH | CON | 1AF | OB | FR | SS | B03 | B03-D10 | RES-1A |
| DUKHCONI1ASBSSGL7920 |  | Hard landscaping around substation | 30d | 2014-10-23 | 2014-11-26 | DUKHCONI1ASBSSGL7930 SS+12d, DUKHCONI1ASBSSGL7930 FF+12d | 11d | 0d | LABOR- SUBCONTRACTOR [240 h]; INTERLOCK MASON SK [480 h] | 74,108 |  | 1AOBSBFR10 | DUKHCON1AOBSSGL7920 | DUKHCONI1ASBSSGL7920 | DH | CON | 1AF | OB | FR | SS | B03 | B03-D10 | RES-1A |
| DUKHCONI1ASBSSGL7925 |  | Soft landscaping around substation | 30d | 2014-11-06 | 2014-12-10 | DUKHCONI1ASBSSGL7920 SS+12d, DUKHCONI1ASBSSGL7920 FF+12d | 11d | 0d | LANDSCAPING SK [240 h]; LABOR- SUBCONTRACTOR [240 h] | 74,108 |  | 1AOBSBFR20 | DUKHCON1AOBSSGL7925 | DUKHCONI1ASBSSGL7925 | DH | CON | 1AF | OB | FR | SS | B03 | B03-D10 | RES-1A |
| DUKHCONI1ASBSSGL7935 |  | Fencing Works | 30d | 2014-11-20 | 2014-12-25 | DUKHCONI1ASBSSGL7925 SS+12d, DUKHCONI1ASBSSGL7925 FF+12d | 11d | 12d | LABOR- SUBCONTRACTOR [240 h]; STEEL FIXERS SK [480 h] | 67,459 |  | 1AOBSBFR40 | DUKHCON1AOBSSGL7935 | DUKHCONI1ASBSSGL7935 | DH | CON | 1AF | OB | FR | SS | B03 | B03-D10 | RES-1A |

Notes:
- DUKHCONI1ASBTRGL7600: Expenses: I1A-Telecommunication 6092
- DUKHCONI1ASBTRGL7605: Expenses: I1A-Telecommunication 18276
- DUKHCONI1ASBTRGL7610: Expenses: I1A-Telecommunication 18276
- DUKHCONI1ASBTRGL7615: Expenses: I1A-Telecommunication 12183
- DUKHCONI1ASBTRGL7620: Expenses: I1A-Telecommunication 3276
- DUKHCONI1ASBTRGL7625: Expenses: I1A-Telecommunication 2194
- DUKHCONI1ASBTRGL7630: Expenses: I1A-Telecommunication 6722
- DUKHCONI1ASBTRGL7635: Expenses: I1A-Telecommunication 5754
- DUKHCONI1ASBGHGL7800: Expenses: I1A-Hard and soft landscaping 1676
- DUKHCONI1ASBGHGL7805: Expenses: I1A-Hard and soft landscaping 6704
- DUKHCONI1ASBGHGL7810: Expenses: I1A-Hard and soft landscaping 6704
- DUKHCONI1ASBGHGL7815: Expenses: I1A-Hard and soft landscaping 6704
- DUKHCONI1ASBGHGL7820: Expenses: I1A-Hard and soft landscaping 3724
- DUKHCONI1ASBGHGL7825: Expenses: I1A-Hard and soft landscaping 3724
- DUKHCONI1ASBGHGL7830: Expenses: I1A-Hard and soft landscaping 3724
- DUKHCONI1ASBGHGL7835: Expenses: I1A-Hard and soft landscaping 1397
- DUKHCONI1ASBGZGL7900: Expenses: I1A-Hard and soft landscaping 8551
- DUKHCONI1ASBGZGL7905: Expenses: I1A-Hard and soft landscaping 85510
- DUKHCONI1ASBGZGL7915: Expenses: I1A-Hard and soft landscaping 42754
- DUKHCONI1ASBGZGL7910: Expenses: I1A-Hard and soft landscaping 34204
- DUKHCONI1ASBSSGL7930: Expenses: I1A-Substation 301340
- DUKHCONI1ASBSSGL7920: Expenses: I1A-Substation 74108
- DUKHCONI1ASBSSGL7925: Expenses: I1A-Substation 74108
- DUKHCONI1ASBSSGL7935: Expenses: I1A-Substation 67459

| ID | WBS | Activity | Duration | Start | Finish | Predecessors | Complete | Planned start | Planned finish | Total float | Free float | Resources | Cost | P3 ACTID | P6 ID (old) | NP61D | PROJECT | PHASES | PACKAGE | PART | BILL NOS | BILL DIVISION | RES PACK | CODE | ELEMENTS | STEP | FLOORS | rem |
| --- | --- | --- | --- | --- | --- | --- | --- | --- | --- | --- | --- | --- | --- | --- | --- | --- | --- | --- | --- | --- | --- | --- | --- | --- | --- | --- | --- | --- |
|  | L25 | **PACKAGE-1B** |  | 2012-12-01 | 2014-12-24 |  |  |  |  |  |  |  |  |  |  |  |  |  |  |  |  |  |  |  |  |  |  |  |
|  | 03 | **SITE PREPARATORY WORKS** |  | 2012-12-01 | 2013-03-30 |  |  |  |  |  |  |  |  |  |  |  |  |  |  |  |  |  |  |  |  |  |  |  |
| DUKHCONP1BGNSP001000 |  | Survey works, | 20d | 2012-12-01 A | 2012-12-24 A | DUKHMOBP010000004000 | 100% |  |  |  |  | SURVEYOR SK [50 h]; LABOR - CIVIL [37.5 h] | 22,802 | 1BSP010000 | DUKHCON1BGNCI001000 | DUKHCONP1BGNSP001000 | DH | CON | 1B | SP | B05 | B05-D02 | RES-1B |  |  |  |  |  |
| DUKHCONP1BGNSP002000 |  | Scanning for Existing Services for rerouting | 10d | 2012-12-06 A | 2012-12-17 A | DUKHCONP1BGNSP001000 SS+5d | 100% |  |  |  |  | LABOR - CIVIL [187.5 h]; ELECTRICIANS SK [70 h]; MECHANICALS SK [67.5 h] | 19,002 | 1BSP010010 | DUKHCON1BGNCI002000 | DUKHCONP1BGNSP002000 | DH | CON | 1B | SP | B05 | B05-D02 | RES-1B |  |  |  |  |  |
| DUKHCONP1BGNSP003000 |  | Site stripping | 20d | 2012-12-13 A | 2013-01-06 A | DUKHCONP1BGNSP002000 SS+6d | 100% |  |  |  |  | LABOR - CIVIL [375 h]; BOBCAT [100 h]; LOADER [100 h]; TRUCK [100 h]; EQUIP OPERATORS [300 h] | 1,339,840 | 1BSP010020 | DUKHCON1BGNCI003000 | DUKHCONP1BGNSP003000 | DH | CON | 1B | SP | B05 | B05-D03 | RES-1B |  |  |  |  |  |
| DUKHCONP1BGNSP002100 |  | Submission of Scanning Reports | 5d | 2012-12-19 A | 2012-12-24 A | DUKHCONP1BGNSP002000 | 100% |  |  |  |  | QUANTITY SURVEYOUR [40 h] | 4,750 | 1BSP010010 | DUKHCON1BGNCI002000 | DUKHCONP1BGNSP002000 | DH | CON | 1B | SP | B05 | B05-D02 | RES-1B |  |  |  |  |  |
| DUKHCONP1BGNSP004000 |  | Demolition of Existing building & landscaping | 20d | 2012-12-20 A | 2013-01-12 A | DUKHCONP1BGNSP003000 SS+5d | 100% |  |  |  |  | LABOR - CIVIL [937.5 h]; POCLAIN [1000 h]; LOADER [250 h]; TRUCK [250 h]; EQUIP OPERATORS [1750 h]; BREAKER [250 h] | 1,817,559 | 1BSP010030 | DUKHCON1BGNCI004000 | DUKHCONP1BGNSP004000 | DH | CON | 1B | SP | B05 | B05-D02 | RES-1B |  |  |  |  |  |
| DUKHCONP1BGNSP002200 |  | Information Required for Rerouting | 14d | 2012-12-25 A | 2013-01-09 A | DUKHCONP1BGNSP002100 | 100% |  |  |  |  |  |  | 1BSP010010 | DUKHCON1BGNCI002000 | DUKHCONP1BGNSP002000 | DH | CON | 1B | SP | B05 | B05-D02 | RES-1B |  |  |  |  |  |
| DUKHCONP1BGNSP005000 |  | Demolition of existing services works | 20d | 2012-12-26 A | 2013-01-17 A | DUKHCONP1BGNSP004000 SS+5d | 100% |  |  |  |  | LABOR - CIVIL [375 h]; POCLAIN [100 h]; LOADER [100 h]; TRUCK [100 h]; EQUIP OPERATORS [400 h]; BREAKER [100 h] | 750,112 | 1BSP010040 | DUKHCON1BGNCI005000 | DUKHCONP1BGNSP005000 | DH | CON | 1B | SP | B05 | B05-D02 | RES-1B |  |  |  |  |  |
| DUKHCONP1BGNSP002300 |  | Preparation & Submission for new Layout for rerouting | 7d | 2013-01-10 A | 2013-01-17 A | DUKHCONP1BGNSP002200 | 100% |  |  |  |  | QUANTITY SURVEYOUR [40 h] | 4,751 | 1BSP010010 | DUKHCON1BGNCI002000 | DUKHCONP1BGNSP002000 | DH | CON | 1B | SP | B05 | B05-D02 | RES-1B |  |  |  |  |  |
| DUKHCONP1BGNSP002400 |  | Approval for new Layout for rerouting | 10d | 2013-01-19 A | 2013-01-29 A | DUKHCONP1BGNSP002300 | 100% |  |  |  |  |  |  | 1BSP010010 | DUKHCON1BGNCI002000 | DUKHCONP1BGNSP002000 | DH | CON | 1B | SP | B05 | B05-D02 | RES-1B |  |  |  |  |  |
| DUKHCONP1BGNSP002500 |  | Rerouting Works | 25d | 2013-01-30 A | 2013-03-30 A | DUKHCONP1BGNSP002400 | 100% | 2013-01-30 | 2013-02-28 |  |  | LABOR - CIVIL [187.5 h]; ELECTRICIANS SK [70 h]; MECHANICALS SK [67.5 h] | 19,002 | 1BSP010010 | DUKHCON1BGNCI002000 | DUKHCONP1BGNSP002000 | DH | CON | 1B | SP | B05 | B05-D02 | RES-1B |  |  |  |  |  |
|  | 10 | **ZONE - 1 (4 Twin Villas)** |  | 2013-04-27 | 2014-07-24 |  |  |  |  |  |  |  |  |  |  |  |  |  |  |  |  |  |  |  |  |  |  |  |
|  | 10 | **STRUCTURAL WORKS** |  | 2013-04-27 | 2014-02-03 |  |  |  |  |  |  |  |  |  |  |  |  |  |  |  |  |  |  |  |  |  |  |  |
|  | 10 | **SUB STRUCTURE** |  | 2013-04-27 | 2013-09-15 |  |  |  |  |  |  |  |  |  |  |  |  |  |  |  |  |  |  |  |  |  |  |  |
|  | 10 | **UPTO GRADE SLAB** |  | 2013-04-27 | 2013-09-15 |  |  |  |  |  |  |  |  |  |  |  |  |  |  |  |  |  |  |  |  |  |  |  |
| DUKHCONP1BZ1STUG1000 |  | Footing Excavation | 25d | 2013-04-27 | 2013-05-25 | DUKHCONP1AZ2STUG1000, DUKHCONP1BGNSP005000 SS+5d, DUKHMOBI1BPS00001250, DUKHCONP1BGNSP002500, DUKHMOBI1BPS00002113, DUKHENGP1BDWSTAP4400 |  |  |  | -11d | 0d | LABOR- SUBCONTRACTOR [758 h]; EXCAVATION QTY [1264 Cum]; LOADER [169 h]; POCLAIN [337 h]; TRUCK [169 h]; EQUIP OPERATORS [675 h] | 81,497 | 1BP1SBUG10 | DUKHCON1BP1STUG1000 | DUKHCONP1BZ1STUG1000 | DH | CON | 1B | Z1 | B04 | B04-D01 | RES-1B | 10 | ST | SB | UG |  |
| DUKHCONP1BZ1STUG1005 |  | Footing Antitermite | 23d | 2013-05-08 | 2013-06-03 | DUKHCONP1BZ1STUG1000 SS+10d, DUKHCONP1BZ1STUG1000 FF+5d |  |  |  | -11d | 0d | LABOR- SUBCONTRACTOR [507.75 h]; ANTITERMITE QTY [3384 sqft]; ANTITERMITE SK [1354 h] | 10,152 | 1BP1SBUG15 | DUKHCON1BP1STUG1005 | DUKHCONP1BZ1STUG1005 | DH | CON | 1B | Z1 | B04 | B04-D01 | RES-1B | 15 | ST | SB | UG | REM |
| DUKHCONP1BZ1STUG1010 |  | Footing Blinding | 23d | 2013-05-12 | 2013-06-06 | DUKHCONP1BZ1STUG1005 SS+3d, DUKHCONP1BZ1STUG1005 FF+3d |  |  |  | -11d | 0d | BLINDING MASON SK [599 h]; LABOR- SUBCONTRACTOR [449.25 h]; BLINDING QTY [748 Sqm] | 18,857 | 1BP1SBUG18 | DUKHCON1BP1STUG1010 | DUKHCONP1BZ1STUG1010 | DH | CON | 1B | Z1 | B04 | B04-D02 | RES-1B | 15 | ST | SB | UG | REM |
| DUKHCONP1BZ1STUG1015 |  | Footing Waterproofing & Screed | 25d | 2013-05-18 | 2013-06-15 | DUKHCONP1BZ1STUG1010 FF+5d, DUKHCONP1BZ1STUG1010 SS+5d |  |  |  | -11d | 0d | SCREED MASON SK [600 h]; LABOR- SUBCONTRACTOR [225 h]; SCREED QTY [749 Sqm]; WATERPROOFING QTY [1547 Sqm] | 59,066 | 1BP1SBUG20 | DUKHCON1BP1STUG1015 | DUKHCONP1BZ1STUG1015 | DH | CON | 1B | Z1 | B04 | B04-D02 | RES-1B | 20 | ST | SB | UG | REM |
| DUKHCONP1BZ1STUG1020 |  | Construction of foundations | 20d | 2013-06-02 | 2013-06-24 | DUKHCONP1BZ1STUG1015 SS+7d, DUKHCONP1BZ1STUG1015 FF+8d |  |  |  | -11d | 0d | STEEL FIXERS SK [2778 h]; CARPENTERS SK [1136 h]; CONCRETE MASON SK [640 h]; LABOR- SUBCONTRACTOR [3415.5 h]; REINFORCEMENT BARS QTY [34722 kg]; FORMWORK QTY [568 Sqm]; CONCRETE QTY [320 Cum] | 222,124 | 1BP1SBUG25 | DUKHCON1BP1STUG1020 | DUKHCONP1BZ1STUG1020 | DH | CON | 1B | Z1 | B04 | B04-D02 | RES-1B | 25 | ST | SB | UG | REM |
| DUKHCONP1BZ1STUG1025 |  | Construction of neck of columns | 25d | 2013-06-11 | 2013-07-09 | DUKHCONP1BZ1STUG1020 FF+7d, DUKHCONP1BZ1STUG1020 SS+8d |  |  |  | -11d | 0d | STEEL FIXERS SK [232 h]; CARPENTERS SK [832 h]; CONCRETE MASON SK [48 h]; LABOR- SUBCONTRACTOR [834 h]; REINFORCEMENT BARS QTY [2889 kg]; FORMWORK QTY [416 Sqm]; CONCRETE QTY [24 Cum] | 41,717 | 1BP1SBUG30 | DUKHCON1BP1STUG1025 | DUKHCONP1BZ1STUG1025 | DH | CON | 1B | Z1 | B04 | B04-D02 | RES-1B | 30 | ST | SB | UG | REM |
| DUKHCONP1BZ1STUG1030 |  | Waterproofing Footing & Neck Column | 25d | 2013-06-20 | 2013-07-18 | DUKHCONP1BZ1STUG1025 SS+8d, DUKHCONP1BZ1STUG1025 FF+8d |  |  |  | -11d | 0d | LABOR- SUBCONTRACTOR [146.25 h]; WATERPROOFING QTY [486 Sqm]; WATERPROOFING SPECIALIST SK [389 h] | 23,765 | 1BP1SBUG35 | DUKHCON1BP1STUG1030 | DUKHCONP1BZ1STUG1030 | DH | CON | 1B | Z1 | B04 | B04-D02 | RES-1B | 35 | ST | SB | UG | REM |
| DUKHCONP1BZ1STUG1035 |  | Backfilling Upto Grade Beam Bottom | 25d | 2013-07-02 | 2013-07-30 | DUKHCONP1BZ1STUG1030 FF+10d, DUKHCONP1BZ1STUG1030 SS+10d |  |  |  | -11d | 0d | LABOR- SUBCONTRACTOR [336 h]; BACKFILLING QTY [1368 Cum]; BOBCAT [500 h]; PLATE COMPACTOR [500 h]; TRUCK [100 h]; EQUIP OPERATORS [1100 h] | 34,798 | 1BP1SBUG40 | DUKHCON1BP1STUG1035 | DUKHCONP1BZ1STUG1035 | DH | CON | 1B | Z1 | B04 | B04-D01 | RES-1B | 40 | ST | SB | UG |  |
| DUKHCONP1BZ1STUG1040 |  | Construction of Grade Beams | 25d | 2013-07-18 | 2013-08-19 | DUKHCONP1BZ1STUG1035 FF+14d, DUKHENGP1BDWSTAP4410, DUKHCONP1BZ1STUG1035 SS+14d |  |  |  | -11d | 0d | BLINDING MASON SK [321 h]; SCREED MASON SK [321 h]; STEEL FIXERS SK [1621 h]; CARPENTERS SK [2112 h]; CONCRETE MASON SK [320 h]; LABOR- SUBCONTRACTOR [3401.25 h]; BLINDING QTY [401 Sqm]; SCREED QTY [401 Sqm]; REINFORCEMENT BARS QTY [20261 kg]; FORMWORK QTY [1056 Sqm]; CONCRETE QTY [160 Cum] | 373,054 | 1BP1SBUG45 | DUKHCON1BP1STUG1040 | DUKHCONP1BZ1STUG1040 | DH | CON | 1B | Z1 | B04 | B04-D02 | RES-1B | 45 | ST | SB | UG | REM |
| DUKHCONP1BZ1STUG1045 |  | Construction of slab on grade | 25d | 2013-08-18 | 2013-09-15 | DUKHCONP1BZ1STUG1040 SS+10d, DUKHCONP1BZ1PLUG4300 FF+8d, DUKHENGP1BDWSTAP4410, DUKHCONP1BZ1PLUG4300 SS+8d, DUKHCONP1BZ1STUG1040 FF+10d |  |  |  | -11d | 0d | BLINDING MASON SK [1219 h]; SCREED MASON SK [1218 h]; STEEL FIXERS SK [493 h]; CONCRETE MASON SK [496 h]; LABOR- SUBCONTRACTOR [2112.75 h]; BLINDING QTY [1523 Sqm]; SCREED QTY [1522 Sqm]; CONCRETE QTY [248 Cum]; WELDED WIRE MESH [1848 Sqm] | 283,313 | 1BP1SBUG50 | DUKHCON1BP1STUG1045 | DUKHCONP1BZ1STUG1045 | DH | CON | 1B | Z1 | B04 | B04-D02 | RES-1B | 50 | ST | SB | UG | REM |

Notes:
- DUKHCONP1BGNSP001000: Expenses: I1B-Demolition 22802
- DUKHCONP1BGNSP002000: Expenses: I1B-Demolition 19002
- DUKHCONP1BGNSP003000: Expenses: I1B-Site clearance general excavation and earthwork 1339840
- DUKHCONP1BGNSP002100: Expenses: I1B-Demolition 4750
- DUKHCONP1BGNSP004000: Expenses: I1B-Demolition 1817559
- DUKHCONP1BGNSP005000: Expenses: I1B-Demolition 750112
- DUKHCONP1BGNSP002300: Expenses: I1B-Demolition 4751
- DUKHCONP1BGNSP002500: Expenses: I1B-Demolition 19002
- DUKHCONP1BZ1STUG1000: Expenses: P1B-Excavation and Earth Works 81497
- DUKHCONP1BZ1STUG1005: Expenses: P1B-Excavation and Earth Works 10152
- DUKHCONP1BZ1STUG1010: Expenses: P1B-Concrete Works 18857
- DUKHCONP1BZ1STUG1015: Expenses: P1B-Concrete Works 59066
- DUKHCONP1BZ1STUG1020: Expenses: P1B-Concrete Works 222124
- DUKHCONP1BZ1STUG1025: Expenses: P1B-Concrete Works 41717
- DUKHCONP1BZ1STUG1030: Expenses: P1B-Concrete Works 23765
- DUKHCONP1BZ1STUG1035: Expenses: P1B-Excavation and Earth Works 34798
- DUKHCONP1BZ1STUG1040: Expenses: P1B-Concrete Works 373054
- DUKHCONP1BZ1STUG1045: Expenses: P1B-Concrete Works 283313

| ID | WBS | Activity | Duration | Start | Finish | Predecessors | Total float | Free float | Resources | Cost | CODE | rem | P3 ACTID | P6 ID (old) | NP61D | PROJECT | PHASES | PACKAGE | PART | ELEMENTS | STEP | FLOORS | BILL NOS | BILL DIVISION | RES PACK | EXECUTER |
| --- | --- | --- | --- | --- | --- | --- | --- | --- | --- | --- | --- | --- | --- | --- | --- | --- | --- | --- | --- | --- | --- | --- | --- | --- | --- | --- |
|  | 15 | **SUPERSTRUCTURE** |  | 2013-09-03 | 2014-02-03 |  |  |  |  |  |  |  |  |  |  |  |  |  |  |  |  |  |  |  |  |  |
|  | 10 | **GROUND FLOOR** |  | 2013-09-03 | 2013-10-30 |  |  |  |  |  |  |  |  |  |  |  |  |  |  |  |  |  |  |  |  |  |
| DUKHCONP1BZ1STGF2000 |  | Column-Rebar & Formwork | 25d | 2013-09-03 | 2013-10-01 | DUKHCONP1BZ1STUG1045 FF+7d, DUKHENGP1BDWSTAP4420, DUKHCONP1BZ1STUG1045 SS+14d | -11d | 0d | STEEL FIXERS SK [832 h]; CARPENTERS SK [2016 h]; LABOR- SUBCONTRACTOR [2136 h]; REINFORCEMENT BARS QTY [10395 kg]; FORMWORK QTY [1008 Sqm] | 90,734 | 10 | REM | 1BP1SPGF10 | DUKHCON1BP1STGF2000 | DUKHCONP1BZ1STGF2000 | DH | CON | 1B | Z1 | ST | SP | GF | B04 | B04-D02 | RES-1B |  |
| DUKHCONP1BZ1STGF2005 |  | Column-Concrete | 23d | 2013-09-12 | 2013-10-08 | DUKHCONP1BZ1STGF2000 FF+2d, DUKHCONP1BZ1STGF2000 SS+8d | -11d | 0d | CONCRETE MASON SK [222 h]; LABOR- SUBCONTRACTOR [166.5 h]; CONCRETE QTY [111 Cum] | 31,968 | 15 | REM | 1BP1SPGF15 | DUKHCON1BP1STGF2005 | DUKHCONP1BZ1STGF2005 | DH | CON | 1B | Z1 | ST | SP | GF | B04 | B04-D02 | RES-1B |  |
| DUKHCONP1BZ1STGF2010 |  | Beam, Stairs ,Slab-Rebar & Formwork | 25d | 2013-09-26 | 2013-10-27 | DUKHCONP1BZ1STGF2005 FF+14d, DUKHENGP1BDWSTAP4430, DUKHCONP1BZ1STGF2005 SS+2d | -11d | 0d | STEEL FIXERS SK [5276 h]; CARPENTERS SK [5422 h]; LABOR- SUBCONTRACTOR [8023.5 h]; REINFORCEMENT BARS QTY [65948 kg]; FORMWORK QTY [2711 Sqm] | 372,787 | 20 | REM | 1BP1SPGF20 | DUKHCON1BP1STGF2010 | DUKHCONP1BZ1STGF2010 | DH | CON | 1B | Z1 | ST | SP | GF | B04 | B04-D02 | RES-1B |  |
| DUKHCONP1BZ1STGF2015 |  | Beam, Stairs ,Slab-Concrete | 14d | 2013-10-13 | 2013-10-30 | DUKHCONP1BZ1STGF2010 SS+10d, DUKHCONP1BZ1STGF2010 FF+3d | -11d | 0d | CONCRETE MASON SK [832 h]; LABOR- SUBCONTRACTOR [624 h]; CONCRETE QTY [416 Cum] | 140,126 | 25 | REM | 1BP1SPGF25 | DUKHCON1BP1STGF2015 | DUKHCONP1BZ1STGF2015 | DH | CON | 1B | Z1 | ST | SP | GF | B04 | B04-D02 | RES-1B |  |
|  | 15 | **FIRST FLOORS** |  | 2013-10-15 | 2013-12-11 |  |  |  |  |  |  |  |  |  |  |  |  |  |  |  |  |  |  |  |  |  |
| DUKHCONP1BZ1STFF2020 |  | Column-Rebar & Formwork | 25d | 2013-10-15 | 2013-11-14 | DUKHENGP1BDWSTAP4440, DUKHCONP1BZ1STGF2015 SS+2d, DUKHCONP1BZ1STGF2015 FF+5d | -11d | 0d | CARPENTERS SK [1792 h]; LABOR- SUBCONTRACTOR [1344 h]; FORMWORK QTY [896 Sqm]; REINFORCEMENT BARS QTY [3529 kg]; STEEL FIXERS SK [282 h] | 62,208 | 10 | REM | 1BP1SPFF10 | DUKHCON1BP1STFF2020 | DUKHCONP1BZ1STFF2020 | DH | CON | 1B | Z1 | ST | SP | FF | B04 | B04-D02 | RES-1B |  |
| DUKHCONP1BZ1STFF2025 |  | Column-Concrete | 23d | 2013-10-27 | 2013-11-21 | DUKHCONP1BZ1STFF2020 SS+8d, DUKHCONP1BZ1STFF2020 FF+2d | -8d | 0d | CONCRETE MASON SK [194 h]; LABOR- SUBCONTRACTOR [145.5 h]; CONCRETE QTY [97 Cum] | 27,979 | 15 | REM | 1BP1SPFF15 | DUKHCON1BP1STFF2025 | DUKHCONP1BZ1STFF2025 | DH | CON | 1B | Z1 | ST | SP | FF | B04 | B04-D02 | RES-1B |  |
| DUKHCONP1BZ1STFF2030 |  | Beam, Stairs ,Slab-Rebar & Formwork | 25d | 2013-11-10 | 2013-12-08 | DUKHCONP1BZ1STFF2025 FF+14d, DUKHCONP1BZ1STFF2025 SS+2d | -8d | 0d | REINFORCEMENT BARS QTY [68503 kg]; FORMWORK QTY [2711 Sqm]; STEEL FIXERS SK [5481 h]; CARPENTERS SK [5422 h]; LABOR- SUBCONTRACTOR [8177.25 h] | 369,641 | 20 | REM | 1BP1SPFF20 | DUKHCON1BP1STFF2030 | DUKHCONP1BZ1STFF2030 | DH | CON | 1B | Z1 | ST | SP | FF | B04 | B04-D02 | RES-1B |  |
| DUKHCONP1BZ1STFF2035 |  | Beam, Stairs ,Slab-Concrete | 14d | 2013-11-26 | 2013-12-11 | DUKHCONP1BZ1STFF2030 SS+10d, DUKHCONP1BZ1STFF2030 FF+3d | -8d | 0d | CONCRETE MASON SK [736 h]; LABOR- SUBCONTRACTOR [552 h]; CONCRETE QTY [368 Cum] | 126,130 | 25 | REM | 1BP1SPFF25 | DUKHCON1BP1STFF2035 | DUKHCONP1BZ1STFF2035 | DH | CON | 1B | Z1 | ST | SP | FF | B04 | B04-D02 | RES-1B |  |
|  | 20 | **ROOF** |  | 2013-12-02 | 2014-02-03 |  |  |  |  |  |  |  |  |  |  |  |  |  |  |  |  |  |  |  |  |  |
| DUKHCONP1BZ1STRF2040 |  | Column-Rebar & Formwork | 18d | 2013-12-02 | 2013-12-23 | DUKHCONP1BZ1STFF2035 FF+3d, DUKHCONP1BZ1STFF2035 SS+5d | 10d | 0d | CARPENTERS SK [672 h]; LABOR- SUBCONTRACTOR [504 h]; FORMWORK QTY [336 Sqm] | 19,058 | 10 | REM | 1BP1SPRF10 | DUKHCON1BP1STRF2040 | DUKHCONP1BZ1STRF2040 | DH | CON | 1B | Z1 | ST | SP | RF | B04 | B04-D02 | RES-1B |  |
| DUKHCONP1BZ1STRF2045 |  | Column-Concrete | 17d | 2013-12-05 | 2013-12-25 | DUKHCONP1BZ1STRF2040 FF+1d, DUKHCONP1BZ1STRF2040 SS+3d | 10d | 0d | CONCRETE MASON SK [46 h]; LABOR- SUBCONTRACTOR [34.5 h]; CONCRETE QTY [23 Cum] | 6,660 | 15 | REM | 1BP1SPRF15 | DUKHCON1BP1STRF2045 | DUKHCONP1BZ1STRF2045 | DH | CON | 1B | Z1 | ST | SP | RF | B04 | B04-D02 | RES-1B |  |
| DUKHCONP1BZ1STRF2050 |  | Slab-Rebar & Formwork - Head Room | 20d | 2013-12-08 | 2013-12-31 | DUKHCONP1BZ1STRF2045 FF+5d, DUKHCONP1BZ1STRF2045 SS+2d | 10d | 0d | STEEL FIXERS SK [1294 h]; CARPENTERS SK [674 h]; LABOR- SUBCONTRACTOR [1476 h]; REINFORCEMENT BARS QTY [16169 kg]; FORMWORK QTY [337 Sqm] | 80,128 | 20 | REM | 1BP1SPRF20 | DUKHCON1BP1STRF2050 | DUKHCONP1BZ1STRF2050 | DH | CON | 1B | Z1 | ST | SP | RF | B04 | B04-D02 | RES-1B |  |
| DUKHCONP1BZ1STRF2055 |  | Slab-Concrete-Head room | 13d | 2013-12-23 | 2014-01-06 | DUKHCONP1BZ1STRF2050 FF+5d, DUKHCONP1BZ1STRF2050 SS+5d | 10d | 0d | CONCRETE MASON SK [160 h]; LABOR- SUBCONTRACTOR [120 h]; CONCRETE QTY [80 Cum] | 25,904 | 25 | REM | 1BP1SPRF25 | DUKHCON1BP1STRF2055 | DUKHCONP1BZ1STRF2055 | DH | CON | 1B | Z1 | ST | SP | RF | B04 | B04-D02 | RES-1B |  |
| DUKHCONP1BZ1STRF2060 |  | Construction of Parapets | 25d | 2013-12-25 | 2014-01-22 | DUKHCONP1BZ1STRF2055 SS+2d, DUKHCONP1BZ1STRF2055 FF+14d | 40d | 0d | BLOCK MASON SK [752 h]; LABOR- SUBCONTRACTOR [423 h]; BLOCK QTY [376 Sqm] | 23,312 | 30 | REM | 1BP1SPRF30 | DUKHCON1BP1STRF2060 | DUKHCONP1BZ1STRF2060 | DH | CON | 1B | Z1 | ST | SP | RF | B04 | B04-D03 | RES-1B |  |
| DUKHCONP1BZ1STRF2065 |  | Construction of up stands/Plinth | 25d | 2014-01-06 | 2014-02-03 | DUKHCONP1BZ1STRF2060 SS+10d, DUKHCONP1BZ1STRF2060 FF+10d | 67d | 0d | STEEL FIXERS SK [58 h]; CARPENTERS SK [240 h]; CONCRETE MASON SK [16 h]; LABOR- SUBCONTRACTOR [235.5 h]; REINFORCEMENT BARS QTY [722 kg]; FORMWORK QTY [120 Sqm]; CONCRETE QTY [8 Cum] | 12,704 | 35 | REM | 1BP1SPRF35 | DUKHCON1BP1STRF2065 | DUKHCONP1BZ1STRF2065 | DH | CON | 1B | Z1 | ST | SP | RF | B04 | B04-D02 | RES-1B |  |
|  | 15 | **FINISHING WORKS** |  | 2013-11-09 | 2014-06-25 |  |  |  |  |  |  |  |  |  |  |  |  |  |  |  |  |  |  |  |  |  |
|  | 10 | **INTERNAL FINISHES** |  | 2013-11-09 | 2014-06-25 |  |  |  |  |  |  |  |  |  |  |  |  |  |  |  |  |  |  |  |  |  |
|  | 10 | **GROUND FLOOR** |  | 2013-11-09 | 2014-04-22 |  |  |  |  |  |  |  |  |  |  |  |  |  |  |  |  |  |  |  |  |  |
| DUKHCONP1BZ1ARGF3000 |  | Block work | 25d | 2013-11-09 | 2013-12-07 | DUKHCONP1BZ1STGF2015 FF+21d, DUKHCONP1BZ1STGF2015 SS+21d | 33d | 0d | BLOCK MASON SK [5928 h]; LABOR- SUBCONTRACTOR [3334.5 h]; BLOCK QTY [2964 Sqm] | 195,460 | 10 | REM | 1BP1IFGF10 | DUKHCON1BP1ARGF3000 | DUKHCONP1BZ1ARGF3000 | DH | CON | 1B | Z1 | FIN | IF | GF | B04 | B04-D03 | RES-1B |  |
| DUKHCONP1BZ1ARGF3005 |  | Plastering work | 25d | 2013-12-01 | 2013-12-30 | DUKHCONP1BZ1ELGF4000 FF+5d, DUKHCONP1BZ1ARGF3000 SS+7d, DUKHCONP1BZ1ELGF4000 SS+5d, DUKHCONP1BZ1PLGF4305 FF+5d, DUKHCONP1BZ1PLGF4305 SS+5d, DUKHCONP1BZ1ARGF3000 FF+7d | 39d | 0d | PLASTER MASON SK [7264 h]; LABOR- SUBCONTRACTOR [4086 h]; PLASTER QTY [4540 Sqm] | 59,763 | 12 | REM | 1BP1IFGF12 | DUKHCON1BP1ARGF3005 | DUKHCONP1BZ1ARGF3005 | DH | CON | 1B | Z1 | FIN | IF | GF | B04 | B04-D10 | RES-1B |  |
| DUKHCONP1BZ1ARGF3010 |  | Flooring screed | 21d | 2013-12-09 | 2014-01-02 | DUKHCONP1BZ1ARGF3005 FF+3d, DUKHCONP1BZ1ARGF3005 SS+7d | 47d | 8d | SCREED MASON SK [1579 h]; LABOR- SUBCONTRACTOR [592.5 h]; FLOORING SCREED QTY [1973 Sqm] | 65,968 | 15 | REM | 1BP1IFGF15 | DUKHCON1BP1ARGF3010 | DUKHCONP1BZ1ARGF3010 | DH | CON | 1B | Z1 | FIN | IF | GF | B04 | B04-D10 | RES-1B |  |
| DUKHCONP1BZ1ARGF3030 |  | Paint First coat | 25d | 2013-12-17 | 2014-01-15 | DUKHCONP1BZ1ARGF3005 SS+14d, DUKHCONP1BZ1ARGF3005 FF+14d | 53d | 0d | LABOR- SUBCONTRACTOR [1619.25 h]; FIRSTCOAT PAINT QTY [5396 Sqm]; PAINTERS SK [4317 h] | 29,940 | 21 | REM | 1BP1IFGF21 | DUKHCON1BP1ARGF3030 | DUKHCONP1BZ1ARGF3030 | DH | CON | 1B | Z1 | FIN | IF | GF | B04 | B04-D11 | RES-1B | ENT |
| DUKHCONP1BZ1ARGF3015 |  | Wet area waterproofing & Protection Screed | 15d | 2013-12-19 | 2014-01-05 | DUKHCONP1BZ1ARGF3005 FF+5d, DUKHCONP1BZ1ARGF3005 SS+7d | 39d | 0d | LABOR- SUBCONTRACTOR [115.5 h]; WETAREA WATERPROOFING QTY [384 Sqm]; WATERPROOFING SPECIALIST SK [308 h] | 13,056 | 18 | REM | 1BP1IFGF18 | DUKHCON1BP1ARGF3015 | DUKHCONP1BZ1ARGF3015 | DH | CON | 1B | Z1 | FIN | IF | GF | B04 | B04-D10 | RES-1B |  |
| DUKHCONP1BZ1ARGF3020 |  | Ceramic Wall Tiling | 25d | 2013-12-25 | 2014-01-22 | DUKHCONP1BZ1PLGF4305 FF+4d, DUKHCONP1BZ1ARGF3015 FF+5d, DUKHCONP1BZ1PLGF4310 SS+4d, DUKHCONP1BZ1ARGF3015 SS+5d, DUKHCONP1BZ1PLGF4305 SS+4d, DUKHCONP1BZ1PLGF4310 FF+4d | 39d | 0d | TILE MASON SK [2262 h]; LABOR- SUBCONTRACTOR [1272.75 h]; CERAMIC WALL TILE QTY [1131 Sqm] | 64,075 | 24 | REM | 1BP1IFGF24 | DUKHCON1BP1ARGF3020 | DUKHCONP1BZ1ARGF3020 | DH | CON | 1B | Z1 | FIN | IF | GF | B04 | B04-D10 | RES-1B |  |
| DUKHCONP1BZ1ARGF3025 |  | Porcelain Tile flooring | 25d | 2013-12-31 | 2014-01-28 | DUKHCONP1BZ1ARGF3010 SS+10d, DUKHCONP1BZ1ARGF3020 FF+5d, DUKHCONP1BZ1ARGF3020 SS+5d, DUKHCONP1BZ1ARGF3010 FF+10d | 39d | 0d | TILE MASON SK [1228 h]; LABOR- SUBCONTRACTOR [690.75 h]; PORCELAIN FLOORING QTY [1074 Sqm] | 81,403 | 27 | REM | 1BP1IFGF27 | DUKHCON1BP1ARGF3025 | DUKHCONP1BZ1ARGF3025 | DH | CON | 1B | Z1 | FIN | IF | GF | B04 | B04-D10 | RES-1B |  |
| DUKHCONP1BZ1ARGF3045 |  | Fixing of Suspension systems | 20d | 2014-01-18 | 2014-02-09 | DUKHCONP1BZ1ELGF4010 FF+5d, DUKHCONP1BZ1ARGF3030 FF+7d, DUKHCONP1BZ1ARGF3030 SS+7d, DUKHCONP1BZ1ELGF4010 SS+5d, DUKHCONP1BZ1ARGF3025 SS+10d, DUKHCONP1BZ1ARGF3025 FF+10d | 39d | 0d | LABOR- SUBCONTRACTOR [475.5 h]; SUSPENSION QTY [1056 Sqm]; FALSE CEILING SKILLED SK [845 h] | 21,568 | 39 | REM | 1BP1IFGF39 | DUKHCON1BP1ARGF3045 | DUKHCONP1BZ1ARGF3045 | DH | CON | 1B | Z1 | FIN | IF | GF | B04 | B04-D10 | RES-1B | SUS |
| DUKHCONP1BZ1ARGF3035 |  | Slate Tile Flooring & Skirting | 15d | 2014-01-20 | 2014-02-05 | DUKHCONP1BZ1ARGF3010 FF+13d, DUKHCONP1BZ1ARGF3010 SS+13d, DUKHCONP1BZ1ARGF3025 FF+7d, DUKHCONP1BZ1ARGF3025 SS+13d | 49d | 2d | TILE MASON SK [596 h]; LABOR- SUBCONTRACTOR [335.25 h]; SLATE TILE QTY [372 Sqm] | 77,923 | 33 | REM | 1BP1IFGF33 | DUKHCON1BP1ARGF3035 | DUKHCONP1BZ1ARGF3035 | DH | CON | 1B | Z1 | FIN | IF | GF | B04 | B04-D10 | RES-1B |  |
| DUKHCONP1BZ1ARGF3055 |  | Aluminum tile false ceiling | 25d | 2014-01-26 | 2014-02-24 | DUKHCONP1BZ1ACGF4600 FF+7d, DUKHCONP1BZ1ARGF3045 SS+7d, DUKHCONP1BZ1ACGF4600 SS+7d, DUKHCONP1BZ1ARGF3045 FF+7d | 42d | 3d | LABOR- SUBCONTRACTOR [46.8 h]; FALSE CEILING QTY [104 Sqm]; FALSE CEILING SKILLED SK [83.2 h] | 6,637 | 42 | REM | 1BP1IFGF42 | DUKHCON1BP1ARGF3055 | DUKHCONP1BZ1ARGF3055 | DH | CON | 1B | Z1 | FIN | IF | GF | B04 | B04-D10 | RES-1B | ALU |
| DUKHCONP1BZ1ARGF3040 |  | Cobble Tile flooring | 15d | 2014-01-27 | 2014-02-13 | DUKHCONP1BZ1ARGF3025 FF+13d, DUKHCONP1BZ1ARGF3010 FF+13d, DUKHCONP1BZ1ARGF3035 FF+4d, DUKHCONP1BZ1ARGF3035 SS+4d, DUKHCONP1BZ1ARGF3010 SS+13d, DUKHCONP1BZ1ARGF3025 SS+13d | 47d | 0d | TILE MASON SK [448 h]; LABOR- SUBCONTRACTOR [252 h]; COBBLE STONE QTY [280 Sqm] | 23,352 | 30 | REM | 1BP1IFGF30 | DUKHCON1BP1ARGF3040 | DUKHCONP1BZ1ARGF3040 | DH | CON | 1B | Z1 | FIN | IF | GF | B04 | B04-D10 | RES-1B |  |
| DUKHCONP1BZ1ARGF3060 |  | Gypsum board false ceiling | 25d | 2014-01-29 | 2014-02-27 | DUKHCONP1BZ1ARGF3045 FF+10d, DUKHCONP1BZ1ARGF3045 SS+10d, DUKHCONP1BZ1ACGF4600 FF+7d, DUKHCONP1BZ1ACGF4600 SS+7d | 39d | 0d | LABOR- SUBCONTRACTOR [438 h]; FALSE CEILING QTY [972.81 Sqm]; FALSE CEILING SKILLED SK [778.3 h] | 53,328 | 45 | REM | 1BP1IFGF45 | DUKHCON1BP1ARGF3060 | DUKHCONP1BZ1ARGF3060 | DH | CON | 1B | Z1 | FIN | IF | GF | B04 | B04-D10 | RES-1B | GYP |
| DUKHCONP1BZ1ARGF3050 |  | Granite - Stair case flooring & Skirting | 20d | 2014-02-04 | 2014-02-27 | DUKHCONP1BZ1ARGF3040 FF+7d, DUKHCONP1BZ1ARGF3025 SS+13d, DUKHCONP1BZ1ARGF3025 FF+13d, DUKHCONP1BZ1ARGF3040 SS+7d | 47d | 0d | GRANITE MASON SK [544 h]; LABOR- SUBCONTRACTOR [306 h]; GRANITE QTY [136 Sqm] | 89,921 | 36 | REM | 1BP1IFGF36 | DUKHCON1BP1ARGF3050 | DUKHCONP1BZ1ARGF3050 | DH | CON | 1B | Z1 | FIN | IF | GF | B04 | B04-D10 | RES-1B |  |
| DUKHCONP1BZ1ARGF3065 |  | Wooden door & PVC Door | 15d | 2014-02-19 | 2014-03-08 | DUKHCONP1BZ1ARGF3035 SS+7d, DUKHCONP1BZ1ARGF3050 SS+7d, DUKHCONP1BZ1ARGF3050 FF+7d, DUKHCONP1BZ1ARGF3035 FF+7d | 47d | 0d | LABOR- SUBCONTRACTOR [180 h]; WOODEN DOOR QTY [120 ea]; DOOR ERECTOR SK [480 h] | 508,227 | 48 | REM | 1BP1IFGF48 | DUKHCON1BP1ARGF3065 | DUKHCONP1BZ1ARGF3065 | DH | CON | 1B | Z1 | FIN | IF | GF | B04 | B04-D05 | RES-1B |  |
| DUKHCONP1BZ1ARGF3070 |  | Aluminum doors | 15d | 2014-02-25 | 2014-03-13 | DUKHCONP1BZ1ARGF3065 SS+5d, DUKHCONP1BZ1ARGF3065 FF+5d | 47d | 0d | LABOR- SUBCONTRACTOR [24 h]; ALUMINIUM DOOR QTY [16 ea]; DOOR ERECTOR SK [64 h] | 40,213 | 51 | REM | 1BP1IFGF51 | DUKHCON1BP1ARGF3070 | DUKHCONP1BZ1ARGF3070 | DH | CON | 1B | Z1 | FIN | IF | GF | B04 | B04-D06 | RES-1B |  |
| DUKHCONP1BZ1ARGF3075 |  | Carpentry & Joinery Works | 20d | 2014-03-03 | 2014-03-25 | DUKHCONP1BZ1ARGF3070 FF+7d, DUKHCONP1BZ1ARGF3070 SS+5d | 47d | 0d | LABOR- SUBCONTRACTOR [144 h]; CABINET QTY [40 ea]; JOINERY WORK SK [320 h]; COUNTER SK [64 h]; COUNTER QTY [16 ea] | 149,837 | 57 | REM | 1BP1IFGF57 | DUKHCON1BP1ARGF3075 | DUKHCONP1BZ1ARGF3075 | DH | CON | 1B | Z1 | FIN | IF | GF | B04 | B04-D05 | RES-1B |  |
| DUKHCONP1BZ1ARGF3080 |  | Aluminum windows | 20d | 2014-03-04 | 2014-03-26 | DUKHCONP1BZ1ARGF3070 SS+6d, DUKHCONP1BZ1ARGF3070 FF+6d | 57d | 5d | LABOR- SUBCONTRACTOR [70.5 h]; ALUMINIUM WINDOWS QTY [70 ea]; WINDOW ERECTOR SK [187 h] | 26,016 | 54 | REM | 1BP1IFGF54 | DUKHCON1BP1ARGF3080 | DUKHCONP1BZ1ARGF3080 | DH | CON | 1B | Z1 | FIN | IF | GF | B04 | B04-D06 | RES-1B |  |
| DUKHCONP1BZ1ARGF3085 |  | S.S.Balustrade | 20d | 2014-03-11 | 2014-04-02 | DUKHCONP1BZ1ARGF3075 SS+7d, DUKHCONP1BZ1ARGF3075 FF+7d, DUKHCONP1BZ1ARGF3050 SS+7d, DUKHCONP1BZ1ARGF3050 FF+7d | 52d | 5d | LABOR- SUBCONTRACTOR [63 h]; S.S.BALUSTRADE QTY [56 lm]; HANDRAIL ERECTOR SKILLED [112 h] | 80,976 | 63 | REM | 1BP1IFGF63 | DUKHCON1BP1ARGF3085 | DUKHCONP1BZ1ARGF3085 | DH | CON | 1B | Z1 | FIN | IF | GF | B04 | B04-D06 | RES-1B |  |
| DUKHCONP1BZ1ARGF3090 |  | Installation of Granite Counter Top | 15d | 2014-03-16 | 2014-04-01 | DUKHCONP1BZ1ARGF3075 SS+7d, DUKHCONP1BZ1ARGF3075 FF+6d | 47d | 0d | GRANITE MASON SK [176 h]; LABOR- SUBCONTRACTOR [66 h]; GRANITE COUNTER TOP QTY [44 ea] | 46,857 | 60 | REM | 1BP1IFGF60 | DUKHCON1BP1ARGF3090 | DUKHCONP1BZ1ARGF3090 | DH | CON | 1B | Z1 | FIN | IF | GF | B04 | B04-D10 | RES-1B |  |
| DUKHCONP1BZ1ARGF3095 |  | Final Painting | 25d | 2014-03-25 | 2014-04-22 | DUKHCONP1BZ1ARGF3030 SS+10d, DUKHCONP1BZ1ARGF3090 FF+8d, DUKHCONP1BZ1ACGF4610 FF+10d, DUKHCONP1BZ1ARGF3085 SS+7d, DUKHCONP1BZ1ARGF3040 SS+13d, DUKHCONP1BZ1ARGF3060 FF+8d, DUKHCONP1BZ1ARGF3080 FF+8d, DUKHCONP1BZ1ARGF3090 SS+8d, DUKHCONP1BZ1ACGF4610 SS+10d, DUKHCONP1BZ1ARGF3040 FF+13d, DUKHCONP1BZ1ARGF3035 FF+13d, DUKHCONP1BZ1ARGF3030 FF+10d, DUKHCONP1BZ1ARGF3035 SS+13d, DUKHCONP1BZ1ARGF3070 SS+5d, DUKHCONP1BZ1ARGF3060 SS+8d, DUKHCONP1BZ1ARGF3070 FF+5d, DUKHCONP1BZ1ARGF3080 SS+8d, DUKHCONP1BZ1ARGF3085 FF+7d | 47d | 0d | LABOR- SUBCONTRACTOR [1619.25 h]; PAINT QTY [5396 Sqm]; PAINTERS SK [4317 h] | 65,933 | 66 | REM | 1BP1IFGF66 | DUKHCON1BP1ARGF3095 | DUKHCONP1BZ1ARGF3095 | DH | CON | 1B | Z1 | FIN | IF | GF | B04 | B04-D11 | RES-1B | PNT |

Notes:
- DUKHCONP1BZ1STGF2000: Expenses: P1B-Concrete Works 90734
- DUKHCONP1BZ1STGF2005: Expenses: P1B-Concrete Works 31968
- DUKHCONP1BZ1STGF2010: Expenses: P1B-Concrete Works 372787
- DUKHCONP1BZ1STGF2015: Expenses: P1B-Concrete Works 140126
- DUKHCONP1BZ1STFF2020: Expenses: P1B-Concrete Works 62208
- DUKHCONP1BZ1STFF2025: Expenses: P1B-Concrete Works 27979
- DUKHCONP1BZ1STFF2030: Expenses: P1B-Concrete Works 369641
- DUKHCONP1BZ1STFF2035: Expenses: P1B-Concrete Works 126130
- DUKHCONP1BZ1STRF2040: Expenses: P1B-Concrete Works 19058
- DUKHCONP1BZ1STRF2045: Expenses: P1B-Concrete Works 6660
- DUKHCONP1BZ1STRF2050: Expenses: P1B-Concrete Works 80128
- DUKHCONP1BZ1STRF2055: Expenses: P1B-Concrete Works 25904
- DUKHCONP1BZ1STRF2060: Expenses: P1B-Block work 23312
- DUKHCONP1BZ1STRF2065: Expenses: P1B-Concrete Works 12704
- DUKHCONP1BZ1ARGF3000: Expenses: P1B-Block work 195460
- DUKHCONP1BZ1ARGF3005: Expenses: P1B-Finishes 59763
- DUKHCONP1BZ1ARGF3010: Expenses: P1B-Finishes 65968
- DUKHCONP1BZ1ARGF3030: Expenses: P1B-Painting and Decorating 29940
- DUKHCONP1BZ1ARGF3015: Expenses: P1B-Finishes 13056
- DUKHCONP1BZ1ARGF3020: Expenses: P1B-Finishes 64075
- DUKHCONP1BZ1ARGF3025: Expenses: P1B-Finishes 81403
- DUKHCONP1BZ1ARGF3045: Expenses: P1B-Finishes 21568
- DUKHCONP1BZ1ARGF3035: Expenses: P1B-Finishes 77923
- DUKHCONP1BZ1ARGF3055: Expenses: P1B-Finishes 6637
- DUKHCONP1BZ1ARGF3040: Expenses: P1B-Finishes 23352
- DUKHCONP1BZ1ARGF3060: Expenses: P1B-Finishes 53328
- DUKHCONP1BZ1ARGF3050: Expenses: P1B-Finishes 89921
- DUKHCONP1BZ1ARGF3065: Expenses: P1B-Carpentry and Joinery 508227
- DUKHCONP1BZ1ARGF3070: Expenses: P1B-Metal work 40213
- DUKHCONP1BZ1ARGF3075: Expenses: P1B-Carpentry and Joinery 149837
- DUKHCONP1BZ1ARGF3080: Expenses: P1B-Metal work 26016
- DUKHCONP1BZ1ARGF3085: Expenses: P1B-Metal work 80976
- DUKHCONP1BZ1ARGF3090: Expenses: P1B-Finishes 46857
- DUKHCONP1BZ1ARGF3095: Expenses: P1B-Painting and Decorating 65933

| ID | WBS | Activity | Duration | Start | Finish | Predecessors | Total float | Free float | Resources | Cost | CODE | rem | P3 ACTID | P6 ID (old) | NP61D | PROJECT | PHASES | PACKAGE | PART | ELEMENTS | STEP | FLOORS | BILL NOS | BILL DIVISION | RES PACK | EXECUTER |
| --- | --- | --- | --- | --- | --- | --- | --- | --- | --- | --- | --- | --- | --- | --- | --- | --- | --- | --- | --- | --- | --- | --- | --- | --- | --- | --- |
|  | 15 | **FIRST FLOORS** |  | 2013-12-22 | 2014-06-25 |  |  |  |  |  |  |  |  |  |  |  |  |  |  |  |  |  |  |  |  |  |
| DUKHCONP1BZ1ARFF3300 |  | Block work | 25d | 2013-12-22 | 2014-01-19 | DUKHCONP1BZ1STFF2035 SS+21d, DUKHCONP1BZ1STFF2020 SS+21d, DUKHCONP1BZ1STFF2020 FF+21d, DUKHCONP1BZ1STFF2035 FF+21d | -8d | 0d | BLOCK MASON SK [4698 h]; LABOR- SUBCONTRACTOR [2643 h]; BLOCK QTY [2349 Sqm] | 160,271 | 10 | REM | 1BP1IFFF10 | DUKHCON1BP1ARFF3300 | DUKHCONP1BZ1ARFF3300 | DH | CON | 1B | Z1 | FIN | IF | FF | B04 | B04-D03 | RES-1B |  |
| DUKHCONP1BZ1ARFF3305 |  | Plastering work | 25d | 2014-01-18 | 2014-02-16 | DUKHCONP1BZ1PLFF4325 FF+8d, DUKHCONP1BZ1PLFF4325 SS+8d, DUKHCONP1BZ1ELFF4035 SS+5d, DUKHCONP1BZ1ELFF4035 FF+5d, DUKHCONP1BZ1ARFF3300 SS+7d, DUKHCONP1BZ1ARFF3300 FF+7d | -8d | 0d | PLASTER MASON SK [4812 h]; LABOR- SUBCONTRACTOR [2706.75 h]; PLASTER QTY [3007 Sqm] | 39,832 | 12 | REM | 1BP1IFFF12 | DUKHCON1BP1ARFF3305 | DUKHCONP1BZ1ARFF3305 | DH | CON | 1B | Z1 | FIN | IF | FF | B04 | B04-D10 | RES-1B |  |
| DUKHCONP1BZ1ARFF3310 |  | Flooring screed | 21d | 2014-01-26 | 2014-02-19 | DUKHCONP1BZ1ARFF3305 SS+7d, DUKHCONP1BZ1ARFF3305 FF+3d | 9d | 17d | SCREED MASON SK [787 h]; LABOR- SUBCONTRACTOR [295.5 h]; FLOORING SCREED QTY [983 Sqm] | 32,432 | 15 | REM | 1BP1IFFF15 | DUKHCON1BP1ARFF3310 | DUKHCONP1BZ1ARFF3310 | DH | CON | 1B | Z1 | FIN | IF | FF | B04 | B04-D10 | RES-1B |  |
| DUKHCONP1BZ1ARFF3330 |  | Paint First coat | 25d | 2014-02-03 | 2014-03-04 | DUKHCONP1BZ1ARFF3305 FF+14d, DUKHCONP1BZ1ARFF3305 SS+14d | 18d | 26d | FIRSTCOAT PAINT QTY [4778.32 Sqm]; PAINTERS SK [3823 h]; LABOR- SUBCONTRACTOR [1433.25 h] | 29,947 | 21 | REM | 1BP1IFFF21 | DUKHCON1BP1ARFF3330 | DUKHCONP1BZ1ARFF3330 | DH | CON | 1B | Z1 | FIN | IF | FF | B04 | B04-D11 | RES-1B | ENT |
| DUKHCONP1BZ1ARFF3315 |  | Wet area waterproofing | 15d | 2014-02-08 | 2014-02-25 | DUKHCONP1BZ1ARFF3305 SS+7d, DUKHCONP1BZ1ARFF3305 FF+8d | -8d | 0d | LABOR- SUBCONTRACTOR [375 h]; WETAREA WATERPROOFING QTY [1248 Sqm]; WATERPROOFING SPECIALIST SK [999 h] | 41,024 | 18 | REM | 1BP1IFFF18 | DUKHCON1BP1ARFF3315 | DUKHCONP1BZ1ARFF3315 | DH | CON | 1B | Z1 | FIN | IF | FF | B04 | B04-D10 | RES-1B |  |
| DUKHCONP1BZ1ARFF3320 |  | Ceramic Wall Tiling | 25d | 2014-02-18 | 2014-03-18 | DUKHCONP1BZ1PLFF4325 FF+4d, DUKHCONP1BZ1ARFF3315 FF+7d, DUKHCONP1BZ1PLFF4325 SS+4d, DUKHCONP1BZ1PLFF4330 SS+7d, DUKHCONP1BZ1ARFF3315 SS+8d, DUKHCONP1BZ1PLFF4330 FF+7d | -8d | 0d | TILE MASON SK [970 h]; LABOR- SUBCONTRACTOR [546 h]; CERAMIC WALL TILE QTY [485 Sqm] | 30,715 | 24 | REM | 1BP1IFFF24 | DUKHCON1BP1ARFF3320 | DUKHCONP1BZ1ARFF3320 | DH | CON | 1B | Z1 | FIN | IF | FF | B04 | B04-D10 | RES-1B |  |
| DUKHCONP1BZ1ARFF3325 |  | Porcelain Tile flooring | 25d | 2014-02-27 | 2014-03-27 | DUKHCONP1BZ1ARFF3310 SS+10d, DUKHCONP1BZ1ARFF3320 SS+8d, DUKHCONP1BZ1ARFF3310 FF+10d, DUKHCONP1BZ1ARFF3320 FF+8d | -8d | 0d | TILE MASON SK [858 h]; LABOR- SUBCONTRACTOR [483 h]; PORCELAIN FLOORING QTY [750 Sqm] | 62,083 | 27 | REM | 1BP1IFFF27 | DUKHCON1BP1ARFF3325 | DUKHCONP1BZ1ARFF3325 | DH | CON | 1B | Z1 | FIN | IF | FF | B04 | B04-D10 | RES-1B |  |
| DUKHCONP1BZ1ARFF3335 |  | Slate Tile Flooring & Skirting | 15d | 2014-03-17 | 2014-04-02 | DUKHCONP1BZ1ARFF3325 SS+13d, DUKHCONP1BZ1ARFF3310 SS+13d, DUKHCONP1BZ1ARFF3325 FF+5d, DUKHCONP1BZ1ARFF3310 FF+13d | 11d | 19d | TILE MASON SK [596 h]; LABOR- SUBCONTRACTOR [335.25 h]; SLATE TILE QTY [372 Sqm] | 74,280 | 30 | REM | 1BP1IFFF30 | DUKHCON1BP1ARFF3335 | DUKHCONP1BZ1ARFF3335 | DH | CON | 1B | Z1 | FIN | IF | FF | B04 | B04-D10 | RES-1B |  |
| DUKHCONP1BZ1ARFF3345 |  | Fixing of Suspension systems | 20d | 2014-03-20 | 2014-04-12 | DUKHCONP1BZ1ARFF3330 FF+7d, DUKHCONP1BZ1ARFF3325 SS+13d, DUKHCONP1BZ1ELFF4045 SS+5d, DUKHCONP1BZ1ELFF4045 FF+5d, DUKHCONP1BZ1ARFF3325 FF+13d, DUKHCONP1BZ1ARFF3330 SS+7d | -8d | 0d | LABOR- SUBCONTRACTOR [571.5 h]; SUSPENSION QTY [952 Sqm]; FALSE CEILING SKILLED SK [572 h] | 18,800 | 36 | REM | 1BP1IFFF36 | DUKHCON1BP1ARFF3345 | DUKHCONP1BZ1ARFF3345 | DH | CON | 1B | Z1 | FIN | IF | FF | B04 | B04-D10 | RES-1B | SUS |
| DUKHCONP1BZ1ARFF3350 |  | Granite - Stair case flooring & Skirting | 20d | 2014-03-20 | 2014-04-12 | DUKHCONP1BZ1ARFF3325 FF+13d, DUKHCONP1BZ1ARFF3325 SS+13d | 3d | 11d | GRANITE MASON SK [544 h]; GRANITE QTY [136 Sqm]; LABOR- SUBCONTRACTOR [306 h] | 89,923 | 33 | REM | 1BP1IFFF33 | DUKHCON1BP1ARFF3350 | DUKHCONP1BZ1ARFF3350 | DH | CON | 1B | Z1 | FIN | IF | FF | B04 | B04-D10 | RES-1B |  |
| DUKHCONP1BZ1ARFF3360 |  | Gypsum board false ceiling | 25d | 2014-04-01 | 2014-04-29 | DUKHCONP1BZ1ARFF3345 FF+10d, DUKHCONP1BZ1ACFF4615 FF+7d, DUKHCONP1BZ1ACFF4615 SS+7d, DUKHCONP1BZ1ARFF3345 SS+10d | -8d | 0d | LABOR- SUBCONTRACTOR [429 h]; FALSE CEILING QTY [952 Sqm]; FALSE CEILING SKILLED SK [762 h] | 53,328 | 39 | REM | 1BP1IFFF39 | DUKHCON1BP1ARFF3360 | DUKHCONP1BZ1ARFF3360 | DH | CON | 1B | Z1 | FIN | IF | FF | B04 | B04-D10 | RES-1B | GYP |
| DUKHCONP1BZ1ARFF3365 |  | Wooden door | 15d | 2014-04-16 | 2014-05-03 | DUKHCONP1BZ1ARFF3335 SS+7d, DUKHCONP1BZ1ARFF3350 FF+7d, DUKHCONP1BZ1ARFF3360 SS+3d, DUKHCONP1BZ1ARFF3335 FF+7d, DUKHCONP1BZ1ARFF3360 FF+3d, DUKHCONP1BZ1ARFF3350 SS+7d | -8d | 0d | LABOR- SUBCONTRACTOR [48 h]; WOODEN DOOR QTY [32 ea]; DOOR ERECTOR SK [128 h] | 110,928 | 42 | REM | 1BP1IFFF42 | DUKHCON1BP1ARFF3365 | DUKHCONP1BZ1ARFF3365 | DH | CON | 1B | Z1 | FIN | IF | FF | B04 | B04-D05 | RES-1B |  |
| DUKHCONP1BZ1ARFF3370 |  | Aluminum Door | 20d | 2014-04-24 | 2014-05-17 | DUKHCONP1BZ1ARFF3365 FF+5d, DUKHCONP1BZ1ARFF3365 SS+7d | -8d | 0d | LABOR- SUBCONTRACTOR [36 h]; ALUMINIUM DOOR QTY [24 ea]; DOOR ERECTOR SK [96 h] | 62,165 | 45 | REM | 1BP1IFFF45 | DUKHCON1BP1ARFF3370 | DUKHCONP1BZ1ARFF3370 | DH | CON | 1B | Z1 | FIN | IF | FF | B04 | B04-D06 | RES-1B |  |
| DUKHCONP1BZ1ARFF3380 |  | Aluminum windows | 20d | 2014-05-01 | 2014-05-24 | DUKHCONP1BZ1ARFF3370 FF+6d, DUKHCONP1BZ1ARFF3370 SS+6d | 5d | 13d | LABOR- SUBCONTRACTOR [74.25 h]; ALUMINIUM WINDOWS QTY [74 ea]; WINDOW ERECTOR SK [198 h] | 43,931 | 48 | REM | 1BP1IFFF48 | DUKHCON1BP1ARFF3380 | DUKHCONP1BZ1ARFF3380 | DH | CON | 1B | Z1 | FIN | IF | FF | B04 | B04-D06 | RES-1B |  |
| DUKHCONP1BZ1ARFF3375 |  | Carpentry & Joinery Works | 25d | 2014-05-03 | 2014-05-31 | DUKHCONP1BZ1ARFF3370 FF+5d, DUKHCONP1BZ1ARFF3370 SS+7d | -8d | 0d | LABOR- SUBCONTRACTOR [192 h]; CABINET QTY [16 ea]; COUNTER QTY [16 ea]; WARDROBE QTY [24 ea]; SHELVES QTY [16 ea]; JOINERY WORK SK [448 h]; COUNTER SK [64 h] | 195,293 | 51 | REM | 1BP1IFFF51 | DUKHCON1BP1ARFF3375 | DUKHCONP1BZ1ARFF3375 | DH | CON | 1B | Z1 | FIN | IF | FF | B04 | B04-D05 | RES-1B |  |
| DUKHCONP1BZ1ARFF3385 |  | Handrail & Balustrade | 20d | 2014-05-17 | 2014-06-08 | DUKHCONP1BZ1ARFF3375 SS+7d, DUKHCONP1BZ1ARFF3350 FF+7d, DUKHCONP1BZ1ARFF3350 SS+7d, DUKHCONP1BZ1ARFF3375 FF+7d | -8d | 0d | LABOR- SUBCONTRACTOR [63 h]; S.S.BALUSTRADE QTY [56 lm]; HANDRAIL ERECTOR SKILLED [112 h] | 60,733 | 57 | REM | 1BP1IFFF57 | DUKHCON1BP1ARFF3385 | DUKHCONP1BZ1ARFF3385 | DH | CON | 1B | Z1 | FIN | IF | FF | B04 | B04-D06 | RES-1B |  |
| DUKHCONP1BZ1ARFF3390 |  | Installation of Granite Counter Top | 20d | 2014-05-17 | 2014-06-08 | DUKHCONP1BZ1ARFF3375 SS+7d, DUKHCONP1BZ1ARFF3375 FF+7d | -6d | 2d | GRANITE MASON SK [80 h]; LABOR- SUBCONTRACTOR [30 h]; GRANITE COUNTER TOP QTY [20 ea] | 9,492 | 54 | REM | 1BP1IFFF54 | DUKHCON1BP1ARFF3390 | DUKHCONP1BZ1ARFF3390 | DH | CON | 1B | Z1 | FIN | IF | FF | B04 | B04-D10 | RES-1B |  |
| DUKHCONP1BZ1ARFF3395 |  | Final Painting | 25d | 2014-05-28 | 2014-06-25 | DUKHCONP1BZ1ARFF3335 FF+8d, DUKHCONP1BZ1ARFF3350 FF+8d, DUKHCONP1BZ1ARFF3375 SS+8d, DUKHCONP1BZ1ARFF3390 FF+8d, DUKHCONP1BZ1ARFF3330 SS+10d, DUKHCONP1BZ1ARFF3360 SS+10d, DUKHCONP1BZ1ARFF3380 SS+10d, DUKHCONP1BZ1ARFF3385 FF+10d, DUKHCONP1BZ1ACFF4625 FF+10d, DUKHCONP1BZ1ARFF3330 FF+10d, DUKHCONP1BZ1ARFF3375 FF+8d, DUKHCONP1BZ1ARFF3335 SS+8d, DUKHCONP1BZ1ARFF3380 FF+10d, DUKHCONP1BZ1ARFF3390 SS+8d, DUKHCONP1BZ1ARFF3385 SS+10d, DUKHCONP1BZ1ARFF3365 SS+8d, DUKHCONP1BZ1ARFF3365 FF+8d, DUKHCONP1BZ1ACFF4625 SS+10d, DUKHCONP1BZ1ARFF3350 SS+8d, DUKHCONP1BZ1ARFF3360 FF+10d | -8d | 0d | LABOR- SUBCONTRACTOR [1433.25 h]; PAINT QTY [4778.32 Sqm]; PAINTERS SK [3823 h] | 54,971 | 60 | REM | 1BP1IFFF60 | DUKHCON1BP1ARFF3395 | DUKHCONP1BZ1ARFF3395 | DH | CON | 1B | Z1 | FIN | IF | FF | B04 | B04-D11 | RES-1B | PNT |
|  | 20 | **ROOF** |  | 2014-01-16 | 2014-03-26 |  |  |  |  |  |  |  |  |  |  |  |  |  |  |  |  |  |  |  |  |  |
| DUKHCONP1BZ1ARRF3600 |  | Block work | 20d | 2014-01-16 | 2014-02-08 | DUKHCONP1BZ1STRF2055 SS+21d, DUKHCONP1BZ1STRF2055 FF+21d | 64d | 0d | BLOCK MASON SK [446 h]; LABOR- SUBCONTRACTOR [251.25 h]; BLOCK QTY [223 Sqm] | 16,095 | 10 | REM | 1BP1IFRF10 | DUKHCON1BP1ARRF3600 | DUKHCONP1BZ1ARRF3600 | DH | CON | 1B | Z1 | FIN | IF | RF | B04 | B04-D03 | RES-1B |  |
| DUKHCONP1BZ1ARRF3605 |  | Plastering work | 20d | 2014-01-25 | 2014-02-17 | DUKHCONP1BZ1ARRF3600 SS+7d, DUKHCONP1BZ1ARRF3600 FF+7d | 64d | 0d | PLASTER MASON SK [2453 h]; LABOR- SUBCONTRACTOR [1380 h]; PLASTER QTY [1533 Sqm] | 19,927 | 20 | REM | 1BP1IFRF20 | DUKHCON1BP1ARRF3605 | DUKHCONP1BZ1ARRF3605 | DH | CON | 1B | Z1 | FIN | IF | RF | B04 | B04-D10 | RES-1B |  |
| DUKHCONP1BZ1ARRF3610 |  | Flooring screed | 15d | 2014-02-08 | 2014-02-25 | DUKHCONP1BZ1ARRF3605 SS+7d, DUKHCONP1BZ1ARRF3605 FF+7d | 70d | 0d | SCREED MASON SK [112 h]; LABOR- SUBCONTRACTOR [42 h]; FLOORING SCREED QTY [140 Sqm] | 4,632 | 30 | REM | 1BP1IFRF30 | DUKHCON1BP1ARRF3610 | DUKHCONP1BZ1ARRF3610 | DH | CON | 1B | Z1 | FIN | IF | RF | B04 | B04-D10 | RES-1B |  |
| DUKHCONP1BZ1ARRF3695 |  | Painting -Storage area | 20d | 2014-02-20 | 2014-03-15 | DUKHCONP1BZ1ARRF3610 FF+10d, DUKHCONP1BZ1ARRF3610 SS+10d | 70d | 0d | LABOR- SUBCONTRACTOR [456 h]; PAINT QTY [1472 Sqm]; PAINTERS SK [1184 h] | 7,908 | 40 |  | 1BP1IFRF40 | DUKHCON1BP1ARRF3695 | DUKHCONP1BZ1ARRF3695 | DH | CON | 1B | Z1 | FIN | IF | RF | B04 | B04-D11 | RES-1B |  |
| DUKHCONP1BZ1ARRF3620 |  | Epoxy Painting -Storage area | 15d | 2014-03-10 | 2014-03-26 | DUKHCONP1BZ1ARRF3695 FF+10d, DUKHCONP1BZ1ARRF3695 SS+10d | 70d | 78d | LABOR- SUBCONTRACTOR [13.5 h]; EPOXY QTY [64 Sqm]; EPOXY SK [35 h] | 4,560 | 50 | REM | 1BP1IFRF50 | DUKHCON1BP1ARRF3620 | DUKHCONP1BZ1ARRF3620 | DH | CON | 1B | Z1 | FIN | IF | RF | B04 | B04-D11 | RES-1B |  |

Notes:
- DUKHCONP1BZ1ARFF3300: Expenses: P1B-Block work 160271
- DUKHCONP1BZ1ARFF3305: Expenses: P1B-Finishes 39832
- DUKHCONP1BZ1ARFF3310: Expenses: P1B-Finishes 32432
- DUKHCONP1BZ1ARFF3330: Expenses: P1B-Painting and Decorating 29947
- DUKHCONP1BZ1ARFF3315: Expenses: P1B-Finishes 41024
- DUKHCONP1BZ1ARFF3320: Expenses: P1B-Finishes 30715
- DUKHCONP1BZ1ARFF3325: Expenses: P1B-Finishes 62083
- DUKHCONP1BZ1ARFF3335: Expenses: P1B-Finishes 74280
- DUKHCONP1BZ1ARFF3345: Expenses: P1B-Finishes 18800
- DUKHCONP1BZ1ARFF3350: Expenses: P1B-Finishes 89923
- DUKHCONP1BZ1ARFF3360: Expenses: P1B-Finishes 53328
- DUKHCONP1BZ1ARFF3365: Expenses: P1B-Carpentry and Joinery 110928
- DUKHCONP1BZ1ARFF3370: Expenses: P1B-Metal work 62165
- DUKHCONP1BZ1ARFF3380: Expenses: P1B-Metal work 43931
- DUKHCONP1BZ1ARFF3375: Expenses: P1B-Carpentry and Joinery 195293
- DUKHCONP1BZ1ARFF3385: Expenses: P1B-Metal work 60733
- DUKHCONP1BZ1ARFF3390: Expenses: P1B-Finishes 9492
- DUKHCONP1BZ1ARFF3395: Expenses: P1B-Painting and Decorating 54971
- DUKHCONP1BZ1ARRF3600: Expenses: P1B-Block work 16095
- DUKHCONP1BZ1ARRF3605: Expenses: P1B-Finishes 19927
- DUKHCONP1BZ1ARRF3610: Expenses: P1B-Finishes 4632
- DUKHCONP1BZ1ARRF3695: Expenses: P1B-Painting and Decorating 7908
- DUKHCONP1BZ1ARRF3620: Expenses: P1B-Painting and Decorating 4560

| ID | WBS | Activity | Duration | Start | Finish | Predecessors | Total float | Free float | Resources | Cost | CODE | rem | P3 ACTID | P6 ID (old) | NP61D | PROJECT | PHASES | PACKAGE | PART | ELEMENTS | STEP | FLOORS | BILL NOS | BILL DIVISION | RES PACK |
| --- | --- | --- | --- | --- | --- | --- | --- | --- | --- | --- | --- | --- | --- | --- | --- | --- | --- | --- | --- | --- | --- | --- | --- | --- | --- |
|  | 15 | **EXTERNAL FINISHES** |  | 2014-01-18 | 2014-04-01 |  |  |  |  |  |  |  |  |  |  |  |  |  |  |  |  |  |  |  |  |
|  | 10 | **ROOF** |  | 2014-01-18 | 2014-03-26 |  |  |  |  |  |  |  |  |  |  |  |  |  |  |  |  |  |  |  |  |
| DUKHCONP1BZ1ARRF3630 |  | Leveling Screed for Waterproofing | 25d | 2014-01-18 | 2014-02-16 | DUKHCONP1BZ1STRF2060 SS+10d, DUKHCONP1BZ1STRF2065 SS+10d, DUKHCONP1BZ1STRF2065 FF+10d, DUKHCONP1BZ1STRF2060 FF+10d | 67d | 0d | SCREED MASON SK [455 h]; LABOR- SUBCONTRACTOR [256.5 h]; ROOF WP SCREED QTY [1136 Sqm] | 48,872 | 10 | REM | 1BP1EFRF10 | DUKHCON1BP1ARRF3630 | DUKHCONP1BZ1ARRF3630 | DH | CON | 1B | Z1 | FIN | EF | RF | B04 | B04-D04 | RES-1B |
| DUKHCONP1BZ1ARRF3635 |  | Laying of Waterproofing Membrane | 25d | 2014-01-21 | 2014-02-19 | DUKHCONP1BZ1ARRF3630 FF+3d, DUKHCONP1BZ1ARRF3630 SS+3d | 67d | 0d | LABOR- SUBCONTRACTOR [269.25 h]; ROOF WP MEMBRANE QTY [1344 Sqm]; WATERPROOFING SPECIALIST SK [717 h] | 35,274 | 15 | REM | 1BP1EFRF15 | DUKHCON1BP1ARRF3635 | DUKHCONP1BZ1ARRF3635 | DH | CON | 1B | Z1 | FIN | EF | RF | B04 | B04-D04 | RES-1B |
| DUKHCONP1BZ1ARRF3640 |  | Installation of Insulation & Protection | 25d | 2014-01-26 | 2014-02-24 | DUKHCONP1BZ1ARRF3635 SS+4d, DUKHCONP1BZ1ARRF3635 FF+4d | 67d | 0d | LABOR- SUBCONTRACTOR [341.25 h]; ROOF WP INSULATION QTY [2272 Sqm]; WATERPROOFING SPECIALIST SK [909 h] | 42,832 | 20 | REM | 1BP1EFRF20 | DUKHCON1BP1ARRF3640 | DUKHCONP1BZ1ARRF3640 | DH | CON | 1B | Z1 | FIN | EF | RF | B04 | B04-D04 | RES-1B |
| DUKHCONP1BZ1ARRF3645 |  | Lime Stone Chips & Paving slab Installation | 25d | 2014-01-30 | 2014-03-01 | DUKHCONP1BZ1ARRF3640 FF+4d, DUKHCONP1BZ1ARRF3640 SS+4d | 67d | 0d | TILE MASON SK [26 h]; LABOR- SUBCONTRACTOR [171 h]; LIME STONE QTY [64 Sqm]; PRECAST PAVING SLAB QTY [1072 Sqm]; PRE CAST CONCRETE SK [429 h] | 77,648 | 25 | REM | 1BP1EFRF25 | DUKHCON1BP1ARRF3645 | DUKHCONP1BZ1ARRF3645 | DH | CON | 1B | Z1 | FIN | EF | RF | B04 | B04-D04 | RES-1B |
| DUKHCONP1BZ1ARRF3650 |  | Install. of Gal. Frame & Aluminum Slat Screen | 25d | 2014-02-08 | 2014-03-09 | DUKHCONP1BZ1ARRF3645 SS+7d, DUKHCONP1BZ1ARRF3645 FF+7d | 67d | 0d | LABOR- SUBCONTRACTOR [368.25 h]; ALUMINIUM SCREEN QTY [184 Sqm]; DOOR ERECTOR SK [491 h] | 52,035 | 35 | REM | 1BP1EFRF35 | DUKHCON1BP1ARRF3650 | DUKHCONP1BZ1ARRF3650 | DH | CON | 1B | Z1 | FIN | EF | RF | B04 | B04-D06 | RES-1B |
| DUKHCONP1BZ1ARRF3655 |  | Installation of Pumps Protection cabinets | 20d | 2014-02-24 | 2014-03-18 | DUKHCONP1BZ1ARRF3645 FF+7d, DUKHCONP1BZ1ARRF3650 FF+8d, DUKHCONP1BZ1ARRF3645 SS+7d, DUKHCONP1BZ1ARRF3650 SS+8d | 67d | 0d | LABOR- SUBCONTRACTOR [168 h]; CABINET QTY [56 ea]; JOINERY WORK SK [448 h] | 26,600 | 30 | REM | 1BP1EFRF30 | DUKHCON1BP1ARRF3655 | DUKHCONP1BZ1ARRF3655 | DH | CON | 1B | Z1 | FIN | EF | RF | B04 | B04-D04 | RES-1B |
| DUKHCONP1BZ1ARRF3660 |  | Installation of Access Ladder | 15d | 2014-03-10 | 2014-03-26 | DUKHCONP1BZ1ARRF3655 FF+7d, DUKHCONP1BZ1ARRF3655 SS+7d | 70d | 78d | LABOR- SUBCONTRACTOR [96 h]; LADDER QTY [32 ea]; LADDER ERECTOR SK [256 h] | 35,112 | 40 | REM | 1BP1EFRF40 | DUKHCON1BP1ARRF3660 | DUKHCONP1BZ1ARRF3660 | DH | CON | 1B | Z1 | FIN | EF | RF | B04 | B04-D06 | RES-1B |
|  | 15 | **ELEVATION** |  | 2014-02-02 | 2014-04-01 |  |  |  |  |  |  |  |  |  |  |  |  |  |  |  |  |  |  |  |  |
| DUKHCONP1BZ1AREL3665 |  | External Plastering | 25d | 2014-02-02 | 2014-03-03 | DUKHCONP1BZ1ARFF3305 FF+7d, DUKHCONP1BZ1ARFF3305 SS+7d, DUKHCONP1BZ1STRF2065 FF+7d, DUKHCONP1BZ1ARRF3605 SS+7d, DUKHCONP1BZ1STRF2065 SS+7d | 64d | 0d | PLASTER MASON SK [7808 h]; LABOR- SUBCONTRACTOR [4392 h]; EXTERNAL PLASTER QTY [3904 Sqm] | 151,217 | 10 | REM | 1BP1EFEL10 | DUKHCON1BP1AREL3665 | DUKHCONP1BZ1AREL3665 | DH | CON | 1B | Z1 | FIN | EF | EL | B04 | B04-D10 | RES-1B |
| DUKHCONP1BZ1AREL3670 |  | External stone cladding works | 20d | 2014-02-20 | 2014-03-15 | DUKHCONP1BZ1AREL3665 SS+10d, DUKHCONP1BZ1AREL3665 FF+10d | 65d | 0d | TILE MASON SK [672 h]; LABOR- SUBCONTRACTOR [264 h]; STONE CLADDING QTY [336 Sqm] | 5,326 | 15 |  | 1BP1EFEL15 | DUKHCON1BP1AREL3670 | DUKHCONP1BZ1AREL3670 | DH | CON | 1B | Z1 | FIN | EF | EL | B04 | B04-D10 | RES-1B |
| DUKHCONP1BZ1AREL3675 |  | GRC works | 20d | 2014-02-26 | 2014-03-20 | DUKHCONP1BZ1AREL3665 FF+10d, DUKHCONP1BZ1AREL3670 SS+5d, DUKHCONP1BZ1AREL3665 SS+10d | 65d | 0d | LABOR- SUBCONTRACTOR [150 h]; GRC SK [400 h] | 12,320 | 15 |  | 1BP1EFEL18 | DUKHCON1BP1AREL3675 | DUKHCONP1BZ1AREL3675 | DH | CON | 1B | Z1 | FIN | EF | EL | B04 | B04-D10 | RES-1B |
| DUKHCONP1BZ1AREL3680 |  | External Painting | 20d | 2014-03-10 | 2014-04-01 | DUKHCONP1BZ1AREL3675 FF+10d, DUKHCONP1BZ1ARRF3695 SS+4d, DUKHCONP1BZ1AREL3670 FF+10d, DUKHCONP1BZ1AREL3670 SS+10d, DUKHCONP1BZ1AREL3675 SS+10d, DUKHCONP1BZ1ARRF3695 FF+4d | 65d | 5d | LABOR- SUBCONTRACTOR [1152 h]; PAINT QTY [3840 Sqm]; PAINTERS SK [3072 h] | 114,294 | 20 |  | 1BP1EFEL20 | DUKHCON1BP1AREL3680 | DUKHCONP1BZ1AREL3680 | DH | CON | 1B | Z1 | FIN | EF | EL | B04 | B04-D11 | RES-1B |
|  | 20 | **MEP WORKS** |  | 2013-08-05 | 2014-06-25 |  |  |  |  |  |  |  |  |  |  |  |  |  |  |  |  |  |  |  |  |
|  | 10 | **ELECTRICAL WORKS** |  | 2013-11-14 | 2014-06-25 |  |  |  |  |  |  |  |  |  |  |  |  |  |  |  |  |  |  |  |  |
|  | 10 | **GROUND FLOOR** |  | 2013-11-14 | 2014-03-25 |  |  |  |  |  |  |  |  |  |  |  |  |  |  |  |  |  |  |  |  |
| DUKHCONP1BZ1ELGF4000 |  | Fixing of wall conduits & switch socket boxes | 25d | 2013-11-14 | 2013-12-12 | DUKHCONP1BZ1ARGF3000 FF+5d, DUKHCONP1BZ1ARGF3000 SS+5d | 48d | 0d | LABOR- SUBCONTRACTOR [384 h]; ELECTRICIANS SK [2195.2 h]; SOCKET BOXES QTY [1520 ea]; CODUITS QTY [448 lm] | 34,322 | 10 |  | 1BP1EWGF10 | DUKHCON1BP1ELGF4000 | DUKHCONP1BZ1ELGF4000 | DH | CON | 1B | Z1 | MEP | EW | GF | B04 | B04-D09 | RES-1B |
| DUKHCONP1BZ1ELGF4005 |  | Cable tray & trunking installation | 20d | 2013-11-26 | 2013-12-19 | DUKHCONP1BZ1ELGF4000 SS+5d, DUKHCONP1BZ1ELGF4000 FF+5d | 66d | 0d | LABOR- SUBCONTRACTOR [672 h]; ELECTRICIANS SK [2508.8 h]; CABLE TRAY QTY [448 lm] | 7,536 | 15 |  | 1BP1EWGF15 | DUKHCON1BP1ELGF4005 | DUKHCONP1BZ1ELGF4005 | DH | CON | 1B | Z1 | MEP | EW | GF | B04 | B04-D09 | RES-1B |
| DUKHCONP1BZ1ELGF4010 |  | Installation of wiring & Main Cabling | 25d | 2013-12-04 | 2014-01-02 | DUKHCONP1BZ1ELGF4005 FF+7d, DUKHCONP1BZ1ELGF4005 SS+7d | 66d | 27d | LABOR- SUBCONTRACTOR [144 h]; ELECTRICIANS SK [492.8 h]; CABLE QTY [448 lm] | 117,914 | 20 |  | 1BP1EWGF20 | DUKHCON1BP1ELGF4010 | DUKHCONP1BZ1ELGF4010 | DH | CON | 1B | Z1 | MEP | EW | GF | B04 | B04-D09 | RES-1B |
| DUKHCONP1BZ1ELGF4015 |  | Install. of CAMS & Fire Fighting Accessories | 25d | 2014-02-06 | 2014-03-08 | DUKHCONP1BZ1ARGF3060 FF+7d, DUKHCONP1BZ1ARGF3055 FF+7d, DUKHCONP1BZ1ARGF3055 SS+7d, DUKHCONP1BZ1ARGF3060 SS+7d | 61d | 0d | LABOR- SUBCONTRACTOR [1632 h]; MECHANICALS SK [2937.6 h]; SMOKE DETECTOR POINTS QTY [400 ea]; FIRE EXTINGUISHER QTY [144 ea] | 85,204 | 35 |  | 1BP1EWGF35 | DUKHCON1BP1ELGF4015 | DUKHCONP1BZ1ELGF4015 | DH | CON | 1B | Z1 | MEP | EW | GF | B04 | B04-D09 | RES-1B |
| DUKHCONP1BZ1ELGF4020 |  | Installation of DBS,MCCB Accessories. | 20d | 2014-02-13 | 2014-03-08 | DUKHCONP1BZ1ELGF4010 SS+5d, DUKHCONP1BZ1ARGF3055 SS+7d, DUKHCONP1BZ1ARGF3060 SS+7d, DUKHCONP1BZ1ELGF4010 FF+5d, DUKHCONP1BZ1ARGF3055 FF+7d, DUKHCONP1BZ1ARGF3060 FF+7d | 39d | 0d | LABOR- SUBCONTRACTOR [96 h]; ELECTRICIANS SK [358.4 h]; MCCB QTY [160 ea]; DB QTY [16 ea] | 16,497 | 25 |  | 1BP1EWGF25 | DUKHCON1BP1ELGF4020 | DUKHCONP1BZ1ELGF4020 | DH | CON | 1B | Z1 | MEP | EW | GF | B04 | B04-D09 | RES-1B |
| DUKHCONP1BZ1ELGF4025 |  | Installation of Lighting fixtures & Accessories | 25d | 2014-02-25 | 2014-03-25 | DUKHCONP1BZ1ARGF3060 FF+10d, DUKHCONP1BZ1ARGF3055 FF+10d, DUKHCONP1BZ1ARGF3060 SS+10d, DUKHCONP1BZ1ELGF4020 FF+10d, DUKHCONP1BZ1ELGF4020 SS+10d, DUKHCONP1BZ1ARGF3055 SS+10d | 41d | 0d | LABOR- SUBCONTRACTOR [1152 h]; ELECTRICIANS SK [2150.4 h]; LIGHTS QTY [960 ea] | 176,155 | 30 |  | 1BP1EWGF30 | DUKHCON1BP1ELGF4025 | DUKHCONP1BZ1ELGF4025 | DH | CON | 1B | Z1 | MEP | EW | GF | B04 | B04-D09 | RES-1B |
| DUKHCONP1BZ1ELGF4030 |  | Installation of Telephone System | 20d | 2014-02-25 | 2014-03-19 | DUKHCONP1BZ1ARGF3060 FF+5d, DUKHCONP1BZ1ARGF3060 SS+5d, DUKHCONP1BZ1ELGF4020 SS+10d, DUKHCONP1BZ1ELGF4020 FF+10d | 39d | 5d | LABOR- SUBCONTRACTOR [168 h]; ELECTRICIANS SK [1254.4 h]; TELEPHONE SOCKETS QTY [112 ea] | 38,706 | 40 |  | 1BP1EWGF40 | DUKHCON1BP1ELGF4030 | DUKHCONP1BZ1ELGF4030 | DH | CON | 1B | Z1 | MEP | EW | GF | B04 | B04-D09 | RES-1B |

Notes:
- DUKHCONP1BZ1ARRF3630: Expenses: P1B-Roofing 48872
- DUKHCONP1BZ1ARRF3635: Expenses: P1B-Roofing 35274
- DUKHCONP1BZ1ARRF3640: Expenses: P1B-Roofing 42832
- DUKHCONP1BZ1ARRF3645: Expenses: P1B-Roofing 77648
- DUKHCONP1BZ1ARRF3650: Expenses: P1B-Metal work 52035
- DUKHCONP1BZ1ARRF3655: Expenses: P1B-Roofing 26600
- DUKHCONP1BZ1ARRF3660: Expenses: P1B-Metal work 35112
- DUKHCONP1BZ1AREL3665: Expenses: P1B-Finishes 151217
- DUKHCONP1BZ1AREL3670: Expenses: P1B-Finishes 5326
- DUKHCONP1BZ1AREL3675: Expenses: P1B-Finishes 12320
- DUKHCONP1BZ1AREL3680: Expenses: P1B-Painting and Decorating 114294
- DUKHCONP1BZ1ELGF4000: Expenses: P1B-Electrical Installations 34322
- DUKHCONP1BZ1ELGF4005: Expenses: P1B-Electrical Installations 7536
- DUKHCONP1BZ1ELGF4010: Expenses: P1B-Electrical Installations 117914
- DUKHCONP1BZ1ELGF4015: Expenses: P1B-Electrical Installations 85204
- DUKHCONP1BZ1ELGF4020: Expenses: P1B-Electrical Installations 16497
- DUKHCONP1BZ1ELGF4025: Expenses: P1B-Electrical Installations 176155
- DUKHCONP1BZ1ELGF4030: Expenses: P1B-Electrical Installations 38706

| ID | WBS | Activity | Duration | Start | Finish | Predecessors | Total float | Free float | Resources | Cost | CODE | P3 ACTID | P6 ID (old) | NP61D | PROJECT | PHASES | PACKAGE | PART | ELEMENTS | STEP | FLOORS | BILL NOS | BILL DIVISION | RES PACK |
| --- | --- | --- | --- | --- | --- | --- | --- | --- | --- | --- | --- | --- | --- | --- | --- | --- | --- | --- | --- | --- | --- | --- | --- | --- |
|  | 15 | **FIRST FLOORS** |  | 2013-12-28 | 2014-05-27 |  |  |  |  |  |  |  |  |  |  |  |  |  |  |  |  |  |  |  |
| DUKHCONP1BZ1ELFF4035 |  | Fixing of wall conduits & switch socket boxes | 25d | 2013-12-28 | 2014-01-25 | DUKHCONP1BZ1ARFF3300 SS+5d, DUKHCONP1BZ1ARFF3300 FF+5d | 5d | 0d | LABOR- SUBCONTRACTOR [384 h]; ELECTRICIANS SK [2195.2 h]; SOCKET BOXES QTY [1520 ea]; CODUITS QTY [448 lm] | 33,912 | 10 | 1BP1EWFF10 | DUKHCON1BP1ELFF4035 | DUKHCONP1BZ1ELFF4035 | DH | CON | 1B | Z1 | MEP | EW | FF | B04 | B04-D09 | RES-1B |
| DUKHCONP1BZ1ELFF4040 |  | Cable tray & trunking installation | 20d | 2014-01-08 | 2014-01-30 | DUKHCONP1BZ1ELFF4035 FF+5d, DUKHCONP1BZ1ELFF4035 SS+5d | 35d | 0d | LABOR- SUBCONTRACTOR [672 h]; ELECTRICIANS SK [2508.8 h]; CABLE TRAY QTY [448 lm] | 7,520 | 15 | 1BP1EWFF15 | DUKHCON1BP1ELFF4040 | DUKHCONP1BZ1ELFF4040 | DH | CON | 1B | Z1 | MEP | EW | FF | B04 | B04-D09 | RES-1B |
| DUKHCONP1BZ1ELFF4045 |  | Installation of wiring & Main Cabling | 25d | 2014-01-16 | 2014-02-15 | DUKHCONP1BZ1ELFF4040 FF+7d, DUKHCONP1BZ1ELFF4040 SS+7d | 35d | 0d | LABOR- SUBCONTRACTOR [144 h]; ELECTRICIANS SK [492.8 h]; CABLE QTY [448 lm] | 116,330 | 20 | 1BP1EWFF20 | DUKHCON1BP1ELFF4045 | DUKHCONP1BZ1ELFF4045 | DH | CON | 1B | Z1 | MEP | EW | FF | B04 | B04-D09 | RES-1B |
| DUKHCONP1BZ1ELFF4050 |  | Installation of Telephone System | 25d | 2014-04-07 | 2014-05-05 | DUKHCONP1BZ1ARFF3360 FF+5d, DUKHCONP1BZ1MSEX5010, DUKHCONP1BZ1ARFF3360 SS+5d, DUKHCONP1BZ1ELGF4030 FF+10d, DUKHCONP1BZ1ELGF4030 SS+10d | 14d | 22d | LABOR- SUBCONTRACTOR [168 h]; ELECTRICIANS SK [1254.4 h]; TELEPHONE SOCKETS QTY [112 ea] | 37,070 | 40 | 1BP1EWFF40 | DUKHCON1BP1ELFF4050 | DUKHCONP1BZ1ELFF4050 | DH | CON | 1B | Z1 | MEP | EW | FF | B04 | B04-D09 | RES-1B |
| DUKHCONP1BZ1ELFF4055 |  | Install. of CAMS & Fire Fighting Accessories | 25d | 2014-04-09 | 2014-05-07 | DUKHCONP1BZ1ELGF4015 SS+5d, DUKHCONP1BZ1ELGF4015 FF+5d, DUKHCONP1BZ1ARFF3360 FF+7d, DUKHCONP1BZ1ARFF3360 SS+7d | 34d | 0d | MECHANICALS SK [2937.6 h]; SMOKE DETECTOR POINTS QTY [400 ea]; FIRE EXTINGUISHER QTY [144 ea]; LABOR- SUBCONTRACTOR [1632 h] | 85,180 | 35 | 1BP1EWFF35 | DUKHCON1BP1ELFF4055 | DUKHCONP1BZ1ELFF4055 | DH | CON | 1B | Z1 | MEP | EW | FF | B04 | B04-D09 | RES-1B |
| DUKHCONP1BZ1ELFF4060 |  | Installation of DBS,MCCB Accessories. | 20d | 2014-04-16 | 2014-05-08 | DUKHCONP1BZ1ARFF3360 FF+8d, DUKHCONP1BZ1ARFF3360 SS+8d, DUKHCONP1BZ1ELFF4045 SS+5d, DUKHCONP1BZ1ELFF4045 FF+5d | -8d | 0d | LABOR- SUBCONTRACTOR [96 h]; ELECTRICIANS SK [358.4 h]; MCCB QTY [160 ea]; DB QTY [16 ea] | 16,488 | 25 | 1BP1EWFF25 | DUKHCON1BP1ELFF4060 | DUKHCONP1BZ1ELFF4060 | DH | CON | 1B | Z1 | MEP | EW | FF | B04 | B04-D09 | RES-1B |
| DUKHCONP1BZ1ELFF4065 |  | Installation of Lighting fixtures & Accessories | 25d | 2014-04-29 | 2014-05-27 | DUKHCONP1BZ1ARFF3360 SS+10d, DUKHCONP1BZ1ELFF4060 FF+11d, DUKHCONP1BZ1ELFF4060 SS+11d, DUKHCONP1BZ1ARFF3360 FF+10d, DUKHCONP1BZ1ELGF4025 SS+5d, DUKHCONP1BZ1ELGF4025 FF+5d | -8d | 0d | LABOR- SUBCONTRACTOR [1152 h]; ELECTRICIANS SK [2150.4 h]; LIGHTS QTY [960 ea] | 176,151 | 30 | 1BP1EWFF30 | DUKHCON1BP1ELFF4065 | DUKHCONP1BZ1ELFF4065 | DH | CON | 1B | Z1 | MEP | EW | FF | B04 | B04-D09 | RES-1B |
|  | 20 | **ROOF** |  | 2014-05-19 | 2014-06-25 |  |  |  |  |  |  |  |  |  |  |  |  |  |  |  |  |  |  |  |
| DUKHCONP1BZ1ELRF4070 |  | Installation of Isolator | 18d | 2014-05-19 | 2014-06-08 | DUKHCONP1BZ1ELFF4065 FF+10d, DUKHCONP1BZ1ELFF4065 SS+10d, DUKHCONP1BZ1ELFF4050 SS+5d, DUKHCONP1BZ1ELFF4045 SS+10d, DUKHCONP1BZ1ARRF3645 FF+7d, DUKHCONP1BZ1ARRF3645 SS+7d, DUKHCONP1BZ1ELFF4045 FF+10d, DUKHCONP1BZ1ELFF4050 FF+7d | -8d | 0d | LABOR- SUBCONTRACTOR [288 h]; ELECTRICIANS SK [537.6 h]; ISOLATOR QTY [96 ea] | 46,262 | 10 | 1BP1EWRF10 | DUKHCON1BP1ELRF4070 | DUKHCONP1BZ1ELRF4070 | DH | CON | 1B | Z1 | MEP | EW | RF | B04 | B04-D09 | RES-1B |
| DUKHCONP1BZ1ELRF4075 |  | Installation of TV Dish Antenna | 23d | 2014-05-31 | 2014-06-25 | DUKHCONP1BZ1ELRF4070 SS+10d, DUKHCONP1BZ1ELRF4070 FF+10d | -8d | 0d | LABOR- SUBCONTRACTOR [576 h]; ELECTRICIANS SK [1254.4 h]; CONTROL BOX QTY [32 ea]; SWITCHING BOX QTY [80 ea] | 32,745 | 15 | 1BP1EWRF15 | DUKHCON1BP1ELRF4075 | DUKHCONP1BZ1ELRF4075 | DH | CON | 1B | Z1 | MEP | EW | RF | B04 | B04-D09 | RES-1B |
|  | 15 | **PLUMBING, DRAINAGE & FIRE FIGHTING WORKS** |  | 2013-08-05 | 2014-06-07 |  |  |  |  |  |  |  |  |  |  |  |  |  |  |  |  |  |  |  |
|  | 10 | **GROUND FLOOR** |  | 2013-08-05 | 2014-03-25 |  |  |  |  |  |  |  |  |  |  |  |  |  |  |  |  |  |  |  |
| DUKHCONP1BZ1PLUG4300 |  | Drainage / Storm Pipes in Grade Slab | 20d | 2013-08-05 | 2013-08-31 | DUKHCONP1BZ1STUG1040 SS+10d, DUKHCONP1BZ1STUG1040 FF+10d | -11d | 0d | LABOR- SUBCONTRACTOR [24 h]; MECHANICALS SK [86.4 h]; DRAINAGE PIPES QTY [144 lm] | 29,221 | 10 | 1BP1PLUG10 | DUKHCON1BP1PLUG4300 | DUKHCONP1BZ1PLUG4300 | DH | CON | 1B | Z1 | ST | SB | UG | B04 | B04-D07 | RES-1B |
| DUKHCONP1BZ1PLGF4305 |  | Installation of Plumbing pipes & testing | 18d | 2013-11-25 | 2013-12-15 | DUKHCONP1BZ1ARGF3000 SS+7d, DUKHCONP1BZ1ARGF3000 FF+7d | 33d | 0d | LABOR- SUBCONTRACTOR [192 h]; MECHANICALS SK [691.2 h]; PLUMB PIPES QTY [624 lm] | 69,653 | 10 | 1BP1PLGF10 | DUKHCON1BP1PLGF4305 | DUKHCONP1BZ1PLGF4305 | DH | CON | 1B | Z1 | MEP | PL | GF | B04 | B04-D07 | RES-1B |
| DUKHCONP1BZ1PLGF4310 |  | Installation of Drainage pipes &testing | 18d | 2013-11-25 | 2013-12-15 | DUKHCONP1BZ1ARGF3000 SS+7d, DUKHCONP1BZ1ARGF3000 FF+7d, DUKHCONP1BZ1PLGF4305 FF, DUKHCONP1BZ1PLGF4305 SS | 33d | 21d | LABOR- SUBCONTRACTOR [72 h]; MECHANICALS SK [259.2 h]; DRAINAGE PIPES QTY [464 lm] | 5,128 | 15 | 1BP1PLGF15 | DUKHCON1BP1PLGF4310 | DUKHCONP1BZ1PLGF4310 | DH | CON | 1B | Z1 | MEP | PL | GF | B04 | B04-D07 | RES-1B |
| DUKHCONP1BZ1PLGF4315 |  | Sanitary Fittings & Accessories | 20d | 2014-02-25 | 2014-03-19 | DUKHCONP1BZ1PLGF4310 FF+5d, DUKHCONP1BZ1PLGF4310 SS+5d, DUKHCONP1BZ1ARGF3065 SS+5d, DUKHCONP1BZ1ARGF3065 FF+5d | 71d | 0d | LABOR- SUBCONTRACTOR [72 h]; MECHANICALS SK [129.6 h]; SANITARY ACC QTY [120 ea] | 100,216 | 20 | 1BP1PLGF20 | DUKHCON1BP1PLGF4315 | DUKHCONP1BZ1PLGF4315 | DH | CON | 1B | Z1 | MEP | PL | GF | B04 | B04-D07 | RES-1B |
| DUKHCONP1BZ1PLGF4320 |  | Installation of Water Heater | 15d | 2014-03-09 | 2014-03-25 | DUKHCONP1BZ1ARGF3060 SS+5d, DUKHCONP1BZ1PLGF4315 SS+5d, DUKHCONP1BZ1PLGF4315 FF+5d, DUKHCONP1BZ1ARGF3060 FF+5d | 71d | 10d | LABOR- SUBCONTRACTOR [72 h]; MECHANICALS SK [129.6 h]; WATER HEATER QTY [24 ea] | 12,460 | 25 | 1BP1PLGF25 | DUKHCON1BP1PLGF4320 | DUKHCONP1BZ1PLGF4320 | DH | CON | 1B | Z1 | MEP | PL | GF | B04 | B04-D07 | RES-1B |
|  | 15 | **FIRST FLOORS** |  | 2014-01-08 | 2014-05-20 |  |  |  |  |  |  |  |  |  |  |  |  |  |  |  |  |  |  |  |
| DUKHCONP1BZ1PLFF4325 |  | Installation of Plumbing pipes & testing | 18d | 2014-01-08 | 2014-01-28 | DUKHCONP1BZ1ARFF3300 FF+8d, DUKHCONP1BZ1ARFF3300 SS+8d | -8d | 0d | LABOR- SUBCONTRACTOR [192 h]; MECHANICALS SK [691.2 h]; PLUMB PIPES QTY [624 lm] | 67,368 | 10 | 1BP1PLFF10 | DUKHCON1BP1PLFF4325 | DUKHCONP1BZ1PLFF4325 | DH | CON | 1B | Z1 | MEP | PL | FF | B04 | B04-D07 | RES-1B |
| DUKHCONP1BZ1PLFF4330 |  | Installation of Drainage pipes & testing | 18d | 2014-01-08 | 2014-01-28 | DUKHCONP1BZ1PLFF4325 FF, DUKHCONP1BZ1ARFF3300 SS+7d, DUKHCONP1BZ1PLFF4325 SS, DUKHCONP1BZ1ARFF3300 FF+7d | 19d | 7d | LABOR- SUBCONTRACTOR [72 h]; MECHANICALS SK [259.2 h]; DRAINAGE PIPES QTY [464 lm] | 4,400 | 15 | 1BP1PLFF15 | DUKHCON1BP1PLFF4330 | DUKHCONP1BZ1PLFF4330 | DH | CON | 1B | Z1 | MEP | PL | FF | B04 | B04-D07 | RES-1B |
| DUKHCONP1BZ1PLFF4335 |  | Sanitary Fittings & Accessories | 20d | 2014-04-22 | 2014-05-14 | DUKHCONP1BZ1PLFF4330 FF+5d, DUKHCONP1BZ1PLFF4330 SS+5d, DUKHCONP1BZ1ARFF3365 SS+5d, DUKHCONP1BZ1ARFF3365 FF+5d | 8d | 0d | LABOR- SUBCONTRACTOR [72 h]; MECHANICALS SK [129.6 h]; SANITARY ACC QTY [120 ea] | 104,000 | 20 | 1BP1PLFF20 | DUKHCON1BP1PLFF4335 | DUKHCONP1BZ1PLFF4335 | DH | CON | 1B | Z1 | MEP | PL | FF | B04 | B04-D07 | RES-1B |
| DUKHCONP1BZ1PLFF4340 |  | Installation of Water Heater | 15d | 2014-05-04 | 2014-05-20 | DUKHCONP1BZ1ARFF3360 SS+5d, DUKHCONP1BZ1PLFF4335 FF+5d, DUKHCONP1BZ1ARFF3360 FF+5d, DUKHCONP1BZ1PLFF4335 SS+5d | 8d | 0d | LABOR- SUBCONTRACTOR [48 h]; MECHANICALS SK [86.4 h]; WATER HEATER QTY [16 ea] | 6,070 | 25 | 1BP1PLFF25 | DUKHCON1BP1PLFF4340 | DUKHCONP1BZ1PLFF4340 | DH | CON | 1B | Z1 | MEP | PL | FF | B04 | B04-D07 | RES-1B |
|  | 20 | **ROOF** |  | 2014-02-10 | 2014-06-07 |  |  |  |  |  |  |  |  |  |  |  |  |  |  |  |  |  |  |  |
| DUKHCONP1BZ1PLRF4345 |  | Installation of Plumbing pipes & fittings | 14d | 2014-02-10 | 2014-02-26 | DUKHCONP1BZ1ARRF3605 SS+8d, DUKHCONP1BZ1ARRF3605 FF+8d | 70d | 2d | LABOR- SUBCONTRACTOR [72 h]; MECHANICALS SK [216 h]; PLUMB PIPES QTY [192 lm] | 11,527 | 10 | 1BP1PLRF10 | DUKHCON1BP1PLRF4345 | DUKHCONP1BZ1PLRF4345 | DH | CON | 1B | Z1 | MEP | PL | RF | B04 | B04-D07 | RES-1B |
| DUKHCONP1BZ1PLRF4350 |  | Installation of Rain water Pipes | 15d | 2014-02-23 | 2014-03-11 | DUKHCONP1BZ1PLRF4345 SS+8d, DUKHCONP1BZ1PLRF4345 FF+8d, DUKHCONP1BZ1ARRF3645 SS+5d, DUKHCONP1BZ1AREL3665 SS+7d, DUKHCONP1BZ1PLFF4330 SS+5d, DUKHCONP1BZ1PLFF4330 FF+5d, DUKHCONP1BZ1AREL3665 FF+7d, DUKHCONP1BZ1ARRF3645 FF+5d | 68d | 8d | DRAINAGE PIPES QTY [32 lm] | 95,272 | 15 | 1BP1PLRF15 | DUKHCON1BP1PLRF4350 | DUKHCONP1BZ1PLRF4350 | DH | CON | 1B | Z1 | MEP | PL | RF | B04 | B04-D07 | RES-1B |
| DUKHCONP1BZ1PLRF4355 |  | Roof Water Tank Installation & Connections | 25d | 2014-05-10 | 2014-06-07 | DUKHCONP1BZ1WEEX5065 FF, DUKHCONP1BZ1PLFF4340 FF+5d, DUKHCONP1BZ1PLRF4350 SS+5d, DUKHCONP1BZ1ARRF3655 FF+5d, DUKHCONP1BZ1PLRF4345 SS+8d, DUKHCONP1BZ1PLFF4340 SS+5d, DUKHCONP1BZ1PLRF4350 FF+5d, DUKHCONP1BZ1PLRF4345 FF+8d, DUKHCONP1BZ1ARRF3655 SS+5d | 8d | 0d | LABOR- SUBCONTRACTOR [240 h]; MECHANICALS SK [432 h]; WATER TANK QTY [40 ea] | 593,900 | 20 | 1BP1PLRF20 | DUKHCON1BP1PLRF4355 | DUKHCONP1BZ1PLRF4355 | DH | CON | 1B | Z1 | MEP | PL | RF | B04 | B04-D07 | RES-1B |

Notes:
- DUKHCONP1BZ1ELFF4035: Expenses: P1B-Electrical Installations 33912
- DUKHCONP1BZ1ELFF4040: Expenses: P1B-Electrical Installations 7520
- DUKHCONP1BZ1ELFF4045: Expenses: P1B-Electrical Installations 116330
- DUKHCONP1BZ1ELFF4050: Expenses: P1B-Electrical Installations 37070
- DUKHCONP1BZ1ELFF4055: Expenses: P1B-Electrical Installations 85180
- DUKHCONP1BZ1ELFF4060: Expenses: P1B-Electrical Installations 16488
- DUKHCONP1BZ1ELFF4065: Expenses: P1B-Electrical Installations 176151
- DUKHCONP1BZ1ELRF4070: Expenses: P1B-Electrical Installations 46262
- DUKHCONP1BZ1ELRF4075: Expenses: P1B-Electrical Installations 32745
- DUKHCONP1BZ1PLUG4300: Expenses: P1B-Plumbing and Drainage works 29221
- DUKHCONP1BZ1PLGF4305: Expenses: P1B-Plumbing and Drainage works 69653
- DUKHCONP1BZ1PLGF4310: Expenses: P1B-Plumbing and Drainage works 5128
- DUKHCONP1BZ1PLGF4315: Expenses: P1B-Plumbing and Drainage works 100216
- DUKHCONP1BZ1PLGF4320: Expenses: P1B-Plumbing and Drainage works 12460
- DUKHCONP1BZ1PLFF4325: Expenses: P1B-Plumbing and Drainage works 67368
- DUKHCONP1BZ1PLFF4330: Expenses: P1B-Plumbing and Drainage works 4400
- DUKHCONP1BZ1PLFF4335: Expenses: P1B-Plumbing and Drainage works 104000
- DUKHCONP1BZ1PLFF4340: Expenses: P1B-Plumbing and Drainage works 6070
- DUKHCONP1BZ1PLRF4345: Expenses: P1B-Plumbing and Drainage works 11527
- DUKHCONP1BZ1PLRF4350: Expenses: P1B-Plumbing and Drainage works 95272
- DUKHCONP1BZ1PLRF4355: Expenses: P1B-Plumbing and Drainage works 593900

| ID | WBS | Activity | Duration | Start | Finish | Predecessors | Total float | Free float | Resources | Cost | CODE | P3 ACTID | P6 ID (old) | NP61D | PROJECT | PHASES | PACKAGE | PART | ELEMENTS | STEP | FLOORS | BILL NOS | BILL DIVISION | RES PACK |
| --- | --- | --- | --- | --- | --- | --- | --- | --- | --- | --- | --- | --- | --- | --- | --- | --- | --- | --- | --- | --- | --- | --- | --- | --- |
|  | 20 | **AC WORKS** |  | 2013-12-15 | 2014-06-03 |  |  |  |  |  |  |  |  |  |  |  |  |  |  |  |  |  |  |  |
|  | 10 | **GROUND FLOOR** |  | 2013-12-15 | 2014-03-23 |  |  |  |  |  |  |  |  |  |  |  |  |  |  |  |  |  |  |  |
| DUKHCONP1BZ1ACGF4600 |  | Installation AC Pipes | 20d | 2013-12-15 | 2014-01-07 | DUKHCONP1BZ1ARGF3005 SS+7d, DUKHCONP1BZ1ARGF3005 FF+7d | 70d | 5d | LABOR- SUBCONTRACTOR [408 h]; AC TECHNICIAN SK [1478.4 h]; AC PIPES QTY [4000 lm] | 7,099 | 10 | 1BP1ACGF10 | DUKHCON1BP1ACGF4600 | DUKHCONP1BZ1ACGF4600 | DH | CON | 1B | Z1 | MEP | AC | GF | B04 | B04-D08 | RES-1B |
| DUKHCONP1BZ1ACGF4605 |  | Fixing of Ventilation Equipments | 25d | 2014-02-06 | 2014-03-08 | DUKHCONP1BZ1ARGF3060 FF+7d, DUKHCONP1BZ1ARGF3060 SS+7d, DUKHCONP1BZ1ACGF4600 SS+10d, DUKHCONP1BZ1ARGF3055 FF+7d, DUKHCONP1BZ1ACGF4600 FF+10d, DUKHCONP1BZ1ARGF3055 SS+7d | 58d | 0d | LABOR- SUBCONTRACTOR [72 h]; AC TECHNICIAN SK [224 h]; VENTILIATION EQP QTY [80 ea] | 29,118 | 15 | 1BP1ACGF15 | DUKHCON1BP1ACGF4605 | DUKHCONP1BZ1ACGF4605 | DH | CON | 1B | Z1 | MEP | AC | GF | B04 | B04-D08 | RES-1B |
| DUKHCONP1BZ1ACGF4610 |  | Fixing of Split AC | 20d | 2014-03-01 | 2014-03-23 | DUKHCONP1BZ1ACGF4605 SS+13d, DUKHCONP1BZ1ACGF4605 FF+13d | 58d | 5d | LABOR- SUBCONTRACTOR [120 h]; AC TECHNICIAN SK [448 h]; SPLIT UNIT QTY [80 ea] | 57,350 | 20 | 1BP1ACGF20 | DUKHCON1BP1ACGF4610 | DUKHCONP1BZ1ACGF4610 | DH | CON | 1B | Z1 | MEP | AC | GF | B04 | B04-D08 | RES-1B |
|  | 15 | **FIRST FLOORS** |  | 2014-02-01 | 2014-05-22 |  |  |  |  |  |  |  |  |  |  |  |  |  |  |  |  |  |  |  |
| DUKHCONP1BZ1ACFF4615 |  | Installation AC Pipes | 20d | 2014-02-01 | 2014-02-24 | DUKHCONP1BZ1ARFF3305 SS+7d, DUKHCONP1BZ1ARFF3305 FF+7d | 35d | 0d | LABOR- SUBCONTRACTOR [408 h]; AC TECHNICIAN SK [1478.4 h]; AC PIPES QTY [4000 lm] | 4,983 | 10 | 1BP1ACFF10 | DUKHCON1BP1ACFF4615 | DUKHCONP1BZ1ACFF4615 | DH | CON | 1B | Z1 | MEP | AC | FF | B04 | B04-D08 | RES-1B |
| DUKHCONP1BZ1ACFF4620 |  | Fixing of Ventilation Equipments | 25d | 2014-04-09 | 2014-05-07 | DUKHCONP1BZ1ARFF3360 SS+7d, DUKHCONP1BZ1ACFF4615 FF+10d, DUKHCONP1BZ1ARFF3360 FF+7d, DUKHCONP1BZ1ACFF4615 SS+10d | 6d | 0d | LABOR- SUBCONTRACTOR [48 h]; AC TECHNICIAN SK [134.4 h]; VENTILIATION EQP QTY [48 ea] | 5,633 | 15 | 1BP1ACFF15 | DUKHCON1BP1ACFF4620 | DUKHCONP1BZ1ACFF4620 | DH | CON | 1B | Z1 | MEP | AC | FF | B04 | B04-D08 | RES-1B |
| DUKHCONP1BZ1ACFF4625 |  | Fixing of Split AC | 20d | 2014-04-30 | 2014-05-22 | DUKHCONP1BZ1ACFF4620 SS+13d, DUKHCONP1BZ1ACFF4620 FF+13d | 6d | 0d | LABOR- SUBCONTRACTOR [120 h]; AC TECHNICIAN SK [448 h]; SPLIT UNIT QTY [80 ea] | 43,882 | 20 | 1BP1ACFF20 | DUKHCON1BP1ACFF4625 | DUKHCONP1BZ1ACFF4625 | DH | CON | 1B | Z1 | MEP | AC | FF | B04 | B04-D08 | RES-1B |
|  | 20 | **ROOF** |  | 2014-02-13 | 2014-06-03 |  |  |  |  |  |  |  |  |  |  |  |  |  |  |  |  |  |  |  |
| DUKHCONP1BZ1ACRF4630 |  | Installation of Refrigerant Pipes | 25d | 2014-02-13 | 2014-03-13 | DUKHCONP1BZ1ACGF4600 FF+7d, DUKHCONP1BZ1ACGF4600 SS+7d, DUKHCONP1BZ1ARRF3645 FF+7d, DUKHCONP1BZ1ACFF4615 SS+10d, DUKHCONP1BZ1ARRF3645 SS+7d, DUKHCONP1BZ1ACFF4615 FF+10d | 76d | 0d | LABOR- SUBCONTRACTOR [168 h]; AC TECHNICIAN SK [627.2 h]; AC PIPES QTY [1640 lm] | 24,000 | 10 | 1BP1ACRF10 | DUKHCON1BP1ACRF4630 | DUKHCONP1BZ1ACRF4630 | DH | CON | 1B | Z1 | MEP | AC | RF | B04 | B04-D08 | RES-1B |
| DUKHCONP1BZ1ACRF4635 |  | Installation of Condensing Unit | 25d | 2014-05-06 | 2014-06-03 | DUKHCONP1BZ1ACRF4630 SS+5d, DUKHCONP1BZ1ACGF4610 SS+5d, DUKHCONP1BZ1ACFF4625 FF+5d, DUKHCONP1BZ1ACFF4625 SS+5d, DUKHCONP1BZ1ACGF4610 FF+5d, DUKHCONP1BZ1ACRF4630 FF+5d | 11d | 0d | AC UNITS QTY [160 ea]; LABOR- SUBCONTRACTOR [240 h]; AC TECHNICIAN SK [896 h] | 130,673 | 15 | 1BP1ACRF15 | DUKHCON1BP1ACRF4635 | DUKHCONP1BZ1ACRF4635 | DH | CON | 1B | Z1 | MEP | AC | RF | B04 | B04-D08 | RES-1B |
|  | 25 | **EXTERNAL WORKS** |  | 2013-12-23 | 2014-06-29 |  |  |  |  |  |  |  |  |  |  |  |  |  |  |  |  |  |  |  |
|  | 10 | **MISCELLANEOUS** |  | 2013-12-23 | 2014-06-29 |  |  |  |  |  |  |  |  |  |  |  |  |  |  |  |  |  |  |  |
| DUKHCONP1BZ1MSEX5020 |  | Construction Entrance Ramp | 25d | 2013-12-23 | 2014-01-20 | DUKHCONP1BZ1STRF2055 SS, DUKHCONP1BZ1STRF2055 FF | 58d | 0d | SCREED MASON SK [192 h]; CONCRETE MASON SK [384 h]; INTERLOCK MASON SK [256 h]; LABOR- SUBCONTRACTOR [360 h]; LABOR- SUBCONTRACTOR [96 h]; SCREED QTY [224 Sqm]; CONCRETE QTY [192 Cum]; INTERLOCK QTY [304 Sqm] | 25,080 | 10 | 1BP1MSEX10 | DUKHCON1BP1MS005020 | DUKHCONP1BZ1MSEX5020 | DH | CON | 1B | Z1 | EX | MS |  | B04 | B04-D12 | RES-1B |
| DUKHCONP1BZ1MSEX5000 |  | Construction of Manholes | 25d | 2014-01-04 | 2014-02-01 | DUKHCONP1BZ1PLGF4310 SS+10d, DUKHCONP1BZ1PLGF4310 FF+10d, DUKHCONP1BZ1STRF2055 FF+10d, DUKHCONP1BZ1STRF2055 SS+10d | 10d | 0d | MANHOLES SK [640 h]; LABOR- SUBCONTRACTOR [240 h]; MANHOLES QTY [80 ea] | 27,797 | 25 | 1BP1MSEX25 | DUKHCON1BP1MS005000 | DUKHCONP1BZ1MSEX5000 | DH | CON | 1B | Z1 | EX | MS |  | B04 | B04-D12 | RES-1B |
| DUKHCONP1BZ1MSEX5025 |  | SS.Handrails and Balustrades | 20d | 2014-01-12 | 2014-02-03 | DUKHCONP1BZ1MSEX5020 SS+12d, DUKHCONP1BZ1MSEX5020 FF+12d | 58d | 0d | LABOR- SUBCONTRACTOR [144 h]; S.S.BALUSTRADE QTY [120 lm]; HANDRAIL ERECTOR SKILLED [256 h] | 113,987 | 15 | 1BP1MSEX15 | DUKHCON1BP1MS005025 | DUKHCONP1BZ1MSEX5025 | DH | CON | 1B | Z1 | EX | MS |  | B04 | B04-D12 | RES-1B |
| DUKHCONP1BZ1MSEX5005 |  | Construction of Soak pit, Chambers | 25d | 2014-01-18 | 2014-02-16 | DUKHCONP1BZ1MSEX5000 SS+12d, DUKHCONP1BZ1MSEX5000 FF+12d | 19d | 0d | MANHOLES SK [128 h]; LABOR- SUBCONTRACTOR [48 h]; SOAKPIT QTY [16 ea] | 47,088 | 30 | 1BP1MSEX30 | DUKHCON1BP1MS005005 | DUKHCONP1BZ1MSEX5005 | DH | CON | 1B | Z1 | EX | MS |  | B04 | B04-D12 | RES-1B |
| DUKHCONP1BZ1MSEX5015 |  | Construction of grease Trap | 20d | 2014-02-06 | 2014-03-02 | DUKHCONP1BZ1MSEX5005 FF+12d, DUKHCONP1BZ1MSEX5005 SS+12d | 19d | 0d | LABOR- SUBCONTRACTOR [24 h]; GREASE TRAP QTY [32 lm]; HANDRAIL ERECTOR SKILLED [64 h] | 22,696 | 20 | 1BP1MSEX20 | DUKHCON1BP1MS005015 | DUKHCONP1BZ1MSEX5015 | DH | CON | 1B | Z1 | EX | MS |  | B04 | B04-D07 | RES-1B |
| DUKHCONP1BZ1MSEX5010 |  | Telephone cable laying | 25d | 2014-03-03 | 2014-03-31 | DUKHCONP1BZ1MSEX5015 | 19d | 5d | LABOR- SUBCONTRACTOR [125 h]; ELECTRICIANS SK [125 h]; CONCRETE MASON SK [125 h] | 3,238 |  | 1BP1MSEX40 | DUKHCON1BP1MS005010 | DUKHCONP1BZ1MSEX5010 | DH | CON | 1B | Z1 | EX | MS |  | B04 | B04-D12 | RES-1B |
| DUKHCONP1BZ1MSEX5335 |  | Aluminum Roll-up Shutter with 2m Wall | 25d | 2014-06-01 | 2014-06-29 | DUKHCONI1BZ1BWGL5325 SS+7d | 14d | 0d | LABOR- SUBCONTRACTOR [200 h]; DOOR ERECTOR SK [200 h]; ROLLING SHUTTER QTY [8 ea] | 57,372 | 25 | 1BP1BWFR25 | DUKHCON1BP1MS005335 | DUKHCONP1BZ1MSEX5335 | DH | CON | 1B | Z1 | EX | MS |  | B04 | B04-D12 | RES-1B |
|  | 15 | **WATER TANK ENCLOSURE** |  | 2014-01-06 | 2014-04-07 |  |  |  |  |  |  |  |  |  |  |  |  |  |  |  |  |  |  |  |
| DUKHCONP1BZ1WEEX5030 |  | Excavation | 20d | 2014-01-06 | 2014-01-28 | DUKHCONP1BZ1STRF2060 SS+10d, DUKHCONP1BZ1STRF2060 FF+5d | 40d | 0d | LABOR- SUBCONTRACTOR [48 h]; EXCAVATION QTY [80 Cum]; LOADER [20 h]; POCLAIN [40 h]; TRUCK [20 h]; EQUIP OPERATORS [80 h] | 896 | 10 | 1BP1WEEX10 | DUKHCON1BP1WE005030 | DUKHCONP1BZ1WEEX5030 | DH | CON | 1B | Z1 | EX | WE |  | B04 | B04-D12 | RES-1B |
| DUKHCONP1BZ1WEEX5035 |  | Construction of Raft | 25d | 2014-01-12 | 2014-02-09 | DUKHCONP1BZ1WEEX5030 SS+5d, DUKHCONP1BZ1WEEX5030 FF+10d | 60d | 0d | STEEL FIXERS SK [96 h]; CARPENTERS SK [736 h]; CONCRETE MASON SK [96 h]; LABOR- SUBCONTRACTOR [696 h]; REINFORCEMENT BARS QTY [1248 kg]; FORMWORK QTY [368 Sqm]; CONCRETE QTY [40 Cum] | 13,680 | 15 | 1BP1WEEX15 | DUKHCON1BP1WE005035 | DUKHCONP1BZ1WEEX5035 | DH | CON | 1B | Z1 | EX | WE |  | B04 | B04-D12 | RES-1B |
| DUKHCONP1BZ1WEEX5040 |  | Block works & Plastering | 25d | 2014-01-21 | 2014-02-19 | DUKHCONP1BZ1WEEX5035 FF+8d, DUKHCONP1BZ1WEEX5035 SS+8d | 60d | 0d | BLOCK MASON SK [224 h]; PLASTER MASON SK [352 h]; LABOR- SUBCONTRACTOR [312 h]; BLOCK QTY [112 Sqm]; PLASTER QTY [224 Sqm] | 19,727 | 20 | 1BP1WEEX20 | DUKHCON1BP1WE005040 | DUKHCONP1BZ1WEEX5040 | DH | CON | 1B | Z1 | EX | WE |  | B04 | B04-D12 | RES-1B |
| DUKHCONP1BZ1WEEX5045 |  | Flooring & Painting | 25d | 2014-02-02 | 2014-03-03 | DUKHCONP1BZ1WEEX5040 SS+10d, DUKHCONP1BZ1WEEX5040 FF+10d | 60d | 0d | LABOR- SUBCONTRACTOR [120 h]; PAINT QTY [312 Sqm]; EPOXY QTY [88 Sqm]; PAINTERS SK [256 h]; EPOXY SK [32 h] | 18,792 | 25 | 1BP1WEEX25 | DUKHCON1BP1WE005045 | DUKHCONP1BZ1WEEX5045 | DH | CON | 1B | Z1 | EX | WE |  | B04 | B04-D12 | RES-1B |
| DUKHCONP1BZ1WEEX5050 |  | Installation of Steel Gate | 20d | 2014-02-20 | 2014-03-15 | DUKHCONP1BZ1WEEX5045 FF+10d, DUKHCONP1BZ1WEEX5045 SS+5d, DUKHCONP1BZ1MSEX5025 | 60d | 0d | LABOR- SUBCONTRACTOR [48 h]; GATE QTY [8 ea]; GATE ERECTOR SK [64 h] | 75,504 | 30 | 1BP1WEEX30 | DUKHCON1BP1WE005050 | DUKHCONP1BZ1WEEX5050 | DH | CON | 1B | Z1 | EX | WE |  | B04 | B04-D12 | RES-1B |
| DUKHCONP1BZ1WEEX5060 |  | Structural steel & SS Shed cover installation | 25d | 2014-02-26 | 2014-03-26 | DUKHCONP1BZ1WEEX5050 SS+5d, DUKHCONP1BZ1WEEX5050 FF+5d | 60d | 0d | LABOR- SUBCONTRACTOR [264 h]; STRUCTURAL STEEL QTY [256 kg]; SS SHED COVER QTY [80 Sqm]; STEEL ERECTOR SK [352 h] | 45,463 | 35 | 1BP1WEEX35 | DUKHCON1BP1WE005060 | DUKHCONP1BZ1WEEX5060 | DH | CON | 1B | Z1 | EX | WE |  | B04 | B04-D12 | RES-1B |
| DUKHCONP1BZ1WEEX5065 |  | Install. of Water Tank,Chiller,Pump & Meter | 25d | 2014-03-10 | 2014-04-07 | DUKHCONP1BZ1WEEX5060 FF+10d, DUKHCONP1BZ1PLRF4350 SS+5d, DUKHCONP1BZ1PLRF4350 FF+5d, DUKHCONP1BZ1MSEX5015 SS+10d, DUKHCONP1BZ1WEEX5060 SS+10d, DUKHCONP1BZ1MSEX5015 FF+10d | 60d | 0d | LABOR- SUBCONTRACTOR [120 h]; AC TECHNICIAN SK [89.6 h]; MECHANICALS SK [172.8 h]; WATER TANK QTY [8 ea]; PUMP QTY [8 ea]; CHILLER QTY [80 ea] | 122,333 | 40 | 1BP1WEEX40 | DUKHCON1BP1WE005065 | DUKHCONP1BZ1WEEX5065 | DH | CON | 1B | Z1 | EX | WE |  | B04 | B04-D07 | RES-1B |

Notes:
- DUKHCONP1BZ1ACGF4600: Expenses: P1B-Air-conditioning and Ventilation works 7099
- DUKHCONP1BZ1ACGF4605: Expenses: P1B-Air-conditioning and Ventilation works 29118
- DUKHCONP1BZ1ACGF4610: Expenses: P1B-Air-conditioning and Ventilation works 57350
- DUKHCONP1BZ1ACFF4615: Expenses: P1B-Air-conditioning and Ventilation works 4983
- DUKHCONP1BZ1ACFF4620: Expenses: P1B-Air-conditioning and Ventilation works 5633
- DUKHCONP1BZ1ACFF4625: Expenses: P1B-Air-conditioning and Ventilation works 43882
- DUKHCONP1BZ1ACRF4630: Expenses: P1B-Air-conditioning and Ventilation works 24000
- DUKHCONP1BZ1ACRF4635: Expenses: P1B-Air-conditioning and Ventilation works 130673
- DUKHCONP1BZ1MSEX5020: Expenses: P1B-External works within the Plot Curtilage 25080
- DUKHCONP1BZ1MSEX5000: Expenses: P1B-External works within the Plot Curtilage 27797
- DUKHCONP1BZ1MSEX5025: Expenses: P1B-External works within the Plot Curtilage 113987
- DUKHCONP1BZ1MSEX5005: Expenses: P1B-External works within the Plot Curtilage 47088
- DUKHCONP1BZ1MSEX5015: Expenses: P1B-Plumbing and Drainage works 22696
- DUKHCONP1BZ1MSEX5010: Expenses: P1B-External works within the Plot Curtilage 3238
- DUKHCONP1BZ1MSEX5335: Expenses: P1B-External works within the Plot Curtilage 57372
- DUKHCONP1BZ1WEEX5030: Expenses: P1B-External works within the Plot Curtilage 896
- DUKHCONP1BZ1WEEX5035: Expenses: P1B-External works within the Plot Curtilage 13680
- DUKHCONP1BZ1WEEX5040: Expenses: P1B-External works within the Plot Curtilage 19727
- DUKHCONP1BZ1WEEX5045: Expenses: P1B-External works within the Plot Curtilage 18792
- DUKHCONP1BZ1WEEX5050: Expenses: P1B-External works within the Plot Curtilage 75504
- DUKHCONP1BZ1WEEX5060: Expenses: P1B-External works within the Plot Curtilage 45463
- DUKHCONP1BZ1WEEX5065: Expenses: P1B-Plumbing and Drainage works 122333

| ID | WBS | Activity | Duration | Start | Finish | Predecessors | Total float | Free float | Resources | Cost | CODE | P3 ACTID | P6 ID (old) | NP61D | PROJECT | PHASES | PACKAGE | PART | ELEMENTS | STEP | BILL NOS | BILL DIVISION | RES PACK | FLOORS | rem |
| --- | --- | --- | --- | --- | --- | --- | --- | --- | --- | --- | --- | --- | --- | --- | --- | --- | --- | --- | --- | --- | --- | --- | --- | --- | --- |
|  | 20 | **HARD LANDSCAPING** |  | 2014-01-20 | 2014-03-11 |  |  |  |  |  |  |  |  |  |  |  |  |  |  |  |  |  |  |  |  |
| DUKHCONP1BZ1HDEX5090 |  | kerb works | 20d | 2014-01-20 | 2014-02-12 | DUKHCONP1BZ1MSEX5020 FF+7d, DUKHCONP1BZ1MSEX5020 SS+7d, DUKHCONP1BZ1MSEX5025 SS+7d | 58d | 0d | KERBSTONE MASON SK [448 h]; LABOR- SUBCONTRACTOR [264 h]; KERBSTONE QTY [576 lm] | 12,546 | 10 | 1BP1HDEX10 | DUKHCON1BP1HD005090 | DUKHCONP1BZ1HDEX5090 | DH | CON | 1B | Z1 | EX | HD | B04 | B04-D12 | RES-1B |  |  |
| DUKHCONP1BZ1HDEX5095 |  | Cobble Stone Works | 20d | 2014-02-01 | 2014-02-24 | DUKHCONP1BZ1HDEX5090 SS+10d, DUKHCONP1BZ1HDEX5090 FF+10d | 58d | 0d | TILE MASON SK [288 h]; LABOR- SUBCONTRACTOR [168 h]; COBBLE STONE QTY [176 Sqm] | 35,584 | 15 | 1BP1HDEX15 | DUKHCON1BP1HD005095 | DUKHCONP1BZ1HDEX5095 | DH | CON | 1B | Z1 | EX | HD | B04 | B04-D12 | RES-1B |  |  |
| DUKHCONP1BZ1HDEX5100 |  | Interlock works | 20d | 2014-02-17 | 2014-03-11 | DUKHCONP1BZ1HDEX5095 FF+13d, DUKHCONP1BZ1HDEX5095 SS+13d | 58d | 0d | INTERLOCK MASON SK [288 h]; LABOR- SUBCONTRACTOR [120 h]; INTERLOCK QTY [368 Sqm] | 42,407 | 20 | 1BP1HDEX20 | DUKHCON1BP1HD005100 | DUKHCONP1BZ1HDEX5100 | DH | CON | 1B | Z1 | EX | HD | B04 | B04-D12 | RES-1B |  |  |
|  | 25 | **SOFT LANDSCAPING** |  | 2014-03-01 | 2014-04-09 |  |  |  |  |  |  |  |  |  |  |  |  |  |  |  |  |  |  |  |  |
| DUKHCONP1BZ1SLEX5105 |  | Laying of Grass/ green area | 25d | 2014-03-01 | 2014-03-29 | DUKHCONP1BZ1HDEX5100 SS+10d, DUKHCONP1BZ1HDEX5100 FF+10d | 58d | 0d | LABOR- SUBCONTRACTOR [2352 h]; SWEET SOIL QTY [672 Cum]; GRASS QTY [672 Sqm]; LANDSCAPING SK [3136 h] | 50,184 | 10 | 1BP1SLEX10 | DUKHCON1BP1SL005105 | DUKHCONP1BZ1SLEX5105 | DH | CON | 1B | Z1 | EX | SL | B04 | B04-D12 | RES-1B |  |  |
| DUKHCONP1BZ1SLEX5110 |  | Laying of Palm tree | 25d | 2014-03-12 | 2014-04-09 | DUKHCONP1BZ1SLEX5105 FF+10d, DUKHCONP1BZ1SLEX5105 SS+10d | 58d | 66d | LABOR- SUBCONTRACTOR [144 h]; SWEET SOIL QTY [96 Cum]; PLAM TREES QTY [32 ea]; LANDSCAPING SK [192 h] | 120,888 | 15 | 1BP1SLEX15 | DUKHCON1BP1SL005110 | DUKHCONP1BZ1SLEX5110 | DH | CON | 1B | Z1 | EX | SL | B04 | B04-D12 | RES-1B |  |  |
|  | 30 | **TESTING AND COMMISSIONING** |  | 2014-06-26 | 2014-07-24 |  |  |  |  |  |  |  |  |  |  |  |  |  |  |  |  |  |  |  |  |
| DUKHCONP1BZ1ACTC8000 |  | Pre-Commissioning & Testing of AC Works | 25d | 2014-06-26 | 2014-07-24 | DUKHCONP1BZ1ARRF3620, DUKHCONP1BZ1ACRF4635, DUKHCONP1BZ1SLEX5105, DUKHCONP1BZ1MSEX5005, DUKHCONP1BZ1HDEX5100, DUKHCONP1BZ1AREL3680, DUKHCONP1BZ1ARRF3660, DUKHCONP1BZ1ARFF3395, DUKHCONP1BZ1ARGF3095, DUKHCONP1BZ1ACFF4625, DUKHCONP1BZ1SLEX5110 | -8d | 0d | LABOR- SUBCONTRACTOR [500 h]; AC TECHNICIAN SK [1000 h] | 1,696 |  | 1BP1ACU100 | DUKHCON1BP1AC008000 | DUKHCONP1BZ1ACTC8000 | DH | CON | 1B | Z1 | TES |  | B04 | B04-D08 | RES-1B |  |  |
| DUKHCONP1BZ1ELTC8010 |  | Pre-Commissioning & Testing of Electrical Works | 25d | 2014-06-26 | 2014-07-24 | DUKHCONP1BZ1HDEX5100, DUKHCONP1BZ1SLEX5105, DUKHCONP1BZ1AREL3680, DUKHCONP1BZ1ARRF3655, DUKHCONP1BZ1ARFF3395, DUKHCONP1BZ1ELFF4055, DUKHCONP1BZ1ARRF3620, DUKHCONP1BZ1ELFF4065, DUKHCONP1BZ1ELGF4030, DUKHCONP1BZ1ELRF4075, DUKHCONP1BZ1ELGF4015, DUKHCONP1BZ1ARGF3095, DUKHCONP1BZ1ARRF3660, DUKHCONP1BZ1ELGF4025, DUKHCONP1BZ1SLEX5110, DUKHCONP1BZ1ELFF4050, DUKHCONP1BZ1MSEX5005 | -8d | 0d | LABOR- SUBCONTRACTOR [1000 h]; ELECTRICIANS SK [2000 h] | 45,560 |  | 1BP1ELE100 | DUKHCON1BP1EL008010 | DUKHCONP1BZ1ELTC8010 | DH | CON | 1B | Z1 | TES |  | B04 | B04-D09 | RES-1B |  |  |
| DUKHCONP1BZ1PLTC8005 |  | Pre-Commissioning & Testing of Plumbing Works | 25d | 2014-06-26 | 2014-07-24 | DUKHCONP1BZ1SLEX5105, DUKHCONP1BZ1AREL3680, DUKHCONP1BZ1ARRF3660, DUKHCONP1BZ1ARFF3395, DUKHCONP1BZ1ARGF3095, DUKHCONP1BZ1MSEX5005, DUKHCONP1BZ1SLEX5110, DUKHCONP1BZ1PLRF4350, DUKHCONP1BZ1ARRF3620, DUKHCONP1BZ1PLGF4320, DUKHCONP1BZ1WEEX5065, DUKHCONP1BZ1ARRF3655, DUKHCONP1BZ1PLRF4355, DUKHCONP1BZ1HDEX5100 | -8d | 0d | LABOR- SUBCONTRACTOR [1000 h]; MECHANICALS SK [2000 h] | 7,112 |  | 1BP1PLU100 | DUKHCON1BP1PL008005 | DUKHCONP1BZ1PLTC8005 | DH | CON | 1B | Z1 | TES |  | B04 | B04-D07 | RES-1B |  |  |
|  | 15 | **ZONE - 2 (4 Twin Villas)** |  | 2013-05-26 | 2014-08-26 |  |  |  |  |  |  |  |  |  |  |  |  |  |  |  |  |  |  |  |  |
|  | 10 | **STRUCTURAL WORKS** |  | 2013-05-26 | 2014-03-05 |  |  |  |  |  |  |  |  |  |  |  |  |  |  |  |  |  |  |  |  |
|  | 10 | **SUB STRUCTURE** |  | 2013-05-26 | 2013-10-14 |  |  |  |  |  |  |  |  |  |  |  |  |  |  |  |  |  |  |  |  |
|  | 10 | **UPTO GRADE SLAB** |  | 2013-05-26 | 2013-10-14 |  |  |  |  |  |  |  |  |  |  |  |  |  |  |  |  |  |  |  |  |
| DUKHCONP1BZ2STUG1000 |  | Footing Excavation | 25d | 2013-05-26 | 2013-06-23 | DUKHCONP1BZ1STUG1000 | -11d | 0d | LABOR- SUBCONTRACTOR [758 h]; EXCAVATION QTY [1264 Cum]; LOADER [169 h]; POCLAIN [337 h]; TRUCK [169 h]; EQUIP OPERATORS [675 h] | 81,497 | 10 | 1BP2SBUG10 | DUKHCON1BP2STUG1000 | DUKHCONP1BZ2STUG1000 | DH | CON | 1B | Z2 | ST | SB | B04 | B04-D01 | RES-1B | UG |  |
| DUKHCONP1BZ2STUG1005 |  | Footing Antitermite | 23d | 2013-06-06 | 2013-07-02 | DUKHCONP1BZ2STUG1000 FF+5d, DUKHCONP1BZ2STUG1000 SS+10d | -11d | 0d | LABOR- SUBCONTRACTOR [507.75 h]; ANTITERMITE QTY [3384 sqft]; ANTITERMITE SK [1354 h] | 10,152 | 15 | 1BP2SBUG15 | DUKHCON1BP2STUG1005 | DUKHCONP1BZ2STUG1005 | DH | CON | 1B | Z2 | ST | SB | B04 | B04-D01 | RES-1B | UG | REM |
| DUKHCONP1BZ2STUG1010 |  | Footing Blinding | 23d | 2013-06-10 | 2013-07-06 | DUKHCONP1BZ2STUG1005 SS+3d, DUKHCONP1BZ2STUG1005 FF+3d | -11d | 0d | BLINDING MASON SK [599 h]; LABOR- SUBCONTRACTOR [449.25 h]; BLINDING QTY [748 Sqm] | 18,857 | 15 | 1BP2SBUG18 | DUKHCON1BP2STUG1010 | DUKHCONP1BZ2STUG1010 | DH | CON | 1B | Z2 | ST | SB | B04 | B04-D02 | RES-1B | UG | REM |
| DUKHCONP1BZ2STUG1015 |  | Footing Waterproofing & Screed | 25d | 2013-06-16 | 2013-07-14 | DUKHCONP1BZ2STUG1010 FF+5d, DUKHCONP1BZ2STUG1010 SS+5d | -11d | 0d | SCREED MASON SK [600 h]; LABOR- SUBCONTRACTOR [225 h]; SCREED QTY [749 Sqm]; WATERPROOFING QTY [1547 Sqm] | 59,066 | 20 | 1BP2SBUG20 | DUKHCON1BP2STUG1015 | DUKHCONP1BZ2STUG1015 | DH | CON | 1B | Z2 | ST | SB | B04 | B04-D02 | RES-1B | UG | REM |
| DUKHCONP1BZ2STUG1020 |  | Construction of foundations | 20d | 2013-07-01 | 2013-07-23 | DUKHCONP1BZ2STUG1015 FF+8d, DUKHCONP1BZ2STUG1015 SS+7d | -11d | 0d | CONCRETE MASON SK [640 h]; LABOR- SUBCONTRACTOR [3415.5 h]; REINFORCEMENT BARS QTY [34722 kg]; FORMWORK QTY [568 Sqm]; CONCRETE QTY [320 Cum]; STEEL FIXERS SK [2778 h]; CARPENTERS SK [1136 h] | 222,124 | 25 | 1BP2SBUG25 | DUKHCON1BP2STUG1020 | DUKHCONP1BZ2STUG1020 | DH | CON | 1B | Z2 | ST | SB | B04 | B04-D02 | RES-1B | UG | REM |
| DUKHCONP1BZ2STUG1025 |  | Construction of neck of columns | 25d | 2013-07-10 | 2013-08-07 | DUKHCONP1BZ2STUG1020 SS+8d, DUKHCONP1BZ1STUG1025, DUKHCONP1BZ2STUG1020 FF+7d | -11d | 0d | STEEL FIXERS SK [232 h]; CARPENTERS SK [832 h]; CONCRETE MASON SK [48 h]; LABOR- SUBCONTRACTOR [834 h]; REINFORCEMENT BARS QTY [2889 kg]; FORMWORK QTY [416 Sqm]; CONCRETE QTY [24 Cum] | 41,717 | 30 | 1BP2SBUG30 | DUKHCON1BP2STUG1025 | DUKHCONP1BZ2STUG1025 | DH | CON | 1B | Z2 | ST | SB | B04 | B04-D02 | RES-1B | UG | REM |
| DUKHCONP1BZ2STUG1030 |  | Waterproofing Footing & Neck Column | 25d | 2013-07-20 | 2013-08-20 | DUKHCONP1BZ2STUG1025 FF+8d, DUKHCONP1BZ2STUG1025 SS+8d | -11d | 0d | LABOR- SUBCONTRACTOR [146.25 h]; WATERPROOFING QTY [486 Sqm]; WATERPROOFING SPECIALIST SK [389 h] | 23,765 | 35 | 1BP2SBUG35 | DUKHCON1BP2STUG1030 | DUKHCONP1BZ2STUG1030 | DH | CON | 1B | Z2 | ST | SB | B04 | B04-D02 | RES-1B | UG | REM |
| DUKHCONP1BZ2STUG1035 |  | Backfilling Upto Grade Beam Bottom | 25d | 2013-07-31 | 2013-09-01 | DUKHCONP1BZ2STUG1030 SS+10d, DUKHCONP1BZ2STUG1030 FF+10d, DUKHCONP1BZ1STUG1035 | -11d | 0d | LABOR- SUBCONTRACTOR [336 h]; BACKFILLING QTY [1368 Cum]; BOBCAT [500 h]; PLATE COMPACTOR [500 h]; TRUCK [100 h]; EQUIP OPERATORS [1100 h] | 34,798 | 40 | 1BP2SBUG40 | DUKHCON1BP2STUG1035 | DUKHCONP1BZ2STUG1035 | DH | CON | 1B | Z2 | ST | SB | B04 | B04-D01 | RES-1B | UG |  |
| DUKHCONP1BZ2STUG1040 |  | Construction of Grade Beams | 25d | 2013-08-20 | 2013-09-17 | DUKHCONP1BZ2STUG1035 FF+14d, DUKHCONP1BZ2STUG1035 SS+14d | -11d | 0d | BLINDING MASON SK [321 h]; SCREED MASON SK [321 h]; STEEL FIXERS SK [1621 h]; CARPENTERS SK [2112 h]; CONCRETE MASON SK [320 h]; LABOR- SUBCONTRACTOR [3401.25 h]; BLINDING QTY [401 Sqm]; SCREED QTY [401 Sqm]; REINFORCEMENT BARS QTY [20261 kg]; FORMWORK QTY [1056 Sqm]; CONCRETE QTY [160 Cum] | 373,054 | 45 | 1BP2SBUG45 | DUKHCON1BP2STUG1040 | DUKHCONP1BZ2STUG1040 | DH | CON | 1B | Z2 | ST | SB | B04 | B04-D02 | RES-1B | UG | REM |
| DUKHCONP1BZ2STUG1045 |  | Construction of slab on grade | 25d | 2013-09-16 | 2013-10-14 | DUKHCONP1BZ2STUG1040 SS+10d, DUKHCONP1BZ2STUG1040 FF+10d, DUKHCONP1BZ2PLUG4300 SS+8d, DUKHCONP1BZ1STUG1045, DUKHCONP1BZ2PLUG4300 FF+8d | -11d | 0d | BLINDING MASON SK [1219 h]; SCREED MASON SK [1218 h]; STEEL FIXERS SK [493 h]; CONCRETE MASON SK [496 h]; BLINDING QTY [1523 Sqm]; SCREED QTY [1522 Sqm]; CONCRETE QTY [248 Cum]; WELDED WIRE MESH [1848 Sqm]; LABOR- SUBCONTRACTOR [2112.75 h] | 283,313 | 50 | 1BP2SBUG50 | DUKHCON1BP2STUG1045 | DUKHCONP1BZ2STUG1045 | DH | CON | 1B | Z2 | ST | SB | B04 | B04-D02 | RES-1B | UG | REM |

Notes:
- DUKHCONP1BZ1HDEX5090: Expenses: P1B-External works within the Plot Curtilage 12546
- DUKHCONP1BZ1HDEX5095: Expenses: P1B-External works within the Plot Curtilage 35584
- DUKHCONP1BZ1HDEX5100: Expenses: P1B-External works within the Plot Curtilage 42407
- DUKHCONP1BZ1SLEX5105: Expenses: P1B-External works within the Plot Curtilage 50184
- DUKHCONP1BZ1SLEX5110: Expenses: P1B-External works within the Plot Curtilage 120888
- DUKHCONP1BZ1ACTC8000: Expenses: P1B-Air-conditioning and Ventilation works 1696
- DUKHCONP1BZ1ELTC8010: Expenses: P1B-Electrical Installations 45560
- DUKHCONP1BZ1PLTC8005: Expenses: P1B-Plumbing and Drainage works 7112
- DUKHCONP1BZ2STUG1000: Expenses: P1B-Excavation and Earth Works 81497
- DUKHCONP1BZ2STUG1005: Expenses: P1B-Excavation and Earth Works 10152
- DUKHCONP1BZ2STUG1010: Expenses: P1B-Concrete Works 18857
- DUKHCONP1BZ2STUG1015: Expenses: P1B-Concrete Works 59066
- DUKHCONP1BZ2STUG1020: Expenses: P1B-Concrete Works 222124
- DUKHCONP1BZ2STUG1025: Expenses: P1B-Concrete Works 41717
- DUKHCONP1BZ2STUG1030: Expenses: P1B-Concrete Works 23765
- DUKHCONP1BZ2STUG1035: Expenses: P1B-Excavation and Earth Works 34798
- DUKHCONP1BZ2STUG1040: Expenses: P1B-Concrete Works 373054
- DUKHCONP1BZ2STUG1045: Expenses: P1B-Concrete Works 283313

| ID | WBS | Activity | Duration | Start | Finish | Predecessors | Total float | Free float | Resources | Cost | CODE | rem | P3 ACTID | P6 ID (old) | NP61D | PROJECT | PHASES | PACKAGE | PART | ELEMENTS | STEP | FLOORS | BILL NOS | BILL DIVISION | RES PACK | EXECUTER |
| --- | --- | --- | --- | --- | --- | --- | --- | --- | --- | --- | --- | --- | --- | --- | --- | --- | --- | --- | --- | --- | --- | --- | --- | --- | --- | --- |
|  | 15 | **SUPERSTRUCTURE** |  | 2013-10-02 | 2014-03-05 |  |  |  |  |  |  |  |  |  |  |  |  |  |  |  |  |  |  |  |  |  |
|  | 10 | **GROUND FLOOR** |  | 2013-10-02 | 2013-11-28 |  |  |  |  |  |  |  |  |  |  |  |  |  |  |  |  |  |  |  |  |  |
| DUKHCONP1BZ2STGF2000 |  | Column-Rebar & Formwork | 25d | 2013-10-02 | 2013-11-02 | DUKHCONP1BZ2STUG1045 SS+14d, DUKHCONP1BZ1STGF2000, DUKHCONP1BZ2STUG1045 FF+7d | -11d | 0d | STEEL FIXERS SK [832 h]; CARPENTERS SK [2016 h]; LABOR- SUBCONTRACTOR [2136 h]; REINFORCEMENT BARS QTY [10395 kg]; FORMWORK QTY [1008 Sqm] | 90,734 | 10 | REM | 1BP2SPGF10 | DUKHCON1BP2STGF2000 | DUKHCONP1BZ2STGF2000 | DH | CON | 1B | Z2 | ST | SP | GF | B04 | B04-D02 | RES-1B |  |
| DUKHCONP1BZ2STGF2005 |  | Column-Concrete | 23d | 2013-10-12 | 2013-11-09 | DUKHCONP1BZ2STGF2000 SS+8d, DUKHCONP1BZ2STGF2000 FF+2d | -11d | 0d | CONCRETE MASON SK [222 h]; LABOR- SUBCONTRACTOR [166.5 h]; CONCRETE QTY [111 Cum] | 31,968 | 15 | REM | 1BP2SPGF15 | DUKHCON1BP2STGF2005 | DUKHCONP1BZ2STGF2005 | DH | CON | 1B | Z2 | ST | SP | GF | B04 | B04-D02 | RES-1B |  |
| DUKHCONP1BZ2STGF2010 |  | Beam, Stairs ,Slab-Rebar & Formwork | 25d | 2013-10-28 | 2013-11-25 | DUKHCONP1BZ2STGF2005 FF+14d, DUKHCONP1BZ2STGF2005 SS+2d | -11d | 0d | STEEL FIXERS SK [5276 h]; CARPENTERS SK [5422 h]; LABOR- SUBCONTRACTOR [8023.5 h]; REINFORCEMENT BARS QTY [65948 kg]; FORMWORK QTY [2711 Sqm] | 372,787 | 20 | REM | 1BP2SPGF20 | DUKHCON1BP2STGF2010 | DUKHCONP1BZ2STGF2010 | DH | CON | 1B | Z2 | ST | SP | GF | B04 | B04-D02 | RES-1B |  |
| DUKHCONP1BZ2STGF2015 |  | Beam, Stairs ,Slab-Concrete | 14d | 2013-11-13 | 2013-11-28 | DUKHCONP1BZ2STGF2010 FF+3d, DUKHCONP1BZ2STGF2010 SS+10d, DUKHCONP1BZ1STGF2015 | -11d | 0d | CONCRETE MASON SK [832 h]; LABOR- SUBCONTRACTOR [624 h]; CONCRETE QTY [416 Cum] | 140,126 | 25 | REM | 1BP2SPGF25 | DUKHCON1BP2STGF2015 | DUKHCONP1BZ2STGF2015 | DH | CON | 1B | Z2 | ST | SP | GF | B04 | B04-D02 | RES-1B |  |
|  | 15 | **FIRST FLOORS** |  | 2013-11-16 | 2013-12-31 |  |  |  |  |  |  |  |  |  |  |  |  |  |  |  |  |  |  |  |  |  |
| DUKHCONP1BZ2STFF2020 |  | Column-Rebar & Formwork | 25d | 2013-11-16 | 2013-12-14 | DUKHCONP1BZ1STFF2020, DUKHCONP1BZ2STGF2015 FF+5d, DUKHCONP1BZ2STGF2015 SS+2d | -11d | 0d | STEEL FIXERS SK [282 h]; CARPENTERS SK [1792 h]; LABOR- SUBCONTRACTOR [1344 h]; FORMWORK QTY [896 Sqm]; REINFORCEMENT BARS QTY [3529 kg] | 62,208 | 10 | REM | 1BP2SPFF10 | DUKHCON1BP2STFF2020 | DUKHCONP1BZ2STFF2020 | DH | CON | 1B | Z2 | ST | SP | FF | B04 | B04-D02 | RES-1B |  |
| DUKHCONP1BZ2STFF2025 |  | Column-Concrete | 23d | 2013-11-25 | 2013-12-22 | DUKHCONP1BZ2STFF2020 SS+8d, DUKHCONP1BZ2STFF2020 FF+2d | -11d | 0d | CONCRETE MASON SK [194 h]; LABOR- SUBCONTRACTOR [145.5 h]; CONCRETE QTY [97 Cum] | 27,979 | 15 | REM | 1BP2SPFF15 | DUKHCON1BP2STFF2025 | DUKHCONP1BZ2STFF2025 | DH | CON | 1B | Z2 | ST | SP | FF | B04 | B04-D02 | RES-1B |  |
| DUKHCONP1BZ2STFF2030 |  | Beam, Stairs ,Slab-Rebar & Formwork | 25d | 2013-11-28 | 2013-12-28 | DUKHCONP1BZ2STFF2025 FF+5d, DUKHCONP1BZ2STFF2025 SS+2d | 1d | 0d | STEEL FIXERS SK [5481 h]; CARPENTERS SK [5422 h]; LABOR- SUBCONTRACTOR [8177.25 h]; REINFORCEMENT BARS QTY [68503 kg]; FORMWORK QTY [2711 Sqm] | 369,641 | 20 | REM | 1BP2SPFF20 | DUKHCON1BP2STFF2030 | DUKHCONP1BZ2STFF2030 | DH | CON | 1B | Z2 | ST | SP | FF | B04 | B04-D02 | RES-1B |  |
| DUKHCONP1BZ2STFF2035 |  | Beam, Stairs ,Slab-Concrete | 14d | 2013-12-15 | 2013-12-31 | DUKHCONP1BZ2STFF2030 SS+10d, DUKHCONP1BZ2STFF2030 FF+3d, DUKHCONP1BZ1STFF2035 | 1d | 2d | CONCRETE MASON SK [736 h]; LABOR- SUBCONTRACTOR [552 h]; CONCRETE QTY [368 Cum] | 126,130 | 25 | REM | 1BP2SPFF25 | DUKHCON1BP2STFF2035 | DUKHCONP1BZ2STFF2035 | DH | CON | 1B | Z2 | ST | SP | FF | B04 | B04-D02 | RES-1B |  |
|  | 20 | **ROOF** |  | 2013-12-24 | 2014-03-05 |  |  |  |  |  |  |  |  |  |  |  |  |  |  |  |  |  |  |  |  |  |
| DUKHCONP1BZ2STRF2040 |  | Column-Rebar & Formwork | 18d | 2013-12-24 | 2014-01-13 | DUKHCONP1BZ2STFF2035 SS+5d, DUKHCONP1BZ1STRF2040, DUKHCONP1BZ2STFF2035 FF+3d | 26d | 0d | CARPENTERS SK [672 h]; LABOR- SUBCONTRACTOR [504 h]; FORMWORK QTY [336 Sqm] | 19,058 | 10 | REM | 1BP2SPRF10 | DUKHCON1BP2STRF2040 | DUKHCONP1BZ2STRF2040 | DH | CON | 1B | Z2 | ST | SP | RF | B04 | B04-D02 | RES-1B |  |
| DUKHCONP1BZ2STRF2045 |  | Column-Concrete | 17d | 2013-12-28 | 2014-01-15 | DUKHCONP1BZ2STRF2040 SS+3d, DUKHCONP1BZ2STRF2040 FF+1d | 26d | 0d | CONCRETE MASON SK [46 h]; LABOR- SUBCONTRACTOR [34.5 h]; CONCRETE QTY [23 Cum] | 6,660 | 15 | REM | 1BP2SPRF15 | DUKHCON1BP2STRF2045 | DUKHCONP1BZ2STRF2045 | DH | CON | 1B | Z2 | ST | SP | RF | B04 | B04-D02 | RES-1B |  |
| DUKHCONP1BZ2STRF2050 |  | Slab-Rebar & Formwork - Head Room | 20d | 2013-12-30 | 2014-01-21 | DUKHCONP1BZ2STRF2045 SS+2d, DUKHCONP1BZ2STRF2045 FF+5d | 26d | 0d | STEEL FIXERS SK [1294 h]; CARPENTERS SK [674 h]; LABOR- SUBCONTRACTOR [1476 h]; REINFORCEMENT BARS QTY [16169 kg]; FORMWORK QTY [337 Sqm] | 80,128 | 20 | REM | 1BP2SPRF20 | DUKHCON1BP2STRF2050 | DUKHCONP1BZ2STRF2050 | DH | CON | 1B | Z2 | ST | SP | RF | B04 | B04-D02 | RES-1B |  |
| DUKHCONP1BZ2STRF2055 |  | Slab-Concrete-Head room | 13d | 2014-01-13 | 2014-01-27 | DUKHCONP1BZ1STRF2055, DUKHCONP1BZ2STRF2050 SS+5d, DUKHCONP1BZ2STRF2050 FF+5d | 26d | 0d | CONCRETE MASON SK [160 h]; LABOR- SUBCONTRACTOR [120 h]; CONCRETE QTY [80 Cum] | 25,904 | 25 | REM | 1BP2SPRF25 | DUKHCON1BP2STRF2055 | DUKHCONP1BZ2STRF2055 | DH | CON | 1B | Z2 | ST | SP | RF | B04 | B04-D02 | RES-1B |  |
| DUKHCONP1BZ2STRF2060 |  | Construction of Parapets | 25d | 2014-01-15 | 2014-02-13 | DUKHCONP1BZ2STRF2055 FF+10d, DUKHCONP1BZ2STRF2055 SS+2d | 50d | 0d | BLOCK QTY [376 Sqm]; BLOCK MASON SK [752 h]; LABOR- SUBCONTRACTOR [423 h] | 23,312 | 30 | REM | 1BP2SPRF30 | DUKHCON1BP2STRF2060 | DUKHCONP1BZ2STRF2060 | DH | CON | 1B | Z2 | ST | SP | RF | B04 | B04-D03 | RES-1B |  |
| DUKHCONP1BZ2STRF2065 |  | Construction of up stands/Plinth | 25d | 2014-02-04 | 2014-03-05 | DUKHCONP1BZ1STRF2065, DUKHCONP1BZ2STRF2060 FF+10d, DUKHCONP1BZ2STRF2060 SS+10d | 67d | 0d | STEEL FIXERS SK [58 h]; CARPENTERS SK [240 h]; CONCRETE MASON SK [16 h]; LABOR- SUBCONTRACTOR [235.5 h]; REINFORCEMENT BARS QTY [722 kg]; FORMWORK QTY [120 Sqm]; CONCRETE QTY [8 Cum] | 12,704 | 35 | REM | 1BP2SPRF35 | DUKHCON1BP2STRF2065 | DUKHCONP1BZ2STRF2065 | DH | CON | 1B | Z2 | ST | SP | RF | B04 | B04-D02 | RES-1B |  |
|  | 15 | **FINISHING WORKS** |  | 2013-12-08 | 2014-07-24 |  |  |  |  |  |  |  |  |  |  |  |  |  |  |  |  |  |  |  |  |  |
|  | 10 | **INTERNAL FINISHES** |  | 2013-12-08 | 2014-07-24 |  |  |  |  |  |  |  |  |  |  |  |  |  |  |  |  |  |  |  |  |  |
|  | 10 | **GROUND FLOOR** |  | 2013-12-08 | 2014-05-21 |  |  |  |  |  |  |  |  |  |  |  |  |  |  |  |  |  |  |  |  |  |
| DUKHCONP1BZ2ARGF3000 |  | Block work | 25d | 2013-12-08 | 2014-01-06 | DUKHCONP1BZ2STGF2015 SS+21d, DUKHCONP1BZ1ARGF3000, DUKHCONP1BZ2STGF2015 FF+21d | 39d | 0d | BLOCK MASON SK [5928 h]; LABOR- SUBCONTRACTOR [3334.5 h]; BLOCK QTY [2964 Sqm] | 195,460 | 10 | REM | 1BP2IFGF10 | DUKHCON1BP2ARGF3000 | DUKHCONP1BZ2ARGF3000 | DH | CON | 1B | Z2 | FIN | IF | GF | B04 | B04-D03 | RES-1B |  |
| DUKHCONP1BZ2ARGF3005 |  | Plastering work | 25d | 2013-12-31 | 2014-01-28 | DUKHCONP1BZ2PLGF4305 SS+5d, DUKHCONP1BZ2ARGF3000 SS+7d, DUKHCONP1BZ2PLGF4305 FF+5d, DUKHCONP1BZ2ELGF4000 SS+5d, DUKHCONP1BZ2ELGF4000 FF+5d, DUKHCONP1BZ1ARGF3005, DUKHCONP1BZ2ARGF3000 FF+7d | 39d | 0d | PLASTER MASON SK [7264 h]; PLASTER QTY [4540 Sqm]; LABOR- SUBCONTRACTOR [4086 h] | 59,763 | 12 | REM | 1BP2IFGF12 | DUKHCON1BP2ARGF3005 | DUKHCONP1BZ2ARGF3005 | DH | CON | 1B | Z2 | FIN | IF | GF | B04 | B04-D10 | RES-1B |  |
| DUKHCONP1BZ2ARGF3010 |  | Flooring screed | 21d | 2014-01-08 | 2014-02-01 | DUKHCONP1BZ2ARGF3005 SS+7d, DUKHCONP1BZ2ARGF3005 FF+3d | 47d | 8d | SCREED MASON SK [1579 h]; LABOR- SUBCONTRACTOR [592.5 h]; FLOORING SCREED QTY [1973 Sqm] | 65,968 | 15 | REM | 1BP2IFGF15 | DUKHCON1BP2ARGF3010 | DUKHCONP1BZ2ARGF3010 | DH | CON | 1B | Z2 | FIN | IF | GF | B04 | B04-D10 | RES-1B |  |
| DUKHCONP1BZ2ARGF3030 |  | Paint First coat | 25d | 2014-01-16 | 2014-02-15 | DUKHCONP1BZ2ARGF3005 SS+14d, DUKHCONP1BZ1ARGF3030, DUKHCONP1BZ2ARGF3005 FF+14d | 53d | 1d | LABOR- SUBCONTRACTOR [1619.25 h]; FIRSTCOAT PAINT QTY [5396 Sqm]; PAINTERS SK [4317 h] | 29,940 | 21 | REM | 1BP2IFGF21 | DUKHCON1BP2ARGF3030 | DUKHCONP1BZ2ARGF3030 | DH | CON | 1B | Z2 | FIN | IF | GF | B04 | B04-D11 | RES-1B | ENT |
| DUKHCONP1BZ2ARGF3015 |  | Wet area waterproofing & Protection Screed | 15d | 2014-01-18 | 2014-02-03 | DUKHCONP1BZ2ARGF3005 FF+5d, DUKHCONP1BZ2ARGF3005 SS+7d, DUKHCONP1BZ1ARGF3015 | 39d | 0d | LABOR- SUBCONTRACTOR [115.5 h]; WETAREA WATERPROOFING QTY [384 Sqm]; WATERPROOFING SPECIALIST SK [308 h] | 13,056 | 18 | REM | 1BP2IFGF18 | DUKHCON1BP2ARGF3015 | DUKHCONP1BZ2ARGF3015 | DH | CON | 1B | Z2 | FIN | IF | GF | B04 | B04-D10 | RES-1B |  |
| DUKHCONP1BZ2ARGF3020 |  | Ceramic Wall Tiling | 25d | 2014-01-23 | 2014-02-22 | DUKHCONP1BZ2PLGF4310 FF+4d, DUKHCONP1BZ2ARGF3015 FF+5d, DUKHCONP1BZ2PLGF4305 SS+4d, DUKHCONP1BZ1ARGF3020, DUKHCONP1BZ2PLGF4305 FF+4d, DUKHCONP1BZ2PLGF4310 SS+4d, DUKHCONP1BZ2ARGF3015 SS+5d | 39d | 0d | TILE MASON SK [2262 h]; LABOR- SUBCONTRACTOR [1272.75 h]; CERAMIC WALL TILE QTY [1131 Sqm] | 64,075 | 24 | REM | 1BP2IFGF24 | DUKHCON1BP2ARGF3020 | DUKHCONP1BZ2ARGF3020 | DH | CON | 1B | Z2 | FIN | IF | GF | B04 | B04-D10 | RES-1B |  |
| DUKHCONP1BZ2ARGF3025 |  | Porcelain Tile flooring | 25d | 2014-01-29 | 2014-02-27 | DUKHCONP1BZ2ARGF3010 FF+10d, DUKHCONP1BZ2ARGF3020 FF+5d, DUKHCONP1BZ2ARGF3010 SS+10d, DUKHCONP1BZ1ARGF3025, DUKHCONP1BZ2ARGF3020 SS+5d | 39d | 0d | TILE MASON SK [1228 h]; LABOR- SUBCONTRACTOR [690.75 h]; PORCELAIN FLOORING QTY [1074 Sqm] | 81,403 | 27 | REM | 1BP2IFGF27 | DUKHCON1BP2ARGF3025 | DUKHCONP1BZ2ARGF3025 | DH | CON | 1B | Z2 | FIN | IF | GF | B04 | B04-D10 | RES-1B |  |
| DUKHCONP1BZ2ARGF3045 |  | Fixing of Suspension systems | 20d | 2014-02-17 | 2014-03-11 | DUKHCONP1BZ2ARGF3025 FF+10d, DUKHCONP1BZ2ELGF4010 SS+5d, DUKHCONP1BZ2ARGF3030 SS+7d, DUKHCONP1BZ2ELGF4010 FF+5d, DUKHCONP1BZ1ARGF3045, DUKHCONP1BZ2ARGF3030 FF+7d, DUKHCONP1BZ2ARGF3025 SS+10d | 39d | 0d | LABOR- SUBCONTRACTOR [475.5 h]; SUSPENSION QTY [1056 Sqm]; FALSE CEILING SKILLED SK [845 h] | 21,568 | 39 | REM | 1BP2IFGF39 | DUKHCON1BP2ARGF3045 | DUKHCONP1BZ2ARGF3045 | DH | CON | 1B | Z2 | FIN | IF | GF | B04 | B04-D10 | RES-1B | SUS |
| DUKHCONP1BZ2ARGF3035 |  | Slate Tile Flooring & Skirting | 15d | 2014-02-19 | 2014-03-08 | DUKHCONP1BZ2ARGF3010 FF+13d, DUKHCONP1BZ2ARGF3025 SS+13d, DUKHCONP1BZ2ARGF3010 SS+13d, DUKHCONP1BZ2ARGF3025 FF+7d | 49d | 2d | TILE MASON SK [596 h]; LABOR- SUBCONTRACTOR [335.25 h]; SLATE TILE QTY [372 Sqm] | 77,923 | 33 | REM | 1BP2IFGF33 | DUKHCON1BP2ARGF3035 | DUKHCONP1BZ2ARGF3035 | DH | CON | 1B | Z2 | FIN | IF | GF | B04 | B04-D10 | RES-1B |  |
| DUKHCONP1BZ2ARGF3055 |  | Aluminum tile false ceiling | 25d | 2014-02-25 | 2014-03-25 | DUKHCONP1BZ2ACGF4600 FF+7d, DUKHCONP1BZ2ARGF3045 SS+7d, DUKHCONP1BZ2ARGF3045 FF+7d, DUKHCONP1BZ2ACGF4600 SS+7d | 42d | 3d | LABOR- SUBCONTRACTOR [46.8 h]; FALSE CEILING QTY [104 Sqm]; FALSE CEILING SKILLED SK [83.2 h] | 6,637 | 42 | REM | 1BP2IFGF42 | DUKHCON1BP2ARGF3055 | DUKHCONP1BZ2ARGF3055 | DH | CON | 1B | Z2 | FIN | IF | GF | B04 | B04-D10 | RES-1B | ALU |
| DUKHCONP1BZ2ARGF3040 |  | Cobble Tile flooring | 15d | 2014-02-26 | 2014-03-15 | DUKHCONP1BZ2ARGF3010 FF+13d, DUKHCONP1BZ2ARGF3025 FF+13d, DUKHCONP1BZ2ARGF3010 SS+13d, DUKHCONP1BZ2ARGF3025 SS+13d, DUKHCONP1BZ2ARGF3035 FF+4d, DUKHCONP1BZ2ARGF3035 SS+4d | 47d | 0d | TILE MASON SK [448 h]; LABOR- SUBCONTRACTOR [252 h]; COBBLE STONE QTY [280 Sqm] | 23,352 | 30 | REM | 1BP2IFGF30 | DUKHCON1BP2ARGF3040 | DUKHCONP1BZ2ARGF3040 | DH | CON | 1B | Z2 | FIN | IF | GF | B04 | B04-D10 | RES-1B |  |
| DUKHCONP1BZ2ARGF3060 |  | Gypsum board false ceiling | 25d | 2014-03-01 | 2014-03-29 | DUKHCONP1BZ2ACGF4600 FF+7d, DUKHCONP1BZ1ARGF3060, DUKHCONP1BZ2ACGF4600 SS+7d, DUKHCONP1BZ2ARGF3045 SS+10d, DUKHCONP1BZ2ARGF3045 FF+10d | 39d | 0d | LABOR- SUBCONTRACTOR [438 h]; FALSE CEILING QTY [972.81 Sqm]; FALSE CEILING SKILLED SK [778.3 h] | 53,328 | 45 | REM | 1BP2IFGF45 | DUKHCON1BP2ARGF3060 | DUKHCONP1BZ2ARGF3060 | DH | CON | 1B | Z2 | FIN | IF | GF | B04 | B04-D10 | RES-1B | GYP |
| DUKHCONP1BZ2ARGF3050 |  | Granite - Stair case flooring & Skirting | 20d | 2014-03-06 | 2014-03-29 | DUKHCONP1BZ2ARGF3040 FF+7d, DUKHCONP1BZ2ARGF3025 SS+13d, DUKHCONP1BZ2ARGF3040 SS+7d, DUKHCONP1BZ2ARGF3025 FF+13d | 47d | 0d | GRANITE MASON SK [544 h]; LABOR- SUBCONTRACTOR [306 h]; GRANITE QTY [136 Sqm] | 89,921 | 36 | REM | 1BP2IFGF36 | DUKHCON1BP2ARGF3050 | DUKHCONP1BZ2ARGF3050 | DH | CON | 1B | Z2 | FIN | IF | GF | B04 | B04-D10 | RES-1B |  |
| DUKHCONP1BZ2ARGF3065 |  | Wooden door & PVC Door | 15d | 2014-03-20 | 2014-04-06 | DUKHCONP1BZ2ARGF3050 FF+7d, DUKHCONP1BZ2ARGF3035 SS+7d, DUKHCONP1BZ2ARGF3050 SS+7d, DUKHCONP1BZ2ARGF3035 FF+7d, DUKHCONP1BZ1ARGF3065 | 47d | 0d | LABOR- SUBCONTRACTOR [180 h]; WOODEN DOOR QTY [120 ea]; DOOR ERECTOR SK [480 h] | 508,227 | 48 | REM | 1BP2IFGF48 | DUKHCON1BP2ARGF3065 | DUKHCONP1BZ2ARGF3065 | DH | CON | 1B | Z2 | FIN | IF | GF | B04 | B04-D05 | RES-1B |  |
| DUKHCONP1BZ2ARGF3070 |  | Aluminum doors | 15d | 2014-03-26 | 2014-04-12 | DUKHCONP1BZ2ARGF3065 SS+5d, DUKHCONP1BZ1ARGF3070, DUKHCONP1BZ2ARGF3065 FF+5d | 47d | 0d | LABOR- SUBCONTRACTOR [24 h]; ALUMINIUM DOOR QTY [16 ea]; DOOR ERECTOR SK [64 h] | 40,213 | 51 | REM | 1BP2IFGF51 | DUKHCON1BP2ARGF3070 | DUKHCONP1BZ2ARGF3070 | DH | CON | 1B | Z2 | FIN | IF | GF | B04 | B04-D06 | RES-1B |  |
| DUKHCONP1BZ2ARGF3075 |  | Carpentry & Joinery Works | 20d | 2014-04-01 | 2014-04-23 | DUKHCONP1BZ1ARGF3075, DUKHCONP1BZ2ARGF3070 SS+5d, DUKHCONP1BZ2ARGF3070 FF+7d | 47d | 0d | LABOR- SUBCONTRACTOR [144 h]; CABINET QTY [40 ea]; COUNTER QTY [16 ea]; JOINERY WORK SK [320 h]; COUNTER SK [64 h] | 149,837 | 57 | REM | 1BP2IFGF57 | DUKHCON1BP2ARGF3075 | DUKHCONP1BZ2ARGF3075 | DH | CON | 1B | Z2 | FIN | IF | GF | B04 | B04-D05 | RES-1B |  |
| DUKHCONP1BZ2ARGF3080 |  | Aluminum windows | 20d | 2014-04-02 | 2014-04-24 | DUKHCONP1BZ1ARGF3080, DUKHCONP1BZ2ARGF3070 FF+6d, DUKHCONP1BZ2ARGF3070 SS+6d | 57d | 6d | LABOR- SUBCONTRACTOR [70.5 h]; ALUMINIUM WINDOWS QTY [70 ea]; WINDOW ERECTOR SK [187 h] | 26,016 | 54 | REM | 1BP2IFGF54 | DUKHCON1BP2ARGF3080 | DUKHCONP1BZ2ARGF3080 | DH | CON | 1B | Z2 | FIN | IF | GF | B04 | B04-D06 | RES-1B |  |
| DUKHCONP1BZ2ARGF3085 |  | S.S.Balustrade | 20d | 2014-04-09 | 2014-05-01 | DUKHCONP1BZ2ARGF3050 FF+7d, DUKHCONP1BZ2ARGF3075 FF+7d, DUKHCONP1BZ2ARGF3075 SS+7d, DUKHCONP1BZ2ARGF3050 SS+7d | 52d | 5d | LABOR- SUBCONTRACTOR [63 h]; S.S.BALUSTRADE QTY [56 lm]; HANDRAIL ERECTOR SKILLED [112 h] | 80,976 | 63 | REM | 1BP2IFGF63 | DUKHCON1BP2ARGF3085 | DUKHCONP1BZ2ARGF3085 | DH | CON | 1B | Z2 | FIN | IF | GF | B04 | B04-D06 | RES-1B |  |
| DUKHCONP1BZ2ARGF3090 |  | Installation of Granite Counter Top | 15d | 2014-04-14 | 2014-04-30 | DUKHCONP1BZ2ARGF3075 SS+7d, DUKHCONP1BZ2ARGF3075 FF+6d | 47d | 0d | GRANITE MASON SK [176 h]; LABOR- SUBCONTRACTOR [66 h]; GRANITE COUNTER TOP QTY [44 ea] | 46,857 | 60 | REM | 1BP2IFGF60 | DUKHCON1BP2ARGF3090 | DUKHCONP1BZ2ARGF3090 | DH | CON | 1B | Z2 | FIN | IF | GF | B04 | B04-D10 | RES-1B |  |
| DUKHCONP1BZ2ARGF3095 |  | Final Painting | 25d | 2014-04-23 | 2014-05-21 | DUKHCONP1BZ2ARGF3030 FF+10d, DUKHCONP1BZ2ARGF3070 FF+5d, DUKHCONP1BZ2ARGF3070 SS+5d, DUKHCONP1BZ2ARGF3060 FF+8d, DUKHCONP1BZ2ARGF3085 FF+7d, DUKHCONP1BZ2ARGF3040 FF+13d, DUKHCONP1BZ2ARGF3080 SS+8d, DUKHCONP1BZ2ARGF3080 FF+8d, DUKHCONP1BZ2ACGF4610 FF+10d, DUKHCONP1BZ2ARGF3060 SS+8d, DUKHCONP1BZ1ARGF3095, DUKHCONP1BZ2ARGF3035 FF+13d, DUKHCONP1BZ2ARGF3085 SS+7d, DUKHCONP1BZ2ARGF3030 SS+10d, DUKHCONP1BZ2ACGF4610 SS+10d, DUKHCONP1BZ2ARGF3040 SS+13d, DUKHCONP1BZ2ARGF3035 SS+13d, DUKHCONP1BZ2ARGF3090 SS+8d, DUKHCONP1BZ2ARGF3090 FF+8d | 47d | 1d | LABOR- SUBCONTRACTOR [1619.25 h]; PAINT QTY [5396 Sqm]; PAINTERS SK [4317 h] | 65,933 | 66 | REM | 1BP2IFGF66 | DUKHCON1BP2ARGF3095 | DUKHCONP1BZ2ARGF3095 | DH | CON | 1B | Z2 | FIN | IF | GF | B04 | B04-D11 | RES-1B | PNT |

Notes:
- DUKHCONP1BZ2STGF2000: Expenses: P1B-Concrete Works 90734
- DUKHCONP1BZ2STGF2005: Expenses: P1B-Concrete Works 31968
- DUKHCONP1BZ2STGF2010: Expenses: P1B-Concrete Works 372787
- DUKHCONP1BZ2STGF2015: Expenses: P1B-Concrete Works 140126
- DUKHCONP1BZ2STFF2020: Expenses: P1B-Concrete Works 62208
- DUKHCONP1BZ2STFF2025: Expenses: P1B-Concrete Works 27979
- DUKHCONP1BZ2STFF2030: Expenses: P1B-Concrete Works 369641
- DUKHCONP1BZ2STFF2035: Expenses: P1B-Concrete Works 126130
- DUKHCONP1BZ2STRF2040: Expenses: P1B-Concrete Works 19058
- DUKHCONP1BZ2STRF2045: Expenses: P1B-Concrete Works 6660
- DUKHCONP1BZ2STRF2050: Expenses: P1B-Concrete Works 80128
- DUKHCONP1BZ2STRF2055: Expenses: P1B-Concrete Works 25904
- DUKHCONP1BZ2STRF2060: Expenses: P1B-Block work 23312
- DUKHCONP1BZ2STRF2065: Expenses: P1B-Concrete Works 12704
- DUKHCONP1BZ2ARGF3000: Expenses: P1B-Block work 195460
- DUKHCONP1BZ2ARGF3005: Expenses: P1B-Finishes 59763
- DUKHCONP1BZ2ARGF3010: Expenses: P1B-Finishes 65968
- DUKHCONP1BZ2ARGF3030: Expenses: P1B-Painting and Decorating 29940
- DUKHCONP1BZ2ARGF3015: Expenses: P1B-Finishes 13056
- DUKHCONP1BZ2ARGF3020: Expenses: P1B-Finishes 64075
- DUKHCONP1BZ2ARGF3025: Expenses: P1B-Finishes 81403
- DUKHCONP1BZ2ARGF3045: Expenses: P1B-Finishes 21568
- DUKHCONP1BZ2ARGF3035: Expenses: P1B-Finishes 77923
- DUKHCONP1BZ2ARGF3055: Expenses: P1B-Finishes 6637
- DUKHCONP1BZ2ARGF3040: Expenses: P1B-Finishes 23352
- DUKHCONP1BZ2ARGF3060: Expenses: P1B-Finishes 53328
- DUKHCONP1BZ2ARGF3050: Expenses: P1B-Finishes 89921
- DUKHCONP1BZ2ARGF3065: Expenses: P1B-Carpentry and Joinery 508227
- DUKHCONP1BZ2ARGF3070: Expenses: P1B-Metal work 40213
- DUKHCONP1BZ2ARGF3075: Expenses: P1B-Carpentry and Joinery 149837
- DUKHCONP1BZ2ARGF3080: Expenses: P1B-Metal work 26016
- DUKHCONP1BZ2ARGF3085: Expenses: P1B-Metal work 80976
- DUKHCONP1BZ2ARGF3090: Expenses: P1B-Finishes 46857
- DUKHCONP1BZ2ARGF3095: Expenses: P1B-Painting and Decorating 65933

| ID | WBS | Activity | Duration | Start | Finish | Predecessors | Total float | Free float | Resources | Cost | CODE | rem | P3 ACTID | P6 ID (old) | NP61D | PROJECT | PHASES | PACKAGE | PART | ELEMENTS | STEP | FLOORS | BILL NOS | BILL DIVISION | RES PACK | EXECUTER |
| --- | --- | --- | --- | --- | --- | --- | --- | --- | --- | --- | --- | --- | --- | --- | --- | --- | --- | --- | --- | --- | --- | --- | --- | --- | --- | --- |
|  | 15 | **FIRST FLOORS** |  | 2014-01-20 | 2014-07-24 |  |  |  |  |  |  |  |  |  |  |  |  |  |  |  |  |  |  |  |  |  |
| DUKHCONP1BZ2ARFF3300 |  | Block work | 25d | 2014-01-20 | 2014-02-18 | DUKHCONP1BZ2STFF2035 FF+21d, DUKHCONP1BZ2STFF2020 SS+21d, DUKHCONP1BZ2STFF2035 SS+21d, DUKHCONP1BZ2STFF2020 FF+21d, DUKHCONP1BZ1ARFF3300 | -8d | 0d | BLOCK MASON SK [4698 h]; LABOR- SUBCONTRACTOR [2643 h]; BLOCK QTY [2349 Sqm] | 160,271 | 10 | REM | 1BP2IFFF10 | DUKHCON1BP2ARFF3300 | DUKHCONP1BZ2ARFF3300 | DH | CON | 1B | Z2 | FIN | IF | FF | B04 | B04-D03 | RES-1B |  |
| DUKHCONP1BZ2ARFF3305 |  | Plastering work | 25d | 2014-02-17 | 2014-03-17 | DUKHCONP1BZ2ELFF4035 FF+5d, DUKHCONP1BZ2PLFF4325 SS+8d, DUKHCONP1BZ2PLFF4325 FF+8d, DUKHCONP1BZ2ELFF4035 SS+5d, DUKHCONP1BZ1ARFF3305, DUKHCONP1BZ2ARFF3300 FF+7d, DUKHCONP1BZ2ARFF3300 SS+7d | -8d | 0d | PLASTER MASON SK [4812 h]; LABOR- SUBCONTRACTOR [2706.75 h]; PLASTER QTY [3007 Sqm] | 39,832 | 12 | REM | 1BP2IFFF12 | DUKHCON1BP2ARFF3305 | DUKHCONP1BZ2ARFF3305 | DH | CON | 1B | Z2 | FIN | IF | FF | B04 | B04-D10 | RES-1B |  |
| DUKHCONP1BZ2ARFF3310 |  | Flooring screed | 21d | 2014-02-25 | 2014-03-20 | DUKHCONP1BZ2ARFF3305 SS+7d, DUKHCONP1BZ2ARFF3305 FF+3d | 9d | 17d | SCREED MASON SK [787 h]; LABOR- SUBCONTRACTOR [295.5 h]; FLOORING SCREED QTY [983 Sqm] | 32,432 | 15 | REM | 1BP2IFFF15 | DUKHCON1BP2ARFF3310 | DUKHCONP1BZ2ARFF3310 | DH | CON | 1B | Z2 | FIN | IF | FF | B04 | B04-D10 | RES-1B |  |
| DUKHCONP1BZ2ARFF3330 |  | Paint First coat | 25d | 2014-03-05 | 2014-04-02 | DUKHCONP1BZ2ARFF3305 SS+14d, DUKHCONP1BZ2ARFF3305 FF+14d | 18d | 26d | LABOR- SUBCONTRACTOR [1433.25 h]; FIRSTCOAT PAINT QTY [4778.32 Sqm]; PAINTERS SK [3823 h] | 29,947 | 21 | REM | 1BP2IFFF21 | DUKHCON1BP2ARFF3330 | DUKHCONP1BZ2ARFF3330 | DH | CON | 1B | Z2 | FIN | IF | FF | B04 | B04-D11 | RES-1B | ENT |
| DUKHCONP1BZ2ARFF3315 |  | Wet area waterproofing | 15d | 2014-03-10 | 2014-03-26 | DUKHCONP1BZ2ARFF3305 SS+7d, DUKHCONP1BZ2ARFF3305 FF+8d, DUKHCONP1BZ1ARFF3315 | -8d | 0d | LABOR- SUBCONTRACTOR [375 h]; WETAREA WATERPROOFING QTY [1248 Sqm]; WATERPROOFING SPECIALIST SK [999 h] | 41,024 | 18 | REM | 1BP2IFFF18 | DUKHCON1BP2ARFF3315 | DUKHCONP1BZ2ARFF3315 | DH | CON | 1B | Z2 | FIN | IF | FF | B04 | B04-D10 | RES-1B |  |
| DUKHCONP1BZ2ARFF3320 |  | Ceramic Wall Tiling | 25d | 2014-03-19 | 2014-04-16 | DUKHCONP1BZ2ARFF3315 FF+7d, DUKHCONP1BZ2PLFF4325 FF+4d, DUKHCONP1BZ2PLFF4330 FF+7d, DUKHCONP1BZ2PLFF4330 SS+7d, DUKHCONP1BZ1ARFF3320, DUKHCONP1BZ2ARFF3315 SS+8d, DUKHCONP1BZ2PLFF4325 SS+4d | -8d | 0d | TILE MASON SK [970 h]; LABOR- SUBCONTRACTOR [546 h]; CERAMIC WALL TILE QTY [485 Sqm] | 30,715 | 24 | REM | 1BP2IFFF24 | DUKHCON1BP2ARFF3320 | DUKHCONP1BZ2ARFF3320 | DH | CON | 1B | Z2 | FIN | IF | FF | B04 | B04-D10 | RES-1B |  |
| DUKHCONP1BZ2ARFF3325 |  | Porcelain Tile flooring | 25d | 2014-03-29 | 2014-04-26 | DUKHCONP1BZ2ARFF3320 FF+8d, DUKHCONP1BZ2ARFF3320 SS+8d, DUKHCONP1BZ2ARFF3310 SS+10d, DUKHCONP1BZ2ARFF3310 FF+10d, DUKHCONP1BZ1ARFF3325 | -8d | 0d | TILE MASON SK [858 h]; LABOR- SUBCONTRACTOR [483 h]; PORCELAIN FLOORING QTY [750 Sqm] | 62,083 | 27 | REM | 1BP2IFFF27 | DUKHCON1BP2ARFF3325 | DUKHCONP1BZ2ARFF3325 | DH | CON | 1B | Z2 | FIN | IF | FF | B04 | B04-D10 | RES-1B |  |
| DUKHCONP1BZ2ARFF3335 |  | Slate Tile Flooring & Skirting | 15d | 2014-04-15 | 2014-05-01 | DUKHCONP1BZ2ARFF3310 FF+13d, DUKHCONP1BZ2ARFF3310 SS+13d, DUKHCONP1BZ2ARFF3325 FF+5d, DUKHCONP1BZ2ARFF3325 SS+13d | 11d | 19d | TILE MASON SK [596 h]; LABOR- SUBCONTRACTOR [335.25 h]; SLATE TILE QTY [372 Sqm] | 74,280 | 30 | REM | 1BP2IFFF30 | DUKHCON1BP2ARFF3335 | DUKHCONP1BZ2ARFF3335 | DH | CON | 1B | Z2 | FIN | IF | FF | B04 | B04-D10 | RES-1B |  |
| DUKHCONP1BZ2ARFF3345 |  | Fixing of Suspension systems | 20d | 2014-04-19 | 2014-05-11 | DUKHCONP1BZ2ARFF3330 SS+7d, DUKHCONP1BZ2ELFF4045 FF+5d, DUKHCONP1BZ2ELFF4045 SS+5d, DUKHCONP1BZ1ARFF3345, DUKHCONP1BZ2ARFF3330 FF+7d, DUKHCONP1BZ2ARFF3325 FF+13d, DUKHCONP1BZ2ARFF3325 SS+13d | -8d | 0d | LABOR- SUBCONTRACTOR [429 h]; SUSPENSION QTY [952 Sqm]; FALSE CEILING SKILLED SK [762 h] | 18,800 | 36 | REM | 1BP2IFFF36 | DUKHCON1BP2ARFF3345 | DUKHCONP1BZ2ARFF3345 | DH | CON | 1B | Z2 | FIN | IF | FF | B04 | B04-D10 | RES-1B | SUS |
| DUKHCONP1BZ2ARFF3350 |  | Granite - Stair case flooring & Skirting | 20d | 2014-04-19 | 2014-05-11 | DUKHCONP1BZ2ARFF3325 SS+13d, DUKHCONP1BZ2ARFF3325 FF+13d | 3d | 11d | GRANITE MASON SK [544 h]; LABOR- SUBCONTRACTOR [306 h]; GRANITE QTY [136 Sqm] | 89,923 | 33 | REM | 1BP2IFFF33 | DUKHCON1BP2ARFF3350 | DUKHCONP1BZ2ARFF3350 | DH | CON | 1B | Z2 | FIN | IF | FF | B04 | B04-D10 | RES-1B |  |
| DUKHCONP1BZ2ARFF3360 |  | Gypsum board false ceiling | 25d | 2014-04-30 | 2014-05-28 | DUKHCONP1BZ2ACFF4615 FF+7d, DUKHCONP1BZ2ARFF3345 SS+10d, DUKHCONP1BZ2ACFF4615 SS+7d, DUKHCONP1BZ2ARFF3345 FF+10d, DUKHCONP1BZ1ARFF3360 | -8d | 0d | LABOR- SUBCONTRACTOR [429 h]; FALSE CEILING SKILLED SK [762 h]; FALSE CEILING QTY [952 Sqm] | 53,328 | 39 | REM | 1BP2IFFF39 | DUKHCON1BP2ARFF3360 | DUKHCONP1BZ2ARFF3360 | DH | CON | 1B | Z2 | FIN | IF | FF | B04 | B04-D10 | RES-1B | GYP |
| DUKHCONP1BZ2ARFF3365 |  | Wooden door | 15d | 2014-05-15 | 2014-06-01 | DUKHCONP1BZ2ARFF3350 SS+7d, DUKHCONP1BZ1ARFF3365, DUKHCONP1BZ2ARFF3335 SS+7d, DUKHCONP1BZ2ARFF3350 FF+7d, DUKHCONP1BZ2ARFF3360 FF+3d, DUKHCONP1BZ2ARFF3360 SS+3d, DUKHCONP1BZ2ARFF3335 FF+7d | -8d | 0d | LABOR- SUBCONTRACTOR [48 h]; WOODEN DOOR QTY [32 ea]; DOOR ERECTOR SK [128 h] | 110,928 | 42 | REM | 1BP2IFFF42 | DUKHCON1BP2ARFF3365 | DUKHCONP1BZ2ARFF3365 | DH | CON | 1B | Z2 | FIN | IF | FF | B04 | B04-D05 | RES-1B |  |
| DUKHCONP1BZ2ARFF3370 |  | Aluminum Door | 20d | 2014-05-24 | 2014-06-15 | DUKHCONP1BZ2ARFF3365 FF+5d, DUKHCONP1BZ1ARFF3370, DUKHCONP1BZ2ARFF3365 SS+7d | -8d | 0d | LABOR- SUBCONTRACTOR [36 h]; ALUMINIUM DOOR QTY [24 ea]; DOOR ERECTOR SK [96 h] | 62,165 | 45 | REM | 1BP2IFFF45 | DUKHCON1BP2ARFF3370 | DUKHCONP1BZ2ARFF3370 | DH | CON | 1B | Z2 | FIN | IF | FF | B04 | B04-D06 | RES-1B |  |
| DUKHCONP1BZ2ARFF3380 |  | Aluminum windows | 20d | 2014-05-31 | 2014-06-22 | DUKHCONP1BZ2ARFF3370 SS+6d, DUKHCONP1BZ2ARFF3370 FF+6d | 5d | 13d | LABOR- SUBCONTRACTOR [74.25 h]; ALUMINIUM WINDOWS QTY [74 ea]; WINDOW ERECTOR SK [198 h] | 43,931 | 48 | REM | 1BP2IFFF48 | DUKHCON1BP2ARFF3380 | DUKHCONP1BZ2ARFF3380 | DH | CON | 1B | Z2 | FIN | IF | FF | B04 | B04-D06 | RES-1B |  |
| DUKHCONP1BZ2ARFF3375 |  | Carpentry & Joinery Works | 25d | 2014-06-01 | 2014-06-29 | DUKHCONP1BZ2ARFF3370 FF+5d, DUKHCONP1BZ2ARFF3370 SS+7d, DUKHCONP1BZ1ARFF3375 | -8d | 0d | LABOR- SUBCONTRACTOR [192 h]; CABINET QTY [16 ea]; COUNTER QTY [16 ea]; WARDROBE QTY [24 ea]; SHELVES QTY [16 ea]; JOINERY WORK SK [448 h]; COUNTER SK [64 h] | 195,293 | 51 | REM | 1BP2IFFF51 | DUKHCON1BP2ARFF3375 | DUKHCONP1BZ2ARFF3375 | DH | CON | 1B | Z2 | FIN | IF | FF | B04 | B04-D05 | RES-1B |  |
| DUKHCONP1BZ2ARFF3385 |  | Handrail & Balustrade | 20d | 2014-06-15 | 2014-07-07 | DUKHCONP1BZ2ARFF3375 FF+7d, DUKHCONP1BZ2ARFF3375 SS+7d, DUKHCONP1BZ2ARFF3350 SS+7d, DUKHCONP1BZ2ARFF3350 FF+7d | -8d | 0d | LABOR- SUBCONTRACTOR [63 h]; S.S.BALUSTRADE QTY [56 lm]; HANDRAIL ERECTOR SKILLED [112 h] | 60,733 | 57 | REM | 1BP2IFFF57 | DUKHCON1BP2ARFF3385 | DUKHCONP1BZ2ARFF3385 | DH | CON | 1B | Z2 | FIN | IF | FF | B04 | B04-D06 | RES-1B |  |
| DUKHCONP1BZ2ARFF3390 |  | Installation of Granite Counter Top | 20d | 2014-06-15 | 2014-07-07 | DUKHCONP1BZ2ARFF3375 SS+7d, DUKHCONP1BZ2ARFF3375 FF+7d | -6d | 2d | GRANITE MASON SK [80 h]; LABOR- SUBCONTRACTOR [30 h]; GRANITE COUNTER TOP QTY [20 ea] | 9,492 | 54 | REM | 1BP2IFFF54 | DUKHCON1BP2ARFF3390 | DUKHCONP1BZ2ARFF3390 | DH | CON | 1B | Z2 | FIN | IF | FF | B04 | B04-D10 | RES-1B |  |
| DUKHCONP1BZ2ARFF3395 |  | Final Painting | 25d | 2014-06-26 | 2014-07-24 | DUKHCONP1BZ2ARFF3335 FF+8d, DUKHCONP1BZ2ARFF3350 FF+8d, DUKHCONP1BZ2ARFF3385 SS+10d, DUKHCONP1BZ2ACFF4625 FF+10d, DUKHCONP1BZ2ARFF3350 SS+8d, DUKHCONP1BZ2ARFF3375 FF+8d, DUKHCONP1BZ2ARFF3385 FF+10d, DUKHCONP1BZ2ARFF3360 SS+10d, DUKHCONP1BZ2ARFF3365 FF+8d, DUKHCONP1BZ2ARFF3380 SS+10d, DUKHCONP1BZ2ACFF4625 SS+10d, DUKHCONP1BZ2ARFF3335 SS+8d, DUKHCONP1BZ2ARFF3365 SS+8d, DUKHCONP1BZ1ARFF3395, DUKHCONP1BZ2ARFF3330 FF+10d, DUKHCONP1BZ2ARFF3330 SS+10d, DUKHCONP1BZ2ARFF3390 SS+8d, DUKHCONP1BZ2ARFF3360 FF+10d, DUKHCONP1BZ2ARFF3380 FF+10d, DUKHCONP1BZ2ARFF3375 SS+8d, DUKHCONP1BZ2ARFF3390 FF+8d | -8d | 0d | LABOR- SUBCONTRACTOR [1433.25 h]; PAINT QTY [4778.32 Sqm]; PAINTERS SK [3823 h] | 54,971 | 60 | REM | 1BP2IFFF60 | DUKHCON1BP2ARFF3395 | DUKHCONP1BZ2ARFF3395 | DH | CON | 1B | Z2 | FIN | IF | FF | B04 | B04-D11 | RES-1B | PNT |
|  | 20 | **ROOF** |  | 2014-02-09 | 2014-04-24 |  |  |  |  |  |  |  |  |  |  |  |  |  |  |  |  |  |  |  |  |  |
| DUKHCONP1BZ2ARRF3600 |  | Block work | 20d | 2014-02-09 | 2014-03-04 | DUKHCONP1BZ2STRF2055 SS+21d, DUKHCONP1BZ1ARRF3600, DUKHCONP1BZ2STRF2055 FF+21d | 69d | 0d | BLOCK MASON SK [446 h]; LABOR- SUBCONTRACTOR [251.25 h]; BLOCK QTY [223 Sqm] | 16,095 | 10 | REM | 1BP2IFRF10 | DUKHCON1BP2ARRF3600 | DUKHCONP1BZ2ARRF3600 | DH | CON | 1B | Z2 | FIN | IF | RF | B04 | B04-D03 | RES-1B |  |
| DUKHCONP1BZ2ARRF3605 |  | Plastering work | 20d | 2014-02-18 | 2014-03-12 | DUKHCONP1BZ2ARRF3600 FF+7d, DUKHCONP1BZ2ARRF3600 SS+7d | 69d | 0d | PLASTER MASON SK [2453 h]; LABOR- SUBCONTRACTOR [1380 h]; PLASTER QTY [1533 Sqm] | 19,927 | 20 | REM | 1BP2IFRF20 | DUKHCON1BP2ARRF3605 | DUKHCONP1BZ2ARRF3605 | DH | CON | 1B | Z2 | FIN | IF | RF | B04 | B04-D10 | RES-1B |  |
| DUKHCONP1BZ2ARRF3610 |  | Flooring screed | 15d | 2014-03-09 | 2014-03-25 | DUKHCONP1BZ2ARRF3605 SS+11d, DUKHCONP1BZ2ARRF3605 FF+11d | 70d | 0d | LABOR- SUBCONTRACTOR [42 h]; FLOORING SCREED QTY [140 Sqm]; SCREED MASON SK [112 h] | 4,632 | 30 | REM | 1BP2IFRF30 | DUKHCON1BP2ARRF3610 | DUKHCONP1BZ2ARRF3610 | DH | CON | 1B | Z2 | FIN | IF | RF | B04 | B04-D10 | RES-1B |  |
| DUKHCONP1BZ2ARRF3695 |  | Painting -Storage area | 20d | 2014-03-22 | 2014-04-13 | DUKHCONP1BZ2ARRF3610 SS+11d, DUKHCONP1BZ2ARRF3610 FF+11d | 70d | 0d | LABOR- SUBCONTRACTOR [456 h]; PAINT QTY [1472 Sqm]; PAINTERS SK [1184 h] | 7,908 | 40 |  | 1BP2IFRF40 | DUKHCON1BP2ARRF3695 | DUKHCONP1BZ2ARRF3695 | DH | CON | 1B | Z2 | FIN | IF | RF | B04 | B04-D11 | RES-1B |  |
| DUKHCONP1BZ2ARRF3620 |  | Epoxy Painting -Storage area | 15d | 2014-04-08 | 2014-04-24 | DUKHCONP1BZ2ARRF3695 SS+10d, DUKHCONP1BZ2ARRF3695 FF+10d | 70d | 78d | LABOR- SUBCONTRACTOR [13.5 h]; EPOXY QTY [64 Sqm]; EPOXY SK [35 h] | 4,560 | 50 | REM | 1BP2IFRF50 | DUKHCON1BP2ARRF3620 | DUKHCONP1BZ2ARRF3620 | DH | CON | 1B | Z2 | FIN | IF | RF | B04 | B04-D11 | RES-1B |  |

Notes:
- DUKHCONP1BZ2ARFF3300: Expenses: P1B-Block work 160271
- DUKHCONP1BZ2ARFF3305: Expenses: P1B-Finishes 39832
- DUKHCONP1BZ2ARFF3310: Expenses: P1B-Finishes 32432
- DUKHCONP1BZ2ARFF3330: Expenses: P1B-Painting and Decorating 29947
- DUKHCONP1BZ2ARFF3315: Expenses: P1B-Finishes 41024
- DUKHCONP1BZ2ARFF3320: Expenses: P1B-Finishes 30715
- DUKHCONP1BZ2ARFF3325: Expenses: P1B-Finishes 62083
- DUKHCONP1BZ2ARFF3335: Expenses: P1B-Finishes 74280
- DUKHCONP1BZ2ARFF3345: Expenses: P1B-Finishes 18800
- DUKHCONP1BZ2ARFF3350: Expenses: P1B-Finishes 89923
- DUKHCONP1BZ2ARFF3360: Expenses: P1B-Finishes 53328
- DUKHCONP1BZ2ARFF3365: Expenses: P1B-Carpentry and Joinery 110928
- DUKHCONP1BZ2ARFF3370: Expenses: P1B-Metal work 62165
- DUKHCONP1BZ2ARFF3380: Expenses: P1B-Metal work 43931
- DUKHCONP1BZ2ARFF3375: Expenses: P1B-Carpentry and Joinery 195293
- DUKHCONP1BZ2ARFF3385: Expenses: P1B-Metal work 60733
- DUKHCONP1BZ2ARFF3390: Expenses: P1B-Finishes 9492
- DUKHCONP1BZ2ARFF3395: Expenses: P1B-Painting and Decorating 54971
- DUKHCONP1BZ2ARRF3600: Expenses: P1B-Block work 16095
- DUKHCONP1BZ2ARRF3605: Expenses: P1B-Finishes 19927
- DUKHCONP1BZ2ARRF3610: Expenses: P1B-Finishes 4632
- DUKHCONP1BZ2ARRF3695: Expenses: P1B-Painting and Decorating 7908
- DUKHCONP1BZ2ARRF3620: Expenses: P1B-Painting and Decorating 4560

| ID | WBS | Activity | Duration | Start | Finish | Predecessors | Total float | Free float | Resources | Cost | CODE | rem | P3 ACTID | P6 ID (old) | NP61D | PROJECT | PHASES | PACKAGE | PART | ELEMENTS | STEP | FLOORS | BILL NOS | BILL DIVISION | RES PACK |
| --- | --- | --- | --- | --- | --- | --- | --- | --- | --- | --- | --- | --- | --- | --- | --- | --- | --- | --- | --- | --- | --- | --- | --- | --- | --- |
|  | 15 | **EXTERNAL FINISHES** |  | 2014-02-17 | 2014-04-30 |  |  |  |  |  |  |  |  |  |  |  |  |  |  |  |  |  |  |  |  |
|  | 10 | **ROOF** |  | 2014-02-17 | 2014-04-24 |  |  |  |  |  |  |  |  |  |  |  |  |  |  |  |  |  |  |  |  |
| DUKHCONP1BZ2ARRF3630 |  | Leveling Screed for Waterproofing | 25d | 2014-02-17 | 2014-03-17 | DUKHCONP1BZ2STRF2065 FF+10d, DUKHCONP1BZ2STRF2060 FF+10d, DUKHCONP1BZ1ARRF3630, DUKHCONP1BZ2STRF2060 SS+10d, DUKHCONP1BZ2STRF2065 SS+10d | 67d | 0d | SCREED MASON SK [455 h]; LABOR- SUBCONTRACTOR [256.5 h]; ROOF WP SCREED QTY [1136 Sqm] | 48,872 | 10 | REM | 1BP2EFRF10 | DUKHCON1BP2ARRF3630 | DUKHCONP1BZ2ARRF3630 | DH | CON | 1B | Z2 | FIN | EF | RF | B04 | B04-D04 | RES-1B |
| DUKHCONP1BZ2ARRF3635 |  | Laying of Waterproofing Membrane | 25d | 2014-02-20 | 2014-03-20 | DUKHCONP1BZ2ARRF3630 SS+3d, DUKHCONP1BZ2ARRF3630 FF+3d | 67d | 0d | LABOR- SUBCONTRACTOR [269.25 h]; ROOF WP MEMBRANE QTY [1344 Sqm]; WATERPROOFING SPECIALIST SK [717 h] | 35,274 | 15 | REM | 1BP2EFRF15 | DUKHCON1BP2ARRF3635 | DUKHCONP1BZ2ARRF3635 | DH | CON | 1B | Z2 | FIN | EF | RF | B04 | B04-D04 | RES-1B |
| DUKHCONP1BZ2ARRF3640 |  | Installation of Insulation & Protection | 25d | 2014-02-25 | 2014-03-25 | DUKHCONP1BZ2ARRF3635 FF+4d, DUKHCONP1BZ2ARRF3635 SS+4d | 67d | 0d | LABOR- SUBCONTRACTOR [341.25 h]; ROOF WP INSULATION QTY [2272 Sqm]; WATERPROOFING SPECIALIST SK [909 h] | 42,832 | 20 | REM | 1BP2EFRF20 | DUKHCON1BP2ARRF3640 | DUKHCONP1BZ2ARRF3640 | DH | CON | 1B | Z2 | FIN | EF | RF | B04 | B04-D04 | RES-1B |
| DUKHCONP1BZ2ARRF3645 |  | Lime Stone Chips & Paving slab Installation | 25d | 2014-03-02 | 2014-03-30 | DUKHCONP1BZ2ARRF3640 FF+4d, DUKHCONP1BZ2ARRF3640 SS+4d | 67d | 0d | TILE MASON SK [26 h]; LABOR- SUBCONTRACTOR [171 h]; LIME STONE QTY [64 Sqm]; PRECAST PAVING SLAB QTY [1072 Sqm]; PRE CAST CONCRETE SK [429 h] | 77,648 | 25 | REM | 1BP2EFRF25 | DUKHCON1BP2ARRF3645 | DUKHCONP1BZ2ARRF3645 | DH | CON | 1B | Z2 | FIN | EF | RF | B04 | B04-D04 | RES-1B |
| DUKHCONP1BZ2ARRF3650 |  | Install. of Gal. Frame & Aluminum Slat Screen | 25d | 2014-03-10 | 2014-04-07 | DUKHCONP1BZ2ARRF3645 SS+7d, DUKHCONP1BZ2ARRF3645 FF+7d | 67d | 0d | LABOR- SUBCONTRACTOR [368.25 h]; ALUMINIUM SCREEN QTY [184 Sqm]; DOOR ERECTOR SK [491 h] | 52,035 | 35 | REM | 1BP2EFRF35 | DUKHCON1BP2ARRF3650 | DUKHCONP1BZ2ARRF3650 | DH | CON | 1B | Z2 | FIN | EF | RF | B04 | B04-D06 | RES-1B |
| DUKHCONP1BZ2ARRF3655 |  | Installation of Pumps Protection cabinets | 20d | 2014-03-25 | 2014-04-16 | DUKHCONP1BZ2ARRF3645 FF+7d, DUKHCONP1BZ2ARRF3650 SS+8d, DUKHCONP1BZ2ARRF3645 SS+7d, DUKHCONP1BZ1ARRF3655, DUKHCONP1BZ2ARRF3650 FF+8d | 67d | 0d | LABOR- SUBCONTRACTOR [168 h]; CABINET QTY [56 ea]; JOINERY WORK SK [448 h] | 26,600 | 30 | REM | 1BP2EFRF30 | DUKHCON1BP2ARRF3655 | DUKHCONP1BZ2ARRF3655 | DH | CON | 1B | Z2 | FIN | EF | RF | B04 | B04-D04 | RES-1B |
| DUKHCONP1BZ2ARRF3660 |  | Installation of Access Ladder | 15d | 2014-04-08 | 2014-04-24 | DUKHCONP1BZ2ARRF3655 FF+7d, DUKHCONP1BZ2ARRF3655 SS+7d | 70d | 78d | LABOR- SUBCONTRACTOR [96 h]; LADDER QTY [32 ea]; LADDER ERECTOR SK [256 h] | 35,112 | 40 | REM | 1BP2EFRF40 | DUKHCON1BP2ARRF3660 | DUKHCONP1BZ2ARRF3660 | DH | CON | 1B | Z2 | FIN | EF | RF | B04 | B04-D06 | RES-1B |
|  | 15 | **ELEVATION** |  | 2014-03-04 | 2014-04-30 |  |  |  |  |  |  |  |  |  |  |  |  |  |  |  |  |  |  |  |  |
| DUKHCONP1BZ2AREL3665 |  | External Plastering | 25d | 2014-03-04 | 2014-04-01 | DUKHCONP1BZ2STRF2065 SS+7d, DUKHCONP1BZ2STRF2065 FF+7d, DUKHCONP1BZ2ARRF3605 SS+7d, DUKHCONP1BZ1AREL3665, DUKHCONP1BZ2ARFF3305 FF+7d, DUKHCONP1BZ2ARFF3305 SS+7d | 64d | 0d | PLASTER MASON SK [7808 h]; LABOR- SUBCONTRACTOR [4392 h]; EXTERNAL PLASTER QTY [3904 Sqm] | 151,217 | 10 | REM | 1BP2EFEL10 | DUKHCON1BP2AREL3665 | DUKHCONP1BZ2AREL3665 | DH | CON | 1B | Z2 | FIN | EF | EL | B04 | B04-D10 | RES-1B |
| DUKHCONP1BZ2AREL3670 |  | External stone cladding works | 20d | 2014-03-22 | 2014-04-13 | DUKHCONP1BZ2AREL3665 SS+10d, DUKHCONP1BZ2AREL3665 FF+10d, DUKHCONP1BZ1AREL3670 | 65d | 0d | TILE MASON SK [672 h]; LABOR- SUBCONTRACTOR [264 h]; STONE CLADDING QTY [336 Sqm] | 5,326 | 15 |  | 1BP2EFEL15 | DUKHCON1BP2AREL3670 | DUKHCONP1BZ2AREL3670 | DH | CON | 1B | Z2 | FIN | EF | EL | B04 | B04-D10 | RES-1B |
| DUKHCONP1BZ2AREL3675 |  | GRC works | 20d | 2014-03-27 | 2014-04-19 | DUKHCONP1BZ2AREL3665 SS+10d, DUKHCONP1BZ2AREL3670 SS+5d, DUKHCONP1BZ1AREL3675, DUKHCONP1BZ2AREL3665 FF+10d | 65d | 0d | LABOR- SUBCONTRACTOR [150 h]; GRC SK [400 h] | 12,320 | 15 |  | 1BP2EFEL18 | DUKHCON1BP2AREL3675 | DUKHCONP1BZ2AREL3675 | DH | CON | 1B | Z2 | FIN | EF | EL | B04 | B04-D10 | RES-1B |
| DUKHCONP1BZ2AREL3680 |  | External Painting | 20d | 2014-04-08 | 2014-04-30 | DUKHCONP1BZ2AREL3670 SS+10d, DUKHCONP1BZ2ARRF3695 FF+4d, DUKHCONP1BZ2ARRF3695 SS+4d, DUKHCONP1BZ2AREL3675 FF+10d, DUKHCONP1BZ2AREL3670 FF+10d, DUKHCONP1BZ2AREL3675 SS+10d, DUKHCONP1BZ1AREL3680 | 65d | 5d | LABOR- SUBCONTRACTOR [1152 h]; PAINT QTY [3840 Sqm]; PAINTERS SK [3072 h] | 114,294 | 20 |  | 1BP2EFEL20 | DUKHCON1BP2AREL3680 | DUKHCONP1BZ2AREL3680 | DH | CON | 1B | Z2 | FIN | EF | EL | B04 | B04-D11 | RES-1B |
|  | 20 | **MEP WORKS** |  | 2013-09-07 | 2014-07-24 |  |  |  |  |  |  |  |  |  |  |  |  |  |  |  |  |  |  |  |  |
|  | 10 | **ELECTRICAL WORKS** |  | 2013-12-14 | 2014-07-24 |  |  |  |  |  |  |  |  |  |  |  |  |  |  |  |  |  |  |  |  |
|  | 10 | **GROUND FLOOR** |  | 2013-12-14 | 2014-04-23 |  |  |  |  |  |  |  |  |  |  |  |  |  |  |  |  |  |  |  |  |
| DUKHCONP1BZ2ELGF4000 |  | Fixing of wall conduits & switch socket boxes | 25d | 2013-12-14 | 2014-01-12 | DUKHCONP1BZ2ARGF3000 FF+5d, DUKHCONP1BZ2ARGF3000 SS+5d | 48d | 0d | LABOR- SUBCONTRACTOR [384 h]; ELECTRICIANS SK [2195.2 h]; SOCKET BOXES QTY [1520 ea]; CODUITS QTY [448 lm] | 34,322 | 10 |  | 1BP2EWGF10 | DUKHCON1BP2ELGF4000 | DUKHCONP1BZ2ELGF4000 | DH | CON | 1B | Z2 | MEP | EW | GF | B04 | B04-D09 | RES-1B |
| DUKHCONP1BZ2ELGF4005 |  | Cable tray & trunking installation | 20d | 2013-12-26 | 2014-01-18 | DUKHCONP1BZ1ELGF4005, DUKHCONP1BZ2ELGF4000 SS+5d, DUKHCONP1BZ2ELGF4000 FF+5d | 66d | 0d | LABOR- SUBCONTRACTOR [672 h]; ELECTRICIANS SK [2508.8 h]; CABLE TRAY QTY [448 lm] | 7,536 | 15 |  | 1BP2EWGF15 | DUKHCON1BP2ELGF4005 | DUKHCONP1BZ2ELGF4005 | DH | CON | 1B | Z2 | MEP | EW | GF | B04 | B04-D09 | RES-1B |
| DUKHCONP1BZ2ELGF4010 |  | Installation of wiring & Main Cabling | 25d | 2014-01-04 | 2014-02-01 | DUKHCONP1BZ2ELGF4005 FF+7d, DUKHCONP1BZ2ELGF4005 SS+7d | 66d | 27d | LABOR- SUBCONTRACTOR [144 h]; ELECTRICIANS SK [492.8 h]; CABLE QTY [448 lm] | 117,914 | 20 |  | 1BP2EWGF20 | DUKHCON1BP2ELGF4010 | DUKHCONP1BZ2ELGF4010 | DH | CON | 1B | Z2 | MEP | EW | GF | B04 | B04-D09 | RES-1B |
| DUKHCONP1BZ2ELGF4015 |  | Install. of CAMS & Fire Fighting Accessories | 25d | 2014-03-09 | 2014-04-06 | DUKHCONP1BZ2ARGF3060 SS+7d, DUKHCONP1BZ2ARGF3060 FF+7d, DUKHCONP1BZ2ARGF3055 SS+7d, DUKHCONP1BZ1ELGF4015, DUKHCONP1BZ2ARGF3055 FF+7d | 61d | 1d | LABOR- SUBCONTRACTOR [1632 h]; MECHANICALS SK [2937.6 h]; SMOKE DETECTOR POINTS QTY [400 ea]; FIRE EXTINGUISHER QTY [144 ea] | 85,204 | 35 |  | 1BP2EWGF35 | DUKHCON1BP2ELGF4015 | DUKHCONP1BZ2ELGF4015 | DH | CON | 1B | Z2 | MEP | EW | GF | B04 | B04-D09 | RES-1B |
| DUKHCONP1BZ2ELGF4020 |  | Installation of DBS,MCCB Accessories. | 20d | 2014-03-15 | 2014-04-06 | DUKHCONP1BZ2ARGF3055 FF+7d, DUKHCONP1BZ2ARGF3060 SS+7d, DUKHCONP1BZ2ELGF4010 SS+5d, DUKHCONP1BZ2ARGF3060 FF+7d, DUKHCONP1BZ2ARGF3055 SS+7d, DUKHCONP1BZ2ELGF4010 FF+5d | 39d | 0d | LABOR- SUBCONTRACTOR [96 h]; ELECTRICIANS SK [358.4 h]; MCCB QTY [160 ea]; DB QTY [16 ea] | 16,497 | 25 |  | 1BP2EWGF25 | DUKHCON1BP2ELGF4020 | DUKHCONP1BZ2ELGF4020 | DH | CON | 1B | Z2 | MEP | EW | GF | B04 | B04-D09 | RES-1B |
| DUKHCONP1BZ2ELGF4025 |  | Installation of Lighting fixtures & Accessories | 25d | 2014-03-26 | 2014-04-23 | DUKHCONP1BZ1ELGF4025, DUKHCONP1BZ2ARGF3055 SS+10d, DUKHCONP1BZ2ELGF4020 FF+10d, DUKHCONP1BZ2ELGF4020 SS+10d, DUKHCONP1BZ2ARGF3055 FF+10d, DUKHCONP1BZ2ARGF3060 SS+10d, DUKHCONP1BZ2ARGF3060 FF+10d | 41d | 1d | LABOR- SUBCONTRACTOR [1152 h]; ELECTRICIANS SK [2150.4 h]; LIGHTS QTY [960 ea] | 176,155 | 30 |  | 1BP2EWGF30 | DUKHCON1BP2ELGF4025 | DUKHCONP1BZ2ELGF4025 | DH | CON | 1B | Z2 | MEP | EW | GF | B04 | B04-D09 | RES-1B |
| DUKHCONP1BZ2ELGF4030 |  | Installation of Telephone System | 20d | 2014-03-26 | 2014-04-17 | DUKHCONP1BZ2ARGF3060 SS+5d, DUKHCONP1BZ2ARGF3060 FF+5d, DUKHCONP1BZ2ELGF4020 SS+10d, DUKHCONP1BZ1ELGF4030, DUKHCONP1BZ2ELGF4020 FF+10d | 39d | 6d | LABOR- SUBCONTRACTOR [168 h]; ELECTRICIANS SK [1254.4 h]; TELEPHONE SOCKETS QTY [112 ea] | 38,706 | 40 |  | 1BP2EWGF40 | DUKHCON1BP2ELGF4030 | DUKHCONP1BZ2ELGF4030 | DH | CON | 1B | Z2 | MEP | EW | GF | B04 | B04-D09 | RES-1B |

Notes:
- DUKHCONP1BZ2ARRF3630: Expenses: P1B-Roofing 48872
- DUKHCONP1BZ2ARRF3635: Expenses: P1B-Roofing 35274
- DUKHCONP1BZ2ARRF3640: Expenses: P1B-Roofing 42832
- DUKHCONP1BZ2ARRF3645: Expenses: P1B-Roofing 77648
- DUKHCONP1BZ2ARRF3650: Expenses: P1B-Metal work 52035
- DUKHCONP1BZ2ARRF3655: Expenses: P1B-Roofing 26600
- DUKHCONP1BZ2ARRF3660: Expenses: P1B-Metal work 35112
- DUKHCONP1BZ2AREL3665: Expenses: P1B-Finishes 151217
- DUKHCONP1BZ2AREL3670: Expenses: P1B-Finishes 5326
- DUKHCONP1BZ2AREL3675: Expenses: P1B-Finishes 12320
- DUKHCONP1BZ2AREL3680: Expenses: P1B-Painting and Decorating 114294
- DUKHCONP1BZ2ELGF4000: Expenses: P1B-Electrical Installations 34322
- DUKHCONP1BZ2ELGF4005: Expenses: P1B-Electrical Installations 7536
- DUKHCONP1BZ2ELGF4010: Expenses: P1B-Electrical Installations 117914
- DUKHCONP1BZ2ELGF4015: Expenses: P1B-Electrical Installations 85204
- DUKHCONP1BZ2ELGF4020: Expenses: P1B-Electrical Installations 16497
- DUKHCONP1BZ2ELGF4025: Expenses: P1B-Electrical Installations 176155
- DUKHCONP1BZ2ELGF4030: Expenses: P1B-Electrical Installations 38706

| ID | WBS | Activity | Duration | Start | Finish | Predecessors | Total float | Free float | Resources | Cost | CODE | P3 ACTID | P6 ID (old) | NP61D | PROJECT | PHASES | PACKAGE | PART | ELEMENTS | STEP | FLOORS | BILL NOS | BILL DIVISION | RES PACK |
| --- | --- | --- | --- | --- | --- | --- | --- | --- | --- | --- | --- | --- | --- | --- | --- | --- | --- | --- | --- | --- | --- | --- | --- | --- |
|  | 15 | **FIRST FLOORS** |  | 2014-01-26 | 2014-06-25 |  |  |  |  |  |  |  |  |  |  |  |  |  |  |  |  |  |  |  |
| DUKHCONP1BZ2ELFF4035 |  | Fixing of wall conduits & switch socket boxes | 25d | 2014-01-26 | 2014-02-24 | DUKHCONP1BZ2ARFF3300 SS+5d, DUKHCONP1BZ2ARFF3300 FF+5d | 5d | 0d | LABOR- SUBCONTRACTOR [384 h]; ELECTRICIANS SK [2195.2 h]; SOCKET BOXES QTY [1520 ea]; CODUITS QTY [448 lm] | 33,912 | 10 | 1BP2EWFF10 | DUKHCON1BP2ELFF4035 | DUKHCONP1BZ2ELFF4035 | DH | CON | 1B | Z2 | MEP | EW | FF | B04 | B04-D09 | RES-1B |
| DUKHCONP1BZ2ELFF4040 |  | Cable tray & trunking installation | 20d | 2014-02-06 | 2014-03-02 | DUKHCONP1BZ2ELFF4035 SS+5d, DUKHCONP1BZ2ELFF4035 FF+5d | 35d | 0d | LABOR- SUBCONTRACTOR [672 h]; ELECTRICIANS SK [2508.8 h]; CABLE TRAY QTY [448 lm] | 7,520 | 15 | 1BP2EWFF15 | DUKHCON1BP2ELFF4040 | DUKHCONP1BZ2ELFF4040 | DH | CON | 1B | Z2 | MEP | EW | FF | B04 | B04-D09 | RES-1B |
| DUKHCONP1BZ2ELFF4045 |  | Installation of wiring & Main Cabling | 25d | 2014-02-16 | 2014-03-16 | DUKHCONP1BZ2ELFF4040 FF+7d, DUKHCONP1BZ1ELFF4045, DUKHCONP1BZ2ELFF4040 SS+7d | 35d | 0d | LABOR- SUBCONTRACTOR [144 h]; ELECTRICIANS SK [492.8 h]; CABLE QTY [448 lm] | 116,330 | 20 | 1BP2EWFF20 | DUKHCON1BP2ELFF4045 | DUKHCONP1BZ2ELFF4045 | DH | CON | 1B | Z2 | MEP | EW | FF | B04 | B04-D09 | RES-1B |
| DUKHCONP1BZ2ELFF4050 |  | Installation of Telephone System | 25d | 2014-05-06 | 2014-06-03 | DUKHCONP1BZ2ELGF4030 FF+10d, DUKHCONP1BZ2ELGF4030 SS+10d, DUKHCONP1BZ2ARFF3360 SS+5d, DUKHCONP1BZ2ARFF3360 FF+5d, DUKHCONP1BZ2MSEX5010 | 14d | 22d | LABOR- SUBCONTRACTOR [168 h]; ELECTRICIANS SK [1254.4 h]; TELEPHONE SOCKETS QTY [112 ea] | 37,070 | 40 | 1BP2EWFF40 | DUKHCON1BP2ELFF4050 | DUKHCONP1BZ2ELFF4050 | DH | CON | 1B | Z2 | MEP | EW | FF | B04 | B04-D09 | RES-1B |
| DUKHCONP1BZ2ELFF4055 |  | Install. of CAMS & Fire Fighting Accessories | 25d | 2014-05-08 | 2014-06-05 | DUKHCONP1BZ2ARFF3360 SS+7d, DUKHCONP1BZ2ELGF4015 FF+5d, DUKHCONP1BZ2ARFF3360 FF+7d, DUKHCONP1BZ1ELFF4055, DUKHCONP1BZ2ELGF4015 SS+5d | 34d | 0d | LABOR- SUBCONTRACTOR [1632 h]; MECHANICALS SK [2937.6 h]; SMOKE DETECTOR POINTS QTY [400 ea]; FIRE EXTINGUISHER QTY [144 ea] | 85,180 | 35 | 1BP2EWFF35 | DUKHCON1BP2ELFF4055 | DUKHCONP1BZ2ELFF4055 | DH | CON | 1B | Z2 | MEP | EW | FF | B04 | B04-D09 | RES-1B |
| DUKHCONP1BZ2ELFF4060 |  | Installation of DBS,MCCB Accessories. | 20d | 2014-05-15 | 2014-06-07 | DUKHCONP1BZ2ELFF4045 FF+5d, DUKHCONP1BZ1ELFF4060, DUKHCONP1BZ2ARFF3360 SS+8d, DUKHCONP1BZ2ARFF3360 FF+8d, DUKHCONP1BZ2ELFF4045 SS+5d | -8d | 0d | LABOR- SUBCONTRACTOR [96 h]; ELECTRICIANS SK [358.4 h]; MCCB QTY [160 ea]; DB QTY [16 ea] | 16,488 | 25 | 1BP2EWFF25 | DUKHCON1BP2ELFF4060 | DUKHCONP1BZ2ELFF4060 | DH | CON | 1B | Z2 | MEP | EW | FF | B04 | B04-D09 | RES-1B |
| DUKHCONP1BZ2ELFF4065 |  | Installation of Lighting fixtures & Accessories | 25d | 2014-05-28 | 2014-06-25 | DUKHCONP1BZ2ELFF4060 FF+11d, DUKHCONP1BZ2ARFF3360 FF+10d, DUKHCONP1BZ2ARFF3360 SS+10d, DUKHCONP1BZ2ELGF4025 FF+5d, DUKHCONP1BZ2ELGF4025 SS+5d, DUKHCONP1BZ2ELFF4060 SS+11d, DUKHCONP1BZ1ELFF4065 | -8d | 0d | LABOR- SUBCONTRACTOR [1152 h]; ELECTRICIANS SK [2150.4 h]; LIGHTS QTY [960 ea] | 176,151 | 30 | 1BP2EWFF30 | DUKHCON1BP2ELFF4065 | DUKHCONP1BZ2ELFF4065 | DH | CON | 1B | Z2 | MEP | EW | FF | B04 | B04-D09 | RES-1B |
|  | 20 | **ROOF** |  | 2014-06-17 | 2014-07-24 |  |  |  |  |  |  |  |  |  |  |  |  |  |  |  |  |  |  |  |
| DUKHCONP1BZ2ELRF4070 |  | Installation of Isolator | 18d | 2014-06-17 | 2014-07-07 | DUKHCONP1BZ2ELFF4050 FF+7d, DUKHCONP1BZ2ARRF3645 FF+7d, DUKHCONP1BZ2ELFF4065 SS+10d, DUKHCONP1BZ2ELFF4050 SS+5d, DUKHCONP1BZ2ARRF3645 SS+7d, DUKHCONP1BZ2ELFF4045 FF+10d, DUKHCONP1BZ2ELFF4065 FF+10d, DUKHCONP1BZ2ELFF4045 SS+10d | -8d | 0d | LABOR- SUBCONTRACTOR [288 h]; ELECTRICIANS SK [537.6 h]; ISOLATOR QTY [96 ea] | 46,262 | 10 | 1BP2EWRF10 | DUKHCON1BP2ELRF4070 | DUKHCONP1BZ2ELRF4070 | DH | CON | 1B | Z2 | MEP | EW | RF | B04 | B04-D09 | RES-1B |
| DUKHCONP1BZ2ELRF4075 |  | Installation of TV Dish Antenna | 23d | 2014-06-29 | 2014-07-24 | DUKHCONP1BZ2ELRF4070 FF+10d, DUKHCONP1BZ2ELRF4070 SS+10d | -8d | 0d | LABOR- SUBCONTRACTOR [576 h]; ELECTRICIANS SK [1254.4 h]; CONTROL BOX QTY [32 ea]; SWITCHING BOX QTY [80 ea] | 32,745 | 15 | 1BP2EWRF15 | DUKHCON1BP2ELRF4075 | DUKHCONP1BZ2ELRF4075 | DH | CON | 1B | Z2 | MEP | EW | RF | B04 | B04-D09 | RES-1B |
|  | 15 | **PLUMBING, DRAINAGE & FIRE FIGHTING WORKS** |  | 2013-09-07 | 2014-07-06 |  |  |  |  |  |  |  |  |  |  |  |  |  |  |  |  |  |  |  |
|  | 10 | **GROUND FLOOR** |  | 2013-09-07 | 2014-04-23 |  |  |  |  |  |  |  |  |  |  |  |  |  |  |  |  |  |  |  |
| DUKHCONP1BZ2PLUG4300 |  | Drainage / Storm Pipes in Grade Slab | 20d | 2013-09-07 | 2013-09-29 | DUKHCONP1BZ2STUG1040 FF+10d, DUKHCONP1BZ2STUG1040 SS+10d | -11d | 0d | LABOR- SUBCONTRACTOR [24 h]; MECHANICALS SK [86.4 h]; DRAINAGE PIPES QTY [144 lm] | 29,221 | 10 | 1BP2PLUG10 | DUKHCON1BP2PLUG4300 | DUKHCONP1BZ2PLUG4300 | DH | CON | 1B | Z2 | ST | SB | UG | B04 | B04-D07 | RES-1B |
| DUKHCONP1BZ2PLGF4305 |  | Installation of Plumbing pipes & testing | 18d | 2013-12-25 | 2014-01-14 | DUKHCONP1BZ2ARGF3000 FF+7d, DUKHCONP1BZ2ARGF3000 SS+7d, DUKHCONP1BZ1PLGF4305 | 39d | 0d | LABOR- SUBCONTRACTOR [192 h]; MECHANICALS SK [691.2 h]; PLUMB PIPES QTY [624 lm] | 69,653 | 10 | 1BP2PLGF10 | DUKHCON1BP2PLGF4305 | DUKHCONP1BZ2PLGF4305 | DH | CON | 1B | Z2 | MEP | PL | GF | B04 | B04-D07 | RES-1B |
| DUKHCONP1BZ2PLGF4310 |  | Installation of Drainage pipes &testing | 18d | 2013-12-25 | 2014-01-14 | DUKHCONP1BZ2PLGF4305 FF, DUKHCONP1BZ2ARGF3000 FF+7d, DUKHCONP1BZ2PLGF4305 SS, DUKHCONP1BZ2ARGF3000 SS+7d | 42d | 16d | LABOR- SUBCONTRACTOR [72 h]; MECHANICALS SK [259.2 h]; DRAINAGE PIPES QTY [464 lm] | 5,128 | 15 | 1BP2PLGF15 | DUKHCON1BP2PLGF4310 | DUKHCONP1BZ2PLGF4310 | DH | CON | 1B | Z2 | MEP | PL | GF | B04 | B04-D07 | RES-1B |
| DUKHCONP1BZ2PLGF4315 |  | Sanitary Fittings & Accessories | 20d | 2014-03-26 | 2014-04-17 | DUKHCONP1BZ1PLGF4315, DUKHCONP1BZ2PLGF4310 SS+5d, DUKHCONP1BZ2ARGF3065 SS+5d, DUKHCONP1BZ2ARGF3065 FF+5d, DUKHCONP1BZ2PLGF4310 FF+5d | 71d | 0d | LABOR- SUBCONTRACTOR [72 h]; MECHANICALS SK [129.6 h]; SANITARY ACC QTY [120 ea] | 100,216 | 20 | 1BP2PLGF20 | DUKHCON1BP2PLGF4315 | DUKHCONP1BZ2PLGF4315 | DH | CON | 1B | Z2 | MEP | PL | GF | B04 | B04-D07 | RES-1B |
| DUKHCONP1BZ2PLGF4320 |  | Installation of Water Heater | 15d | 2014-04-07 | 2014-04-23 | DUKHCONP1BZ2PLGF4315 SS+5d, DUKHCONP1BZ2ARGF3060 SS+5d, DUKHCONP1BZ1PLGF4320, DUKHCONP1BZ2ARGF3060 FF+5d, DUKHCONP1BZ2PLGF4315 FF+5d | 71d | 11d | LABOR- SUBCONTRACTOR [72 h]; MECHANICALS SK [129.6 h]; WATER HEATER QTY [24 ea] | 12,460 | 25 | 1BP2PLGF25 | DUKHCON1BP2PLGF4320 | DUKHCONP1BZ2PLGF4320 | DH | CON | 1B | Z2 | MEP | PL | GF | B04 | B04-D07 | RES-1B |
|  | 15 | **FIRST FLOORS** |  | 2014-02-06 | 2014-06-18 |  |  |  |  |  |  |  |  |  |  |  |  |  |  |  |  |  |  |  |
| DUKHCONP1BZ2PLFF4325 |  | Installation of Plumbing pipes & testing | 18d | 2014-02-06 | 2014-02-27 | DUKHCONP1BZ2ARFF3300 FF+8d, DUKHCONP1BZ2ARFF3300 SS+8d | -8d | 0d | LABOR- SUBCONTRACTOR [192 h]; MECHANICALS SK [691.2 h]; PLUMB PIPES QTY [624 lm] | 67,368 | 10 | 1BP2PLFF10 | DUKHCON1BP2PLFF4325 | DUKHCONP1BZ2PLFF4325 | DH | CON | 1B | Z2 | MEP | PL | FF | B04 | B04-D07 | RES-1B |
| DUKHCONP1BZ2PLFF4330 |  | Installation of Drainage pipes & testing | 18d | 2014-02-06 | 2014-02-27 | DUKHCONP1BZ2PLFF4325 FF, DUKHCONP1BZ2PLFF4325 SS, DUKHCONP1BZ2ARFF3300 SS+7d, DUKHCONP1BZ2ARFF3300 FF+7d, DUKHCONP1BZ1PLFF4330 | 19d | 7d | DRAINAGE PIPES QTY [464 lm]; LABOR- SUBCONTRACTOR [72 h]; MECHANICALS SK [259.2 h] | 4,400 | 15 | 1BP2PLFF15 | DUKHCON1BP2PLFF4330 | DUKHCONP1BZ2PLFF4330 | DH | CON | 1B | Z2 | MEP | PL | FF | B04 | B04-D07 | RES-1B |
| DUKHCONP1BZ2PLFF4335 |  | Sanitary Fittings & Accessories | 20d | 2014-05-21 | 2014-06-12 | DUKHCONP1BZ2PLFF4330 SS+5d, DUKHCONP1BZ2PLFF4330 FF+5d, DUKHCONP1BZ2ARFF3365 FF+5d, DUKHCONP1BZ2ARFF3365 SS+5d | 8d | 0d | LABOR- SUBCONTRACTOR [72 h]; MECHANICALS SK [129.6 h]; SANITARY ACC QTY [120 ea] | 104,000 | 20 | 1BP2PLFF20 | DUKHCON1BP2PLFF4335 | DUKHCONP1BZ2PLFF4335 | DH | CON | 1B | Z2 | MEP | PL | FF | B04 | B04-D07 | RES-1B |
| DUKHCONP1BZ2PLFF4340 |  | Installation of Water Heater | 15d | 2014-06-02 | 2014-06-18 | DUKHCONP1BZ2PLFF4335 FF+5d, DUKHCONP1BZ2ARFF3360 SS+5d, DUKHCONP1BZ2PLFF4335 SS+5d, DUKHCONP1BZ1PLFF4340, DUKHCONP1BZ2ARFF3360 FF+5d | 8d | 0d | LABOR- SUBCONTRACTOR [48 h]; MECHANICALS SK [86.4 h]; WATER HEATER QTY [16 ea] | 6,070 | 25 | 1BP2PLFF25 | DUKHCON1BP2PLFF4340 | DUKHCONP1BZ2PLFF4340 | DH | CON | 1B | Z2 | MEP | PL | FF | B04 | B04-D07 | RES-1B |
|  | 20 | **ROOF** |  | 2014-03-06 | 2014-07-06 |  |  |  |  |  |  |  |  |  |  |  |  |  |  |  |  |  |  |  |
| DUKHCONP1BZ2PLRF4345 |  | Installation of Plumbing pipes & fittings | 14d | 2014-03-06 | 2014-03-22 | DUKHCONP1BZ2ARRF3605 SS+8d, DUKHCONP1BZ1PLRF4345, DUKHCONP1BZ2ARRF3605 FF+8d | 73d | 9d | LABOR- SUBCONTRACTOR [72 h]; MECHANICALS SK [216 h]; PLUMB PIPES QTY [192 lm] | 11,527 | 10 | 1BP2PLRF10 | DUKHCON1BP2PLRF4345 | DUKHCONP1BZ2PLRF4345 | DH | CON | 1B | Z2 | MEP | PL | RF | B04 | B04-D07 | RES-1B |
| DUKHCONP1BZ2PLRF4350 |  | Installation of Rain water Pipes | 15d | 2014-03-29 | 2014-04-14 | DUKHCONP1BZ2AREL3665 FF+11d, DUKHCONP1BZ2PLFF4330 SS+5d, DUKHCONP1BZ2PLRF4345 SS+10d, DUKHCONP1BZ2PLRF4345 FF+10d, DUKHCONP1BZ1PLRF4350, DUKHCONP1BZ2ARRF3645 SS+5d, DUKHCONP1BZ2AREL3665 SS+11d, DUKHCONP1BZ2ARRF3645 FF+5d, DUKHCONP1BZ2PLFF4330 FF+5d | 64d | 4d | DRAINAGE PIPES QTY [32 lm] | 95,272 | 15 | 1BP2PLRF15 | DUKHCON1BP2PLRF4350 | DUKHCONP1BZ2PLRF4350 | DH | CON | 1B | Z2 | MEP | PL | RF | B04 | B04-D07 | RES-1B |
| DUKHCONP1BZ2PLRF4355 |  | Roof Water Tank Installation & Connections | 25d | 2014-06-08 | 2014-07-06 | DUKHCONP1BZ2PLFF4340 FF+5d, DUKHCONP1BZ1PLRF4355, DUKHCONP1BZ2PLFF4340 SS+5d, DUKHCONP1BZ2PLRF4345 FF+10d, DUKHCONP1BZ2PLRF4350 FF+5d, DUKHCONP1BZ2ARRF3655 SS+5d, DUKHCONP1BZ2PLRF4345 SS+10d, DUKHCONP1BZ2PLRF4350 SS+5d, DUKHCONP1BZ2ARRF3655 FF+5d, DUKHCONP1BZ2WEEX5065 FF | 8d | 0d | LABOR- SUBCONTRACTOR [240 h]; MECHANICALS SK [432 h]; WATER TANK QTY [40 ea] | 593,900 | 20 | 1BP2PLRF20 | DUKHCON1BP2PLRF4355 | DUKHCONP1BZ2PLRF4355 | DH | CON | 1B | Z2 | MEP | PL | RF | B04 | B04-D07 | RES-1B |

Notes:
- DUKHCONP1BZ2ELFF4035: Expenses: P1B-Electrical Installations 33912
- DUKHCONP1BZ2ELFF4040: Expenses: P1B-Electrical Installations 7520
- DUKHCONP1BZ2ELFF4045: Expenses: P1B-Electrical Installations 116330
- DUKHCONP1BZ2ELFF4050: Expenses: P1B-Electrical Installations 37070
- DUKHCONP1BZ2ELFF4055: Expenses: P1B-Electrical Installations 85180
- DUKHCONP1BZ2ELFF4060: Expenses: P1B-Electrical Installations 16488
- DUKHCONP1BZ2ELFF4065: Expenses: P1B-Electrical Installations 176151
- DUKHCONP1BZ2ELRF4070: Expenses: P1B-Electrical Installations 46262
- DUKHCONP1BZ2ELRF4075: Expenses: P1B-Electrical Installations 32745
- DUKHCONP1BZ2PLUG4300: Expenses: P1B-Plumbing and Drainage works 29221
- DUKHCONP1BZ2PLGF4305: Expenses: P1B-Plumbing and Drainage works 69653
- DUKHCONP1BZ2PLGF4310: Expenses: P1B-Plumbing and Drainage works 5128
- DUKHCONP1BZ2PLGF4315: Expenses: P1B-Plumbing and Drainage works 100216
- DUKHCONP1BZ2PLGF4320: Expenses: P1B-Plumbing and Drainage works 12460
- DUKHCONP1BZ2PLFF4325: Expenses: P1B-Plumbing and Drainage works 67368
- DUKHCONP1BZ2PLFF4330: Expenses: P1B-Plumbing and Drainage works 4400
- DUKHCONP1BZ2PLFF4335: Expenses: P1B-Plumbing and Drainage works 104000
- DUKHCONP1BZ2PLFF4340: Expenses: P1B-Plumbing and Drainage works 6070
- DUKHCONP1BZ2PLRF4345: Expenses: P1B-Plumbing and Drainage works 11527
- DUKHCONP1BZ2PLRF4350: Expenses: P1B-Plumbing and Drainage works 95272
- DUKHCONP1BZ2PLRF4355: Expenses: P1B-Plumbing and Drainage works 593900

| ID | WBS | Activity | Duration | Start | Finish | Predecessors | Total float | Free float | Resources | Cost | CODE | P3 ACTID | P6 ID (old) | NP61D | PROJECT | PHASES | PACKAGE | PART | ELEMENTS | STEP | FLOORS | BILL NOS | BILL DIVISION | RES PACK |
| --- | --- | --- | --- | --- | --- | --- | --- | --- | --- | --- | --- | --- | --- | --- | --- | --- | --- | --- | --- | --- | --- | --- | --- | --- |
|  | 20 | **AC WORKS** |  | 2014-01-14 | 2014-07-02 |  |  |  |  |  |  |  |  |  |  |  |  |  |  |  |  |  |  |  |
|  | 10 | **GROUND FLOOR** |  | 2014-01-14 | 2014-04-21 |  |  |  |  |  |  |  |  |  |  |  |  |  |  |  |  |  |  |  |
| DUKHCONP1BZ2ACGF4600 |  | Installation AC Pipes | 20d | 2014-01-14 | 2014-02-05 | DUKHCONP1BZ2ARGF3005 FF+7d, DUKHCONP1BZ2ARGF3005 SS+7d, DUKHCONP1BZ1ACGF4600 | 70d | 6d | LABOR- SUBCONTRACTOR [408 h]; AC TECHNICIAN SK [1478.4 h]; AC PIPES QTY [4000 lm] | 7,099 | 10 | 1BP2ACGF10 | DUKHCON1BP2ACGF4600 | DUKHCONP1BZ2ACGF4600 | DH | CON | 1B | Z2 | MEP | AC | GF | B04 | B04-D08 | RES-1B |
| DUKHCONP1BZ2ACGF4605 |  | Fixing of Ventilation Equipments | 25d | 2014-03-09 | 2014-04-06 | DUKHCONP1BZ2ARGF3055 SS+7d, DUKHCONP1BZ1ACGF4605, DUKHCONP1BZ2ARGF3060 FF+7d, DUKHCONP1BZ2ARGF3055 FF+7d, DUKHCONP1BZ2ACGF4600 SS+10d, DUKHCONP1BZ2ACGF4600 FF+10d, DUKHCONP1BZ2ARGF3060 SS+7d | 58d | 0d | LABOR- SUBCONTRACTOR [72 h]; AC TECHNICIAN SK [224 h]; VENTILIATION EQP QTY [80 ea] | 29,118 | 15 | 1BP2ACGF15 | DUKHCON1BP2ACGF4605 | DUKHCONP1BZ2ACGF4605 | DH | CON | 1B | Z2 | MEP | AC | GF | B04 | B04-D08 | RES-1B |
| DUKHCONP1BZ2ACGF4610 |  | Fixing of Split AC | 20d | 2014-03-30 | 2014-04-21 | DUKHCONP1BZ2ACGF4605 SS+13d, DUKHCONP1BZ2ACGF4605 FF+13d, DUKHCONP1BZ1ACGF4610 | 58d | 6d | LABOR- SUBCONTRACTOR [120 h]; AC TECHNICIAN SK [448 h]; SPLIT UNIT QTY [80 ea] | 57,350 | 20 | 1BP2ACGF20 | DUKHCON1BP2ACGF4610 | DUKHCONP1BZ2ACGF4610 | DH | CON | 1B | Z2 | MEP | AC | GF | B04 | B04-D08 | RES-1B |
|  | 15 | **FIRST FLOORS** |  | 2014-03-03 | 2014-06-21 |  |  |  |  |  |  |  |  |  |  |  |  |  |  |  |  |  |  |  |
| DUKHCONP1BZ2ACFF4615 |  | Installation AC Pipes | 20d | 2014-03-03 | 2014-03-25 | DUKHCONP1BZ1ACFF4615, DUKHCONP1BZ2ARFF3305 SS+7d, DUKHCONP1BZ2ARFF3305 FF+7d | 35d | 3d | LABOR- SUBCONTRACTOR [408 h]; AC TECHNICIAN SK [1478.4 h]; AC PIPES QTY [4000 lm] | 4,983 | 10 | 1BP2ACFF10 | DUKHCON1BP2ACFF4615 | DUKHCONP1BZ2ACFF4615 | DH | CON | 1B | Z2 | MEP | AC | FF | B04 | B04-D08 | RES-1B |
| DUKHCONP1BZ2ACFF4620 |  | Fixing of Ventilation Equipments | 25d | 2014-05-08 | 2014-06-05 | DUKHCONP1BZ2ARFF3360 FF+7d, DUKHCONP1BZ2ACFF4615 FF+10d, DUKHCONP1BZ2ARFF3360 SS+7d, DUKHCONP1BZ2ACFF4615 SS+10d, DUKHCONP1BZ1ACFF4620 | 6d | 0d | LABOR- SUBCONTRACTOR [48 h]; AC TECHNICIAN SK [134.4 h]; VENTILIATION EQP QTY [48 ea] | 5,633 | 15 | 1BP2ACFF15 | DUKHCON1BP2ACFF4620 | DUKHCONP1BZ2ACFF4620 | DH | CON | 1B | Z2 | MEP | AC | FF | B04 | B04-D08 | RES-1B |
| DUKHCONP1BZ2ACFF4625 |  | Fixing of Split AC | 20d | 2014-05-29 | 2014-06-21 | DUKHCONP1BZ1ACFF4625, DUKHCONP1BZ2ACFF4620 FF+13d, DUKHCONP1BZ2ACFF4620 SS+13d | 6d | 0d | LABOR- SUBCONTRACTOR [120 h]; AC TECHNICIAN SK [448 h]; SPLIT UNIT QTY [80 ea] | 43,882 | 20 | 1BP2ACFF20 | DUKHCON1BP2ACFF4625 | DUKHCONP1BZ2ACFF4625 | DH | CON | 1B | Z2 | MEP | AC | FF | B04 | B04-D08 | RES-1B |
|  | 20 | **ROOF** |  | 2014-03-15 | 2014-07-02 |  |  |  |  |  |  |  |  |  |  |  |  |  |  |  |  |  |  |  |
| DUKHCONP1BZ2ACRF4630 |  | Installation of Refrigerant Pipes | 25d | 2014-03-15 | 2014-04-12 | DUKHCONP1BZ1ACRF4630, DUKHCONP1BZ2ACGF4600 FF+7d, DUKHCONP1BZ2ACGF4600 SS+7d, DUKHCONP1BZ2ACFF4615 SS+7d, DUKHCONP1BZ2ARRF3645 FF+7d, DUKHCONP1BZ2ACFF4615 FF+7d, DUKHCONP1BZ2ARRF3645 SS+7d | 76d | 0d | LABOR- SUBCONTRACTOR [168 h]; AC TECHNICIAN SK [627.2 h]; AC PIPES QTY [1640 lm] | 24,000 | 10 | 1BP2ACRF10 | DUKHCON1BP2ACRF4630 | DUKHCONP1BZ2ACRF4630 | DH | CON | 1B | Z2 | MEP | AC | RF | B04 | B04-D08 | RES-1B |
| DUKHCONP1BZ2ACRF4635 |  | Installation of Condensing Unit | 25d | 2014-06-04 | 2014-07-02 | DUKHCONP1BZ2ACFF4625 SS+5d, DUKHCONP1BZ2ACRF4630 SS+5d, DUKHCONP1BZ2ACGF4610 SS+5d, DUKHCONP1BZ2ACRF4630 FF+5d, DUKHCONP1BZ2ACFF4625 FF+5d, DUKHCONP1BZ1ACRF4635, DUKHCONP1BZ2ACGF4610 FF+5d | 11d | 0d | LABOR- SUBCONTRACTOR [240 h]; AC TECHNICIAN SK [896 h]; AC UNITS QTY [160 ea] | 130,673 | 15 | 1BP2ACRF15 | DUKHCON1BP2ACRF4635 | DUKHCONP1BZ2ACRF4635 | DH | CON | 1B | Z2 | MEP | AC | RF | B04 | B04-D08 | RES-1B |
|  | 25 | **EXTERNAL WORKS** |  | 2014-01-21 | 2014-07-28 |  |  |  |  |  |  |  |  |  |  |  |  |  |  |  |  |  |  |  |
|  | 10 | **MISCELLANEOUS** |  | 2014-01-21 | 2014-07-28 |  |  |  |  |  |  |  |  |  |  |  |  |  |  |  |  |  |  |  |
| DUKHCONP1BZ2MSEX5020 |  | Construction Entrance Ramp | 25d | 2014-01-21 | 2014-02-19 | DUKHCONP1BZ2STRF2055 FF, DUKHCONP1BZ2STRF2055 SS, DUKHCONP1BZ1MSEX5020 | 58d | 0d | SCREED MASON SK [192 h]; CONCRETE MASON SK [384 h]; INTERLOCK MASON SK [256 h]; LABOR- SUBCONTRACTOR [360 h]; LABOR- SUBCONTRACTOR [96 h]; SCREED QTY [224 Sqm]; CONCRETE QTY [192 Cum]; INTERLOCK QTY [304 Sqm] | 25,080 | 10 | 1BP2MSEX10 | DUKHCON1BP2MS005020 | DUKHCONP1BZ2MSEX5020 | DH | CON | 1B | Z2 | EX | MS |  | B04 | B04-D12 | RES-1B |
| DUKHCONP1BZ2MSEX5000 |  | Construction of Manholes | 25d | 2014-01-25 | 2014-02-23 | DUKHCONP1BZ2PLGF4310 FF+10d, DUKHCONP1BZ2STRF2055 FF+10d, DUKHCONP1BZ2STRF2055 SS+10d, DUKHCONP1BZ2PLGF4310 SS+10d | 26d | 0d | MANHOLES SK [640 h]; LABOR- SUBCONTRACTOR [240 h]; MANHOLES QTY [80 ea] | 27,797 | 25 | 1BP2MSEX25 | DUKHCON1BP2MS005000 | DUKHCONP1BZ2MSEX5000 | DH | CON | 1B | Z2 | EX | MS |  | B04 | B04-D12 | RES-1B |
| DUKHCONP1BZ2MSEX5005 |  | Construction of Soak pit, Chambers | 25d | 2014-02-08 | 2014-03-09 | DUKHCONP1BZ2MSEX5000 SS+12d, DUKHCONP1BZ2MSEX5000 FF+12d | 26d | 0d | MANHOLES SK [128 h]; LABOR- SUBCONTRACTOR [48 h]; SOAKPIT QTY [16 ea] | 47,088 | 30 | 1BP2MSEX30 | DUKHCON1BP2MS005005 | DUKHCONP1BZ2MSEX5005 | DH | CON | 1B | Z2 | EX | MS |  | B04 | B04-D12 | RES-1B |
| DUKHCONP1BZ2MSEX5025 |  | SS.Handrails and Balustrades | 20d | 2014-02-10 | 2014-03-05 | DUKHCONP1BZ2MSEX5020 SS+12d, DUKHCONP1BZ2MSEX5020 FF+12d | 58d | 0d | LABOR- SUBCONTRACTOR [144 h]; S.S.BALUSTRADE QTY [120 lm]; HANDRAIL ERECTOR SKILLED [256 h] | 113,987 | 15 | 1BP2MSEX15 | DUKHCON1BP2MS005025 | DUKHCONP1BZ2MSEX5025 | DH | CON | 1B | Z2 | EX | MS |  | B04 | B04-D12 | RES-1B |
| DUKHCONP1BZ2MSEX5015 |  | Construction of grease Trap | 20d | 2014-03-01 | 2014-03-23 | DUKHCONP1BZ2MSEX5005 SS+12d, DUKHCONP1BZ2MSEX5005 FF+12d | 26d | 0d | LABOR- SUBCONTRACTOR [24 h]; GREASE TRAP QTY [32 lm]; HANDRAIL ERECTOR SKILLED [64 h] | 22,696 | 20 | 1BP2MSEX20 | DUKHCON1BP2MS005015 | DUKHCONP1BZ2MSEX5015 | DH | CON | 1B | Z2 | EX | MS |  | B04 | B04-D07 | RES-1B |
| DUKHCONP1BZ2MSEX5010 |  | Telephone cable laying | 25d | 2014-03-24 | 2014-04-21 | DUKHCONP1BZ2MSEX5015 | 26d | 12d | LABOR- SUBCONTRACTOR [125 h]; ELECTRICIANS SK [125 h]; CONCRETE MASON SK [125 h] | 3,238 |  | 1BP2MSEX40 | DUKHCON1BP2MS005010 | DUKHCONP1BZ2MSEX5010 | DH | CON | 1B | Z2 | EX | MS |  | B04 | B04-D12 | RES-1B |
| DUKHCONP1BZ2MSEX5335 |  | Aluminum Roll-up Shutter with 2m Wall | 25d | 2014-06-30 | 2014-07-28 | DUKHCONP1BZ1MSEX5335, DUKHCONI1BZ1BWGL5325 | 14d | 0d | LABOR- SUBCONTRACTOR [200 h]; DOOR ERECTOR SK [200 h]; ROLLING SHUTTER QTY [8 ea] | 57,372 | 25 | 1BP2BWFR25 | DUKHCON1BP2MS005335 | DUKHCONP1BZ2MSEX5335 | DH | CON | 1B | Z2 | EX | MS |  | B04 | B04-D12 | RES-1B |
|  | 15 | **WATER TANK ENCLOSURE** |  | 2014-01-29 | 2014-05-06 |  |  |  |  |  |  |  |  |  |  |  |  |  |  |  |  |  |  |  |
| DUKHCONP1BZ2WEEX5030 |  | Excavation | 20d | 2014-01-29 | 2014-02-22 | DUKHCONP1BZ2STRF2055 SS+5d, DUKHCONP1BZ1WEEX5030, DUKHCONP1BZ2STRF2055 FF+5d | 40d | 0d | LABOR- SUBCONTRACTOR [48 h]; EXCAVATION QTY [80 Cum]; LOADER [20 h]; POCLAIN [40 h]; TRUCK [20 h]; EQUIP OPERATORS [80 h] | 896 | 10 | 1BP2WEEX10 | DUKHCON1BP2WE005030 | DUKHCONP1BZ2WEEX5030 | DH | CON | 1B | Z2 | EX | WE |  | B04 | B04-D12 | RES-1B |
| DUKHCONP1BZ2WEEX5035 |  | Construction of Raft | 25d | 2014-02-04 | 2014-03-05 | DUKHCONP1BZ2WEEX5030 SS+5d, DUKHCONP1BZ2WEEX5030 FF+10d | 40d | 0d | STEEL FIXERS SK [96 h]; CARPENTERS SK [736 h]; CONCRETE MASON SK [96 h]; LABOR- SUBCONTRACTOR [696 h]; REINFORCEMENT BARS QTY [1248 kg]; FORMWORK QTY [368 Sqm]; CONCRETE QTY [40 Cum] | 13,680 | 15 | 1BP2WEEX15 | DUKHCON1BP2WE005035 | DUKHCONP1BZ2WEEX5035 | DH | CON | 1B | Z2 | EX | WE |  | B04 | B04-D12 | RES-1B |
| DUKHCONP1BZ2WEEX5040 |  | Block works & Plastering | 25d | 2014-02-17 | 2014-03-17 | DUKHCONP1BZ2WEEX5035 SS+10d, DUKHCONP1BZ2WEEX5035 FF+10d | 63d | 0d | BLOCK MASON SK [224 h]; LABOR- SUBCONTRACTOR [312 h]; BLOCK QTY [112 Sqm]; PLASTER QTY [224 Sqm]; PLASTER MASON SK [352 h] | 19,727 | 20 | 1BP2WEEX20 | DUKHCON1BP2WE005040 | DUKHCONP1BZ2WEEX5040 | DH | CON | 1B | Z2 | EX | WE |  | B04 | B04-D12 | RES-1B |
| DUKHCONP1BZ2WEEX5045 |  | Flooring & Painting | 25d | 2014-03-01 | 2014-03-29 | DUKHCONP1BZ2WEEX5040 FF+10d, DUKHCONP1BZ2WEEX5040 SS+10d, DUKHCONP1BZ2MSEX5025 SS+10d | 63d | 0d | LABOR- SUBCONTRACTOR [120 h]; PAINT QTY [312 Sqm]; EPOXY QTY [88 Sqm]; PAINTERS SK [256 h]; EPOXY SK [32 h] | 18,792 | 25 | 1BP2WEEX25 | DUKHCON1BP2WE005045 | DUKHCONP1BZ2WEEX5045 | DH | CON | 1B | Z2 | EX | WE |  | B04 | B04-D12 | RES-1B |
| DUKHCONP1BZ2WEEX5050 |  | Installation of Steel Gate | 20d | 2014-03-18 | 2014-04-09 | DUKHCONP1BZ2WEEX5045 SS+5d, DUKHCONP1BZ2MSEX5025 FF+10d, DUKHCONP1BZ2MSEX5015 SS+5d, DUKHCONP1BZ2WEEX5045 FF+10d | 63d | 3d | LABOR- SUBCONTRACTOR [48 h]; GATE QTY [8 ea]; GATE ERECTOR SK [64 h] | 75,504 | 30 | 1BP2WEEX30 | DUKHCON1BP2WE005050 | DUKHCONP1BZ2WEEX5050 | DH | CON | 1B | Z2 | EX | WE |  | B04 | B04-D12 | RES-1B |
| DUKHCONP1BZ2WEEX5060 |  | Structural steel & SS Shed cover installation | 25d | 2014-03-27 | 2014-04-24 | DUKHCONP1BZ2MSEX5025 FF+10d, DUKHCONP1BZ2WEEX5050 SS+5d, DUKHCONP1BZ1WEEX5060, DUKHCONP1BZ2WEEX5050 FF+10d | 60d | 0d | STEEL ERECTOR SK [352 h]; LABOR- SUBCONTRACTOR [264 h]; STRUCTURAL STEEL QTY [256 kg]; SS SHED COVER QTY [80 Sqm] | 45,463 | 35 | 1BP2WEEX35 | DUKHCON1BP2WE005060 | DUKHCONP1BZ2WEEX5060 | DH | CON | 1B | Z2 | EX | WE |  | B04 | B04-D12 | RES-1B |
| DUKHCONP1BZ2WEEX5065 |  | Install. of Water Tank,Chiller,Pump & Meter | 25d | 2014-04-08 | 2014-05-06 | DUKHCONP1BZ2PLRF4350 FF+5d, DUKHCONP1BZ2WEEX5060 SS+10d, DUKHCONP1BZ2MSEX5015 FF+5d, DUKHCONP1BZ1WEEX5065, DUKHCONP1BZ2PLRF4350 SS+5d, DUKHCONP1BZ2MSEX5015 SS+5d, DUKHCONP1BZ2WEEX5060 FF+10d | 60d | 5d | LABOR- SUBCONTRACTOR [120 h]; AC TECHNICIAN SK [89.6 h]; MECHANICALS SK [172.8 h]; WATER TANK QTY [8 ea]; CHILLER QTY [80 ea]; PUMP QTY [8 ea] | 122,333 | 40 | 1BP2WEEX40 | DUKHCON1BP2WE005065 | DUKHCONP1BZ2WEEX5065 | DH | CON | 1B | Z2 | EX | WE |  | B04 | B04-D07 | RES-1B |

Notes:
- DUKHCONP1BZ2ACGF4600: Expenses: P1B-Air-conditioning and Ventilation works 7099
- DUKHCONP1BZ2ACGF4605: Expenses: P1B-Air-conditioning and Ventilation works 29118
- DUKHCONP1BZ2ACGF4610: Expenses: P1B-Air-conditioning and Ventilation works 57350
- DUKHCONP1BZ2ACFF4615: Expenses: P1B-Air-conditioning and Ventilation works 4983
- DUKHCONP1BZ2ACFF4620: Expenses: P1B-Air-conditioning and Ventilation works 5633
- DUKHCONP1BZ2ACFF4625: Expenses: P1B-Air-conditioning and Ventilation works 43882
- DUKHCONP1BZ2ACRF4630: Expenses: P1B-Air-conditioning and Ventilation works 24000
- DUKHCONP1BZ2ACRF4635: Expenses: P1B-Air-conditioning and Ventilation works 130673
- DUKHCONP1BZ2MSEX5020: Expenses: P1B-External works within the Plot Curtilage 25080
- DUKHCONP1BZ2MSEX5000: Expenses: P1B-External works within the Plot Curtilage 27797
- DUKHCONP1BZ2MSEX5005: Expenses: P1B-External works within the Plot Curtilage 47088
- DUKHCONP1BZ2MSEX5025: Expenses: P1B-External works within the Plot Curtilage 113987
- DUKHCONP1BZ2MSEX5015: Expenses: P1B-Plumbing and Drainage works 22696
- DUKHCONP1BZ2MSEX5010: Expenses: P1B-External works within the Plot Curtilage 3238
- DUKHCONP1BZ2MSEX5335: Expenses: P1B-External works within the Plot Curtilage 57372
- DUKHCONP1BZ2WEEX5030: Expenses: P1B-External works within the Plot Curtilage 896
- DUKHCONP1BZ2WEEX5035: Expenses: P1B-External works within the Plot Curtilage 13680
- DUKHCONP1BZ2WEEX5040: Expenses: P1B-External works within the Plot Curtilage 19727
- DUKHCONP1BZ2WEEX5045: Expenses: P1B-External works within the Plot Curtilage 18792
- DUKHCONP1BZ2WEEX5050: Expenses: P1B-External works within the Plot Curtilage 75504
- DUKHCONP1BZ2WEEX5060: Expenses: P1B-External works within the Plot Curtilage 45463
- DUKHCONP1BZ2WEEX5065: Expenses: P1B-Plumbing and Drainage works 122333

| ID | WBS | Activity | Duration | Start | Finish | Predecessors | Total float | Free float | Resources | Cost | CODE | P3 ACTID | P6 ID (old) | NP61D | PROJECT | PHASES | PACKAGE | PART | ELEMENTS | STEP | BILL NOS | BILL DIVISION | RES PACK | FLOORS | rem |
| --- | --- | --- | --- | --- | --- | --- | --- | --- | --- | --- | --- | --- | --- | --- | --- | --- | --- | --- | --- | --- | --- | --- | --- | --- | --- |
|  | 20 | **HARD LANDSCAPING** |  | 2014-02-19 | 2014-04-09 |  |  |  |  |  |  |  |  |  |  |  |  |  |  |  |  |  |  |  |  |
| DUKHCONP1BZ2HDEX5090 |  | kerb works | 20d | 2014-02-19 | 2014-03-13 | DUKHCONP1BZ2MSEX5020 SS+7d, DUKHCONP1BZ2MSEX5020 FF+7d, DUKHCONP1BZ2MSEX5025 SS+7d, DUKHCONP1BZ1HDEX5090 | 58d | 0d | KERBSTONE MASON SK [448 h]; LABOR- SUBCONTRACTOR [264 h]; KERBSTONE QTY [576 lm] | 12,546 | 10 | 1BP2HDEX10 | DUKHCON1BP2HD005090 | DUKHCONP1BZ2HDEX5090 | DH | CON | 1B | Z2 | EX | HD | B04 | B04-D12 | RES-1B |  |  |
| DUKHCONP1BZ2HDEX5095 |  | Cobble Stone Works | 20d | 2014-03-03 | 2014-03-25 | DUKHCONP1BZ2HDEX5090 FF+10d, DUKHCONP1BZ2HDEX5090 SS+10d | 58d | 0d | TILE MASON SK [288 h]; LABOR- SUBCONTRACTOR [168 h]; COBBLE STONE QTY [176 Sqm] | 35,584 | 15 | 1BP2HDEX15 | DUKHCON1BP2HD005095 | DUKHCONP1BZ2HDEX5095 | DH | CON | 1B | Z2 | EX | HD | B04 | B04-D12 | RES-1B |  |  |
| DUKHCONP1BZ2HDEX5100 |  | Interlock works | 20d | 2014-03-18 | 2014-04-09 | DUKHCONP1BZ2HDEX5095 SS+13d, DUKHCONP1BZ2HDEX5095 FF+13d | 58d | 0d | INTERLOCK MASON SK [288 h]; LABOR- SUBCONTRACTOR [120 h]; INTERLOCK QTY [368 Sqm] | 42,407 | 20 | 1BP2HDEX20 | DUKHCON1BP2HD005100 | DUKHCONP1BZ2HDEX5100 | DH | CON | 1B | Z2 | EX | HD | B04 | B04-D12 | RES-1B |  |  |
|  | 25 | **SOFT LANDSCAPING** |  | 2014-03-30 | 2014-05-08 |  |  |  |  |  |  |  |  |  |  |  |  |  |  |  |  |  |  |  |  |
| DUKHCONP1BZ2SLEX5105 |  | Laying of Grass/ green area | 25d | 2014-03-30 | 2014-04-27 | DUKHCONP1BZ2HDEX5100 SS+10d, DUKHCONP1BZ2HDEX5100 FF+10d | 58d | 0d | LABOR- SUBCONTRACTOR [2352 h]; SWEET SOIL QTY [672 Cum]; GRASS QTY [672 Sqm]; LANDSCAPING SK [3136 h] | 50,184 | 10 | 1BP2SLEX10 | DUKHCON1BP2SL005105 | DUKHCONP1BZ2SLEX5105 | DH | CON | 1B | Z2 | EX | SL | B04 | B04-D12 | RES-1B |  |  |
| DUKHCONP1BZ2SLEX5110 |  | Laying of Palm tree | 25d | 2014-04-10 | 2014-05-08 | DUKHCONP1BZ2SLEX5105 FF+10d, DUKHCONP1BZ2SLEX5105 SS+10d | 58d | 66d | LABOR- SUBCONTRACTOR [144 h]; SWEET SOIL QTY [96 Cum]; PLAM TREES QTY [32 ea]; LANDSCAPING SK [192 h] | 120,888 | 15 | 1BP2SLEX15 | DUKHCON1BP2SL005110 | DUKHCONP1BZ2SLEX5110 | DH | CON | 1B | Z2 | EX | SL | B04 | B04-D12 | RES-1B |  |  |
|  | 30 | **TESTING AND COMMISSIONING** |  | 2014-07-26 | 2014-08-26 |  |  |  |  |  |  |  |  |  |  |  |  |  |  |  |  |  |  |  |  |
| DUKHCONP1BZ2ACTC8000 |  | Pre-Commissioning & Testing of AC Works | 25d | 2014-07-26 | 2014-08-26 | DUKHCONP1BZ2AREL3680, DUKHCONP1BZ2ARFF3395, DUKHCONP1BZ2HDEX5100, DUKHCONP1BZ2SLEX5110, DUKHCONP1BZ2MSEX5005, DUKHCONP1BZ1ACTC8000, DUKHCONP1BZ2ACRF4635, DUKHCONP1BZ2ARRF3620, DUKHCONP1BZ2ACFF4625, DUKHCONP1BZ2SLEX5105, DUKHCONP1BZ2ARGF3095 | -8d | 0d | LABOR- SUBCONTRACTOR [500 h]; AC TECHNICIAN SK [1000 h] | 1,696 |  | 1BP2ACU100 | DUKHCON1BP2AC008000 | DUKHCONP1BZ2ACTC8000 | DH | CON | 1B | Z2 | TES |  | B04 | B04-D08 | RES-1B |  |  |
| DUKHCONP1BZ2ELTC8010 |  | Pre-Commissioning & Testing of Electrical Works | 25d | 2014-07-26 | 2014-08-26 | DUKHCONP1BZ2ELFF4050, DUKHCONP1BZ2MSEX5005, DUKHCONP1BZ1ELTC8010, DUKHCONP1BZ2ELFF4055, DUKHCONP1BZ2AREL3680, DUKHCONP1BZ2ELFF4065, DUKHCONP1BZ2ARRF3620, DUKHCONP1BZ2ELRF4075, DUKHCONP1BZ2SLEX5105, DUKHCONP1BZ2ELGF4015, DUKHCONP1BZ2SLEX5110, DUKHCONP1BZ2ARRF3660, DUKHCONP1BZ2ARFF3395, DUKHCONP1BZ2HDEX5100, DUKHCONP1BZ2ARRF3655, DUKHCONP1BZ2ARGF3095, DUKHCONP1BZ2ELGF4025, DUKHCONP1BZ2ELGF4030 | -8d | 0d | LABOR- SUBCONTRACTOR [1000 h]; ELECTRICIANS SK [2000 h] | 45,560 |  | 1BP2ELE100 | DUKHCON1BP2EL008010 | DUKHCONP1BZ2ELTC8010 | DH | CON | 1B | Z2 | TES |  | B04 | B04-D09 | RES-1B |  |  |
| DUKHCONP1BZ2PLTC8005 |  | Pre-Commissioning & Testing of Plumbing Works | 25d | 2014-07-26 | 2014-08-26 | DUKHCONP1BZ2SLEX5105, DUKHCONP1BZ2MSEX5005, DUKHCONP1BZ2ARRF3620, DUKHCONP1BZ2AREL3680, DUKHCONP1BZ1PLTC8005, DUKHCONP1BZ2WEEX5065, DUKHCONP1BZ2HDEX5100, DUKHCONP1BZ2ARRF3655, DUKHCONP1BZ2ARGF3095, DUKHCONP1BZ2ARFF3395, DUKHCONP1BZ2PLGF4320, DUKHCONP1BZ2ARRF3660, DUKHCONP1BZ2PLRF4350, DUKHCONP1BZ2PLRF4355, DUKHCONP1BZ2SLEX5110 | -8d | 0d | LABOR- SUBCONTRACTOR [1000 h]; MECHANICALS SK [2000 h] | 7,112 |  | 1BP2PLU100 | DUKHCON1BP2PL008005 | DUKHCONP1BZ2PLTC8005 | DH | CON | 1B | Z2 | TES |  | B04 | B04-D07 | RES-1B |  |  |
|  | 20 | **ZONE - 3 (4 Twin Villas)** |  | 2013-06-24 | 2014-09-24 |  |  |  |  |  |  |  |  |  |  |  |  |  |  |  |  |  |  |  |  |
|  | 10 | **STRUCTURAL WORKS** |  | 2013-06-24 | 2014-04-03 |  |  |  |  |  |  |  |  |  |  |  |  |  |  |  |  |  |  |  |  |
|  | 10 | **SUB STRUCTURE** |  | 2013-06-24 | 2013-11-16 |  |  |  |  |  |  |  |  |  |  |  |  |  |  |  |  |  |  |  |  |
|  | 10 | **UPTO GRADE SLAB** |  | 2013-06-24 | 2013-11-16 |  |  |  |  |  |  |  |  |  |  |  |  |  |  |  |  |  |  |  |  |
| DUKHCONP1BZ3STUG1000 |  | Footing Excavation | 25d | 2013-06-24 | 2013-07-22 | DUKHCONP1BZ2STUG1000 | 0d |  | LABOR- SUBCONTRACTOR [758 h]; LOADER [169 h]; POCLAIN [337 h]; TRUCK [169 h]; EQUIP OPERATORS [675 h]; EXCAVATION QTY [1264 Cum] | 81,497 | 10 | 1BP3SBUG10 | DUKHCON1BP3STUG1000 | DUKHCONP1BZ3STUG1000 | DH | CON | 1B | Z3 | ST | SB | B04 | B04-D01 | RES-1B | UG |  |
| DUKHCONP1BZ3STUG1005 |  | Footing Antitermite | 23d | 2013-07-06 | 2013-07-31 | DUKHCONP1BZ3STUG1000 SS+10d, DUKHCONP1BZ3STUG1000 FF+5d | 0d |  | LABOR- SUBCONTRACTOR [507.75 h]; ANTITERMITE QTY [3384 sqft]; ANTITERMITE SK [1354 h] | 10,152 | 15 | 1BP3SBUG15 | DUKHCON1BP3STUG1005 | DUKHCONP1BZ3STUG1005 | DH | CON | 1B | Z3 | ST | SB | B04 | B04-D01 | RES-1B | UG | REM |
| DUKHCONP1BZ3STUG1010 |  | Footing Blinding | 23d | 2013-07-10 | 2013-08-05 | DUKHCONP1BZ3STUG1005 SS+4d, DUKHCONP1BZ3STUG1005 FF+4d | 0d |  | BLINDING MASON SK [599 h]; LABOR- SUBCONTRACTOR [449.25 h]; BLINDING QTY [748 Sqm] | 18,857 | 15 | 1BP3SBUG18 | DUKHCON1BP3STUG1010 | DUKHCONP1BZ3STUG1010 | DH | CON | 1B | Z3 | ST | SB | B04 | B04-D02 | RES-1B | UG | REM |
| DUKHCONP1BZ3STUG1015 |  | Footing Waterproofing & Screed | 25d | 2013-07-16 | 2013-08-17 | DUKHCONP1BZ3STUG1010 SS+5d, DUKHCONP1BZ3STUG1010 FF+5d | 0d |  | SCREED MASON SK [600 h]; LABOR- SUBCONTRACTOR [225 h]; SCREED QTY [749 Sqm]; WATERPROOFING QTY [1547 Sqm] | 59,066 | 20 | 1BP3SBUG20 | DUKHCON1BP3STUG1015 | DUKHCONP1BZ3STUG1015 | DH | CON | 1B | Z3 | ST | SB | B04 | B04-D02 | RES-1B | UG | REM |
| DUKHCONP1BZ3STUG1020 |  | Construction of foundations | 20d | 2013-07-31 | 2013-08-26 | DUKHCONP1BZ3STUG1015 FF+8d, DUKHCONP1BZ3STUG1015 SS+7d | 0d |  | STEEL FIXERS SK [2778 h]; CARPENTERS SK [1136 h]; CONCRETE MASON SK [640 h]; LABOR- SUBCONTRACTOR [3415.5 h]; REINFORCEMENT BARS QTY [34722 kg]; FORMWORK QTY [568 Sqm]; CONCRETE QTY [320 Cum] | 222,124 | 25 | 1BP3SBUG25 | DUKHCON1BP3STUG1020 | DUKHCONP1BZ3STUG1020 | DH | CON | 1B | Z3 | ST | SB | B04 | B04-D02 | RES-1B | UG | REM |
| DUKHCONP1BZ3STUG1025 |  | Construction of neck of columns | 25d | 2013-08-13 | 2013-09-10 | DUKHCONP1BZ2STUG1025, DUKHCONP1BZ3STUG1020 FF+7d, DUKHCONP1BZ3STUG1020 SS+8d | 0d |  | STEEL FIXERS SK [232 h]; CARPENTERS SK [832 h]; CONCRETE MASON SK [48 h]; LABOR- SUBCONTRACTOR [834 h]; REINFORCEMENT BARS QTY [2889 kg]; FORMWORK QTY [416 Sqm]; CONCRETE QTY [24 Cum] | 41,717 | 30 | 1BP3SBUG30 | DUKHCON1BP3STUG1025 | DUKHCONP1BZ3STUG1025 | DH | CON | 1B | Z3 | ST | SB | B04 | B04-D02 | RES-1B | UG | REM |
| DUKHCONP1BZ3STUG1030 |  | Waterproofing Footing & Neck Column | 25d | 2013-08-22 | 2013-09-19 | DUKHCONP1BZ3STUG1025 FF+8d, DUKHCONP1BZ3STUG1025 SS+8d | 0d |  | LABOR- SUBCONTRACTOR [146.25 h]; WATERPROOFING QTY [486 Sqm]; WATERPROOFING SPECIALIST SK [389 h] | 23,765 | 35 | 1BP3SBUG35 | DUKHCON1BP3STUG1030 | DUKHCONP1BZ3STUG1030 | DH | CON | 1B | Z3 | ST | SB | B04 | B04-D02 | RES-1B | UG | REM |
| DUKHCONP1BZ3STUG1035 |  | Backfilling Upto Grade Beam Bottom | 25d | 2013-09-03 | 2013-10-01 | DUKHCONP1BZ2STUG1035, DUKHCONP1BZ3STUG1030 SS+10d, DUKHCONP1BZ3STUG1030 FF+10d | 0d |  | LABOR- SUBCONTRACTOR [336 h]; BACKFILLING QTY [1368 Cum]; BOBCAT [500 h]; PLATE COMPACTOR [500 h]; TRUCK [100 h]; EQUIP OPERATORS [1100 h] | 34,798 | 40 | 1BP3SBUG40 | DUKHCON1BP3STUG1035 | DUKHCONP1BZ3STUG1035 | DH | CON | 1B | Z3 | ST | SB | B04 | B04-D01 | RES-1B | UG |  |
| DUKHCONP1BZ3STUG1040 |  | Construction of Grade Beams | 25d | 2013-09-19 | 2013-10-20 | DUKHCONP1BZ3STUG1035 FF+14d, DUKHCONP1BZ3STUG1035 SS+14d | 0d |  | BLINDING MASON SK [321 h]; SCREED MASON SK [321 h]; STEEL FIXERS SK [1621 h]; CARPENTERS SK [2112 h]; CONCRETE MASON SK [320 h]; LABOR- SUBCONTRACTOR [3401.25 h]; BLINDING QTY [401 Sqm]; SCREED QTY [401 Sqm]; REINFORCEMENT BARS QTY [20261 kg]; FORMWORK QTY [1056 Sqm]; CONCRETE QTY [160 Cum] | 373,054 | 45 | 1BP3SBUG45 | DUKHCON1BP3STUG1040 | DUKHCONP1BZ3STUG1040 | DH | CON | 1B | Z3 | ST | SB | B04 | B04-D02 | RES-1B | UG | REM |
| DUKHCONP1BZ3STUG1045 |  | Construction of slab on grade | 25d | 2013-10-16 | 2013-11-16 | DUKHCONP1BZ3PLUG4300 FF+8d, DUKHCONP1BZ3STUG1040 FF+10d, DUKHCONP1BZ2STUG1045, DUKHCONP1BZ3PLUG4300 SS+8d, DUKHCONP1BZ3STUG1040 SS+10d | 0d |  | BLINDING MASON SK [1219 h]; SCREED MASON SK [1218 h]; STEEL FIXERS SK [493 h]; CONCRETE MASON SK [496 h]; LABOR- SUBCONTRACTOR [2112.75 h]; BLINDING QTY [1523 Sqm]; SCREED QTY [1522 Sqm]; CONCRETE QTY [248 Cum]; WELDED WIRE MESH [1848 Sqm] | 283,313 | 50 | 1BP3SBUG50 | DUKHCON1BP3STUG1045 | DUKHCONP1BZ3STUG1045 | DH | CON | 1B | Z3 | ST | SB | B04 | B04-D02 | RES-1B | UG | REM |

Notes:
- DUKHCONP1BZ2HDEX5090: Expenses: P1B-External works within the Plot Curtilage 12546
- DUKHCONP1BZ2HDEX5095: Expenses: P1B-External works within the Plot Curtilage 35584
- DUKHCONP1BZ2HDEX5100: Expenses: P1B-External works within the Plot Curtilage 42407
- DUKHCONP1BZ2SLEX5105: Expenses: P1B-External works within the Plot Curtilage 50184
- DUKHCONP1BZ2SLEX5110: Expenses: P1B-External works within the Plot Curtilage 120888
- DUKHCONP1BZ2ACTC8000: Expenses: P1B-Air-conditioning and Ventilation works 1696
- DUKHCONP1BZ2ELTC8010: Expenses: P1B-Electrical Installations 45560
- DUKHCONP1BZ2PLTC8005: Expenses: P1B-Plumbing and Drainage works 7112
- DUKHCONP1BZ3STUG1000: Expenses: P1B-Excavation and Earth Works 81497
- DUKHCONP1BZ3STUG1005: Expenses: P1B-Excavation and Earth Works 10152
- DUKHCONP1BZ3STUG1010: Expenses: P1B-Concrete Works 18857
- DUKHCONP1BZ3STUG1015: Expenses: P1B-Concrete Works 59066
- DUKHCONP1BZ3STUG1020: Expenses: P1B-Concrete Works 222124
- DUKHCONP1BZ3STUG1025: Expenses: P1B-Concrete Works 41717
- DUKHCONP1BZ3STUG1030: Expenses: P1B-Concrete Works 23765
- DUKHCONP1BZ3STUG1035: Expenses: P1B-Excavation and Earth Works 34798
- DUKHCONP1BZ3STUG1040: Expenses: P1B-Concrete Works 373054
- DUKHCONP1BZ3STUG1045: Expenses: P1B-Concrete Works 283313

| ID | WBS | Activity | Duration | Start | Finish | Predecessors | Total float | Free float | Resources | Cost | CODE | rem | P3 ACTID | P6 ID (old) | NP61D | PROJECT | PHASES | PACKAGE | PART | ELEMENTS | STEP | FLOORS | BILL NOS | BILL DIVISION | RES PACK | EXECUTER |
| --- | --- | --- | --- | --- | --- | --- | --- | --- | --- | --- | --- | --- | --- | --- | --- | --- | --- | --- | --- | --- | --- | --- | --- | --- | --- | --- |
|  | 15 | **SUPERSTRUCTURE** |  | 2013-11-04 | 2014-04-03 |  |  |  |  |  |  |  |  |  |  |  |  |  |  |  |  |  |  |  |  |  |
|  | 10 | **GROUND FLOOR** |  | 2013-11-04 | 2013-12-30 |  |  |  |  |  |  |  |  |  |  |  |  |  |  |  |  |  |  |  |  |  |
| DUKHCONP1BZ3STGF2000 |  | Column-Rebar & Formwork | 25d | 2013-11-04 | 2013-12-02 | DUKHCONP1BZ3STUG1045 FF+7d, DUKHCONP1BZ2STGF2000, DUKHCONP1BZ3STUG1045 SS+14d | 0d |  | STEEL FIXERS SK [832 h]; CARPENTERS SK [2016 h]; LABOR- SUBCONTRACTOR [2136 h]; REINFORCEMENT BARS QTY [10395 kg]; FORMWORK QTY [1008 Sqm] | 90,734 | 10 | REM | 1BP3SPGF10 | DUKHCON1BP3STGF2000 | DUKHCONP1BZ3STGF2000 | DH | CON | 1B | Z3 | ST | SP | GF | B04 | B04-D02 | RES-1B |  |
| DUKHCONP1BZ3STGF2005 |  | Column-Concrete | 23d | 2013-11-13 | 2013-12-09 | DUKHCONP1BZ3STGF2000 SS+8d, DUKHCONP1BZ3STGF2000 FF+2d | 0d |  | CONCRETE MASON SK [222 h]; CONCRETE QTY [111 Cum]; LABOR- SUBCONTRACTOR [166.5 h] | 31,968 | 15 | REM | 1BP3SPGF15 | DUKHCON1BP3STGF2005 | DUKHCONP1BZ3STGF2005 | DH | CON | 1B | Z3 | ST | SP | GF | B04 | B04-D02 | RES-1B |  |
| DUKHCONP1BZ3STGF2010 |  | Beam, Stairs ,Slab-Rebar & Formwork | 25d | 2013-11-27 | 2013-12-26 | DUKHCONP1BZ3STGF2005 SS+2d, DUKHCONP1BZ3STGF2005 FF+14d | 0d |  | FORMWORK QTY [2711 Sqm]; STEEL FIXERS SK [5276 h]; CARPENTERS SK [5422 h]; LABOR- SUBCONTRACTOR [8023.5 h]; REINFORCEMENT BARS QTY [65948 kg] | 372,787 | 20 | REM | 1BP3SPGF20 | DUKHCON1BP3STGF2010 | DUKHCONP1BZ3STGF2010 | DH | CON | 1B | Z3 | ST | SP | GF | B04 | B04-D02 | RES-1B |  |
| DUKHCONP1BZ3STGF2015 |  | Beam, Stairs ,Slab-Concrete | 14d | 2013-12-14 | 2013-12-30 | DUKHCONP1BZ3STGF2010 FF+3d, DUKHCONP1BZ2STGF2015, DUKHCONP1BZ3STGF2010 SS+10d | 0d |  | CONCRETE MASON SK [832 h]; LABOR- SUBCONTRACTOR [624 h]; CONCRETE QTY [416 Cum] | 140,126 | 25 | REM | 1BP3SPGF25 | DUKHCON1BP3STGF2015 | DUKHCONP1BZ3STGF2015 | DH | CON | 1B | Z3 | ST | SP | GF | B04 | B04-D02 | RES-1B |  |
|  | 15 | **FIRST FLOORS** |  | 2013-12-16 | 2014-01-30 |  |  |  |  |  |  |  |  |  |  |  |  |  |  |  |  |  |  |  |  |  |
| DUKHCONP1BZ3STFF2020 |  | Column-Rebar & Formwork | 25d | 2013-12-16 | 2014-01-14 | DUKHCONP1BZ3STGF2015 SS+2d, DUKHCONP1BZ2STFF2020, DUKHCONP1BZ3STGF2015 FF+5d | 0d |  | REINFORCEMENT BARS QTY [3529 kg]; STEEL FIXERS SK [282 h]; CARPENTERS SK [1792 h]; LABOR- SUBCONTRACTOR [1344 h]; FORMWORK QTY [896 Sqm] | 62,208 | 10 | REM | 1BP3SPFF10 | DUKHCON1BP3STFF2020 | DUKHCONP1BZ3STFF2020 | DH | CON | 1B | Z3 | ST | SP | FF | B04 | B04-D02 | RES-1B |  |
| DUKHCONP1BZ3STFF2025 |  | Column-Concrete | 23d | 2013-12-26 | 2014-01-21 | DUKHCONP1BZ3STFF2020 SS+8d, DUKHCONP1BZ3STFF2020 FF+2d | 0d |  | CONCRETE MASON SK [194 h]; LABOR- SUBCONTRACTOR [145.5 h]; CONCRETE QTY [97 Cum] | 27,979 | 15 | REM | 1BP3SPFF15 | DUKHCON1BP3STFF2025 | DUKHCONP1BZ3STFF2025 | DH | CON | 1B | Z3 | ST | SP | FF | B04 | B04-D02 | RES-1B |  |
| DUKHCONP1BZ3STFF2030 |  | Beam, Stairs ,Slab-Rebar & Formwork | 25d | 2013-12-30 | 2014-01-27 | DUKHCONP1BZ3STFF2025 FF+5d, DUKHCONP1BZ3STFF2025 SS+2d | 0d |  | STEEL FIXERS SK [5481 h]; CARPENTERS SK [5422 h]; LABOR- SUBCONTRACTOR [8177.25 h]; REINFORCEMENT BARS QTY [68503 kg]; FORMWORK QTY [2711 Sqm] | 369,641 | 20 | REM | 1BP3SPFF20 | DUKHCON1BP3STFF2030 | DUKHCONP1BZ3STFF2030 | DH | CON | 1B | Z3 | ST | SP | FF | B04 | B04-D02 | RES-1B |  |
| DUKHCONP1BZ3STFF2035 |  | Beam, Stairs ,Slab-Concrete | 14d | 2014-01-15 | 2014-01-30 | DUKHCONP1BZ3STFF2030 FF+3d, DUKHCONP1BZ3STFF2030 SS+10d, DUKHCONP1BZ2STFF2035 | 0d |  | CONCRETE MASON SK [736 h]; LABOR- SUBCONTRACTOR [552 h]; CONCRETE QTY [368 Cum] | 126,130 | 25 | REM | 1BP3SPFF25 | DUKHCON1BP3STFF2035 | DUKHCONP1BZ3STFF2035 | DH | CON | 1B | Z3 | ST | SP | FF | B04 | B04-D02 | RES-1B |  |
|  | 20 | **ROOF** |  | 2014-01-21 | 2014-04-03 |  |  |  |  |  |  |  |  |  |  |  |  |  |  |  |  |  |  |  |  |  |
| DUKHCONP1BZ3STRF2040 |  | Column-Rebar & Formwork | 18d | 2014-01-21 | 2014-02-10 | DUKHCONP1BZ3STFF2035 SS+5d, DUKHCONP1BZ3STFF2035 FF+3d, DUKHCONP1BZ2STRF2040 | 23d | 0d | CARPENTERS SK [672 h]; LABOR- SUBCONTRACTOR [504 h]; FORMWORK QTY [336 Sqm] | 19,058 | 10 | REM | 1BP3SPRF10 | DUKHCON1BP3STRF2040 | DUKHCONP1BZ3STRF2040 | DH | CON | 1B | Z3 | ST | SP | RF | B04 | B04-D02 | RES-1B |  |
| DUKHCONP1BZ3STRF2045 |  | Column-Concrete | 17d | 2014-01-25 | 2014-02-13 | DUKHCONP1BZ3STRF2040 SS+3d, DUKHCONP1BZ3STRF2040 FF+1d | 27d | 0d | CONCRETE MASON SK [46 h]; LABOR- SUBCONTRACTOR [34.5 h]; CONCRETE QTY [23 Cum] | 6,660 | 15 | REM | 1BP3SPRF15 | DUKHCON1BP3STRF2045 | DUKHCONP1BZ3STRF2045 | DH | CON | 1B | Z3 | ST | SP | RF | B04 | B04-D02 | RES-1B |  |
| DUKHCONP1BZ3STRF2050 |  | Slab-Rebar & Formwork - Head Room | 20d | 2014-01-27 | 2014-02-19 | DUKHCONP1BZ3STRF2045 SS+2d, DUKHCONP1BZ3STRF2045 FF+5d | 27d | 0d | STEEL FIXERS SK [1294 h]; LABOR- SUBCONTRACTOR [1476 h]; REINFORCEMENT BARS QTY [16169 kg]; FORMWORK QTY [337 Sqm]; CARPENTERS SK [674 h] | 80,128 | 20 | REM | 1BP3SPRF20 | DUKHCON1BP3STRF2050 | DUKHCONP1BZ3STRF2050 | DH | CON | 1B | Z3 | ST | SP | RF | B04 | B04-D02 | RES-1B |  |
| DUKHCONP1BZ3STRF2055 |  | Slab-Concrete-Head room | 13d | 2014-02-10 | 2014-02-25 | DUKHCONP1BZ2STRF2055, DUKHCONP1BZ3STRF2050 FF+5d, DUKHCONP1BZ3STRF2050 SS+5d | 27d | 0d | CONCRETE MASON SK [160 h]; LABOR- SUBCONTRACTOR [120 h]; CONCRETE QTY [80 Cum] | 25,904 | 25 | REM | 1BP3SPRF25 | DUKHCON1BP3STRF2055 | DUKHCONP1BZ3STRF2055 | DH | CON | 1B | Z3 | ST | SP | RF | B04 | B04-D02 | RES-1B |  |
| DUKHCONP1BZ3STRF2060 |  | Construction of Parapets | 25d | 2014-02-15 | 2014-03-15 | DUKHCONP1BZ3STRF2055 FF+14d, DUKHCONP1BZ2STRF2060, DUKHCONP1BZ3STRF2055 SS+2d | 50d | 10d | BLOCK MASON SK [752 h]; LABOR- SUBCONTRACTOR [423 h]; BLOCK QTY [376 Sqm] | 23,312 | 30 | REM | 1BP3SPRF30 | DUKHCON1BP3STRF2060 | DUKHCONP1BZ3STRF2060 | DH | CON | 1B | Z3 | ST | SP | RF | B04 | B04-D03 | RES-1B |  |
| DUKHCONP1BZ3STRF2065 |  | Construction of up stands/Plinth | 25d | 2014-03-06 | 2014-04-03 | DUKHCONP1BZ2STRF2065, DUKHCONP1BZ3STRF2060 SS+5d, DUKHCONP1BZ3STRF2060 FF+5d | 67d | 0d | STEEL FIXERS SK [58 h]; CARPENTERS SK [240 h]; CONCRETE MASON SK [16 h]; LABOR- SUBCONTRACTOR [235.5 h]; REINFORCEMENT BARS QTY [722 kg]; FORMWORK QTY [120 Sqm]; CONCRETE QTY [8 Cum] | 12,704 | 35 | REM | 1BP3SPRF35 | DUKHCON1BP3STRF2065 | DUKHCONP1BZ3STRF2065 | DH | CON | 1B | Z3 | ST | SP | RF | B04 | B04-D02 | RES-1B |  |
|  | 15 | **FINISHING WORKS** |  | 2014-01-08 | 2014-08-26 |  |  |  |  |  |  |  |  |  |  |  |  |  |  |  |  |  |  |  |  |  |
|  | 10 | **INTERNAL FINISHES** |  | 2014-01-08 | 2014-08-26 |  |  |  |  |  |  |  |  |  |  |  |  |  |  |  |  |  |  |  |  |  |
|  | 10 | **GROUND FLOOR** |  | 2014-01-08 | 2014-06-21 |  |  |  |  |  |  |  |  |  |  |  |  |  |  |  |  |  |  |  |  |  |
| DUKHCONP1BZ3ARGF3000 |  | Block work | 25d | 2014-01-08 | 2014-02-05 | DUKHCONP1BZ2ARGF3000, DUKHCONP1BZ3STGF2015 SS+21d, DUKHCONP1BZ3STGF2015 FF+21d | 38d | 0d | BLOCK MASON SK [5928 h]; LABOR- SUBCONTRACTOR [3334.5 h]; BLOCK QTY [2964 Sqm] | 195,460 | 10 | REM | 1BP3IFGF10 | DUKHCON1BP3ARGF3000 | DUKHCONP1BZ3ARGF3000 | DH | CON | 1B | Z3 | FIN | IF | GF | B04 | B04-D03 | RES-1B |  |
| DUKHCONP1BZ3ARGF3005 |  | Plastering work | 25d | 2014-01-30 | 2014-03-01 | DUKHCONP1BZ3PLGF4305 SS+5d, DUKHCONP1BZ3ARGF3000 FF+7d, DUKHCONP1BZ3ELGF4000 FF+5d, DUKHCONP1BZ3PLGF4305 FF+5d, DUKHCONP1BZ2ARGF3005, DUKHCONP1BZ3ARGF3000 SS+7d, DUKHCONP1BZ3ELGF4000 SS+5d | 38d | 0d | PLASTER MASON SK [7264 h]; LABOR- SUBCONTRACTOR [4086 h]; PLASTER QTY [4540 Sqm] | 59,763 | 12 | REM | 1BP3IFGF12 | DUKHCON1BP3ARGF3005 | DUKHCONP1BZ3ARGF3005 | DH | CON | 1B | Z3 | FIN | IF | GF | B04 | B04-D10 | RES-1B |  |
| DUKHCONP1BZ3ARGF3010 |  | Flooring screed | 21d | 2014-02-08 | 2014-03-04 | DUKHCONP1BZ3ARGF3005 FF+3d, DUKHCONP1BZ3ARGF3005 SS+7d | 46d | 8d | SCREED MASON SK [1579 h]; LABOR- SUBCONTRACTOR [592.5 h]; FLOORING SCREED QTY [1973 Sqm] | 65,968 | 15 | REM | 1BP3IFGF15 | DUKHCON1BP3ARGF3010 | DUKHCONP1BZ3ARGF3010 | DH | CON | 1B | Z3 | FIN | IF | GF | B04 | B04-D10 | RES-1B |  |
| DUKHCONP1BZ3ARGF3030 |  | Paint First coat | 25d | 2014-02-17 | 2014-03-17 | DUKHCONP1BZ3ARGF3005 SS+14d, DUKHCONP1BZ3ARGF3005 FF+14d, DUKHCONP1BZ2ARGF3030 | 52d | 0d | LABOR- SUBCONTRACTOR [1619.25 h]; FIRSTCOAT PAINT QTY [5396 Sqm]; PAINTERS SK [4317 h] | 29,940 | 21 | REM | 1BP3IFGF21 | DUKHCON1BP3ARGF3030 | DUKHCONP1BZ3ARGF3030 | DH | CON | 1B | Z3 | FIN | IF | GF | B04 | B04-D11 | RES-1B | ENT |
| DUKHCONP1BZ3ARGF3015 |  | Wet area waterproofing & Protection Screed | 15d | 2014-02-18 | 2014-03-06 | DUKHCONP1BZ3ARGF3005 FF+5d, DUKHCONP1BZ3ARGF3005 SS+7d, DUKHCONP1BZ2ARGF3015 | 38d | 0d | LABOR- SUBCONTRACTOR [115.5 h]; WETAREA WATERPROOFING QTY [384 Sqm]; WATERPROOFING SPECIALIST SK [308 h] | 13,056 | 18 | REM | 1BP3IFGF18 | DUKHCON1BP3ARGF3015 | DUKHCONP1BZ3ARGF3015 | DH | CON | 1B | Z3 | FIN | IF | GF | B04 | B04-D10 | RES-1B |  |
| DUKHCONP1BZ3ARGF3020 |  | Ceramic Wall Tiling | 25d | 2014-02-24 | 2014-03-24 | DUKHCONP1BZ3ARGF3015 FF+5d, DUKHCONP1BZ2ARGF3020, DUKHCONP1BZ3PLGF4305 SS+4d, DUKHCONP1BZ3ARGF3015 SS+5d, DUKHCONP1BZ3PLGF4310 SS+4d, DUKHCONP1BZ3PLGF4305 FF+4d, DUKHCONP1BZ3PLGF4310 FF+4d | 38d | 0d | TILE MASON SK [2262 h]; LABOR- SUBCONTRACTOR [1272.75 h]; CERAMIC WALL TILE QTY [1131 Sqm] | 64,075 | 24 | REM | 1BP3IFGF24 | DUKHCON1BP3ARGF3020 | DUKHCONP1BZ3ARGF3020 | DH | CON | 1B | Z3 | FIN | IF | GF | B04 | B04-D10 | RES-1B |  |
| DUKHCONP1BZ3ARGF3025 |  | Porcelain Tile flooring | 25d | 2014-03-02 | 2014-03-30 | DUKHCONP1BZ3ARGF3010 FF+10d, DUKHCONP1BZ3ARGF3010 SS+10d, DUKHCONP1BZ2ARGF3025, DUKHCONP1BZ3ARGF3020 FF+5d, DUKHCONP1BZ3ARGF3020 SS+5d | 38d | 0d | TILE MASON SK [1228 h]; LABOR- SUBCONTRACTOR [690.75 h]; PORCELAIN FLOORING QTY [1074 Sqm] | 81,403 | 27 | REM | 1BP3IFGF27 | DUKHCON1BP3ARGF3025 | DUKHCONP1BZ3ARGF3025 | DH | CON | 1B | Z3 | FIN | IF | GF | B04 | B04-D10 | RES-1B |  |
| DUKHCONP1BZ3ARGF3045 |  | Fixing of Suspension systems | 20d | 2014-03-19 | 2014-04-10 | DUKHCONP1BZ3ARGF3025 FF+10d, DUKHCONP1BZ3ELGF4010 FF+5d, DUKHCONP1BZ3ARGF3030 SS+7d, DUKHCONP1BZ3ELGF4010 SS+5d, DUKHCONP1BZ3ARGF3030 FF+7d, DUKHCONP1BZ2ARGF3045, DUKHCONP1BZ3ARGF3025 SS+10d | 38d | 0d | LABOR- SUBCONTRACTOR [475.5 h]; SUSPENSION QTY [1056 Sqm]; FALSE CEILING SKILLED SK [845 h] | 21,568 | 39 | REM | 1BP3IFGF39 | DUKHCON1BP3ARGF3045 | DUKHCONP1BZ3ARGF3045 | DH | CON | 1B | Z3 | FIN | IF | GF | B04 | B04-D10 | RES-1B | SUS |
| DUKHCONP1BZ3ARGF3035 |  | Slate Tile Flooring & Skirting | 15d | 2014-03-22 | 2014-04-07 | DUKHCONP1BZ3ARGF3010 SS+13d, DUKHCONP1BZ3ARGF3025 FF+7d, DUKHCONP1BZ3ARGF3025 SS+13d, DUKHCONP1BZ3ARGF3010 FF+13d | 48d | 2d | TILE MASON SK [596 h]; LABOR- SUBCONTRACTOR [335.25 h]; SLATE TILE QTY [372 Sqm] | 77,923 | 33 | REM | 1BP3IFGF33 | DUKHCON1BP3ARGF3035 | DUKHCONP1BZ3ARGF3035 | DH | CON | 1B | Z3 | FIN | IF | GF | B04 | B04-D10 | RES-1B |  |
| DUKHCONP1BZ3ARGF3055 |  | Aluminum tile false ceiling | 25d | 2014-03-27 | 2014-04-24 | DUKHCONP1BZ3ARGF3045 FF+7d, DUKHCONP1BZ3ACGF4600 SS+7d, DUKHCONP1BZ3ARGF3045 SS+7d, DUKHCONP1BZ3ACGF4600 FF+7d | 41d | 3d | LABOR- SUBCONTRACTOR [46.8 h]; FALSE CEILING QTY [104 Sqm]; FALSE CEILING SKILLED SK [83.2 h] | 6,637 | 42 | REM | 1BP3IFGF42 | DUKHCON1BP3ARGF3055 | DUKHCONP1BZ3ARGF3055 | DH | CON | 1B | Z3 | FIN | IF | GF | B04 | B04-D10 | RES-1B | ALU |
| DUKHCONP1BZ3ARGF3040 |  | Cobble Tile flooring | 15d | 2014-03-29 | 2014-04-14 | DUKHCONP1BZ3ARGF3025 FF+13d, DUKHCONP1BZ3ARGF3010 FF+13d, DUKHCONP1BZ3ARGF3035 SS+4d, DUKHCONP1BZ3ARGF3025 SS+13d, DUKHCONP1BZ3ARGF3035 FF+4d, DUKHCONP1BZ3ARGF3010 SS+13d | 46d | 0d | TILE MASON SK [448 h]; LABOR- SUBCONTRACTOR [252 h]; COBBLE STONE QTY [280 Sqm] | 23,352 | 30 | REM | 1BP3IFGF30 | DUKHCON1BP3ARGF3040 | DUKHCONP1BZ3ARGF3040 | DH | CON | 1B | Z3 | FIN | IF | GF | B04 | B04-D10 | RES-1B |  |
| DUKHCONP1BZ3ARGF3060 |  | Gypsum board false ceiling | 25d | 2014-03-31 | 2014-04-28 | DUKHCONP1BZ3ACGF4600 SS+7d, DUKHCONP1BZ2ARGF3060, DUKHCONP1BZ3ACGF4600 FF+7d, DUKHCONP1BZ3ARGF3045 FF+10d, DUKHCONP1BZ3ARGF3045 SS+10d | 38d | 0d | LABOR- SUBCONTRACTOR [438 h]; FALSE CEILING QTY [972.81 Sqm]; FALSE CEILING SKILLED SK [778.3 h] | 53,328 | 45 | REM | 1BP3IFGF45 | DUKHCON1BP3ARGF3060 | DUKHCONP1BZ3ARGF3060 | DH | CON | 1B | Z3 | FIN | IF | GF | B04 | B04-D10 | RES-1B | GYP |
| DUKHCONP1BZ3ARGF3050 |  | Granite - Stair case flooring & Skirting | 20d | 2014-04-06 | 2014-04-28 | DUKHCONP1BZ3ARGF3025 FF+13d, DUKHCONP1BZ3ARGF3040 FF+7d, DUKHCONP1BZ3ARGF3025 SS+13d, DUKHCONP1BZ3ARGF3040 SS+7d | 46d | 0d | GRANITE MASON SK [544 h]; LABOR- SUBCONTRACTOR [306 h]; GRANITE QTY [136 Sqm] | 89,921 | 36 | REM | 1BP3IFGF36 | DUKHCON1BP3ARGF3050 | DUKHCONP1BZ3ARGF3050 | DH | CON | 1B | Z3 | FIN | IF | GF | B04 | B04-D10 | RES-1B |  |
| DUKHCONP1BZ3ARGF3065 |  | Wooden door & PVC Door | 15d | 2014-04-20 | 2014-05-06 | DUKHCONP1BZ3ARGF3035 FF+7d, DUKHCONP1BZ3ARGF3050 SS+7d, DUKHCONP1BZ3ARGF3035 SS+7d, DUKHCONP1BZ2ARGF3065, DUKHCONP1BZ3ARGF3050 FF+7d | 46d | 0d | DOOR ERECTOR SK [480 h]; LABOR- SUBCONTRACTOR [180 h]; WOODEN DOOR QTY [120 ea] | 508,227 | 48 | REM | 1BP3IFGF48 | DUKHCON1BP3ARGF3065 | DUKHCONP1BZ3ARGF3065 | DH | CON | 1B | Z3 | FIN | IF | GF | B04 | B04-D05 | RES-1B |  |
| DUKHCONP1BZ3ARGF3070 |  | Aluminum doors | 15d | 2014-04-26 | 2014-05-12 | DUKHCONP1BZ2ARGF3070, DUKHCONP1BZ3ARGF3065 SS+5d, DUKHCONP1BZ3ARGF3065 FF+5d | 46d | 0d | LABOR- SUBCONTRACTOR [24 h]; ALUMINIUM DOOR QTY [16 ea]; DOOR ERECTOR SK [64 h] | 40,213 | 51 | REM | 1BP3IFGF51 | DUKHCON1BP3ARGF3070 | DUKHCONP1BZ3ARGF3070 | DH | CON | 1B | Z3 | FIN | IF | GF | B04 | B04-D06 | RES-1B |  |
| DUKHCONP1BZ3ARGF3075 |  | Carpentry & Joinery Works | 20d | 2014-05-01 | 2014-05-24 | DUKHCONP1BZ3ARGF3070 FF+7d, DUKHCONP1BZ2ARGF3075, DUKHCONP1BZ3ARGF3070 SS+5d | 46d | 0d | LABOR- SUBCONTRACTOR [144 h]; CABINET QTY [40 ea]; COUNTER QTY [16 ea]; JOINERY WORK SK [320 h]; COUNTER SK [64 h] | 149,837 | 57 | REM | 1BP3IFGF57 | DUKHCON1BP3ARGF3075 | DUKHCONP1BZ3ARGF3075 | DH | CON | 1B | Z3 | FIN | IF | GF | B04 | B04-D05 | RES-1B |  |
| DUKHCONP1BZ3ARGF3080 |  | Aluminum windows | 20d | 2014-05-03 | 2014-05-25 | DUKHCONP1BZ2ARGF3080, DUKHCONP1BZ3ARGF3070 FF+6d, DUKHCONP1BZ3ARGF3070 SS+6d | 56d | 5d | LABOR- SUBCONTRACTOR [70.5 h]; ALUMINIUM WINDOWS QTY [70 ea]; WINDOW ERECTOR SK [187 h] | 26,016 | 54 | REM | 1BP3IFGF54 | DUKHCON1BP3ARGF3080 | DUKHCONP1BZ3ARGF3080 | DH | CON | 1B | Z3 | FIN | IF | GF | B04 | B04-D06 | RES-1B |  |
| DUKHCONP1BZ3ARGF3085 |  | S.S.Balustrade | 20d | 2014-05-10 | 2014-06-01 | DUKHCONP1BZ3ARGF3050 SS+7d, DUKHCONP1BZ3ARGF3050 FF+7d, DUKHCONP1BZ3ARGF3075 FF+7d, DUKHCONP1BZ3ARGF3075 SS+7d | 51d | 5d | LABOR- SUBCONTRACTOR [63 h]; S.S.BALUSTRADE QTY [56 lm]; HANDRAIL ERECTOR SKILLED [112 h] | 80,976 | 63 | REM | 1BP3IFGF63 | DUKHCON1BP3ARGF3085 | DUKHCONP1BZ3ARGF3085 | DH | CON | 1B | Z3 | FIN | IF | GF | B04 | B04-D06 | RES-1B |  |
| DUKHCONP1BZ3ARGF3090 |  | Installation of Granite Counter Top | 15d | 2014-05-14 | 2014-05-31 | DUKHCONP1BZ3ARGF3075 SS+7d, DUKHCONP1BZ3ARGF3075 FF+6d | 46d | 0d | GRANITE MASON SK [176 h]; LABOR- SUBCONTRACTOR [66 h]; GRANITE COUNTER TOP QTY [44 ea] | 46,857 | 60 | REM | 1BP3IFGF60 | DUKHCON1BP3ARGF3090 | DUKHCONP1BZ3ARGF3090 | DH | CON | 1B | Z3 | FIN | IF | GF | B04 | B04-D10 | RES-1B |  |
| DUKHCONP1BZ3ARGF3095 |  | Final Painting | 25d | 2014-05-24 | 2014-06-21 | DUKHCONP1BZ2ARGF3095, DUKHCONP1BZ3ARGF3040 FF+13d, DUKHCONP1BZ3ARGF3060 SS+8d, DUKHCONP1BZ3ARGF3040 SS+13d, DUKHCONP1BZ3ARGF3060 FF+8d, DUKHCONP1BZ3ACGF4610 SS+10d, DUKHCONP1BZ3ARGF3080 SS+8d, DUKHCONP1BZ3ARGF3090 FF+8d, DUKHCONP1BZ3ARGF3085 FF+7d, DUKHCONP1BZ3ARGF3090 SS+8d, DUKHCONP1BZ3ARGF3035 SS+13d, DUKHCONP1BZ3ARGF3070 FF+5d, DUKHCONP1BZ3ARGF3070 SS+5d, DUKHCONP1BZ3ARGF3080 FF+8d, DUKHCONP1BZ3ARGF3030 FF+10d, DUKHCONP1BZ3ARGF3030 SS+10d, DUKHCONP1BZ3ARGF3035 FF+13d, DUKHCONP1BZ3ARGF3085 SS+7d, DUKHCONP1BZ3ACGF4610 FF+10d | 46d | 0d | LABOR- SUBCONTRACTOR [1619.25 h]; PAINT QTY [5396 Sqm]; PAINTERS SK [4317 h] | 65,933 | 66 | REM | 1BP3IFGF66 | DUKHCON1BP3ARGF3095 | DUKHCONP1BZ3ARGF3095 | DH | CON | 1B | Z3 | FIN | IF | GF | B04 | B04-D11 | RES-1B | PNT |

Notes:
- DUKHCONP1BZ3STGF2000: Expenses: P1B-Concrete Works 90734
- DUKHCONP1BZ3STGF2005: Expenses: P1B-Concrete Works 31968
- DUKHCONP1BZ3STGF2010: Expenses: P1B-Concrete Works 372787
- DUKHCONP1BZ3STGF2015: Expenses: P1B-Concrete Works 140126
- DUKHCONP1BZ3STFF2020: Expenses: P1B-Concrete Works 62208
- DUKHCONP1BZ3STFF2025: Expenses: P1B-Concrete Works 27979
- DUKHCONP1BZ3STFF2030: Expenses: P1B-Concrete Works 369641
- DUKHCONP1BZ3STFF2035: Expenses: P1B-Concrete Works 126130
- DUKHCONP1BZ3STRF2040: Expenses: P1B-Concrete Works 19058
- DUKHCONP1BZ3STRF2045: Expenses: P1B-Concrete Works 6660
- DUKHCONP1BZ3STRF2050: Expenses: P1B-Concrete Works 80128
- DUKHCONP1BZ3STRF2055: Expenses: P1B-Concrete Works 25904
- DUKHCONP1BZ3STRF2060: Expenses: P1B-Block work 23312
- DUKHCONP1BZ3STRF2065: Expenses: P1B-Concrete Works 12704
- DUKHCONP1BZ3ARGF3000: Expenses: P1B-Block work 195460
- DUKHCONP1BZ3ARGF3005: Expenses: P1B-Finishes 59763
- DUKHCONP1BZ3ARGF3010: Expenses: P1B-Finishes 65968
- DUKHCONP1BZ3ARGF3030: Expenses: P1B-Painting and Decorating 29940
- DUKHCONP1BZ3ARGF3015: Expenses: P1B-Finishes 13056
- DUKHCONP1BZ3ARGF3020: Expenses: P1B-Finishes 64075
- DUKHCONP1BZ3ARGF3025: Expenses: P1B-Finishes 81403
- DUKHCONP1BZ3ARGF3045: Expenses: P1B-Finishes 21568
- DUKHCONP1BZ3ARGF3035: Expenses: P1B-Finishes 77923
- DUKHCONP1BZ3ARGF3055: Expenses: P1B-Finishes 6637
- DUKHCONP1BZ3ARGF3040: Expenses: P1B-Finishes 23352
- DUKHCONP1BZ3ARGF3060: Expenses: P1B-Finishes 53328
- DUKHCONP1BZ3ARGF3050: Expenses: P1B-Finishes 89921
- DUKHCONP1BZ3ARGF3065: Expenses: P1B-Carpentry and Joinery 508227
- DUKHCONP1BZ3ARGF3070: Expenses: P1B-Metal work 40213
- DUKHCONP1BZ3ARGF3075: Expenses: P1B-Carpentry and Joinery 149837
- DUKHCONP1BZ3ARGF3080: Expenses: P1B-Metal work 26016
- DUKHCONP1BZ3ARGF3085: Expenses: P1B-Metal work 80976
- DUKHCONP1BZ3ARGF3090: Expenses: P1B-Finishes 46857
- DUKHCONP1BZ3ARGF3095: Expenses: P1B-Painting and Decorating 65933

| ID | WBS | Activity | Duration | Start | Finish | Predecessors | Total float | Free float | Resources | Cost | CODE | rem | P3 ACTID | P6 ID (old) | NP61D | PROJECT | PHASES | PACKAGE | PART | ELEMENTS | STEP | FLOORS | BILL NOS | BILL DIVISION | RES PACK | EXECUTER |
| --- | --- | --- | --- | --- | --- | --- | --- | --- | --- | --- | --- | --- | --- | --- | --- | --- | --- | --- | --- | --- | --- | --- | --- | --- | --- | --- |
|  | 15 | **FIRST FLOORS** |  | 2014-02-19 | 2014-08-26 |  |  |  |  |  |  |  |  |  |  |  |  |  |  |  |  |  |  |  |  |  |
| DUKHCONP1BZ3ARFF3300 |  | Block work | 25d | 2014-02-19 | 2014-03-19 | DUKHCONP1BZ3STFF2035 SS+21d, DUKHCONP1BZ3STFF2020 FF+21d, DUKHCONP1BZ2ARFF3300, DUKHCONP1BZ3STFF2035 FF+21d, DUKHCONP1BZ3STFF2020 SS+21d | -8d | 0d | BLOCK MASON SK [4698 h]; LABOR- SUBCONTRACTOR [2643 h]; BLOCK QTY [2349 Sqm] | 160,271 | 10 | REM | 1BP3IFFF10 | DUKHCON1BP3ARFF3300 | DUKHCONP1BZ3ARFF3300 | DH | CON | 1B | Z3 | FIN | IF | FF | B04 | B04-D03 | RES-1B |  |
| DUKHCONP1BZ3ARFF3305 |  | Plastering work | 25d | 2014-03-18 | 2014-04-15 | DUKHCONP1BZ3ARFF3300 SS+7d, DUKHCONP1BZ3ARFF3300 FF+7d, DUKHCONP1BZ3ELFF4035 SS+5d, DUKHCONP1BZ3ELFF4035 FF+5d, DUKHCONP1BZ3PLFF4325 SS+8d, DUKHCONP1BZ2ARFF3305, DUKHCONP1BZ3PLFF4325 FF+8d | -8d | 0d | PLASTER MASON SK [4812 h]; LABOR- SUBCONTRACTOR [2706.75 h]; PLASTER QTY [3007 Sqm] | 39,832 | 12 | REM | 1BP3IFFF12 | DUKHCON1BP3ARFF3305 | DUKHCONP1BZ3ARFF3305 | DH | CON | 1B | Z3 | FIN | IF | FF | B04 | B04-D10 | RES-1B |  |
| DUKHCONP1BZ3ARFF3310 |  | Flooring screed | 21d | 2014-03-26 | 2014-04-19 | DUKHCONP1BZ3ARFF3305 FF+3d, DUKHCONP1BZ3ARFF3305 SS+7d | 9d | 17d | SCREED MASON SK [787 h]; LABOR- SUBCONTRACTOR [295.5 h]; FLOORING SCREED QTY [983 Sqm] | 32,432 | 15 | REM | 1BP3IFFF15 | DUKHCON1BP3ARFF3310 | DUKHCONP1BZ3ARFF3310 | DH | CON | 1B | Z3 | FIN | IF | FF | B04 | B04-D10 | RES-1B |  |
| DUKHCONP1BZ3ARFF3330 |  | Paint First coat | 25d | 2014-04-03 | 2014-05-01 | DUKHCONP1BZ3ARFF3305 SS+14d, DUKHCONP1BZ3ARFF3305 FF+14d | 18d | 26d | LABOR- SUBCONTRACTOR [1433.25 h]; FIRSTCOAT PAINT QTY [4778.32 Sqm]; PAINTERS SK [3823 h] | 29,947 | 21 | REM | 1BP3IFFF21 | DUKHCON1BP3ARFF3330 | DUKHCONP1BZ3ARFF3330 | DH | CON | 1B | Z3 | FIN | IF | FF | B04 | B04-D11 | RES-1B | ENT |
| DUKHCONP1BZ3ARFF3315 |  | Wet area waterproofing | 15d | 2014-04-08 | 2014-04-24 | DUKHCONP1BZ3ARFF3305 FF+8d, DUKHCONP1BZ2ARFF3315, DUKHCONP1BZ3ARFF3305 SS+7d | -8d | 0d | LABOR- SUBCONTRACTOR [375 h]; WETAREA WATERPROOFING QTY [1248 Sqm]; WATERPROOFING SPECIALIST SK [999 h] | 41,024 | 18 | REM | 1BP3IFFF18 | DUKHCON1BP3ARFF3315 | DUKHCONP1BZ3ARFF3315 | DH | CON | 1B | Z3 | FIN | IF | FF | B04 | B04-D10 | RES-1B |  |
| DUKHCONP1BZ3ARFF3320 |  | Ceramic Wall Tiling | 25d | 2014-04-17 | 2014-05-15 | DUKHCONP1BZ2ARFF3320, DUKHCONP1BZ3ARFF3315 FF+7d, DUKHCONP1BZ3PLFF4325 SS+4d, DUKHCONP1BZ3PLFF4330 FF+7d, DUKHCONP1BZ3ARFF3315 SS+8d, DUKHCONP1BZ3PLFF4330 SS+7d, DUKHCONP1BZ3PLFF4325 FF+4d | -8d | 0d | TILE MASON SK [970 h]; LABOR- SUBCONTRACTOR [546 h]; CERAMIC WALL TILE QTY [485 Sqm] | 30,715 | 24 | REM | 1BP3IFFF24 | DUKHCON1BP3ARFF3320 | DUKHCONP1BZ3ARFF3320 | DH | CON | 1B | Z3 | FIN | IF | FF | B04 | B04-D10 | RES-1B |  |
| DUKHCONP1BZ3ARFF3325 |  | Porcelain Tile flooring | 25d | 2014-04-27 | 2014-05-25 | DUKHCONP1BZ3ARFF3310 FF+10d, DUKHCONP1BZ3ARFF3320 SS+8d, DUKHCONP1BZ2ARFF3325, DUKHCONP1BZ3ARFF3310 SS+10d, DUKHCONP1BZ3ARFF3320 FF+8d | -8d | 0d | TILE MASON SK [858 h]; LABOR- SUBCONTRACTOR [483 h]; PORCELAIN FLOORING QTY [750 Sqm] | 62,083 | 27 | REM | 1BP3IFFF27 | DUKHCON1BP3ARFF3325 | DUKHCONP1BZ3ARFF3325 | DH | CON | 1B | Z3 | FIN | IF | FF | B04 | B04-D10 | RES-1B |  |
| DUKHCONP1BZ3ARFF3335 |  | Slate Tile Flooring & Skirting | 15d | 2014-05-14 | 2014-05-31 | DUKHCONP1BZ3ARFF3325 FF+5d, DUKHCONP1BZ3ARFF3310 SS+13d, DUKHCONP1BZ3ARFF3325 SS+13d, DUKHCONP1BZ3ARFF3310 FF+13d | 11d | 19d | TILE MASON SK [596 h]; LABOR- SUBCONTRACTOR [335.25 h]; SLATE TILE QTY [372 Sqm] | 74,280 | 30 | REM | 1BP3IFFF30 | DUKHCON1BP3ARFF3335 | DUKHCONP1BZ3ARFF3335 | DH | CON | 1B | Z3 | FIN | IF | FF | B04 | B04-D10 | RES-1B |  |
| DUKHCONP1BZ3ARFF3345 |  | Fixing of Suspension systems | 20d | 2014-05-18 | 2014-06-09 | DUKHCONP1BZ2ARFF3345, DUKHCONP1BZ3ARFF3330 SS+7d, DUKHCONP1BZ3ARFF3325 SS+13d, DUKHCONP1BZ3ELFF4045 SS+5d, DUKHCONP1BZ3ARFF3325 FF+13d, DUKHCONP1BZ3ARFF3330 FF+7d, DUKHCONP1BZ3ELFF4045 FF+5d | -8d | 0d | LABOR- SUBCONTRACTOR [429 h]; SUSPENSION QTY [952 Sqm]; FALSE CEILING SKILLED SK [762 h] | 18,800 | 36 | REM | 1BP3IFFF36 | DUKHCON1BP3ARFF3345 | DUKHCONP1BZ3ARFF3345 | DH | CON | 1B | Z3 | FIN | IF | FF | B04 | B04-D10 | RES-1B | SUS |
| DUKHCONP1BZ3ARFF3350 |  | Granite - Stair case flooring & Skirting | 20d | 2014-05-18 | 2014-06-09 | DUKHCONP1BZ3ARFF3325 FF+13d, DUKHCONP1BZ3ARFF3325 SS+13d | 3d | 11d | GRANITE MASON SK [544 h]; GRANITE QTY [136 Sqm]; LABOR- SUBCONTRACTOR [306 h] | 89,923 | 33 | REM | 1BP3IFFF33 | DUKHCON1BP3ARFF3350 | DUKHCONP1BZ3ARFF3350 | DH | CON | 1B | Z3 | FIN | IF | FF | B04 | B04-D10 | RES-1B |  |
| DUKHCONP1BZ3ARFF3360 |  | Gypsum board false ceiling | 25d | 2014-05-29 | 2014-06-26 | DUKHCONP1BZ3ARFF3345 FF+10d, DUKHCONP1BZ3ARFF3345 SS+10d, DUKHCONP1BZ3ACFF4615 FF+7d, DUKHCONP1BZ2ARFF3360, DUKHCONP1BZ3ACFF4615 SS+7d | -8d | 0d | LABOR- SUBCONTRACTOR [429 h]; FALSE CEILING QTY [952 Sqm]; FALSE CEILING SKILLED SK [762 h] | 53,328 | 39 | REM | 1BP3IFFF39 | DUKHCON1BP3ARFF3360 | DUKHCONP1BZ3ARFF3360 | DH | CON | 1B | Z3 | FIN | IF | FF | B04 | B04-D10 | RES-1B | GYP |
| DUKHCONP1BZ3ARFF3365 |  | Wooden door | 15d | 2014-06-14 | 2014-06-30 | DUKHCONP1BZ3ARFF3335 FF+7d, DUKHCONP1BZ3ARFF3350 SS+7d, DUKHCONP1BZ3ARFF3350 FF+7d, DUKHCONP1BZ3ARFF3360 SS+3d, DUKHCONP1BZ3ARFF3335 SS+7d, DUKHCONP1BZ3ARFF3360 FF+3d, DUKHCONP1BZ2ARFF3365 | -8d | 0d | LABOR- SUBCONTRACTOR [48 h]; WOODEN DOOR QTY [32 ea]; DOOR ERECTOR SK [128 h] | 110,928 | 42 | REM | 1BP3IFFF42 | DUKHCON1BP3ARFF3365 | DUKHCONP1BZ3ARFF3365 | DH | CON | 1B | Z3 | FIN | IF | FF | B04 | B04-D05 | RES-1B |  |
| DUKHCONP1BZ3ARFF3370 |  | Aluminum Door | 20d | 2014-06-22 | 2014-07-14 | DUKHCONP1BZ3ARFF3365 FF+5d, DUKHCONP1BZ3ARFF3365 SS+7d, DUKHCONP1BZ2ARFF3370 | -8d | 0d | LABOR- SUBCONTRACTOR [36 h]; ALUMINIUM DOOR QTY [24 ea]; DOOR ERECTOR SK [96 h] | 62,165 | 45 | REM | 1BP3IFFF45 | DUKHCON1BP3ARFF3370 | DUKHCONP1BZ3ARFF3370 | DH | CON | 1B | Z3 | FIN | IF | FF | B04 | B04-D06 | RES-1B |  |
| DUKHCONP1BZ3ARFF3380 |  | Aluminum windows | 20d | 2014-06-29 | 2014-07-21 | DUKHCONP1BZ3ARFF3370 SS+6d, DUKHCONP1BZ3ARFF3370 FF+6d | 5d | 13d | LABOR- SUBCONTRACTOR [74.25 h]; ALUMINIUM WINDOWS QTY [74 ea]; WINDOW ERECTOR SK [198 h] | 43,931 | 48 | REM | 1BP3IFFF48 | DUKHCON1BP3ARFF3380 | DUKHCONP1BZ3ARFF3380 | DH | CON | 1B | Z3 | FIN | IF | FF | B04 | B04-D06 | RES-1B |  |
| DUKHCONP1BZ3ARFF3375 |  | Carpentry & Joinery Works | 25d | 2014-06-30 | 2014-07-28 | DUKHCONP1BZ3ARFF3370 SS+7d, DUKHCONP1BZ3ARFF3370 FF+5d, DUKHCONP1BZ2ARFF3375 | -8d | 0d | LABOR- SUBCONTRACTOR [192 h]; CABINET QTY [16 ea]; COUNTER QTY [16 ea]; WARDROBE QTY [24 ea]; SHELVES QTY [16 ea]; JOINERY WORK SK [448 h]; COUNTER SK [64 h] | 195,293 | 51 | REM | 1BP3IFFF51 | DUKHCON1BP3ARFF3375 | DUKHCONP1BZ3ARFF3375 | DH | CON | 1B | Z3 | FIN | IF | FF | B04 | B04-D05 | RES-1B |  |
| DUKHCONP1BZ3ARFF3385 |  | Handrail & Balustrade | 20d | 2014-07-14 | 2014-08-09 | DUKHCONP1BZ3ARFF3350 FF+7d, DUKHCONP1BZ3ARFF3375 SS+7d, DUKHCONP1BZ3ARFF3375 FF+7d, DUKHCONP1BZ3ARFF3350 SS+7d | -8d | 0d | LABOR- SUBCONTRACTOR [63 h]; S.S.BALUSTRADE QTY [56 lm]; HANDRAIL ERECTOR SKILLED [112 h] | 60,733 | 57 | REM | 1BP3IFFF57 | DUKHCON1BP3ARFF3385 | DUKHCONP1BZ3ARFF3385 | DH | CON | 1B | Z3 | FIN | IF | FF | B04 | B04-D06 | RES-1B |  |
| DUKHCONP1BZ3ARFF3390 |  | Installation of Granite Counter Top | 20d | 2014-07-14 | 2014-08-09 | DUKHCONP1BZ3ARFF3375 FF+7d, DUKHCONP1BZ3ARFF3375 SS+7d | -6d | 2d | GRANITE MASON SK [80 h]; LABOR- SUBCONTRACTOR [30 h]; GRANITE COUNTER TOP QTY [20 ea] | 9,492 | 54 | REM | 1BP3IFFF54 | DUKHCON1BP3ARFF3390 | DUKHCONP1BZ3ARFF3390 | DH | CON | 1B | Z3 | FIN | IF | FF | B04 | B04-D10 | RES-1B |  |
| DUKHCONP1BZ3ARFF3395 |  | Final Painting | 25d | 2014-07-26 | 2014-08-26 | DUKHCONP1BZ2ARFF3395, DUKHCONP1BZ3ARFF3360 FF+10d, DUKHCONP1BZ3ARFF3380 SS+10d, DUKHCONP1BZ3ARFF3350 SS+8d, DUKHCONP1BZ3ARFF3390 SS+8d, DUKHCONP1BZ3ARFF3335 FF+8d, DUKHCONP1BZ3ARFF3360 SS+10d, DUKHCONP1BZ3ARFF3365 FF+8d, DUKHCONP1BZ3ARFF3365 SS+8d, DUKHCONP1BZ3ARFF3385 FF+10d, DUKHCONP1BZ3ARFF3385 SS+10d, DUKHCONP1BZ3ACFF4625 SS+10d, DUKHCONP1BZ3ARFF3330 FF+10d, DUKHCONP1BZ3ACFF4625 FF+10d, DUKHCONP1BZ3ARFF3330 SS+10d, DUKHCONP1BZ3ARFF3375 FF+8d, DUKHCONP1BZ3ARFF3375 SS+8d, DUKHCONP1BZ3ARFF3335 SS+8d, DUKHCONP1BZ3ARFF3350 FF+8d, DUKHCONP1BZ3ARFF3380 FF+10d, DUKHCONP1BZ3ARFF3390 FF+8d | -8d | 0d | LABOR- SUBCONTRACTOR [1433.25 h]; PAINT QTY [4778.32 Sqm]; PAINTERS SK [3823 h] | 54,971 | 60 | REM | 1BP3IFFF60 | DUKHCON1BP3ARFF3395 | DUKHCONP1BZ3ARFF3395 | DH | CON | 1B | Z3 | FIN | IF | FF | B04 | B04-D11 | RES-1B | PNT |
|  | 20 | **ROOF** |  | 2014-03-08 | 2014-05-21 |  |  |  |  |  |  |  |  |  |  |  |  |  |  |  |  |  |  |  |  |  |
| DUKHCONP1BZ3ARRF3600 |  | Block work | 20d | 2014-03-08 | 2014-03-30 | DUKHCONP1BZ3STRF2055 SS+21d, DUKHCONP1BZ2ARRF3600, DUKHCONP1BZ3STRF2055 FF+21d | 67d | 0d | BLOCK MASON SK [446 h]; LABOR- SUBCONTRACTOR [251.25 h]; BLOCK QTY [223 Sqm] | 16,095 | 10 | REM | 1BP3IFRF10 | DUKHCON1BP3ARRF3600 | DUKHCONP1BZ3ARRF3600 | DH | CON | 1B | Z3 | FIN | IF | RF | B04 | B04-D03 | RES-1B |  |
| DUKHCONP1BZ3ARRF3605 |  | Plastering work | 20d | 2014-03-19 | 2014-04-10 | DUKHCONP1BZ3ARRF3600 SS+10d, DUKHCONP1BZ3ARRF3600 FF+10d | 67d | 0d | PLASTER MASON SK [2453 h]; LABOR- SUBCONTRACTOR [1380 h]; PLASTER QTY [1533 Sqm] | 19,927 | 20 | REM | 1BP3IFRF20 | DUKHCON1BP3ARRF3605 | DUKHCONP1BZ3ARRF3605 | DH | CON | 1B | Z3 | FIN | IF | RF | B04 | B04-D10 | RES-1B |  |
| DUKHCONP1BZ3ARRF3610 |  | Flooring screed | 15d | 2014-04-06 | 2014-04-22 | DUKHCONP1BZ3ARRF3605 SS+10d, DUKHCONP1BZ3ARRF3605 FF+10d | 67d | 0d | SCREED MASON SK [112 h]; LABOR- SUBCONTRACTOR [42 h]; FLOORING SCREED QTY [140 Sqm] | 4,632 | 30 | REM | 1BP3IFRF30 | DUKHCON1BP3ARRF3610 | DUKHCONP1BZ3ARRF3610 | DH | CON | 1B | Z3 | FIN | IF | RF | B04 | B04-D10 | RES-1B |  |
| DUKHCONP1BZ3ARRF3695 |  | Painting -Storage area | 20d | 2014-04-17 | 2014-05-10 | DUKHCONP1BZ3ARRF3610 SS+10d, DUKHCONP1BZ3ARRF3610 FF+10d | 67d | 0d | LABOR- SUBCONTRACTOR [456 h]; PAINT QTY [1472 Sqm]; PAINTERS SK [1184 h] | 7,908 | 40 |  | 1BP3IFRF40 | DUKHCON1BP3ARRF3695 | DUKHCONP1BZ3ARRF3695 | DH | CON | 1B | Z3 | FIN | IF | RF | B04 | B04-D11 | RES-1B |  |
| DUKHCONP1BZ3ARRF3620 |  | Epoxy Painting -Storage area | 15d | 2014-05-05 | 2014-05-21 | DUKHCONP1BZ3ARRF3695 SS+10d, DUKHCONP1BZ3ARRF3695 FF+10d | 67d | 0d | LABOR- SUBCONTRACTOR [13.5 h]; EPOXY QTY [64 Sqm]; EPOXY SK [35 h] | 4,560 | 50 | REM | 1BP3IFRF50 | DUKHCON1BP3ARRF3620 | DUKHCONP1BZ3ARRF3620 | DH | CON | 1B | Z3 | FIN | IF | RF | B04 | B04-D11 | RES-1B |  |

Notes:
- DUKHCONP1BZ3ARFF3300: Expenses: P1B-Block work 160271
- DUKHCONP1BZ3ARFF3305: Expenses: P1B-Finishes 39832
- DUKHCONP1BZ3ARFF3310: Expenses: P1B-Finishes 32432
- DUKHCONP1BZ3ARFF3330: Expenses: P1B-Painting and Decorating 29947
- DUKHCONP1BZ3ARFF3315: Expenses: P1B-Finishes 41024
- DUKHCONP1BZ3ARFF3320: Expenses: P1B-Finishes 30715
- DUKHCONP1BZ3ARFF3325: Expenses: P1B-Finishes 62083
- DUKHCONP1BZ3ARFF3335: Expenses: P1B-Finishes 74280
- DUKHCONP1BZ3ARFF3345: Expenses: P1B-Finishes 18800
- DUKHCONP1BZ3ARFF3350: Expenses: P1B-Finishes 89923
- DUKHCONP1BZ3ARFF3360: Expenses: P1B-Finishes 53328
- DUKHCONP1BZ3ARFF3365: Expenses: P1B-Carpentry and Joinery 110928
- DUKHCONP1BZ3ARFF3370: Expenses: P1B-Metal work 62165
- DUKHCONP1BZ3ARFF3380: Expenses: P1B-Metal work 43931
- DUKHCONP1BZ3ARFF3375: Expenses: P1B-Carpentry and Joinery 195293
- DUKHCONP1BZ3ARFF3385: Expenses: P1B-Metal work 60733
- DUKHCONP1BZ3ARFF3390: Expenses: P1B-Finishes 9492
- DUKHCONP1BZ3ARFF3395: Expenses: P1B-Painting and Decorating 54971
- DUKHCONP1BZ3ARRF3600: Expenses: P1B-Block work 16095
- DUKHCONP1BZ3ARRF3605: Expenses: P1B-Finishes 19927
- DUKHCONP1BZ3ARRF3610: Expenses: P1B-Finishes 4632
- DUKHCONP1BZ3ARRF3695: Expenses: P1B-Painting and Decorating 7908
- DUKHCONP1BZ3ARRF3620: Expenses: P1B-Painting and Decorating 4560

| ID | WBS | Activity | Duration | Start | Finish | Predecessors | Total float | Free float | Resources | Cost | CODE | rem | P3 ACTID | P6 ID (old) | NP61D | PROJECT | PHASES | PACKAGE | PART | ELEMENTS | STEP | FLOORS | BILL NOS | BILL DIVISION | RES PACK |
| --- | --- | --- | --- | --- | --- | --- | --- | --- | --- | --- | --- | --- | --- | --- | --- | --- | --- | --- | --- | --- | --- | --- | --- | --- | --- |
|  | 15 | **EXTERNAL FINISHES** |  | 2014-03-18 | 2014-05-29 |  |  |  |  |  |  |  |  |  |  |  |  |  |  |  |  |  |  |  |  |
|  | 10 | **ROOF** |  | 2014-03-18 | 2014-05-27 |  |  |  |  |  |  |  |  |  |  |  |  |  |  |  |  |  |  |  |  |
| DUKHCONP1BZ3ARRF3630 |  | Leveling Screed for Waterproofing | 25d | 2014-03-18 | 2014-04-15 | DUKHCONP1BZ2ARRF3630, DUKHCONP1BZ3STRF2060 FF+10d, DUKHCONP1BZ3STRF2060 SS+10d, DUKHCONP1BZ3STRF2065 FF+10d, DUKHCONP1BZ3STRF2065 SS+10d | 67d | 0d | SCREED MASON SK [455 h]; LABOR- SUBCONTRACTOR [256.5 h]; ROOF WP SCREED QTY [1136 Sqm] | 48,872 | 10 | REM | 1BP3EFRF10 | DUKHCON1BP3ARRF3630 | DUKHCONP1BZ3ARRF3630 | DH | CON | 1B | Z3 | FIN | EF | RF | B04 | B04-D04 | RES-1B |
| DUKHCONP1BZ3ARRF3635 |  | Laying of Waterproofing Membrane | 25d | 2014-03-22 | 2014-04-19 | DUKHCONP1BZ3ARRF3630 FF+3d, DUKHCONP1BZ3ARRF3630 SS+3d | 67d | 0d | LABOR- SUBCONTRACTOR [269.25 h]; ROOF WP MEMBRANE QTY [1344 Sqm]; WATERPROOFING SPECIALIST SK [717 h] | 35,274 | 15 | REM | 1BP3EFRF15 | DUKHCON1BP3ARRF3635 | DUKHCONP1BZ3ARRF3635 | DH | CON | 1B | Z3 | FIN | EF | RF | B04 | B04-D04 | RES-1B |
| DUKHCONP1BZ3ARRF3640 |  | Installation of Insulation & Protection | 25d | 2014-03-26 | 2014-04-23 | DUKHCONP1BZ3ARRF3635 FF+4d, DUKHCONP1BZ3ARRF3635 SS+4d | 67d | 0d | LABOR- SUBCONTRACTOR [341.25 h]; ROOF WP INSULATION QTY [2272 Sqm]; WATERPROOFING SPECIALIST SK [909 h] | 42,832 | 20 | REM | 1BP3EFRF20 | DUKHCON1BP3ARRF3640 | DUKHCONP1BZ3ARRF3640 | DH | CON | 1B | Z3 | FIN | EF | RF | B04 | B04-D04 | RES-1B |
| DUKHCONP1BZ3ARRF3645 |  | Lime Stone Chips & Paving slab Installation | 25d | 2014-03-31 | 2014-04-28 | DUKHCONP1BZ3ARRF3640 FF+4d, DUKHCONP1BZ3ARRF3640 SS+4d | 67d | 0d | TILE MASON SK [26 h]; LABOR- SUBCONTRACTOR [171 h]; LIME STONE QTY [64 Sqm]; PRE CAST CONCRETE SK [429 h]; PRECAST PAVING SLAB QTY [1072 Sqm] | 77,648 | 25 | REM | 1BP3EFRF25 | DUKHCON1BP3ARRF3645 | DUKHCONP1BZ3ARRF3645 | DH | CON | 1B | Z3 | FIN | EF | RF | B04 | B04-D04 | RES-1B |
| DUKHCONP1BZ3ARRF3650 |  | Install. of Gal. Frame & Aluminum Slat Screen | 25d | 2014-04-08 | 2014-05-06 | DUKHCONP1BZ3ARRF3645 SS+7d, DUKHCONP1BZ3ARRF3645 FF+7d | 67d | 0d | LABOR- SUBCONTRACTOR [368.25 h]; ALUMINIUM SCREEN QTY [184 Sqm]; DOOR ERECTOR SK [491 h] | 52,035 | 35 | REM | 1BP3EFRF35 | DUKHCON1BP3ARRF3650 | DUKHCONP1BZ3ARRF3650 | DH | CON | 1B | Z3 | FIN | EF | RF | B04 | B04-D06 | RES-1B |
| DUKHCONP1BZ3ARRF3655 |  | Installation of Pumps Protection cabinets | 20d | 2014-04-23 | 2014-05-15 | DUKHCONP1BZ3ARRF3650 FF+8d, DUKHCONP1BZ2ARRF3655, DUKHCONP1BZ3ARRF3645 SS+7d, DUKHCONP1BZ3ARRF3645 FF+7d, DUKHCONP1BZ3ARRF3650 SS+8d | 67d | 5d | LABOR- SUBCONTRACTOR [168 h]; CABINET QTY [56 ea]; JOINERY WORK SK [448 h] | 26,600 | 30 | REM | 1BP3EFRF30 | DUKHCON1BP3ARRF3655 | DUKHCONP1BZ3ARRF3655 | DH | CON | 1B | Z3 | FIN | EF | RF | B04 | B04-D04 | RES-1B |
| DUKHCONP1BZ3ARRF3660 |  | Installation of Access Ladder | 15d | 2014-05-11 | 2014-05-27 | DUKHCONP1BZ3ARRF3655 FF+5d, DUKHCONP1BZ3ARRF3655 SS+5d, DUKHCONP1BZ3ARRF3620 SS+5d | 67d | 75d | LABOR- SUBCONTRACTOR [96 h]; LADDER QTY [32 ea]; LADDER ERECTOR SK [256 h] | 35,112 | 40 | REM | 1BP3EFRF40 | DUKHCON1BP3ARRF3660 | DUKHCONP1BZ3ARRF3660 | DH | CON | 1B | Z3 | FIN | EF | RF | B04 | B04-D06 | RES-1B |
|  | 15 | **ELEVATION** |  | 2014-04-02 | 2014-05-29 |  |  |  |  |  |  |  |  |  |  |  |  |  |  |  |  |  |  |  |  |
| DUKHCONP1BZ3AREL3665 |  | External Plastering | 25d | 2014-04-02 | 2014-04-30 | DUKHCONP1BZ3STRF2065 SS+7d, DUKHCONP1BZ3ARFF3305 FF+7d, DUKHCONP1BZ3ARRF3605 SS+7d, DUKHCONP1BZ3STRF2065 FF+7d, DUKHCONP1BZ2AREL3665, DUKHCONP1BZ3ARFF3305 SS+7d | 65d | 0d | PLASTER MASON SK [7808 h]; LABOR- SUBCONTRACTOR [4392 h]; EXTERNAL PLASTER QTY [3904 Sqm] | 151,217 | 10 | REM | 1BP3EFEL10 | DUKHCON1BP3AREL3665 | DUKHCONP1BZ3AREL3665 | DH | CON | 1B | Z3 | FIN | EF | EL | B04 | B04-D10 | RES-1B |
| DUKHCONP1BZ3AREL3670 |  | External stone cladding works | 20d | 2014-04-20 | 2014-05-12 | DUKHCONP1BZ3AREL3665 FF+10d, DUKHCONP1BZ2AREL3670, DUKHCONP1BZ3AREL3665 SS+10d | 65d | 0d | TILE MASON SK [672 h]; LABOR- SUBCONTRACTOR [264 h]; STONE CLADDING QTY [336 Sqm] | 5,326 | 15 |  | 1BP3EFEL15 | DUKHCON1BP3AREL3670 | DUKHCONP1BZ3AREL3670 | DH | CON | 1B | Z3 | FIN | EF | EL | B04 | B04-D10 | RES-1B |
| DUKHCONP1BZ3AREL3675 |  | GRC works | 20d | 2014-04-26 | 2014-05-18 | DUKHCONP1BZ3AREL3665 FF+10d, DUKHCONP1BZ3AREL3665 SS+10d, DUKHCONP1BZ2AREL3675, DUKHCONP1BZ3AREL3670 SS+5d | 65d | 0d | LABOR- SUBCONTRACTOR [150 h]; GRC SK [400 h] | 12,320 | 15 |  | 1BP3EFEL18 | DUKHCON1BP3AREL3675 | DUKHCONP1BZ3AREL3675 | DH | CON | 1B | Z3 | FIN | EF | EL | B04 | B04-D10 | RES-1B |
| DUKHCONP1BZ3AREL3680 |  | External Painting | 20d | 2014-05-07 | 2014-05-29 | DUKHCONP1BZ3AREL3675 SS+10d, DUKHCONP1BZ3AREL3670 FF+10d, DUKHCONP1BZ3ARRF3695 FF+4d, DUKHCONP1BZ2AREL3680, DUKHCONP1BZ3AREL3675 FF+10d, DUKHCONP1BZ3AREL3670 SS+10d, DUKHCONP1BZ3ARRF3695 SS+4d | 65d | 5d | LABOR- SUBCONTRACTOR [1152 h]; PAINT QTY [3840 Sqm]; PAINTERS SK [3072 h] | 114,294 | 20 |  | 1BP3EFEL20 | DUKHCON1BP3AREL3680 | DUKHCONP1BZ3AREL3680 | DH | CON | 1B | Z3 | FIN | EF | EL | B04 | B04-D11 | RES-1B |
|  | 20 | **MEP WORKS** |  | 2013-10-07 | 2014-08-26 |  |  |  |  |  |  |  |  |  |  |  |  |  |  |  |  |  |  |  |  |
|  | 10 | **ELECTRICAL WORKS** |  | 2014-01-14 | 2014-08-26 |  |  |  |  |  |  |  |  |  |  |  |  |  |  |  |  |  |  |  |  |
|  | 10 | **GROUND FLOOR** |  | 2014-01-14 | 2014-05-24 |  |  |  |  |  |  |  |  |  |  |  |  |  |  |  |  |  |  |  |  |
| DUKHCONP1BZ3ELGF4000 |  | Fixing of wall conduits & switch socket boxes | 25d | 2014-01-14 | 2014-02-12 | DUKHCONP1BZ3ARGF3000 SS+5d, DUKHCONP1BZ3ARGF3000 FF+5d | 47d | 0d | LABOR- SUBCONTRACTOR [384 h]; ELECTRICIANS SK [2195.2 h]; SOCKET BOXES QTY [1520 ea]; CODUITS QTY [448 lm] | 34,322 | 10 |  | 1BP3EWGF10 | DUKHCON1BP3ELGF4000 | DUKHCONP1BZ3ELGF4000 | DH | CON | 1B | Z3 | MEP | EW | GF | B04 | B04-D09 | RES-1B |
| DUKHCONP1BZ3ELGF4005 |  | Cable tray & trunking installation | 20d | 2014-01-26 | 2014-02-18 | DUKHCONP1BZ3ELGF4000 SS+5d, DUKHCONP1BZ2ELGF4005, DUKHCONP1BZ3ELGF4000 FF+5d | 65d | 0d | LABOR- SUBCONTRACTOR [672 h]; ELECTRICIANS SK [2508.8 h]; CABLE TRAY QTY [448 lm] | 7,536 | 15 |  | 1BP3EWGF15 | DUKHCON1BP3ELGF4005 | DUKHCONP1BZ3ELGF4005 | DH | CON | 1B | Z3 | MEP | EW | GF | B04 | B04-D09 | RES-1B |
| DUKHCONP1BZ3ELGF4010 |  | Installation of wiring & Main Cabling | 25d | 2014-02-03 | 2014-03-04 | DUKHCONP1BZ3ELGF4005 SS+7d, DUKHCONP1BZ3ELGF4005 FF+7d | 65d | 27d | LABOR- SUBCONTRACTOR [144 h]; ELECTRICIANS SK [492.8 h]; CABLE QTY [448 lm] | 117,914 | 20 |  | 1BP3EWGF20 | DUKHCON1BP3ELGF4010 | DUKHCONP1BZ3ELGF4010 | DH | CON | 1B | Z3 | MEP | EW | GF | B04 | B04-D09 | RES-1B |
| DUKHCONP1BZ3ELGF4015 |  | Install. of CAMS & Fire Fighting Accessories | 25d | 2014-04-08 | 2014-05-06 | DUKHCONP1BZ3ARGF3055 FF+7d, DUKHCONP1BZ3ARGF3060 SS+7d, DUKHCONP1BZ2ELGF4015, DUKHCONP1BZ3ARGF3060 FF+7d, DUKHCONP1BZ3ARGF3055 SS+7d | 60d | 0d | LABOR- SUBCONTRACTOR [1632 h]; MECHANICALS SK [2937.6 h]; SMOKE DETECTOR POINTS QTY [400 ea]; FIRE EXTINGUISHER QTY [144 ea] | 85,204 | 35 |  | 1BP3EWGF35 | DUKHCON1BP3ELGF4015 | DUKHCONP1BZ3ELGF4015 | DH | CON | 1B | Z3 | MEP | EW | GF | B04 | B04-D09 | RES-1B |
| DUKHCONP1BZ3ELGF4020 |  | Installation of DBS,MCCB Accessories. | 20d | 2014-04-14 | 2014-05-06 | DUKHCONP1BZ3ARGF3055 FF+7d, DUKHCONP1BZ3ARGF3055 SS+7d, DUKHCONP1BZ3ELGF4010 FF+5d, DUKHCONP1BZ3ARGF3060 FF+7d, DUKHCONP1BZ3ELGF4010 SS+5d, DUKHCONP1BZ3ARGF3060 SS+7d | 38d | 0d | LABOR- SUBCONTRACTOR [96 h]; ELECTRICIANS SK [358.4 h]; MCCB QTY [160 ea]; DB QTY [16 ea] | 16,497 | 25 |  | 1BP3EWGF25 | DUKHCON1BP3ELGF4020 | DUKHCONP1BZ3ELGF4020 | DH | CON | 1B | Z3 | MEP | EW | GF | B04 | B04-D09 | RES-1B |
| DUKHCONP1BZ3ELGF4025 |  | Installation of Lighting fixtures & Accessories | 25d | 2014-04-26 | 2014-05-24 | DUKHCONP1BZ3ARGF3055 FF+10d, DUKHCONP1BZ3ARGF3055 SS+10d, DUKHCONP1BZ3ARGF3060 SS+10d, DUKHCONP1BZ2ELGF4025, DUKHCONP1BZ3ARGF3060 FF+10d, DUKHCONP1BZ3ELGF4020 SS+10d, DUKHCONP1BZ3ELGF4020 FF+10d | 40d | 0d | LABOR- SUBCONTRACTOR [1152 h]; ELECTRICIANS SK [2150.4 h]; LIGHTS QTY [960 ea] | 176,155 | 30 |  | 1BP3EWGF30 | DUKHCON1BP3ELGF4025 | DUKHCONP1BZ3ELGF4025 | DH | CON | 1B | Z3 | MEP | EW | GF | B04 | B04-D09 | RES-1B |
| DUKHCONP1BZ3ELGF4030 |  | Installation of Telephone System | 20d | 2014-04-26 | 2014-05-18 | DUKHCONP1BZ3ARGF3060 SS+5d, DUKHCONP1BZ3ELGF4020 FF+10d, DUKHCONP1BZ2ELGF4030, DUKHCONP1BZ3ARGF3060 FF+5d, DUKHCONP1BZ3ELGF4020 SS+10d | 38d | 5d | LABOR- SUBCONTRACTOR [168 h]; ELECTRICIANS SK [1254.4 h]; TELEPHONE SOCKETS QTY [112 ea] | 38,706 | 40 |  | 1BP3EWGF40 | DUKHCON1BP3ELGF4030 | DUKHCONP1BZ3ELGF4030 | DH | CON | 1B | Z3 | MEP | EW | GF | B04 | B04-D09 | RES-1B |

Notes:
- DUKHCONP1BZ3ARRF3630: Expenses: P1B-Roofing 48872
- DUKHCONP1BZ3ARRF3635: Expenses: P1B-Roofing 35274
- DUKHCONP1BZ3ARRF3640: Expenses: P1B-Roofing 42832
- DUKHCONP1BZ3ARRF3645: Expenses: P1B-Roofing 77648
- DUKHCONP1BZ3ARRF3650: Expenses: P1B-Metal work 52035
- DUKHCONP1BZ3ARRF3655: Expenses: P1B-Roofing 26600
- DUKHCONP1BZ3ARRF3660: Expenses: P1B-Metal work 35112
- DUKHCONP1BZ3AREL3665: Expenses: P1B-Finishes 151217
- DUKHCONP1BZ3AREL3670: Expenses: P1B-Finishes 5326
- DUKHCONP1BZ3AREL3675: Expenses: P1B-Finishes 12320
- DUKHCONP1BZ3AREL3680: Expenses: P1B-Painting and Decorating 114294
- DUKHCONP1BZ3ELGF4000: Expenses: P1B-Electrical Installations 34322
- DUKHCONP1BZ3ELGF4005: Expenses: P1B-Electrical Installations 7536
- DUKHCONP1BZ3ELGF4010: Expenses: P1B-Electrical Installations 117914
- DUKHCONP1BZ3ELGF4015: Expenses: P1B-Electrical Installations 85204
- DUKHCONP1BZ3ELGF4020: Expenses: P1B-Electrical Installations 16497
- DUKHCONP1BZ3ELGF4025: Expenses: P1B-Electrical Installations 176155
- DUKHCONP1BZ3ELGF4030: Expenses: P1B-Electrical Installations 38706

| ID | WBS | Activity | Duration | Start | Finish | Predecessors | Total float | Free float | Resources | Cost | CODE | P3 ACTID | P6 ID (old) | NP61D | PROJECT | PHASES | PACKAGE | PART | ELEMENTS | STEP | FLOORS | BILL NOS | BILL DIVISION | RES PACK |
| --- | --- | --- | --- | --- | --- | --- | --- | --- | --- | --- | --- | --- | --- | --- | --- | --- | --- | --- | --- | --- | --- | --- | --- | --- |
|  | 15 | **FIRST FLOORS** |  | 2014-02-25 | 2014-07-24 |  |  |  |  |  |  |  |  |  |  |  |  |  |  |  |  |  |  |  |
| DUKHCONP1BZ3ELFF4035 |  | Fixing of wall conduits & switch socket boxes | 25d | 2014-02-25 | 2014-03-25 | DUKHCONP1BZ3ARFF3300 FF+5d, DUKHCONP1BZ3ARFF3300 SS+5d | 5d | 0d | LABOR- SUBCONTRACTOR [384 h]; ELECTRICIANS SK [2195.2 h]; SOCKET BOXES QTY [1520 ea]; CODUITS QTY [448 lm] | 33,912 | 10 | 1BP3EWFF10 | DUKHCON1BP3ELFF4035 | DUKHCONP1BZ3ELFF4035 | DH | CON | 1B | Z3 | MEP | EW | FF | B04 | B04-D09 | RES-1B |
| DUKHCONP1BZ3ELFF4040 |  | Cable tray & trunking installation | 20d | 2014-03-09 | 2014-03-31 | DUKHCONP1BZ3ELFF4035 FF+5d, DUKHCONP1BZ3ELFF4035 SS+5d | 35d | 0d | LABOR- SUBCONTRACTOR [672 h]; ELECTRICIANS SK [2508.8 h]; CABLE TRAY QTY [448 lm] | 7,520 | 15 | 1BP3EWFF15 | DUKHCON1BP3ELFF4040 | DUKHCONP1BZ3ELFF4040 | DH | CON | 1B | Z3 | MEP | EW | FF | B04 | B04-D09 | RES-1B |
| DUKHCONP1BZ3ELFF4045 |  | Installation of wiring & Main Cabling | 25d | 2014-03-17 | 2014-04-14 | DUKHCONP1BZ3ELFF4040 FF+7d, DUKHCONP1BZ2ELFF4045, DUKHCONP1BZ3ELFF4040 SS+7d | 35d | 0d | LABOR- SUBCONTRACTOR [144 h]; CABLE QTY [448 lm]; ELECTRICIANS SK [492.8 h] | 116,330 | 20 | 1BP3EWFF20 | DUKHCON1BP3ELFF4045 | DUKHCONP1BZ3ELFF4045 | DH | CON | 1B | Z3 | MEP | EW | FF | B04 | B04-D09 | RES-1B |
| DUKHCONP1BZ3ELFF4050 |  | Installation of Telephone System | 25d | 2014-06-04 | 2014-07-02 | DUKHCONP1BZ3ELGF4030 FF+10d, DUKHCONP1BZ3MSEX5010, DUKHCONP1BZ3ARFF3360 FF+5d, DUKHCONP1BZ3ARFF3360 SS+5d, DUKHCONP1BZ3ELGF4030 SS+10d | 14d | 22d | LABOR- SUBCONTRACTOR [168 h]; ELECTRICIANS SK [1254.4 h]; TELEPHONE SOCKETS QTY [112 ea] | 37,070 | 40 | 1BP3EWFF40 | DUKHCON1BP3ELFF4050 | DUKHCONP1BZ3ELFF4050 | DH | CON | 1B | Z3 | MEP | EW | FF | B04 | B04-D09 | RES-1B |
| DUKHCONP1BZ3ELFF4055 |  | Install. of CAMS & Fire Fighting Accessories | 25d | 2014-06-07 | 2014-07-05 | DUKHCONP1BZ3ARFF3360 SS+7d, DUKHCONP1BZ3ELGF4015 FF+5d, DUKHCONP1BZ3ELGF4015 SS+5d, DUKHCONP1BZ2ELFF4055, DUKHCONP1BZ3ARFF3360 FF+7d | 34d | 0d | LABOR- SUBCONTRACTOR [1632 h]; MECHANICALS SK [2937.6 h]; SMOKE DETECTOR POINTS QTY [400 ea]; FIRE EXTINGUISHER QTY [144 ea] | 85,180 | 35 | 1BP3EWFF35 | DUKHCON1BP3ELFF4055 | DUKHCONP1BZ3ELFF4055 | DH | CON | 1B | Z3 | MEP | EW | FF | B04 | B04-D09 | RES-1B |
| DUKHCONP1BZ3ELFF4060 |  | Installation of DBS,MCCB Accessories. | 20d | 2014-06-14 | 2014-07-06 | DUKHCONP1BZ3ARFF3360 SS+8d, DUKHCONP1BZ2ELFF4060, DUKHCONP1BZ3ELFF4045 FF+5d, DUKHCONP1BZ3ELFF4045 SS+5d, DUKHCONP1BZ3ARFF3360 FF+8d | -8d | 0d | LABOR- SUBCONTRACTOR [96 h]; ELECTRICIANS SK [358.4 h]; MCCB QTY [160 ea]; DB QTY [16 ea] | 16,488 | 25 | 1BP3EWFF25 | DUKHCON1BP3ELFF4060 | DUKHCONP1BZ3ELFF4060 | DH | CON | 1B | Z3 | MEP | EW | FF | B04 | B04-D09 | RES-1B |
| DUKHCONP1BZ3ELFF4065 |  | Installation of Lighting fixtures & Accessories | 25d | 2014-06-26 | 2014-07-24 | DUKHCONP1BZ3ARFF3360 SS+10d, DUKHCONP1BZ3ELFF4060 FF+11d, DUKHCONP1BZ3ELGF4025 FF+5d, DUKHCONP1BZ3ELFF4060 SS+11d, DUKHCONP1BZ3ELGF4025 SS+5d, DUKHCONP1BZ2ELFF4065, DUKHCONP1BZ3ARFF3360 FF+10d | -8d | 0d | LABOR- SUBCONTRACTOR [1152 h]; ELECTRICIANS SK [2150.4 h]; LIGHTS QTY [960 ea] | 176,151 | 30 | 1BP3EWFF30 | DUKHCON1BP3ELFF4065 | DUKHCONP1BZ3ELFF4065 | DH | CON | 1B | Z3 | MEP | EW | FF | B04 | B04-D09 | RES-1B |
|  | 20 | **ROOF** |  | 2014-07-16 | 2014-08-26 |  |  |  |  |  |  |  |  |  |  |  |  |  |  |  |  |  |  |  |
| DUKHCONP1BZ3ELRF4070 |  | Installation of Isolator | 18d | 2014-07-16 | 2014-08-09 | DUKHCONP1BZ3ELFF4065 SS+10d, DUKHCONP1BZ3ELFF4045 FF+10d, DUKHCONP1BZ3ELFF4045 SS+10d, DUKHCONP1BZ3ELFF4050 FF+7d, DUKHCONP1BZ3ELFF4050 SS+5d, DUKHCONP1BZ3ARRF3645 FF+7d, DUKHCONP1BZ3ARRF3645 SS+7d, DUKHCONP1BZ3ELFF4065 FF+10d | -8d | 0d | LABOR- SUBCONTRACTOR [288 h]; ELECTRICIANS SK [537.6 h]; ISOLATOR QTY [96 ea] | 46,262 | 10 | 1BP3EWRF10 | DUKHCON1BP3ELRF4070 | DUKHCONP1BZ3ELRF4070 | DH | CON | 1B | Z3 | MEP | EW | RF | B04 | B04-D09 | RES-1B |
| DUKHCONP1BZ3ELRF4075 |  | Installation of TV Dish Antenna | 23d | 2014-07-28 | 2014-08-26 | DUKHCONP1BZ3ELRF4070 FF+10d, DUKHCONP1BZ3ELRF4070 SS+10d | -8d | 0d | LABOR- SUBCONTRACTOR [576 h]; ELECTRICIANS SK [1254.4 h]; CONTROL BOX QTY [32 ea]; SWITCHING BOX QTY [80 ea] | 32,745 | 15 | 1BP3EWRF15 | DUKHCON1BP3ELRF4075 | DUKHCONP1BZ3ELRF4075 | DH | CON | 1B | Z3 | MEP | EW | RF | B04 | B04-D09 | RES-1B |
|  | 15 | **PLUMBING, DRAINAGE & FIRE FIGHTING WORKS** |  | 2013-10-07 | 2014-08-07 |  |  |  |  |  |  |  |  |  |  |  |  |  |  |  |  |  |  |  |
|  | 10 | **GROUND FLOOR** |  | 2013-10-07 | 2014-05-24 |  |  |  |  |  |  |  |  |  |  |  |  |  |  |  |  |  |  |  |
| DUKHCONP1BZ3PLUG4300 |  | Drainage / Storm Pipes in Grade Slab | 20d | 2013-10-07 | 2013-10-31 | DUKHCONP1BZ3STUG1040 SS+10d, DUKHCONP1BZ3STUG1040 FF+10d | 0d |  | LABOR- SUBCONTRACTOR [24 h]; MECHANICALS SK [86.4 h]; DRAINAGE PIPES QTY [144 lm] | 29,221 | 10 | 1BP3PLUG10 | DUKHCON1BP3PLUG4300 | DUKHCONP1BZ3PLUG4300 | DH | CON | 1B | Z3 | ST | SB | UG | B04 | B04-D07 | RES-1B |
| DUKHCONP1BZ3PLGF4305 |  | Installation of Plumbing pipes & testing | 18d | 2014-01-25 | 2014-02-15 | DUKHCONP1BZ3ARGF3000 SS+7d, DUKHCONP1BZ2PLGF4305, DUKHCONP1BZ3ARGF3000 FF+7d | 38d | 0d | LABOR- SUBCONTRACTOR [192 h]; MECHANICALS SK [691.2 h]; PLUMB PIPES QTY [624 lm] | 69,653 | 10 | 1BP3PLGF10 | DUKHCON1BP3PLGF4305 | DUKHCONP1BZ3PLGF4305 | DH | CON | 1B | Z3 | MEP | PL | GF | B04 | B04-D07 | RES-1B |
| DUKHCONP1BZ3PLGF4310 |  | Installation of Drainage pipes &testing | 18d | 2014-01-25 | 2014-02-15 | DUKHCONP1BZ3ARGF3000 SS+7d, DUKHCONP1BZ3PLGF4305 SS, DUKHCONP1BZ3PLGF4305 FF, DUKHCONP1BZ3ARGF3000 FF+7d | 41d | 14d | LABOR- SUBCONTRACTOR [72 h]; MECHANICALS SK [259.2 h]; DRAINAGE PIPES QTY [464 lm] | 5,128 | 15 | 1BP3PLGF15 | DUKHCON1BP3PLGF4310 | DUKHCONP1BZ3PLGF4310 | DH | CON | 1B | Z3 | MEP | PL | GF | B04 | B04-D07 | RES-1B |
| DUKHCONP1BZ3PLGF4315 |  | Sanitary Fittings & Accessories | 20d | 2014-04-26 | 2014-05-18 | DUKHCONP1BZ3ARGF3065 FF+5d, DUKHCONP1BZ3ARGF3065 SS+5d, DUKHCONP1BZ3PLGF4310 FF+5d, DUKHCONP1BZ3PLGF4310 SS+5d, DUKHCONP1BZ2PLGF4315 | 70d | 0d | LABOR- SUBCONTRACTOR [72 h]; MECHANICALS SK [129.6 h]; SANITARY ACC QTY [120 ea] | 100,216 | 20 | 1BP3PLGF20 | DUKHCON1BP3PLGF4315 | DUKHCONP1BZ3PLGF4315 | DH | CON | 1B | Z3 | MEP | PL | GF | B04 | B04-D07 | RES-1B |
| DUKHCONP1BZ3PLGF4320 |  | Installation of Water Heater | 15d | 2014-05-07 | 2014-05-24 | DUKHCONP1BZ3ARGF3060 FF+5d, DUKHCONP1BZ3ARGF3060 SS+5d, DUKHCONP1BZ2PLGF4320, DUKHCONP1BZ3PLGF4315 FF+5d, DUKHCONP1BZ3PLGF4315 SS+5d | 70d | 10d | LABOR- SUBCONTRACTOR [72 h]; MECHANICALS SK [129.6 h]; WATER HEATER QTY [24 ea] | 12,460 | 25 | 1BP3PLGF25 | DUKHCON1BP3PLGF4320 | DUKHCONP1BZ3PLGF4320 | DH | CON | 1B | Z3 | MEP | PL | GF | B04 | B04-D07 | RES-1B |
|  | 15 | **FIRST FLOORS** |  | 2014-03-09 | 2014-07-17 |  |  |  |  |  |  |  |  |  |  |  |  |  |  |  |  |  |  |  |
| DUKHCONP1BZ3PLFF4325 |  | Installation of Plumbing pipes & testing | 18d | 2014-03-09 | 2014-03-29 | DUKHCONP1BZ3ARFF3300 SS+8d, DUKHCONP1BZ3ARFF3300 FF+8d | -8d | 0d | LABOR- SUBCONTRACTOR [192 h]; MECHANICALS SK [691.2 h]; PLUMB PIPES QTY [624 lm] | 67,368 | 10 | 1BP3PLFF10 | DUKHCON1BP3PLFF4325 | DUKHCONP1BZ3PLFF4325 | DH | CON | 1B | Z3 | MEP | PL | FF | B04 | B04-D07 | RES-1B |
| DUKHCONP1BZ3PLFF4330 |  | Installation of Drainage pipes & testing | 18d | 2014-03-09 | 2014-03-29 | DUKHCONP1BZ3ARFF3300 SS+7d, DUKHCONP1BZ3PLFF4325 SS, DUKHCONP1BZ3ARFF3300 FF+7d, DUKHCONP1BZ3PLFF4325 FF, DUKHCONP1BZ2PLFF4330 | 19d | 7d | LABOR- SUBCONTRACTOR [72 h]; MECHANICALS SK [259.2 h]; DRAINAGE PIPES QTY [464 lm] | 4,400 | 15 | 1BP3PLFF15 | DUKHCON1BP3PLFF4330 | DUKHCONP1BZ3PLFF4330 | DH | CON | 1B | Z3 | MEP | PL | FF | B04 | B04-D07 | RES-1B |
| DUKHCONP1BZ3PLFF4335 |  | Sanitary Fittings & Accessories | 20d | 2014-06-19 | 2014-07-12 | DUKHCONP1BZ3PLFF4330 FF+5d, DUKHCONP1BZ3ARFF3365 FF+5d, DUKHCONP1BZ3ARFF3365 SS+5d, DUKHCONP1BZ3PLFF4330 SS+5d | 8d | 0d | LABOR- SUBCONTRACTOR [72 h]; MECHANICALS SK [129.6 h]; SANITARY ACC QTY [120 ea] | 104,000 | 20 | 1BP3PLFF20 | DUKHCON1BP3PLFF4335 | DUKHCONP1BZ3PLFF4335 | DH | CON | 1B | Z3 | MEP | PL | FF | B04 | B04-D07 | RES-1B |
| DUKHCONP1BZ3PLFF4340 |  | Installation of Water Heater | 15d | 2014-07-01 | 2014-07-17 | DUKHCONP1BZ2PLFF4340, DUKHCONP1BZ3ARFF3360 FF+5d, DUKHCONP1BZ3PLFF4335 SS+5d, DUKHCONP1BZ3ARFF3360 SS+5d, DUKHCONP1BZ3PLFF4335 FF+5d | 8d | 0d | LABOR- SUBCONTRACTOR [48 h]; MECHANICALS SK [86.4 h]; WATER HEATER QTY [16 ea] | 6,070 | 25 | 1BP3PLFF25 | DUKHCON1BP3PLFF4340 | DUKHCONP1BZ3PLFF4340 | DH | CON | 1B | Z3 | MEP | PL | FF | B04 | B04-D07 | RES-1B |
|  | 20 | **ROOF** |  | 2014-04-05 | 2014-08-07 |  |  |  |  |  |  |  |  |  |  |  |  |  |  |  |  |  |  |  |
| DUKHCONP1BZ3PLRF4345 |  | Installation of Plumbing pipes & fittings | 14d | 2014-04-05 | 2014-04-20 | DUKHCONP1BZ2PLRF4345, DUKHCONP1BZ3ARRF3605 SS+8d, DUKHCONP1BZ3ARRF3605 FF+8d | 73d | 5d | LABOR- SUBCONTRACTOR [72 h]; MECHANICALS SK [216 h]; PLUMB PIPES QTY [192 lm] | 11,527 | 10 | 1BP3PLRF10 | DUKHCON1BP3PLRF4345 | DUKHCONP1BZ3PLRF4345 | DH | CON | 1B | Z3 | MEP | PL | RF | B04 | B04-D07 | RES-1B |
| DUKHCONP1BZ3PLRF4350 |  | Installation of Rain water Pipes | 15d | 2014-04-22 | 2014-05-08 | DUKHCONP1BZ3PLFF4330 FF+5d, DUKHCONP1BZ3PLRF4345 FF+10d, DUKHCONP1BZ3PLRF4345 SS+10d, DUKHCONP1BZ3AREL3665 FF+7d, DUKHCONP1BZ3ARRF3645 FF+5d, DUKHCONP1BZ3ARRF3645 SS+5d, DUKHCONP1BZ3PLFF4330 SS+5d, DUKHCONP1BZ3AREL3665 SS+7d, DUKHCONP1BZ2PLRF4350 | 68d | 10d | DRAINAGE PIPES QTY [32 lm] | 95,272 | 15 | 1BP3PLRF15 | DUKHCON1BP3PLRF4350 | DUKHCONP1BZ3PLRF4350 | DH | CON | 1B | Z3 | MEP | PL | RF | B04 | B04-D07 | RES-1B |
| DUKHCONP1BZ3PLRF4355 |  | Roof Water Tank Installation & Connections | 25d | 2014-07-07 | 2014-08-07 | DUKHCONP1BZ3PLFF4340 SS+5d, DUKHCONP1BZ3PLRF4350 FF+5d, DUKHCONP1BZ2PLRF4355, DUKHCONP1BZ3ARRF3655 SS+5d, DUKHCONP1BZ3PLRF4345 FF+10d, DUKHCONP1BZ3PLRF4350 SS+5d, DUKHCONP1BZ3PLRF4345 SS+10d, DUKHCONP1BZ3ARRF3655 FF+5d, DUKHCONP1BZ3PLFF4340 FF+5d | 8d | 0d | LABOR- SUBCONTRACTOR [240 h]; MECHANICALS SK [432 h]; WATER TANK QTY [40 ea] | 593,900 | 20 | 1BP3PLRF20 | DUKHCON1BP3PLRF4355 | DUKHCONP1BZ3PLRF4355 | DH | CON | 1B | Z3 | MEP | PL | RF | B04 | B04-D07 | RES-1B |

Notes:
- DUKHCONP1BZ3ELFF4035: Expenses: P1B-Electrical Installations 33912
- DUKHCONP1BZ3ELFF4040: Expenses: P1B-Electrical Installations 7520
- DUKHCONP1BZ3ELFF4045: Expenses: P1B-Electrical Installations 116330
- DUKHCONP1BZ3ELFF4050: Expenses: P1B-Electrical Installations 37070
- DUKHCONP1BZ3ELFF4055: Expenses: P1B-Electrical Installations 85180
- DUKHCONP1BZ3ELFF4060: Expenses: P1B-Electrical Installations 16488
- DUKHCONP1BZ3ELFF4065: Expenses: P1B-Electrical Installations 176151
- DUKHCONP1BZ3ELRF4070: Expenses: P1B-Electrical Installations 46262
- DUKHCONP1BZ3ELRF4075: Expenses: P1B-Electrical Installations 32745
- DUKHCONP1BZ3PLUG4300: Expenses: P1B-Plumbing and Drainage works 29221
- DUKHCONP1BZ3PLGF4305: Expenses: P1B-Plumbing and Drainage works 69653
- DUKHCONP1BZ3PLGF4310: Expenses: P1B-Plumbing and Drainage works 5128
- DUKHCONP1BZ3PLGF4315: Expenses: P1B-Plumbing and Drainage works 100216
- DUKHCONP1BZ3PLGF4320: Expenses: P1B-Plumbing and Drainage works 12460
- DUKHCONP1BZ3PLFF4325: Expenses: P1B-Plumbing and Drainage works 67368
- DUKHCONP1BZ3PLFF4330: Expenses: P1B-Plumbing and Drainage works 4400
- DUKHCONP1BZ3PLFF4335: Expenses: P1B-Plumbing and Drainage works 104000
- DUKHCONP1BZ3PLFF4340: Expenses: P1B-Plumbing and Drainage works 6070
- DUKHCONP1BZ3PLRF4345: Expenses: P1B-Plumbing and Drainage works 11527
- DUKHCONP1BZ3PLRF4350: Expenses: P1B-Plumbing and Drainage works 95272
- DUKHCONP1BZ3PLRF4355: Expenses: P1B-Plumbing and Drainage works 593900

| ID | WBS | Activity | Duration | Start | Finish | Predecessors | Total float | Free float | Resources | Cost | CODE | P3 ACTID | P6 ID (old) | NP61D | PROJECT | PHASES | PACKAGE | PART | ELEMENTS | STEP | FLOORS | BILL NOS | BILL DIVISION | RES PACK |
| --- | --- | --- | --- | --- | --- | --- | --- | --- | --- | --- | --- | --- | --- | --- | --- | --- | --- | --- | --- | --- | --- | --- | --- | --- |
|  | 20 | **AC WORKS** |  | 2014-02-15 | 2014-07-31 |  |  |  |  |  |  |  |  |  |  |  |  |  |  |  |  |  |  |  |
|  | 10 | **GROUND FLOOR** |  | 2014-02-15 | 2014-05-21 |  |  |  |  |  |  |  |  |  |  |  |  |  |  |  |  |  |  |  |
| DUKHCONP1BZ3ACGF4600 |  | Installation AC Pipes | 20d | 2014-02-15 | 2014-03-09 | DUKHCONP1BZ2ACGF4600, DUKHCONP1BZ3ARGF3005 SS+7d, DUKHCONP1BZ3ARGF3005 FF+7d | 69d | 5d | LABOR- SUBCONTRACTOR [408 h]; AC TECHNICIAN SK [1478.4 h]; AC PIPES QTY [4000 lm] | 7,099 | 10 | 1BP3ACGF10 | DUKHCON1BP3ACGF4600 | DUKHCONP1BZ3ACGF4600 | DH | CON | 1B | Z3 | MEP | AC | GF | B04 | B04-D08 | RES-1B |
| DUKHCONP1BZ3ACGF4605 |  | Fixing of Ventilation Equipments | 25d | 2014-04-08 | 2014-05-06 | DUKHCONP1BZ3ARGF3055 FF+7d, DUKHCONP1BZ2ACGF4605, DUKHCONP1BZ3ARGF3060 SS+7d, DUKHCONP1BZ3ARGF3055 SS+7d, DUKHCONP1BZ3ARGF3060 FF+7d, DUKHCONP1BZ3ACGF4600 FF+10d, DUKHCONP1BZ3ACGF4600 SS+10d | 57d | 0d | LABOR- SUBCONTRACTOR [72 h]; AC TECHNICIAN SK [224 h]; VENTILIATION EQP QTY [80 ea] | 29,118 | 15 | 1BP3ACGF15 | DUKHCON1BP3ACGF4605 | DUKHCONP1BZ3ACGF4605 | DH | CON | 1B | Z3 | MEP | AC | GF | B04 | B04-D08 | RES-1B |
| DUKHCONP1BZ3ACGF4610 |  | Fixing of Split AC | 20d | 2014-04-29 | 2014-05-21 | DUKHCONP1BZ3ACGF4605 SS+13d, DUKHCONP1BZ2ACGF4610, DUKHCONP1BZ3ACGF4605 FF+13d | 57d | 5d | LABOR- SUBCONTRACTOR [120 h]; AC TECHNICIAN SK [448 h]; SPLIT UNIT QTY [80 ea] | 57,350 | 20 | 1BP3ACGF20 | DUKHCON1BP3ACGF4610 | DUKHCONP1BZ3ACGF4610 | DH | CON | 1B | Z3 | MEP | AC | GF | B04 | B04-D08 | RES-1B |
|  | 15 | **FIRST FLOORS** |  | 2014-04-01 | 2014-07-20 |  |  |  |  |  |  |  |  |  |  |  |  |  |  |  |  |  |  |  |
| DUKHCONP1BZ3ACFF4615 |  | Installation AC Pipes | 20d | 2014-04-01 | 2014-04-23 | DUKHCONP1BZ3ARFF3305 SS+7d, DUKHCONP1BZ2ACFF4615, DUKHCONP1BZ3ARFF3305 FF+7d | 35d | 3d | LABOR- SUBCONTRACTOR [408 h]; AC TECHNICIAN SK [1478.4 h]; AC PIPES QTY [4000 lm] | 4,983 | 10 | 1BP3ACFF10 | DUKHCON1BP3ACFF4615 | DUKHCONP1BZ3ACFF4615 | DH | CON | 1B | Z3 | MEP | AC | FF | B04 | B04-D08 | RES-1B |
| DUKHCONP1BZ3ACFF4620 |  | Fixing of Ventilation Equipments | 25d | 2014-06-07 | 2014-07-05 | DUKHCONP1BZ3ACFF4615 FF+10d, DUKHCONP1BZ2ACFF4620, DUKHCONP1BZ3ARFF3360 SS+7d, DUKHCONP1BZ3ACFF4615 SS+10d, DUKHCONP1BZ3ARFF3360 FF+7d | 6d | 0d | LABOR- SUBCONTRACTOR [48 h]; AC TECHNICIAN SK [134.4 h]; VENTILIATION EQP QTY [48 ea] | 5,633 | 15 | 1BP3ACFF15 | DUKHCON1BP3ACFF4620 | DUKHCONP1BZ3ACFF4620 | DH | CON | 1B | Z3 | MEP | AC | FF | B04 | B04-D08 | RES-1B |
| DUKHCONP1BZ3ACFF4625 |  | Fixing of Split AC | 20d | 2014-06-28 | 2014-07-20 | DUKHCONP1BZ3ACFF4620 FF+13d, DUKHCONP1BZ2ACFF4625, DUKHCONP1BZ3ACFF4620 SS+13d | 6d | 0d | LABOR- SUBCONTRACTOR [120 h]; AC TECHNICIAN SK [448 h]; SPLIT UNIT QTY [80 ea] | 43,882 | 20 | 1BP3ACFF20 | DUKHCON1BP3ACFF4625 | DUKHCONP1BZ3ACFF4625 | DH | CON | 1B | Z3 | MEP | AC | FF | B04 | B04-D08 | RES-1B |
|  | 20 | **ROOF** |  | 2014-04-13 | 2014-07-31 |  |  |  |  |  |  |  |  |  |  |  |  |  |  |  |  |  |  |  |
| DUKHCONP1BZ3ACRF4630 |  | Installation of Refrigerant Pipes | 25d | 2014-04-13 | 2014-05-11 | DUKHCONP1BZ3ACGF4600 SS+7d, DUKHCONP1BZ3ACFF4615 FF+7d, DUKHCONP1BZ2ACRF4630, DUKHCONP1BZ3ACFF4615 SS+7d, DUKHCONP1BZ3ARRF3645 FF+7d, DUKHCONP1BZ3ARRF3645 SS+7d, DUKHCONP1BZ3ACGF4600 FF+7d | 76d | 0d | LABOR- SUBCONTRACTOR [168 h]; AC TECHNICIAN SK [627.2 h]; AC PIPES QTY [1640 lm] | 24,000 | 10 | 1BP3ACRF10 | DUKHCON1BP3ACRF4630 | DUKHCONP1BZ3ACRF4630 | DH | CON | 1B | Z3 | MEP | AC | RF | B04 | B04-D08 | RES-1B |
| DUKHCONP1BZ3ACRF4635 |  | Installation of Condensing Unit | 25d | 2014-07-03 | 2014-07-31 | DUKHCONP1BZ3ACFF4625 FF+5d, DUKHCONP1BZ2ACRF4635, DUKHCONP1BZ3ACRF4630 SS+5d, DUKHCONP1BZ3ACGF4610 FF+5d, DUKHCONP1BZ3ACFF4625 SS+5d, DUKHCONP1BZ3ACRF4630 FF+5d, DUKHCONP1BZ3ACGF4610 SS+5d | 11d | 0d | LABOR- SUBCONTRACTOR [240 h]; AC TECHNICIAN SK [896 h]; AC UNITS QTY [160 ea] | 130,673 | 15 | 1BP3ACRF15 | DUKHCON1BP3ACRF4635 | DUKHCONP1BZ3ACRF4635 | DH | CON | 1B | Z3 | MEP | AC | RF | B04 | B04-D08 | RES-1B |
|  | 25 | **EXTERNAL WORKS** |  | 2014-02-20 | 2014-08-30 |  |  |  |  |  |  |  |  |  |  |  |  |  |  |  |  |  |  |  |
|  | 10 | **MISCELLANEOUS** |  | 2014-02-20 | 2014-08-30 |  |  |  |  |  |  |  |  |  |  |  |  |  |  |  |  |  |  |  |
| DUKHCONP1BZ3MSEX5020 |  | Construction Entrance Ramp | 25d | 2014-02-20 | 2014-03-20 | DUKHCONP1BZ2MSEX5020, DUKHCONP1BZ3STRF2055 FF, DUKHCONP1BZ3STRF2055 SS | 58d | 0d | SCREED MASON SK [192 h]; CONCRETE MASON SK [384 h]; INTERLOCK MASON SK [256 h]; LABOR- SUBCONTRACTOR [360 h]; LABOR- SUBCONTRACTOR [96 h]; SCREED QTY [224 Sqm]; CONCRETE QTY [192 Cum]; INTERLOCK QTY [304 Sqm] | 25,080 | 10 | 1BP3MSEX10 | DUKHCON1BP3MS005020 | DUKHCONP1BZ3MSEX5020 | DH | CON | 1B | Z3 | EX | MS |  | B04 | B04-D12 | RES-1B |
| DUKHCONP1BZ3MSEX5000 |  | Construction of Manholes | 25d | 2014-02-23 | 2014-03-23 | DUKHCONP1BZ3PLGF4310 FF+10d, DUKHCONP1BZ3PLGF4310 SS+10d, DUKHCONP1BZ3STRF2055 SS+10d, DUKHCONP1BZ3STRF2055 FF+10d | 27d | 0d | MANHOLES SK [640 h]; LABOR- SUBCONTRACTOR [240 h]; MANHOLES QTY [80 ea] | 27,797 | 25 | 1BP3MSEX25 | DUKHCON1BP3MS005000 | DUKHCONP1BZ3MSEX5000 | DH | CON | 1B | Z3 | EX | MS |  | B04 | B04-D12 | RES-1B |
| DUKHCONP1BZ3MSEX5005 |  | Construction of Soak pit, Chambers | 25d | 2014-03-09 | 2014-04-06 | DUKHCONP1BZ3MSEX5000 FF+12d, DUKHCONP1BZ3MSEX5000 SS+12d | 27d | 0d | MANHOLES SK [128 h]; LABOR- SUBCONTRACTOR [48 h]; SOAKPIT QTY [16 ea] | 47,088 | 30 | 1BP3MSEX30 | DUKHCON1BP3MS005005 | DUKHCONP1BZ3MSEX5005 | DH | CON | 1B | Z3 | EX | MS |  | B04 | B04-D12 | RES-1B |
| DUKHCONP1BZ3MSEX5025 |  | SS.Handrails and Balustrades | 20d | 2014-03-10 | 2014-04-01 | DUKHCONP1BZ3MSEX5020 FF+10d, DUKHCONP1BZ3MSEX5020 SS+10d | 60d | 0d | LABOR- SUBCONTRACTOR [144 h]; S.S.BALUSTRADE QTY [120 lm]; HANDRAIL ERECTOR SKILLED [256 h] | 113,987 | 15 | 1BP3MSEX15 | DUKHCON1BP3MS005025 | DUKHCONP1BZ3MSEX5025 | DH | CON | 1B | Z3 | EX | MS |  | B04 | B04-D12 | RES-1B |
| DUKHCONP1BZ3MSEX5015 |  | Construction of grease Trap | 20d | 2014-03-29 | 2014-04-20 | DUKHCONP1BZ3MSEX5005 SS+12d, DUKHCONP1BZ3MSEX5005 FF+12d | 27d | 0d | LABOR- SUBCONTRACTOR [24 h]; GREASE TRAP QTY [32 lm]; HANDRAIL ERECTOR SKILLED [64 h] | 22,696 | 20 | 1BP3MSEX20 | DUKHCON1BP3MS005015 | DUKHCONP1BZ3MSEX5015 | DH | CON | 1B | Z3 | EX | MS |  | B04 | B04-D07 | RES-1B |
| DUKHCONP1BZ3MSEX5010 |  | Telephone cable laying | 25d | 2014-04-21 | 2014-05-19 | DUKHCONP1BZ3MSEX5015 | 27d | 13d | LABOR- SUBCONTRACTOR [125 h]; ELECTRICIANS SK [125 h]; CONCRETE MASON SK [125 h] | 3,238 |  | 1BP3MSEX40 | DUKHCON1BP3MS005010 | DUKHCONP1BZ3MSEX5010 | DH | CON | 1B | Z3 | EX | MS |  | B04 | B04-D12 | RES-1B |
| DUKHCONP1BZ3MSEX5335 |  | Aluminum Roll-up Shutter with 2m Wall | 25d | 2014-07-29 | 2014-08-30 | DUKHCONP1BZ2MSEX5335, DUKHCONI1BZ2BWGL5325 SS+7d | 14d | 0d | LABOR- SUBCONTRACTOR [200 h]; DOOR ERECTOR SK [200 h]; ROLLING SHUTTER QTY [8 ea] | 57,372 | 25 | 1BP3BWFR25 | DUKHCON1BP3MS005335 | DUKHCONP1BZ3MSEX5335 | DH | CON | 1B | Z3 | EX | MS |  | B04 | B04-D12 | RES-1B |
|  | 15 | **WATER TANK ENCLOSURE** |  | 2014-03-06 | 2014-06-10 |  |  |  |  |  |  |  |  |  |  |  |  |  |  |  |  |  |  |  |
| DUKHCONP1BZ3WEEX5030 |  | Excavation | 20d | 2014-03-06 | 2014-03-29 | DUKHCONP1BZ2WEEX5035, DUKHCONP1BZ3STRF2055 SS+10d, DUKHCONP1BZ3STRF2060 SS+7d, DUKHCONP1BZ3STRF2055 FF+10d | 40d | 0d | LABOR- SUBCONTRACTOR [48 h]; EXCAVATION QTY [80 Cum]; LOADER [20 h]; POCLAIN [40 h]; TRUCK [20 h]; EQUIP OPERATORS [80 h] | 896 | 10 | 1BP3WEEX10 | DUKHCON1BP3WE005030 | DUKHCONP1BZ3WEEX5030 | DH | CON | 1B | Z3 | EX | WE |  | B04 | B04-D12 | RES-1B |
| DUKHCONP1BZ3WEEX5035 |  | Construction of Raft | 25d | 2014-03-18 | 2014-04-15 | DUKHCONP1BZ3WEEX5030 FF+10d, DUKHCONP1BZ3WEEX5030 SS+10d | 40d | 0d | STEEL FIXERS SK [96 h]; CARPENTERS SK [736 h]; CONCRETE MASON SK [96 h]; LABOR- SUBCONTRACTOR [696 h]; REINFORCEMENT BARS QTY [1248 kg]; FORMWORK QTY [368 Sqm]; CONCRETE QTY [40 Cum] | 13,680 | 15 | 1BP3WEEX15 | DUKHCON1BP3WE005035 | DUKHCONP1BZ3WEEX5035 | DH | CON | 1B | Z3 | EX | WE |  | B04 | B04-D12 | RES-1B |
| DUKHCONP1BZ3WEEX5040 |  | Block works & Plastering | 25d | 2014-03-27 | 2014-04-24 | DUKHCONP1BZ3WEEX5035 SS+8d, DUKHCONP1BZ3WEEX5035 FF+8d | 55d | 0d | BLOCK MASON SK [224 h]; PLASTER MASON SK [352 h]; BLOCK QTY [112 Sqm]; PLASTER QTY [224 Sqm]; LABOR- SUBCONTRACTOR [312 h] | 19,727 | 20 | 1BP3WEEX20 | DUKHCON1BP3WE005040 | DUKHCONP1BZ3WEEX5040 | DH | CON | 1B | Z3 | EX | WE |  | B04 | B04-D12 | RES-1B |
| DUKHCONP1BZ3WEEX5045 |  | Flooring & Painting | 25d | 2014-04-08 | 2014-05-06 | DUKHCONP1BZ3MSEX5025 SS+10d, DUKHCONP1BZ3WEEX5040 SS+10d, DUKHCONP1BZ3WEEX5040 FF+10d | 55d | 0d | LABOR- SUBCONTRACTOR [120 h]; PAINT QTY [312 Sqm]; EPOXY QTY [88 Sqm]; PAINTERS SK [256 h]; EPOXY SK [32 h] | 18,792 | 25 | 1BP3WEEX25 | DUKHCON1BP3WE005045 | DUKHCONP1BZ3WEEX5045 | DH | CON | 1B | Z3 | EX | WE |  | B04 | B04-D12 | RES-1B |
| DUKHCONP1BZ3WEEX5050 |  | Installation of Steel Gate | 20d | 2014-04-26 | 2014-05-18 | DUKHCONP1BZ3MSEX5025 FF+10d, DUKHCONP1BZ3MSEX5015 SS+5d, DUKHCONP1BZ3WEEX5045 SS+5d, DUKHCONP1BZ3WEEX5045 FF+10d | 55d | 0d | LABOR- SUBCONTRACTOR [48 h]; GATE QTY [8 ea]; GATE ERECTOR SK [64 h] | 75,504 | 30 | 1BP3WEEX30 | DUKHCON1BP3WE005050 | DUKHCONP1BZ3WEEX5050 | DH | CON | 1B | Z3 | EX | WE |  | B04 | B04-D12 | RES-1B |
| DUKHCONP1BZ3WEEX5060 |  | Structural steel & SS Shed cover installation | 25d | 2014-05-01 | 2014-05-29 | DUKHCONP1BZ2WEEX5060, DUKHCONP1BZ3MSEX5025 FF+10d, DUKHCONP1BZ3WEEX5050 SS+5d, DUKHCONP1BZ3WEEX5050 FF+10d | 55d | 0d | LABOR- SUBCONTRACTOR [264 h]; STRUCTURAL STEEL QTY [256 kg]; SS SHED COVER QTY [80 Sqm]; STEEL ERECTOR SK [352 h] | 45,463 | 35 | 1BP3WEEX35 | DUKHCON1BP3WE005060 | DUKHCONP1BZ3WEEX5060 | DH | CON | 1B | Z3 | EX | WE |  | B04 | B04-D12 | RES-1B |
| DUKHCONP1BZ3WEEX5065 |  | Install. of Water Tank,Chiller,Pump & Meter | 25d | 2014-05-13 | 2014-06-10 | DUKHCONP1BZ3MSEX5015 SS+5d, DUKHCONP1BZ3PLRF4350 SS+5d, DUKHCONP1BZ3PLRF4350 FF+5d, DUKHCONP1BZ3MSEX5015 FF+5d, DUKHCONP1BZ2WEEX5065, DUKHCONP1BZ3WEEX5060 FF+10d, DUKHCONP1BZ3WEEX5060 SS+10d | 55d | 12d | LABOR- SUBCONTRACTOR [120 h]; AC TECHNICIAN SK [89.6 h]; MECHANICALS SK [172.8 h]; WATER TANK QTY [8 ea]; CHILLER QTY [80 ea]; PUMP QTY [8 ea] | 122,333 | 40 | 1BP3WEEX40 | DUKHCON1BP3WE005065 | DUKHCONP1BZ3WEEX5065 | DH | CON | 1B | Z3 | EX | WE |  | B04 | B04-D07 | RES-1B |

Notes:
- DUKHCONP1BZ3ACGF4600: Expenses: P1B-Air-conditioning and Ventilation works 7099
- DUKHCONP1BZ3ACGF4605: Expenses: P1B-Air-conditioning and Ventilation works 29118
- DUKHCONP1BZ3ACGF4610: Expenses: P1B-Air-conditioning and Ventilation works 57350
- DUKHCONP1BZ3ACFF4615: Expenses: P1B-Air-conditioning and Ventilation works 4983
- DUKHCONP1BZ3ACFF4620: Expenses: P1B-Air-conditioning and Ventilation works 5633
- DUKHCONP1BZ3ACFF4625: Expenses: P1B-Air-conditioning and Ventilation works 43882
- DUKHCONP1BZ3ACRF4630: Expenses: P1B-Air-conditioning and Ventilation works 24000
- DUKHCONP1BZ3ACRF4635: Expenses: P1B-Air-conditioning and Ventilation works 130673
- DUKHCONP1BZ3MSEX5020: Expenses: P1B-External works within the Plot Curtilage 25080
- DUKHCONP1BZ3MSEX5000: Expenses: P1B-External works within the Plot Curtilage 27797
- DUKHCONP1BZ3MSEX5005: Expenses: P1B-External works within the Plot Curtilage 47088
- DUKHCONP1BZ3MSEX5025: Expenses: P1B-External works within the Plot Curtilage 113987
- DUKHCONP1BZ3MSEX5015: Expenses: P1B-Plumbing and Drainage works 22696
- DUKHCONP1BZ3MSEX5010: Expenses: P1B-External works within the Plot Curtilage 3238
- DUKHCONP1BZ3MSEX5335: Expenses: P1B-External works within the Plot Curtilage 57372
- DUKHCONP1BZ3WEEX5030: Expenses: P1B-External works within the Plot Curtilage 896
- DUKHCONP1BZ3WEEX5035: Expenses: P1B-External works within the Plot Curtilage 13680
- DUKHCONP1BZ3WEEX5040: Expenses: P1B-External works within the Plot Curtilage 19727
- DUKHCONP1BZ3WEEX5045: Expenses: P1B-External works within the Plot Curtilage 18792
- DUKHCONP1BZ3WEEX5050: Expenses: P1B-External works within the Plot Curtilage 75504
- DUKHCONP1BZ3WEEX5060: Expenses: P1B-External works within the Plot Curtilage 45463
- DUKHCONP1BZ3WEEX5065: Expenses: P1B-Plumbing and Drainage works 122333

| ID | WBS | Activity | Duration | Start | Finish | Predecessors | Total float | Free float | Resources | Cost | CODE | P3 ACTID | P6 ID (old) | NP61D | PROJECT | PHASES | PACKAGE | PART | ELEMENTS | STEP | BILL NOS | BILL DIVISION | RES PACK | FLOORS | rem |
| --- | --- | --- | --- | --- | --- | --- | --- | --- | --- | --- | --- | --- | --- | --- | --- | --- | --- | --- | --- | --- | --- | --- | --- | --- | --- |
|  | 20 | **HARD LANDSCAPING** |  | 2014-03-18 | 2014-05-06 |  |  |  |  |  |  |  |  |  |  |  |  |  |  |  |  |  |  |  |  |
| DUKHCONP1BZ3HDEX5090 |  | kerb works | 20d | 2014-03-18 | 2014-04-09 | DUKHCONP1BZ3MSEX5020 FF+7d, DUKHCONP1BZ3MSEX5025 SS+7d, DUKHCONP1BZ2HDEX5090, DUKHCONP1BZ3MSEX5020 SS+7d | 60d | 0d | KERBSTONE MASON SK [448 h]; LABOR- SUBCONTRACTOR [264 h]; KERBSTONE QTY [576 lm] | 12,546 | 10 | 1BP3HDEX10 | DUKHCON1BP3HD005090 | DUKHCONP1BZ3HDEX5090 | DH | CON | 1B | Z3 | EX | HD | B04 | B04-D12 | RES-1B |  |  |
| DUKHCONP1BZ3HDEX5095 |  | Cobble Stone Works | 20d | 2014-03-30 | 2014-04-21 | DUKHCONP1BZ3HDEX5090 FF+10d, DUKHCONP1BZ3HDEX5090 SS+10d | 60d | 0d | TILE MASON SK [288 h]; LABOR- SUBCONTRACTOR [168 h]; COBBLE STONE QTY [176 Sqm] | 35,584 | 15 | 1BP3HDEX15 | DUKHCON1BP3HD005095 | DUKHCONP1BZ3HDEX5095 | DH | CON | 1B | Z3 | EX | HD | B04 | B04-D12 | RES-1B |  |  |
| DUKHCONP1BZ3HDEX5100 |  | Interlock works | 20d | 2014-04-14 | 2014-05-06 | DUKHCONP1BZ3HDEX5095 FF+13d, DUKHCONP1BZ3HDEX5095 SS+13d | 60d | 0d | INTERLOCK MASON SK [288 h]; LABOR- SUBCONTRACTOR [120 h]; INTERLOCK QTY [368 Sqm] | 42,407 | 20 | 1BP3HDEX20 | DUKHCON1BP3HD005100 | DUKHCONP1BZ3HDEX5100 | DH | CON | 1B | Z3 | EX | HD | B04 | B04-D12 | RES-1B |  |  |
|  | 25 | **SOFT LANDSCAPING** |  | 2014-04-26 | 2014-06-04 |  |  |  |  |  |  |  |  |  |  |  |  |  |  |  |  |  |  |  |  |
| DUKHCONP1BZ3SLEX5105 |  | Laying of Grass/ green area | 25d | 2014-04-26 | 2014-05-24 | DUKHCONP1BZ3HDEX5100 FF+10d, DUKHCONP1BZ3HDEX5100 SS+10d | 60d | 0d | LABOR- SUBCONTRACTOR [2352 h]; SWEET SOIL QTY [672 Cum]; GRASS QTY [672 Sqm]; LANDSCAPING SK [3136 h] | 50,184 | 10 | 1BP3SLEX10 | DUKHCON1BP3SL005105 | DUKHCONP1BZ3SLEX5105 | DH | CON | 1B | Z3 | EX | SL | B04 | B04-D12 | RES-1B |  |  |
| DUKHCONP1BZ3SLEX5110 |  | Laying of Palm tree | 25d | 2014-05-07 | 2014-06-04 | DUKHCONP1BZ3SLEX5105 SS+10d, DUKHCONP1BZ3SLEX5105 FF+10d | 60d | 68d | LABOR- SUBCONTRACTOR [144 h]; SWEET SOIL QTY [96 Cum]; PLAM TREES QTY [32 ea]; LANDSCAPING SK [192 h] | 120,888 | 15 | 1BP3SLEX15 | DUKHCON1BP3SL005110 | DUKHCONP1BZ3SLEX5110 | DH | CON | 1B | Z3 | EX | SL | B04 | B04-D12 | RES-1B |  |  |
|  | 30 | **TESTING AND COMMISSIONING** |  | 2014-08-27 | 2014-09-24 |  |  |  |  |  |  |  |  |  |  |  |  |  |  |  |  |  |  |  |  |
| DUKHCONP1BZ3ACTC8000 |  | Pre-Commissioning & Testing of AC Works | 25d | 2014-08-27 | 2014-09-24 | DUKHCONP1BZ3ARRF3660, DUKHCONP1BZ3ARFF3395, DUKHCONP1BZ3ARGF3095, DUKHCONP1BZ3HDEX5100, DUKHCONP1BZ3SLEX5110, DUKHCONP1BZ3AREL3680, DUKHCONP1BZ3MSEX5005, DUKHCONP1BZ3SLEX5105, DUKHCONP1BZ2ACTC8000, DUKHCONP1BZ3ARRF3620, DUKHCONP1BZ3ACFF4625, DUKHCONP1BZ3ARRF3655, DUKHCONP1BZ3ACRF4635 | -8d | 0d | LABOR- SUBCONTRACTOR [500 h]; AC TECHNICIAN SK [1000 h] | 1,696 |  | 1BP3ACU100 | DUKHCON1BP3AC008000 | DUKHCONP1BZ3ACTC8000 | DH | CON | 1B | Z3 | TES |  | B04 | B04-D08 | RES-1B |  |  |
| DUKHCONP1BZ3ELTC8010 |  | Pre-Commissioning & Testing of Electrical Works | 25d | 2014-08-27 | 2014-09-24 | DUKHCONP1BZ2ELTC8010, DUKHCONP1BZ3HDEX5100, DUKHCONP1BZ3ARRF3620, DUKHCONP1BZ3ELFF4055, DUKHCONP1BZ3ELGF4015, DUKHCONP1BZ3ELGF4025, DUKHCONP1BZ3ARFF3395, DUKHCONP1BZ3ARGF3095, DUKHCONP1BZ3SLEX5110, DUKHCONP1BZ3ELGF4030, DUKHCONP1BZ3SLEX5105, DUKHCONP1BZ3AREL3680, DUKHCONP1BZ3ELFF4065, DUKHCONP1BZ3MSEX5005, DUKHCONP1BZ3ELFF4050, DUKHCONP1BZ3ARRF3655, DUKHCONP1BZ3ARRF3660, DUKHCONP1BZ3ELRF4075 | -8d | 0d | LABOR- SUBCONTRACTOR [1000 h]; ELECTRICIANS SK [2000 h] | 45,560 |  | 1BP3ELE100 | DUKHCON1BP3EL008010 | DUKHCONP1BZ3ELTC8010 | DH | CON | 1B | Z3 | TES |  | B04 | B04-D09 | RES-1B |  |  |
| DUKHCONP1BZ3PLTC8005 |  | Pre-Commissioning & Testing of Plumbing Works | 25d | 2014-08-27 | 2014-09-24 | DUKHCONP1BZ3MSEX5005, DUKHCONP1BZ3AREL3680, DUKHCONP1BZ3ARGF3095, DUKHCONP1BZ3PLRF4355, DUKHCONP1BZ3HDEX5100, DUKHCONP1BZ3ARFF3395, DUKHCONP1BZ3ARRF3655, DUKHCONP1BZ3ARRF3660, DUKHCONP1BZ2PLTC8005, DUKHCONP1BZ3SLEX5105, DUKHCONP1BZ3PLRF4350, DUKHCONP1BZ3SLEX5110, DUKHCONP1BZ3WEEX5065, DUKHCONP1BZ3ARRF3620, DUKHCONP1BZ3PLGF4320 | -8d | 0d | LABOR- SUBCONTRACTOR [1000 h]; MECHANICALS SK [2000 h] | 7,112 |  | 1BP3PLU100 | DUKHCON1BP3PL008005 | DUKHCONP1BZ3PLTC8005 | DH | CON | 1B | Z3 | TES |  | B04 | B04-D07 | RES-1B |  |  |
|  | 25 | **ZONE - 4 (4 Twin Villas)** |  | 2013-07-23 | 2014-10-26 |  |  |  |  |  |  |  |  |  |  |  |  |  |  |  |  |  |  |  |  |
|  | 10 | **STRUCTURAL WORKS** |  | 2013-07-23 | 2014-05-03 |  |  |  |  |  |  |  |  |  |  |  |  |  |  |  |  |  |  |  |  |
|  | 10 | **SUB STRUCTURE** |  | 2013-07-23 | 2013-12-15 |  |  |  |  |  |  |  |  |  |  |  |  |  |  |  |  |  |  |  |  |
|  | 10 | **UPTO GRADE SLAB** |  | 2013-07-23 | 2013-12-15 |  |  |  |  |  |  |  |  |  |  |  |  |  |  |  |  |  |  |  |  |
| DUKHCONP1BZ4STUG1000 |  | Footing Excavation | 25d | 2013-07-23 | 2013-08-24 | DUKHCONP1BZ3STUG1000 | 0d |  | LABOR- SUBCONTRACTOR [758 h]; EXCAVATION QTY [1264 Cum]; LOADER [169 h]; POCLAIN [337 h]; TRUCK [169 h]; EQUIP OPERATORS [675 h] | 81,497 | 10 | 1BP4SBUG10 | DUKHCON1BP4STUG1000 | DUKHCONP1BZ4STUG1000 | DH | CON | 1B | Z4 | ST | SB | B04 | B04-D01 | RES-1B | UG |  |
| DUKHCONP1BZ4STUG1005 |  | Footing Antitermite | 23d | 2013-08-04 | 2013-09-02 | DUKHCONP1BZ4STUG1000 SS+10d, DUKHCONP1BZ4STUG1000 FF+5d | 0d |  | LABOR- SUBCONTRACTOR [507.75 h]; ANTITERMITE QTY [3384 sqft]; ANTITERMITE SK [1354 h] | 10,152 | 15 | 1BP4SBUG15 | DUKHCON1BP4STUG1005 | DUKHCONP1BZ4STUG1005 | DH | CON | 1B | Z4 | ST | SB | B04 | B04-D01 | RES-1B | UG | REM |
| DUKHCONP1BZ4STUG1010 |  | Footing Blinding | 23d | 2013-08-08 | 2013-09-07 | DUKHCONP1BZ4STUG1005 SS+4d, DUKHCONP1BZ4STUG1005 FF+4d | 0d |  | BLINDING MASON SK [599 h]; LABOR- SUBCONTRACTOR [449.25 h]; BLINDING QTY [748 Sqm] | 18,857 | 15 | 1BP4SBUG18 | DUKHCON1BP4STUG1010 | DUKHCONP1BZ4STUG1010 | DH | CON | 1B | Z4 | ST | SB | B04 | B04-D02 | RES-1B | UG | REM |
| DUKHCONP1BZ4STUG1015 |  | Footing Waterproofing & Screed | 25d | 2013-08-18 | 2013-09-15 | DUKHCONP1BZ4STUG1010 SS+5d, DUKHCONP1BZ4STUG1010 FF+5d | 0d |  | SCREED MASON SK [600 h]; LABOR- SUBCONTRACTOR [225 h]; SCREED QTY [749 Sqm]; WATERPROOFING QTY [1547 Sqm] | 59,066 | 20 | 1BP4SBUG20 | DUKHCON1BP4STUG1015 | DUKHCONP1BZ4STUG1015 | DH | CON | 1B | Z4 | ST | SB | B04 | B04-D02 | RES-1B | UG | REM |
| DUKHCONP1BZ4STUG1020 |  | Construction of foundations | 20d | 2013-09-02 | 2013-09-24 | DUKHCONP1BZ4STUG1015 FF+8d, DUKHCONP1BZ4STUG1015 SS+7d | 0d |  | STEEL FIXERS SK [2778 h]; CARPENTERS SK [1136 h]; CONCRETE MASON SK [640 h]; LABOR- SUBCONTRACTOR [3415.5 h]; REINFORCEMENT BARS QTY [34722 kg]; FORMWORK QTY [568 Sqm]; CONCRETE QTY [320 Cum] | 222,124 | 25 | 1BP4SBUG25 | DUKHCON1BP4STUG1020 | DUKHCONP1BZ4STUG1020 | DH | CON | 1B | Z4 | ST | SB | B04 | B04-D02 | RES-1B | UG | REM |
| DUKHCONP1BZ4STUG1025 |  | Construction of neck of columns | 25d | 2013-09-11 | 2013-10-09 | DUKHCONP1BZ3STUG1025, DUKHCONP1BZ4STUG1020 SS+8d, DUKHCONP1BZ4STUG1020 FF+7d | 0d |  | STEEL FIXERS SK [232 h]; CARPENTERS SK [832 h]; CONCRETE MASON SK [48 h]; LABOR- SUBCONTRACTOR [834 h]; REINFORCEMENT BARS QTY [2889 kg]; FORMWORK QTY [416 Sqm]; CONCRETE QTY [24 Cum] | 41,717 | 30 | 1BP4SBUG30 | DUKHCON1BP4STUG1025 | DUKHCONP1BZ4STUG1025 | DH | CON | 1B | Z4 | ST | SB | B04 | B04-D02 | RES-1B | UG | REM |
| DUKHCONP1BZ4STUG1030 |  | Waterproofing Footing & Neck Column | 25d | 2013-09-21 | 2013-10-21 | DUKHCONP1BZ4STUG1025 SS+8d, DUKHCONP1BZ4STUG1025 FF+8d | 0d |  | LABOR- SUBCONTRACTOR [146.25 h]; WATERPROOFING QTY [486 Sqm]; WATERPROOFING SPECIALIST SK [389 h] | 23,765 | 35 | 1BP4SBUG35 | DUKHCON1BP4STUG1030 | DUKHCONP1BZ4STUG1030 | DH | CON | 1B | Z4 | ST | SB | B04 | B04-D02 | RES-1B | UG | REM |
| DUKHCONP1BZ4STUG1035 |  | Backfilling Upto Grade Beam Bottom | 25d | 2013-10-02 | 2013-11-02 | DUKHCONP1BZ4STUG1030 FF+10d, DUKHCONP1BZ4STUG1030 SS+10d, DUKHCONP1BZ3STUG1035 | 0d |  | LABOR- SUBCONTRACTOR [336 h]; BACKFILLING QTY [1368 Cum]; BOBCAT [500 h]; PLATE COMPACTOR [500 h]; TRUCK [100 h]; EQUIP OPERATORS [1100 h] | 34,798 | 40 | 1BP4SBUG40 | DUKHCON1BP4STUG1035 | DUKHCONP1BZ4STUG1035 | DH | CON | 1B | Z4 | ST | SB | B04 | B04-D01 | RES-1B | UG |  |
| DUKHCONP1BZ4STUG1040 |  | Construction of Grade Beams | 25d | 2013-10-21 | 2013-11-18 | DUKHCONP1BZ4STUG1035 SS+14d, DUKHCONP1BZ4STUG1035 FF+14d | 0d |  | BLINDING MASON SK [321 h]; SCREED MASON SK [321 h]; STEEL FIXERS SK [1621 h]; CARPENTERS SK [2112 h]; CONCRETE MASON SK [320 h]; LABOR- SUBCONTRACTOR [3401.25 h]; BLINDING QTY [401 Sqm]; SCREED QTY [401 Sqm]; REINFORCEMENT BARS QTY [20261 kg]; FORMWORK QTY [1056 Sqm]; CONCRETE QTY [160 Cum] | 373,054 | 45 | 1BP4SBUG45 | DUKHCON1BP4STUG1040 | DUKHCONP1BZ4STUG1040 | DH | CON | 1B | Z4 | ST | SB | B04 | B04-D02 | RES-1B | UG | REM |
| DUKHCONP1BZ4STUG1045 |  | Construction of slab on grade | 25d | 2013-11-17 | 2013-12-15 | DUKHCONP1BZ4STUG1040 FF+10d, DUKHCONP1BZ4PLUG4300 SS+8d, DUKHCONP1BZ3STUG1045, DUKHCONP1BZ4PLUG4300 FF+8d, DUKHCONP1BZ4STUG1040 SS+10d | 0d |  | BLINDING MASON SK [1219 h]; SCREED MASON SK [1218 h]; STEEL FIXERS SK [493 h]; CONCRETE MASON SK [496 h]; LABOR- SUBCONTRACTOR [2112.75 h]; BLINDING QTY [1523 Sqm]; SCREED QTY [1522 Sqm]; CONCRETE QTY [248 Cum]; WELDED WIRE MESH [1848 Sqm] | 283,313 | 50 | 1BP4SBUG50 | DUKHCON1BP4STUG1045 | DUKHCONP1BZ4STUG1045 | DH | CON | 1B | Z4 | ST | SB | B04 | B04-D02 | RES-1B | UG | REM |

Notes:
- DUKHCONP1BZ3HDEX5090: Expenses: P1B-External works within the Plot Curtilage 12546
- DUKHCONP1BZ3HDEX5095: Expenses: P1B-External works within the Plot Curtilage 35584
- DUKHCONP1BZ3HDEX5100: Expenses: P1B-External works within the Plot Curtilage 42407
- DUKHCONP1BZ3SLEX5105: Expenses: P1B-External works within the Plot Curtilage 50184
- DUKHCONP1BZ3SLEX5110: Expenses: P1B-External works within the Plot Curtilage 120888
- DUKHCONP1BZ3ACTC8000: Expenses: P1B-Air-conditioning and Ventilation works 1696
- DUKHCONP1BZ3ELTC8010: Expenses: P1B-Electrical Installations 45560
- DUKHCONP1BZ3PLTC8005: Expenses: P1B-Plumbing and Drainage works 7112
- DUKHCONP1BZ4STUG1000: Expenses: P1B-Excavation and Earth Works 81497
- DUKHCONP1BZ4STUG1005: Expenses: P1B-Excavation and Earth Works 10152
- DUKHCONP1BZ4STUG1010: Expenses: P1B-Concrete Works 18857
- DUKHCONP1BZ4STUG1015: Expenses: P1B-Concrete Works 59066
- DUKHCONP1BZ4STUG1020: Expenses: P1B-Concrete Works 222124
- DUKHCONP1BZ4STUG1025: Expenses: P1B-Concrete Works 41717
- DUKHCONP1BZ4STUG1030: Expenses: P1B-Concrete Works 23765
- DUKHCONP1BZ4STUG1035: Expenses: P1B-Excavation and Earth Works 34798
- DUKHCONP1BZ4STUG1040: Expenses: P1B-Concrete Works 373054
- DUKHCONP1BZ4STUG1045: Expenses: P1B-Concrete Works 283313

| ID | WBS | Activity | Duration | Start | Finish | Predecessors | Total float | Free float | Resources | Cost | CODE | rem | P3 ACTID | P6 ID (old) | NP61D | PROJECT | PHASES | PACKAGE | PART | ELEMENTS | STEP | FLOORS | BILL NOS | BILL DIVISION | RES PACK | EXECUTER |
| --- | --- | --- | --- | --- | --- | --- | --- | --- | --- | --- | --- | --- | --- | --- | --- | --- | --- | --- | --- | --- | --- | --- | --- | --- | --- | --- |
|  | 15 | **SUPERSTRUCTURE** |  | 2013-12-03 | 2014-05-03 |  |  |  |  |  |  |  |  |  |  |  |  |  |  |  |  |  |  |  |  |  |
|  | 10 | **GROUND FLOOR** |  | 2013-12-03 | 2014-01-28 |  |  |  |  |  |  |  |  |  |  |  |  |  |  |  |  |  |  |  |  |  |
| DUKHCONP1BZ4STGF2000 |  | Column-Rebar & Formwork | 25d | 2013-12-03 | 2014-01-01 | DUKHCONP1BZ4STUG1045 FF+7d, DUKHCONP1BZ3STGF2000, DUKHCONP1BZ4STUG1045 SS+14d | 0d |  | STEEL FIXERS SK [832 h]; CARPENTERS SK [2016 h]; LABOR- SUBCONTRACTOR [2136 h]; REINFORCEMENT BARS QTY [10395 kg]; FORMWORK QTY [1008 Sqm] | 90,734 | 10 | REM | 1BP4SPGF10 | DUKHCON1BP4STGF2000 | DUKHCONP1BZ4STGF2000 | DH | CON | 1B | Z4 | ST | SP | GF | B04 | B04-D02 | RES-1B |  |
| DUKHCONP1BZ4STGF2005 |  | Column-Concrete | 23d | 2013-12-12 | 2014-01-08 | DUKHCONP1BZ4STGF2000 SS+8d, DUKHCONP1BZ4STGF2000 FF+2d | 0d |  | CONCRETE MASON SK [222 h]; LABOR- SUBCONTRACTOR [166.5 h]; CONCRETE QTY [111 Cum] | 31,968 | 15 | REM | 1BP4SPGF15 | DUKHCON1BP4STGF2005 | DUKHCONP1BZ4STGF2005 | DH | CON | 1B | Z4 | ST | SP | GF | B04 | B04-D02 | RES-1B |  |
| DUKHCONP1BZ4STGF2010 |  | Beam, Stairs ,Slab-Rebar & Formwork | 25d | 2013-12-28 | 2014-01-25 | DUKHCONP1BZ4STGF2005 SS+2d, DUKHCONP1BZ4STGF2005 FF+14d | 0d |  | STEEL FIXERS SK [5276 h]; CARPENTERS SK [5422 h]; LABOR- SUBCONTRACTOR [8023.5 h]; REINFORCEMENT BARS QTY [65948 kg]; FORMWORK QTY [2711 Sqm] | 372,787 | 20 | REM | 1BP4SPGF20 | DUKHCON1BP4STGF2010 | DUKHCONP1BZ4STGF2010 | DH | CON | 1B | Z4 | ST | SP | GF | B04 | B04-D02 | RES-1B |  |
| DUKHCONP1BZ4STGF2015 |  | Beam, Stairs ,Slab-Concrete | 14d | 2014-01-13 | 2014-01-28 | DUKHCONP1BZ4STGF2010 SS+10d, DUKHCONP1BZ4STGF2010 FF+3d, DUKHCONP1BZ3STGF2015 | 0d |  | CONCRETE MASON SK [832 h]; LABOR- SUBCONTRACTOR [624 h]; CONCRETE QTY [416 Cum] | 140,126 | 25 | REM | 1BP4SPGF25 | DUKHCON1BP4STGF2015 | DUKHCONP1BZ4STGF2015 | DH | CON | 1B | Z4 | ST | SP | GF | B04 | B04-D02 | RES-1B |  |
|  | 15 | **FIRST FLOORS** |  | 2014-01-15 | 2014-03-02 |  |  |  |  |  |  |  |  |  |  |  |  |  |  |  |  |  |  |  |  |  |
| DUKHCONP1BZ4STFF2020 |  | Column-Rebar & Formwork | 25d | 2014-01-15 | 2014-02-13 | DUKHCONP1BZ4STGF2015 SS+2d, DUKHCONP1BZ3STFF2020, DUKHCONP1BZ4STGF2015 FF+5d | 0d |  | STEEL FIXERS SK [282 h]; CARPENTERS SK [1792 h]; LABOR- SUBCONTRACTOR [1344 h]; FORMWORK QTY [896 Sqm]; REINFORCEMENT BARS QTY [3529 kg] | 62,208 | 10 | REM | 1BP4SPFF10 | DUKHCON1BP4STFF2020 | DUKHCONP1BZ4STFF2020 | DH | CON | 1B | Z4 | ST | SP | FF | B04 | B04-D02 | RES-1B |  |
| DUKHCONP1BZ4STFF2025 |  | Column-Concrete | 23d | 2014-01-25 | 2014-02-20 | DUKHCONP1BZ4STFF2020 SS+8d, DUKHCONP1BZ4STFF2020 FF+2d | 0d |  | CONCRETE MASON SK [194 h]; LABOR- SUBCONTRACTOR [145.5 h]; CONCRETE QTY [97 Cum] | 27,979 | 15 | REM | 1BP4SPFF15 | DUKHCON1BP4STFF2025 | DUKHCONP1BZ4STFF2025 | DH | CON | 1B | Z4 | ST | SP | FF | B04 | B04-D02 | RES-1B |  |
| DUKHCONP1BZ4STFF2030 |  | Beam, Stairs ,Slab-Rebar & Formwork | 25d | 2014-01-28 | 2014-02-26 | DUKHCONP1BZ4STFF2025 FF+5d, DUKHCONP1BZ4STFF2025 SS+2d | 0d |  | STEEL FIXERS SK [5481 h]; CARPENTERS SK [5422 h]; LABOR- SUBCONTRACTOR [8177.25 h]; REINFORCEMENT BARS QTY [68503 kg]; FORMWORK QTY [2711 Sqm] | 369,641 | 20 | REM | 1BP4SPFF20 | DUKHCON1BP4STFF2030 | DUKHCONP1BZ4STFF2030 | DH | CON | 1B | Z4 | ST | SP | FF | B04 | B04-D02 | RES-1B |  |
| DUKHCONP1BZ4STFF2035 |  | Beam, Stairs ,Slab-Concrete | 14d | 2014-02-15 | 2014-03-02 | DUKHCONP1BZ4STFF2030 FF+3d, DUKHCONP1BZ3STFF2035, DUKHCONP1BZ4STFF2030 SS+10d | 0d |  | CONCRETE MASON SK [736 h]; LABOR- SUBCONTRACTOR [552 h]; CONCRETE QTY [368 Cum] | 126,130 | 25 | REM | 1BP4SPFF25 | DUKHCON1BP4STFF2035 | DUKHCONP1BZ4STFF2035 | DH | CON | 1B | Z4 | ST | SP | FF | B04 | B04-D02 | RES-1B |  |
|  | 20 | **ROOF** |  | 2014-02-20 | 2014-05-03 |  |  |  |  |  |  |  |  |  |  |  |  |  |  |  |  |  |  |  |  |  |
| DUKHCONP1BZ4STRF2040 |  | Column-Rebar & Formwork | 18d | 2014-02-20 | 2014-03-12 | DUKHCONP1BZ3STRF2040, DUKHCONP1BZ4STFF2035 FF+3d, DUKHCONP1BZ4STFF2035 SS+5d | 16d | 0d | CARPENTERS SK [672 h]; LABOR- SUBCONTRACTOR [504 h]; FORMWORK QTY [336 Sqm] | 19,058 | 10 | REM | 1BP4SPRF10 | DUKHCON1BP4STRF2040 | DUKHCONP1BZ4STRF2040 | DH | CON | 1B | Z4 | ST | SP | RF | B04 | B04-D02 | RES-1B |  |
| DUKHCONP1BZ4STRF2045 |  | Column-Concrete | 17d | 2014-02-24 | 2014-03-15 | DUKHCONP1BZ4STRF2040 SS+3d, DUKHCONP1BZ4STRF2040 FF+1d | 26d | 0d | CONCRETE MASON SK [46 h]; LABOR- SUBCONTRACTOR [34.5 h]; CONCRETE QTY [23 Cum] | 6,660 | 15 | REM | 1BP4SPRF15 | DUKHCON1BP4STRF2045 | DUKHCONP1BZ4STRF2045 | DH | CON | 1B | Z4 | ST | SP | RF | B04 | B04-D02 | RES-1B |  |
| DUKHCONP1BZ4STRF2050 |  | Slab-Rebar & Formwork - Head Room | 20d | 2014-02-26 | 2014-03-20 | DUKHCONP1BZ4STRF2045 SS+2d, DUKHCONP1BZ4STRF2045 FF+5d | 26d | 0d | STEEL FIXERS SK [1294 h]; CARPENTERS SK [674 h]; LABOR- SUBCONTRACTOR [1476 h]; REINFORCEMENT BARS QTY [16169 kg]; FORMWORK QTY [337 Sqm] | 80,128 | 20 | REM | 1BP4SPRF20 | DUKHCON1BP4STRF2050 | DUKHCONP1BZ4STRF2050 | DH | CON | 1B | Z4 | ST | SP | RF | B04 | B04-D02 | RES-1B |  |
| DUKHCONP1BZ4STRF2055 |  | Slab-Concrete-Head room | 13d | 2014-03-12 | 2014-03-26 | DUKHCONP1BZ3STRF2055, DUKHCONP1BZ4STRF2050 SS+5d, DUKHCONP1BZ4STRF2050 FF+5d | 26d | 0d | CONCRETE MASON SK [160 h]; LABOR- SUBCONTRACTOR [120 h]; CONCRETE QTY [80 Cum] | 25,904 | 25 | REM | 1BP4SPRF25 | DUKHCON1BP4STRF2055 | DUKHCONP1BZ4STRF2055 | DH | CON | 1B | Z4 | ST | SP | RF | B04 | B04-D02 | RES-1B |  |
| DUKHCONP1BZ4STRF2060 |  | Construction of Parapets | 25d | 2014-03-19 | 2014-04-16 | DUKHCONP1BZ4STRF2055 SS+6d, DUKHCONP1BZ4STRF2055 FF+10d | 62d | 0d | BLOCK MASON SK [752 h]; LABOR- SUBCONTRACTOR [423 h]; BLOCK QTY [376 Sqm] | 23,312 | 30 | REM | 1BP4SPRF30 | DUKHCON1BP4STRF2060 | DUKHCONP1BZ4STRF2060 | DH | CON | 1B | Z4 | ST | SP | RF | B04 | B04-D03 | RES-1B |  |
| DUKHCONP1BZ4STRF2065 |  | Construction of up stands/Plinth | 25d | 2014-04-05 | 2014-05-03 | DUKHCONP1BZ3STRF2065, DUKHCONP1BZ4STRF2060 FF+10d, DUKHCONP1BZ4STRF2060 SS+10d | 67d | 0d | STEEL FIXERS SK [58 h]; CARPENTERS SK [240 h]; CONCRETE MASON SK [16 h]; LABOR- SUBCONTRACTOR [235.5 h]; FORMWORK QTY [120 Sqm]; CONCRETE QTY [8 Cum]; REINFORCEMENT BARS QTY [722 kg] | 12,704 | 35 | REM | 1BP4SPRF35 | DUKHCON1BP4STRF2065 | DUKHCONP1BZ4STRF2065 | DH | CON | 1B | Z4 | ST | SP | RF | B04 | B04-D02 | RES-1B |  |
|  | 15 | **FINISHING WORKS** |  | 2014-02-06 | 2014-09-24 |  |  |  |  |  |  |  |  |  |  |  |  |  |  |  |  |  |  |  |  |  |
|  | 10 | **INTERNAL FINISHES** |  | 2014-02-06 | 2014-09-24 |  |  |  |  |  |  |  |  |  |  |  |  |  |  |  |  |  |  |  |  |  |
|  | 10 | **GROUND FLOOR** |  | 2014-02-06 | 2014-07-20 |  |  |  |  |  |  |  |  |  |  |  |  |  |  |  |  |  |  |  |  |  |
| DUKHCONP1BZ4ARGF3000 |  | Block work | 25d | 2014-02-06 | 2014-03-08 | DUKHCONP1BZ4STGF2015 FF+21d, DUKHCONP1BZ3ARGF3000, DUKHCONP1BZ4STGF2015 SS+21d | 38d | 0d | BLOCK MASON SK [5928 h]; LABOR- SUBCONTRACTOR [3334.5 h]; BLOCK QTY [2964 Sqm] | 195,460 | 10 | REM | 1BP4IFGF10 | DUKHCON1BP4ARGF3000 | DUKHCONP1BZ4ARGF3000 | DH | CON | 1B | Z4 | FIN | IF | GF | B04 | B04-D03 | RES-1B |  |
| DUKHCONP1BZ4ARGF3005 |  | Plastering work | 25d | 2014-03-02 | 2014-03-30 | DUKHCONP1BZ4ARGF3000 FF+7d, DUKHCONP1BZ4PLGF4305 SS+5d, DUKHCONP1BZ4ELGF4000 FF+5d, DUKHCONP1BZ4ELGF4000 SS+5d, DUKHCONP1BZ3ARGF3005, DUKHCONP1BZ4PLGF4305 FF+5d, DUKHCONP1BZ4ARGF3000 SS+7d | 38d | 0d | PLASTER MASON SK [7264 h]; LABOR- SUBCONTRACTOR [4086 h]; PLASTER QTY [4540 Sqm] | 59,763 | 12 | REM | 1BP4IFGF12 | DUKHCON1BP4ARGF3005 | DUKHCONP1BZ4ARGF3005 | DH | CON | 1B | Z4 | FIN | IF | GF | B04 | B04-D10 | RES-1B |  |
| DUKHCONP1BZ4ARGF3010 |  | Flooring screed | 21d | 2014-03-10 | 2014-04-02 | DUKHCONP1BZ4ARGF3005 FF+3d, DUKHCONP1BZ4ARGF3005 SS+7d | 46d | 8d | SCREED MASON SK [1579 h]; LABOR- SUBCONTRACTOR [592.5 h]; FLOORING SCREED QTY [1973 Sqm] | 65,968 | 15 | REM | 1BP4IFGF15 | DUKHCON1BP4ARGF3010 | DUKHCONP1BZ4ARGF3010 | DH | CON | 1B | Z4 | FIN | IF | GF | B04 | B04-D10 | RES-1B |  |
| DUKHCONP1BZ4ARGF3030 |  | Paint First coat | 25d | 2014-03-18 | 2014-04-15 | DUKHCONP1BZ4ARGF3005 SS+14d, DUKHCONP1BZ3ARGF3030, DUKHCONP1BZ4ARGF3005 FF+14d | 52d | 0d | LABOR- SUBCONTRACTOR [1619.25 h]; FIRSTCOAT PAINT QTY [5396 Sqm]; PAINTERS SK [4317 h] | 29,940 | 21 | REM | 1BP4IFGF21 | DUKHCON1BP4ARGF3030 | DUKHCONP1BZ4ARGF3030 | DH | CON | 1B | Z4 | FIN | IF | GF | B04 | B04-D11 | RES-1B | ENT |
| DUKHCONP1BZ4ARGF3015 |  | Wet area waterproofing & Protection Screed | 15d | 2014-03-19 | 2014-04-05 | DUKHCONP1BZ4ARGF3005 FF+5d, DUKHCONP1BZ4ARGF3005 SS+7d, DUKHCONP1BZ3ARGF3015 | 38d | 0d | LABOR- SUBCONTRACTOR [115.5 h]; WETAREA WATERPROOFING QTY [384 Sqm]; WATERPROOFING SPECIALIST SK [308 h] | 13,056 | 18 | REM | 1BP4IFGF18 | DUKHCON1BP4ARGF3015 | DUKHCONP1BZ4ARGF3015 | DH | CON | 1B | Z4 | FIN | IF | GF | B04 | B04-D10 | RES-1B |  |
| DUKHCONP1BZ4ARGF3020 |  | Ceramic Wall Tiling | 25d | 2014-03-25 | 2014-04-22 | DUKHCONP1BZ4PLGF4305 SS+4d, DUKHCONP1BZ4PLGF4310 FF+4d, DUKHCONP1BZ4ARGF3015 FF+5d, DUKHCONP1BZ3ARGF3020, DUKHCONP1BZ4PLGF4305 FF+4d, DUKHCONP1BZ4ARGF3015 SS+5d, DUKHCONP1BZ4PLGF4310 SS+4d | 38d | 0d | TILE MASON SK [2262 h]; LABOR- SUBCONTRACTOR [1272.75 h]; CERAMIC WALL TILE QTY [1131 Sqm] | 64,075 | 24 | REM | 1BP4IFGF24 | DUKHCON1BP4ARGF3020 | DUKHCONP1BZ4ARGF3020 | DH | CON | 1B | Z4 | FIN | IF | GF | B04 | B04-D10 | RES-1B |  |
| DUKHCONP1BZ4ARGF3025 |  | Porcelain Tile flooring | 25d | 2014-03-31 | 2014-04-28 | DUKHCONP1BZ4ARGF3020 FF+5d, DUKHCONP1BZ4ARGF3010 SS+10d, DUKHCONP1BZ4ARGF3020 SS+5d, DUKHCONP1BZ3ARGF3025, DUKHCONP1BZ4ARGF3010 FF+10d | 38d | 0d | TILE MASON SK [1228 h]; LABOR- SUBCONTRACTOR [690.75 h]; PORCELAIN FLOORING QTY [1074 Sqm] | 81,403 | 27 | REM | 1BP4IFGF27 | DUKHCON1BP4ARGF3025 | DUKHCONP1BZ4ARGF3025 | DH | CON | 1B | Z4 | FIN | IF | GF | B04 | B04-D10 | RES-1B |  |
| DUKHCONP1BZ4ARGF3045 |  | Fixing of Suspension systems | 20d | 2014-04-17 | 2014-05-10 | DUKHCONP1BZ4ARGF3030 FF+7d, DUKHCONP1BZ4ELGF4010 FF+5d, DUKHCONP1BZ3ARGF3045, DUKHCONP1BZ4ARGF3025 SS+10d, DUKHCONP1BZ4ARGF3030 SS+7d, DUKHCONP1BZ4ELGF4010 SS+5d, DUKHCONP1BZ4ARGF3025 FF+10d | 38d | 0d | LABOR- SUBCONTRACTOR [475.5 h]; SUSPENSION QTY [1056 Sqm]; FALSE CEILING SKILLED SK [845 h] | 21,568 | 39 | REM | 1BP4IFGF39 | DUKHCON1BP4ARGF3045 | DUKHCONP1BZ4ARGF3045 | DH | CON | 1B | Z4 | FIN | IF | GF | B04 | B04-D10 | RES-1B | SUS |
| DUKHCONP1BZ4ARGF3035 |  | Slate Tile Flooring & Skirting | 15d | 2014-04-20 | 2014-05-06 | DUKHCONP1BZ4ARGF3025 FF+7d, DUKHCONP1BZ4ARGF3025 SS+13d, DUKHCONP1BZ4ARGF3010 SS+13d, DUKHCONP1BZ4ARGF3010 FF+13d | 48d | 2d | TILE MASON SK [596 h]; LABOR- SUBCONTRACTOR [335.25 h]; SLATE TILE QTY [372 Sqm] | 77,923 | 33 | REM | 1BP4IFGF33 | DUKHCON1BP4ARGF3035 | DUKHCONP1BZ4ARGF3035 | DH | CON | 1B | Z4 | FIN | IF | GF | B04 | B04-D10 | RES-1B |  |
| DUKHCONP1BZ4ARGF3055 |  | Aluminum tile false ceiling | 25d | 2014-04-26 | 2014-05-24 | DUKHCONP1BZ4ACGF4600 SS+7d, DUKHCONP1BZ4ACGF4600 FF+7d, DUKHCONP1BZ4ARGF3045 FF+7d, DUKHCONP1BZ4ARGF3045 SS+7d | 41d | 3d | LABOR- SUBCONTRACTOR [46.8 h]; FALSE CEILING QTY [104 Sqm]; FALSE CEILING SKILLED SK [83.2 h] | 6,637 | 42 | REM | 1BP4IFGF42 | DUKHCON1BP4ARGF3055 | DUKHCONP1BZ4ARGF3055 | DH | CON | 1B | Z4 | FIN | IF | GF | B04 | B04-D10 | RES-1B | ALU |
| DUKHCONP1BZ4ARGF3040 |  | Cobble Tile flooring | 15d | 2014-04-27 | 2014-05-13 | DUKHCONP1BZ4ARGF3025 SS+13d, DUKHCONP1BZ4ARGF3035 FF+4d, DUKHCONP1BZ4ARGF3010 FF+13d, DUKHCONP1BZ4ARGF3025 FF+13d, DUKHCONP1BZ4ARGF3010 SS+13d, DUKHCONP1BZ4ARGF3035 SS+4d | 46d | 0d | TILE MASON SK [448 h]; LABOR- SUBCONTRACTOR [252 h]; COBBLE STONE QTY [280 Sqm] | 23,352 | 30 | REM | 1BP4IFGF30 | DUKHCON1BP4ARGF3040 | DUKHCONP1BZ4ARGF3040 | DH | CON | 1B | Z4 | FIN | IF | GF | B04 | B04-D10 | RES-1B |  |
| DUKHCONP1BZ4ARGF3060 |  | Gypsum board false ceiling | 25d | 2014-04-29 | 2014-05-27 | DUKHCONP1BZ3ARGF3060, DUKHCONP1BZ4ARGF3045 SS+10d, DUKHCONP1BZ4ARGF3045 FF+10d, DUKHCONP1BZ4ACGF4600 FF+7d, DUKHCONP1BZ4ACGF4600 SS+7d | 38d | 0d | LABOR- SUBCONTRACTOR [438 h]; FALSE CEILING QTY [972.81 Sqm]; FALSE CEILING SKILLED SK [778.3 h] | 53,328 | 45 | REM | 1BP4IFGF45 | DUKHCON1BP4ARGF3060 | DUKHCONP1BZ4ARGF3060 | DH | CON | 1B | Z4 | FIN | IF | GF | B04 | B04-D10 | RES-1B | GYP |
| DUKHCONP1BZ4ARGF3050 |  | Granite - Stair case flooring & Skirting | 20d | 2014-05-05 | 2014-05-27 | DUKHCONP1BZ4ARGF3040 FF+7d, DUKHCONP1BZ4ARGF3025 SS+13d, DUKHCONP1BZ4ARGF3025 FF+13d, DUKHCONP1BZ4ARGF3040 SS+7d | 46d | 0d | GRANITE MASON SK [544 h]; LABOR- SUBCONTRACTOR [306 h]; GRANITE QTY [136 Sqm] | 89,921 | 36 | REM | 1BP4IFGF36 | DUKHCON1BP4ARGF3050 | DUKHCONP1BZ4ARGF3050 | DH | CON | 1B | Z4 | FIN | IF | GF | B04 | B04-D10 | RES-1B |  |
| DUKHCONP1BZ4ARGF3065 |  | Wooden door & PVC Door | 15d | 2014-05-19 | 2014-06-04 | DUKHCONP1BZ3ARGF3065, DUKHCONP1BZ4ARGF3035 FF+7d, DUKHCONP1BZ4ARGF3035 SS+7d, DUKHCONP1BZ4ARGF3050 FF+7d, DUKHCONP1BZ4ARGF3050 SS+7d | 46d | 0d | LABOR- SUBCONTRACTOR [180 h]; WOODEN DOOR QTY [120 ea]; DOOR ERECTOR SK [480 h] | 508,227 | 48 | REM | 1BP4IFGF48 | DUKHCON1BP4ARGF3065 | DUKHCONP1BZ4ARGF3065 | DH | CON | 1B | Z4 | FIN | IF | GF | B04 | B04-D05 | RES-1B |  |
| DUKHCONP1BZ4ARGF3070 |  | Aluminum doors | 15d | 2014-05-25 | 2014-06-10 | DUKHCONP1BZ4ARGF3065 FF+5d, DUKHCONP1BZ4ARGF3065 SS+5d, DUKHCONP1BZ3ARGF3070 | 46d | 0d | LABOR- SUBCONTRACTOR [24 h]; ALUMINIUM DOOR QTY [16 ea]; DOOR ERECTOR SK [64 h] | 40,213 | 51 | REM | 1BP4IFGF51 | DUKHCON1BP4ARGF3070 | DUKHCONP1BZ4ARGF3070 | DH | CON | 1B | Z4 | FIN | IF | GF | B04 | B04-D06 | RES-1B |  |
| DUKHCONP1BZ4ARGF3075 |  | Carpentry & Joinery Works | 20d | 2014-05-31 | 2014-06-22 | DUKHCONP1BZ4ARGF3070 FF+7d, DUKHCONP1BZ4ARGF3070 SS+5d, DUKHCONP1BZ3ARGF3075 | 46d | 0d | LABOR- SUBCONTRACTOR [144 h]; CABINET QTY [40 ea]; COUNTER QTY [16 ea]; JOINERY WORK SK [320 h]; COUNTER SK [64 h] | 149,837 | 57 | REM | 1BP4IFGF57 | DUKHCON1BP4ARGF3075 | DUKHCONP1BZ4ARGF3075 | DH | CON | 1B | Z4 | FIN | IF | GF | B04 | B04-D05 | RES-1B |  |
| DUKHCONP1BZ4ARGF3080 |  | Aluminum windows | 20d | 2014-06-01 | 2014-06-23 | DUKHCONP1BZ4ARGF3070 FF+6d, DUKHCONP1BZ4ARGF3070 SS+6d, DUKHCONP1BZ3ARGF3080 | 56d | 5d | LABOR- SUBCONTRACTOR [70.5 h]; ALUMINIUM WINDOWS QTY [70 ea]; WINDOW ERECTOR SK [187 h] | 26,016 | 54 | REM | 1BP4IFGF54 | DUKHCON1BP4ARGF3080 | DUKHCONP1BZ4ARGF3080 | DH | CON | 1B | Z4 | FIN | IF | GF | B04 | B04-D06 | RES-1B |  |
| DUKHCONP1BZ4ARGF3085 |  | S.S.Balustrade | 20d | 2014-06-08 | 2014-06-30 | DUKHCONP1BZ4ARGF3050 FF+7d, DUKHCONP1BZ4ARGF3075 FF+7d, DUKHCONP1BZ4ARGF3050 SS+7d, DUKHCONP1BZ4ARGF3075 SS+7d | 51d | 5d | LABOR- SUBCONTRACTOR [63 h]; S.S.BALUSTRADE QTY [56 lm]; HANDRAIL ERECTOR SKILLED [112 h] | 80,976 | 63 | REM | 1BP4IFGF63 | DUKHCON1BP4ARGF3085 | DUKHCONP1BZ4ARGF3085 | DH | CON | 1B | Z4 | FIN | IF | GF | B04 | B04-D06 | RES-1B |  |
| DUKHCONP1BZ4ARGF3090 |  | Installation of Granite Counter Top | 15d | 2014-06-12 | 2014-06-29 | DUKHCONP1BZ4ARGF3075 SS+7d, DUKHCONP1BZ4ARGF3075 FF+6d | 46d | 0d | GRANITE MASON SK [176 h]; LABOR- SUBCONTRACTOR [66 h]; GRANITE COUNTER TOP QTY [44 ea] | 46,857 | 60 | REM | 1BP4IFGF60 | DUKHCON1BP4ARGF3090 | DUKHCONP1BZ4ARGF3090 | DH | CON | 1B | Z4 | FIN | IF | GF | B04 | B04-D10 | RES-1B |  |
| DUKHCONP1BZ4ARGF3095 |  | Final Painting | 25d | 2014-06-22 | 2014-07-20 | DUKHCONP1BZ4ARGF3090 SS+8d, DUKHCONP1BZ4ARGF3040 FF+13d, DUKHCONP1BZ4ARGF3060 FF+8d, DUKHCONP1BZ4ARGF3035 SS+13d, DUKHCONP1BZ4ARGF3030 FF+10d, DUKHCONP1BZ4ARGF3080 FF+8d, DUKHCONP1BZ4ARGF3085 FF+7d, DUKHCONP1BZ4ACGF4610 SS+10d, DUKHCONP1BZ3ARGF3095, DUKHCONP1BZ4ARGF3040 SS+13d, DUKHCONP1BZ4ARGF3060 SS+8d, DUKHCONP1BZ4ARGF3070 FF+5d, DUKHCONP1BZ4ARGF3080 SS+8d, DUKHCONP1BZ4ACGF4610 FF+10d, DUKHCONP1BZ4ARGF3030 SS+10d, DUKHCONP1BZ4ARGF3035 FF+13d, DUKHCONP1BZ4ARGF3070 SS+5d, DUKHCONP1BZ4ARGF3090 FF+8d, DUKHCONP1BZ4ARGF3085 SS+7d | 46d | 0d | LABOR- SUBCONTRACTOR [1619.25 h]; PAINT QTY [5396 Sqm]; PAINTERS SK [4317 h] | 65,933 | 66 | REM | 1BP4IFGF66 | DUKHCON1BP4ARGF3095 | DUKHCONP1BZ4ARGF3095 | DH | CON | 1B | Z4 | FIN | IF | GF | B04 | B04-D11 | RES-1B | PNT |

Notes:
- DUKHCONP1BZ4STGF2000: Expenses: P1B-Concrete Works 90734
- DUKHCONP1BZ4STGF2005: Expenses: P1B-Concrete Works 31968
- DUKHCONP1BZ4STGF2010: Expenses: P1B-Concrete Works 372787
- DUKHCONP1BZ4STGF2015: Expenses: P1B-Concrete Works 140126
- DUKHCONP1BZ4STFF2020: Expenses: P1B-Concrete Works 62208
- DUKHCONP1BZ4STFF2025: Expenses: P1B-Concrete Works 27979
- DUKHCONP1BZ4STFF2030: Expenses: P1B-Concrete Works 369641
- DUKHCONP1BZ4STFF2035: Expenses: P1B-Concrete Works 126130
- DUKHCONP1BZ4STRF2040: Expenses: P1B-Concrete Works 19058
- DUKHCONP1BZ4STRF2045: Expenses: P1B-Concrete Works 6660
- DUKHCONP1BZ4STRF2050: Expenses: P1B-Concrete Works 80128
- DUKHCONP1BZ4STRF2055: Expenses: P1B-Concrete Works 25904
- DUKHCONP1BZ4STRF2060: Expenses: P1B-Block work 23312
- DUKHCONP1BZ4STRF2065: Expenses: P1B-Concrete Works 12704
- DUKHCONP1BZ4ARGF3000: Expenses: P1B-Block work 195460
- DUKHCONP1BZ4ARGF3005: Expenses: P1B-Finishes 59763
- DUKHCONP1BZ4ARGF3010: Expenses: P1B-Finishes 65968
- DUKHCONP1BZ4ARGF3030: Expenses: P1B-Painting and Decorating 29940
- DUKHCONP1BZ4ARGF3015: Expenses: P1B-Finishes 13056
- DUKHCONP1BZ4ARGF3020: Expenses: P1B-Finishes 64075
- DUKHCONP1BZ4ARGF3025: Expenses: P1B-Finishes 81403
- DUKHCONP1BZ4ARGF3045: Expenses: P1B-Finishes 21568
- DUKHCONP1BZ4ARGF3035: Expenses: P1B-Finishes 77923
- DUKHCONP1BZ4ARGF3055: Expenses: P1B-Finishes 6637
- DUKHCONP1BZ4ARGF3040: Expenses: P1B-Finishes 23352
- DUKHCONP1BZ4ARGF3060: Expenses: P1B-Finishes 53328
- DUKHCONP1BZ4ARGF3050: Expenses: P1B-Finishes 89921
- DUKHCONP1BZ4ARGF3065: Expenses: P1B-Carpentry and Joinery 508227
- DUKHCONP1BZ4ARGF3070: Expenses: P1B-Metal work 40213
- DUKHCONP1BZ4ARGF3075: Expenses: P1B-Carpentry and Joinery 149837
- DUKHCONP1BZ4ARGF3080: Expenses: P1B-Metal work 26016
- DUKHCONP1BZ4ARGF3085: Expenses: P1B-Metal work 80976
- DUKHCONP1BZ4ARGF3090: Expenses: P1B-Finishes 46857
- DUKHCONP1BZ4ARGF3095: Expenses: P1B-Painting and Decorating 65933

| ID | WBS | Activity | Duration | Start | Finish | Predecessors | Total float | Free float | Resources | Cost | CODE | rem | P3 ACTID | P6 ID (old) | NP61D | PROJECT | PHASES | PACKAGE | PART | ELEMENTS | STEP | FLOORS | BILL NOS | BILL DIVISION | RES PACK | EXECUTER |
| --- | --- | --- | --- | --- | --- | --- | --- | --- | --- | --- | --- | --- | --- | --- | --- | --- | --- | --- | --- | --- | --- | --- | --- | --- | --- | --- |
|  | 15 | **FIRST FLOORS** |  | 2014-03-20 | 2014-09-24 |  |  |  |  |  |  |  |  |  |  |  |  |  |  |  |  |  |  |  |  |  |
| DUKHCONP1BZ4ARFF3300 |  | Block work | 25d | 2014-03-20 | 2014-04-17 | DUKHCONP1BZ4STFF2020 FF+21d, DUKHCONP1BZ4STFF2035 FF+21d, DUKHCONP1BZ4STFF2035 SS+21d, DUKHCONP1BZ3ARFF3300, DUKHCONP1BZ4STFF2020 SS+21d | -8d | 0d | BLOCK MASON SK [4698 h]; LABOR- SUBCONTRACTOR [2643 h]; BLOCK QTY [2349 Sqm] | 160,271 | 10 | REM | 1BP4IFFF10 | DUKHCON1BP4ARFF3300 | DUKHCONP1BZ4ARFF3300 | DH | CON | 1B | Z4 | FIN | IF | FF | B04 | B04-D03 | RES-1B |  |
| DUKHCONP1BZ4ARFF3305 |  | Plastering work | 25d | 2014-04-16 | 2014-05-14 | DUKHCONP1BZ4ARFF3300 FF+7d, DUKHCONP1BZ4ARFF3300 SS+7d, DUKHCONP1BZ3ARFF3305, DUKHCONP1BZ4PLFF4325 FF+8d, DUKHCONP1BZ4PLFF4325 SS+8d, DUKHCONP1BZ4ELFF4035 FF+5d, DUKHCONP1BZ4ELFF4035 SS+5d | -8d | 0d | PLASTER MASON SK [4812 h]; LABOR- SUBCONTRACTOR [2706.75 h]; PLASTER QTY [3007 Sqm] | 39,832 | 12 | REM | 1BP4IFFF12 | DUKHCON1BP4ARFF3305 | DUKHCONP1BZ4ARFF3305 | DH | CON | 1B | Z4 | FIN | IF | FF | B04 | B04-D10 | RES-1B |  |
| DUKHCONP1BZ4ARFF3310 |  | Flooring screed | 21d | 2014-04-24 | 2014-05-18 | DUKHCONP1BZ4ARFF3305 FF+3d, DUKHCONP1BZ4ARFF3305 SS+7d | 9d | 17d | LABOR- SUBCONTRACTOR [295.5 h]; FLOORING SCREED QTY [983 Sqm]; SCREED MASON SK [787 h] | 32,432 | 15 | REM | 1BP4IFFF15 | DUKHCON1BP4ARFF3310 | DUKHCONP1BZ4ARFF3310 | DH | CON | 1B | Z4 | FIN | IF | FF | B04 | B04-D10 | RES-1B |  |
| DUKHCONP1BZ4ARFF3330 |  | Paint First coat | 25d | 2014-05-03 | 2014-05-31 | DUKHCONP1BZ4ARFF3305 SS+14d, DUKHCONP1BZ4ARFF3305 FF+14d | 18d | 26d | LABOR- SUBCONTRACTOR [1433.25 h]; FIRSTCOAT PAINT QTY [4778.32 Sqm]; PAINTERS SK [3823 h] | 29,947 | 21 | REM | 1BP4IFFF21 | DUKHCON1BP4ARFF3330 | DUKHCONP1BZ4ARFF3330 | DH | CON | 1B | Z4 | FIN | IF | FF | B04 | B04-D11 | RES-1B | ENT |
| DUKHCONP1BZ4ARFF3315 |  | Wet area waterproofing | 15d | 2014-05-07 | 2014-05-24 | DUKHCONP1BZ4ARFF3305 FF+8d, DUKHCONP1BZ3ARFF3315, DUKHCONP1BZ4ARFF3305 SS+7d | -8d | 0d | LABOR- SUBCONTRACTOR [375 h]; WETAREA WATERPROOFING QTY [1248 Sqm]; WATERPROOFING SPECIALIST SK [999 h] | 41,024 | 18 | REM | 1BP4IFFF18 | DUKHCON1BP4ARFF3315 | DUKHCONP1BZ4ARFF3315 | DH | CON | 1B | Z4 | FIN | IF | FF | B04 | B04-D10 | RES-1B |  |
| DUKHCONP1BZ4ARFF3320 |  | Ceramic Wall Tiling | 25d | 2014-05-17 | 2014-06-14 | DUKHCONP1BZ4PLFF4330 FF+7d, DUKHCONP1BZ4PLFF4325 SS+4d, DUKHCONP1BZ4PLFF4325 FF+4d, DUKHCONP1BZ3ARFF3320, DUKHCONP1BZ4PLFF4330 SS+7d, DUKHCONP1BZ4ARFF3315 FF+7d, DUKHCONP1BZ4ARFF3315 SS+8d | -8d | 0d | TILE MASON SK [970 h]; LABOR- SUBCONTRACTOR [546 h]; CERAMIC WALL TILE QTY [485 Sqm] | 30,715 | 24 | REM | 1BP4IFFF24 | DUKHCON1BP4ARFF3320 | DUKHCONP1BZ4ARFF3320 | DH | CON | 1B | Z4 | FIN | IF | FF | B04 | B04-D10 | RES-1B |  |
| DUKHCONP1BZ4ARFF3325 |  | Porcelain Tile flooring | 25d | 2014-05-26 | 2014-06-23 | DUKHCONP1BZ4ARFF3320 SS+8d, DUKHCONP1BZ4ARFF3310 SS+10d, DUKHCONP1BZ4ARFF3320 FF+8d, DUKHCONP1BZ4ARFF3310 FF+10d, DUKHCONP1BZ3ARFF3325 | -8d | 0d | TILE MASON SK [858 h]; LABOR- SUBCONTRACTOR [483 h]; PORCELAIN FLOORING QTY [750 Sqm] | 62,083 | 27 | REM | 1BP4IFFF27 | DUKHCON1BP4ARFF3325 | DUKHCONP1BZ4ARFF3325 | DH | CON | 1B | Z4 | FIN | IF | FF | B04 | B04-D10 | RES-1B |  |
| DUKHCONP1BZ4ARFF3335 |  | Slate Tile Flooring & Skirting | 15d | 2014-06-12 | 2014-06-29 | DUKHCONP1BZ4ARFF3310 FF+13d, DUKHCONP1BZ4ARFF3310 SS+13d, DUKHCONP1BZ4ARFF3325 SS+13d, DUKHCONP1BZ4ARFF3325 FF+5d | 11d | 19d | TILE MASON SK [596 h]; LABOR- SUBCONTRACTOR [335.25 h]; SLATE TILE QTY [372 Sqm] | 74,280 | 30 | REM | 1BP4IFFF30 | DUKHCON1BP4ARFF3335 | DUKHCONP1BZ4ARFF3335 | DH | CON | 1B | Z4 | FIN | IF | FF | B04 | B04-D10 | RES-1B |  |
| DUKHCONP1BZ4ARFF3345 |  | Fixing of Suspension systems | 20d | 2014-06-16 | 2014-07-08 | DUKHCONP1BZ4ARFF3330 FF+7d, DUKHCONP1BZ4ELFF4045 SS+5d, DUKHCONP1BZ4ARFF3325 FF+13d, DUKHCONP1BZ4ARFF3325 SS+13d, DUKHCONP1BZ4ELFF4045 FF+5d, DUKHCONP1BZ4ARFF3330 SS+7d, DUKHCONP1BZ3ARFF3345 | -8d | 0d | LABOR- SUBCONTRACTOR [429 h]; SUSPENSION QTY [952 Sqm]; FALSE CEILING SKILLED SK [762 h] | 18,800 | 36 | REM | 1BP4IFFF36 | DUKHCON1BP4ARFF3345 | DUKHCONP1BZ4ARFF3345 | DH | CON | 1B | Z4 | FIN | IF | FF | B04 | B04-D10 | RES-1B | SUS |
| DUKHCONP1BZ4ARFF3350 |  | Granite - Stair case flooring & Skirting | 20d | 2014-06-16 | 2014-07-08 | DUKHCONP1BZ4ARFF3325 SS+13d, DUKHCONP1BZ4ARFF3325 FF+13d | 3d | 11d | GRANITE MASON SK [544 h]; LABOR- SUBCONTRACTOR [306 h]; GRANITE QTY [136 Sqm] | 89,923 | 33 | REM | 1BP4IFFF33 | DUKHCON1BP4ARFF3350 | DUKHCONP1BZ4ARFF3350 | DH | CON | 1B | Z4 | FIN | IF | FF | B04 | B04-D10 | RES-1B |  |
| DUKHCONP1BZ4ARFF3360 |  | Gypsum board false ceiling | 25d | 2014-06-28 | 2014-07-26 | DUKHCONP1BZ4ARFF3345 SS+10d, DUKHCONP1BZ3ARFF3360, DUKHCONP1BZ4ACFF4615 FF+7d, DUKHCONP1BZ4ARFF3345 FF+10d, DUKHCONP1BZ4ACFF4615 SS+7d | -8d | 0d | LABOR- SUBCONTRACTOR [429 h]; FALSE CEILING QTY [952 Sqm]; FALSE CEILING SKILLED SK [762 h] | 53,328 | 39 | REM | 1BP4IFFF39 | DUKHCON1BP4ARFF3360 | DUKHCONP1BZ4ARFF3360 | DH | CON | 1B | Z4 | FIN | IF | FF | B04 | B04-D10 | RES-1B | GYP |
| DUKHCONP1BZ4ARFF3365 |  | Wooden door | 15d | 2014-07-13 | 2014-07-29 | DUKHCONP1BZ4ARFF3335 FF+7d, DUKHCONP1BZ4ARFF3350 FF+7d, DUKHCONP1BZ4ARFF3350 SS+7d, DUKHCONP1BZ4ARFF3360 FF+3d, DUKHCONP1BZ3ARFF3365, DUKHCONP1BZ4ARFF3335 SS+7d, DUKHCONP1BZ4ARFF3360 SS+3d | -8d | 0d | LABOR- SUBCONTRACTOR [48 h]; WOODEN DOOR QTY [32 ea]; DOOR ERECTOR SK [128 h] | 110,928 | 42 | REM | 1BP4IFFF42 | DUKHCON1BP4ARFF3365 | DUKHCONP1BZ4ARFF3365 | DH | CON | 1B | Z4 | FIN | IF | FF | B04 | B04-D05 | RES-1B |  |
| DUKHCONP1BZ4ARFF3370 |  | Aluminum Door | 20d | 2014-07-21 | 2014-08-16 | DUKHCONP1BZ3ARFF3370, DUKHCONP1BZ4ARFF3365 SS+7d, DUKHCONP1BZ4ARFF3365 FF+5d | -8d | 0d | LABOR- SUBCONTRACTOR [36 h]; ALUMINIUM DOOR QTY [24 ea]; DOOR ERECTOR SK [96 h] | 62,165 | 45 | REM | 1BP4IFFF45 | DUKHCON1BP4ARFF3370 | DUKHCONP1BZ4ARFF3370 | DH | CON | 1B | Z4 | FIN | IF | FF | B04 | B04-D06 | RES-1B |  |
| DUKHCONP1BZ4ARFF3380 |  | Aluminum windows | 20d | 2014-07-28 | 2014-08-23 | DUKHCONP1BZ4ARFF3370 FF+6d, DUKHCONP1BZ4ARFF3370 SS+6d | 5d | 13d | LABOR- SUBCONTRACTOR [74.25 h]; ALUMINIUM WINDOWS QTY [74 ea]; WINDOW ERECTOR SK [198 h] | 43,931 | 48 | REM | 1BP4IFFF48 | DUKHCON1BP4ARFF3380 | DUKHCONP1BZ4ARFF3380 | DH | CON | 1B | Z4 | FIN | IF | FF | B04 | B04-D06 | RES-1B |  |
| DUKHCONP1BZ4ARFF3375 |  | Carpentry & Joinery Works | 25d | 2014-07-29 | 2014-08-30 | DUKHCONP1BZ4ARFF3370 FF+5d, DUKHCONP1BZ3ARFF3375, DUKHCONP1BZ4ARFF3370 SS+7d | -8d | 0d | LABOR- SUBCONTRACTOR [192 h]; CABINET QTY [16 ea]; COUNTER QTY [16 ea]; WARDROBE QTY [24 ea]; SHELVES QTY [16 ea]; JOINERY WORK SK [448 h]; COUNTER SK [64 h] | 195,293 | 51 | REM | 1BP4IFFF51 | DUKHCON1BP4ARFF3375 | DUKHCONP1BZ4ARFF3375 | DH | CON | 1B | Z4 | FIN | IF | FF | B04 | B04-D05 | RES-1B |  |
| DUKHCONP1BZ4ARFF3385 |  | Handrail & Balustrade | 20d | 2014-08-16 | 2014-09-07 | DUKHCONP1BZ4ARFF3350 FF+7d, DUKHCONP1BZ4ARFF3350 SS+7d, DUKHCONP1BZ4ARFF3375 SS+7d, DUKHCONP1BZ4ARFF3375 FF+7d | -8d | 0d | LABOR- SUBCONTRACTOR [63 h]; S.S.BALUSTRADE QTY [56 lm]; HANDRAIL ERECTOR SKILLED [112 h] | 60,733 | 57 | REM | 1BP4IFFF57 | DUKHCON1BP4ARFF3385 | DUKHCONP1BZ4ARFF3385 | DH | CON | 1B | Z4 | FIN | IF | FF | B04 | B04-D06 | RES-1B |  |
| DUKHCONP1BZ4ARFF3390 |  | Installation of Granite Counter Top | 20d | 2014-08-16 | 2014-09-07 | DUKHCONP1BZ4ARFF3375 SS+7d, DUKHCONP1BZ4ARFF3375 FF+7d | -6d | 2d | GRANITE MASON SK [80 h]; LABOR- SUBCONTRACTOR [30 h]; GRANITE COUNTER TOP QTY [20 ea] | 9,492 | 54 | REM | 1BP4IFFF54 | DUKHCON1BP4ARFF3390 | DUKHCONP1BZ4ARFF3390 | DH | CON | 1B | Z4 | FIN | IF | FF | B04 | B04-D10 | RES-1B |  |
| DUKHCONP1BZ4ARFF3395 |  | Final Painting | 25d | 2014-08-27 | 2014-09-24 | DUKHCONP1BZ4ARFF3385 FF+10d, DUKHCONP1BZ4ARFF3330 FF+10d, DUKHCONP1BZ4ARFF3360 SS+10d, DUKHCONP1BZ4ARFF3375 FF+8d, DUKHCONP1BZ4ARFF3375 SS+8d, DUKHCONP1BZ4ARFF3335 FF+8d, DUKHCONP1BZ4ARFF3385 SS+10d, DUKHCONP1BZ4ARFF3335 SS+8d, DUKHCONP1BZ4ARFF3380 FF+10d, DUKHCONP1BZ4ARFF3350 SS+8d, DUKHCONP1BZ4ARFF3365 FF+8d, DUKHCONP1BZ4ARFF3365 SS+8d, DUKHCONP1BZ4ARFF3390 FF+8d, DUKHCONP1BZ4ARFF3330 SS+10d, DUKHCONP1BZ4ARFF3350 FF+8d, DUKHCONP1BZ4ARFF3390 SS+8d, DUKHCONP1BZ4ACFF4625 FF+10d, DUKHCONP1BZ4ACFF4625 SS+10d, DUKHCONP1BZ3ARFF3395, DUKHCONP1BZ4ARFF3360 FF+10d, DUKHCONP1BZ4ARFF3380 SS+10d | -8d | 0d | LABOR- SUBCONTRACTOR [1433.25 h]; PAINT QTY [4778.32 Sqm]; PAINTERS SK [3823 h] | 54,971 | 60 | REM | 1BP4IFFF60 | DUKHCON1BP4ARFF3395 | DUKHCONP1BZ4ARFF3395 | DH | CON | 1B | Z4 | FIN | IF | FF | B04 | B04-D11 | RES-1B | PNT |
|  | 20 | **ROOF** |  | 2014-04-06 | 2014-06-19 |  |  |  |  |  |  |  |  |  |  |  |  |  |  |  |  |  |  |  |  |  |
| DUKHCONP1BZ4ARRF3600 |  | Block work | 20d | 2014-04-06 | 2014-04-28 | DUKHCONP1BZ4STRF2055 SS+21d, DUKHCONP1BZ3ARRF3600, DUKHCONP1BZ4STRF2055 FF+21d | 67d | 0d | BLOCK MASON SK [446 h]; LABOR- SUBCONTRACTOR [251.25 h]; BLOCK QTY [223 Sqm] | 16,095 | 10 | REM | 1BP4IFRF10 | DUKHCON1BP4ARRF3600 | DUKHCONP1BZ4ARRF3600 | DH | CON | 1B | Z4 | FIN | IF | RF | B04 | B04-D03 | RES-1B |  |
| DUKHCONP1BZ4ARRF3605 |  | Plastering work | 20d | 2014-04-17 | 2014-05-10 | DUKHCONP1BZ4ARRF3600 FF+10d, DUKHCONP1BZ4ARRF3600 SS+10d | 67d | 0d | PLASTER MASON SK [2453 h]; LABOR- SUBCONTRACTOR [1380 h]; PLASTER QTY [1533 Sqm] | 19,927 | 20 | REM | 1BP4IFRF20 | DUKHCON1BP4ARRF3605 | DUKHCONP1BZ4ARRF3605 | DH | CON | 1B | Z4 | FIN | IF | RF | B04 | B04-D10 | RES-1B |  |
| DUKHCONP1BZ4ARRF3610 |  | Flooring screed | 15d | 2014-05-05 | 2014-05-21 | DUKHCONP1BZ4ARRF3605 SS+10d, DUKHCONP1BZ4ARRF3605 FF+10d | 67d | 0d | SCREED MASON SK [112 h]; LABOR- SUBCONTRACTOR [42 h]; FLOORING SCREED QTY [140 Sqm] | 4,632 | 30 | REM | 1BP4IFRF30 | DUKHCON1BP4ARRF3610 | DUKHCONP1BZ4ARRF3610 | DH | CON | 1B | Z4 | FIN | IF | RF | B04 | B04-D10 | RES-1B |  |
| DUKHCONP1BZ4ARRF3695 |  | Painting -Storage area | 20d | 2014-05-17 | 2014-06-08 | DUKHCONP1BZ4ARRF3610 SS+10d, DUKHCONP1BZ4ARRF3610 FF+10d | 67d | 0d | LABOR- SUBCONTRACTOR [456 h]; PAINT QTY [1472 Sqm]; PAINTERS SK [1184 h] | 7,908 | 40 |  | 1BP4IFRF40 | DUKHCON1BP4ARRF3695 | DUKHCONP1BZ4ARRF3695 | DH | CON | 1B | Z4 | FIN | IF | RF | B04 | B04-D11 | RES-1B |  |
| DUKHCONP1BZ4ARRF3620 |  | Epoxy Painting -Storage area | 15d | 2014-06-03 | 2014-06-19 | DUKHCONP1BZ4ARRF3695 SS+10d, DUKHCONP1BZ4ARRF3695 FF+10d | 67d | 0d | LABOR- SUBCONTRACTOR [13.5 h]; EPOXY QTY [64 Sqm]; EPOXY SK [35 h] | 4,560 | 50 | REM | 1BP4IFRF50 | DUKHCON1BP4ARRF3620 | DUKHCONP1BZ4ARRF3620 | DH | CON | 1B | Z4 | FIN | IF | RF | B04 | B04-D11 | RES-1B |  |

Notes:
- DUKHCONP1BZ4ARFF3300: Expenses: P1B-Block work 160271
- DUKHCONP1BZ4ARFF3305: Expenses: P1B-Finishes 39832
- DUKHCONP1BZ4ARFF3310: Expenses: P1B-Finishes 32432
- DUKHCONP1BZ4ARFF3330: Expenses: P1B-Painting and Decorating 29947
- DUKHCONP1BZ4ARFF3315: Expenses: P1B-Finishes 41024
- DUKHCONP1BZ4ARFF3320: Expenses: P1B-Finishes 30715
- DUKHCONP1BZ4ARFF3325: Expenses: P1B-Finishes 62083
- DUKHCONP1BZ4ARFF3335: Expenses: P1B-Finishes 74280
- DUKHCONP1BZ4ARFF3345: Expenses: P1B-Finishes 18800
- DUKHCONP1BZ4ARFF3350: Expenses: P1B-Finishes 89923
- DUKHCONP1BZ4ARFF3360: Expenses: P1B-Finishes 53328
- DUKHCONP1BZ4ARFF3365: Expenses: P1B-Carpentry and Joinery 110928
- DUKHCONP1BZ4ARFF3370: Expenses: P1B-Metal work 62165
- DUKHCONP1BZ4ARFF3380: Expenses: P1B-Metal work 43931
- DUKHCONP1BZ4ARFF3375: Expenses: P1B-Carpentry and Joinery 195293
- DUKHCONP1BZ4ARFF3385: Expenses: P1B-Metal work 60733
- DUKHCONP1BZ4ARFF3390: Expenses: P1B-Finishes 9492
- DUKHCONP1BZ4ARFF3395: Expenses: P1B-Painting and Decorating 54971
- DUKHCONP1BZ4ARRF3600: Expenses: P1B-Block work 16095
- DUKHCONP1BZ4ARRF3605: Expenses: P1B-Finishes 19927
- DUKHCONP1BZ4ARRF3610: Expenses: P1B-Finishes 4632
- DUKHCONP1BZ4ARRF3695: Expenses: P1B-Painting and Decorating 7908
- DUKHCONP1BZ4ARRF3620: Expenses: P1B-Painting and Decorating 4560

| ID | WBS | Activity | Duration | Start | Finish | Predecessors | Total float | Free float | Resources | Cost | CODE | rem | P3 ACTID | P6 ID (old) | NP61D | PROJECT | PHASES | PACKAGE | PART | ELEMENTS | STEP | FLOORS | BILL NOS | BILL DIVISION | RES PACK |
| --- | --- | --- | --- | --- | --- | --- | --- | --- | --- | --- | --- | --- | --- | --- | --- | --- | --- | --- | --- | --- | --- | --- | --- | --- | --- |
|  | 15 | **EXTERNAL FINISHES** |  | 2014-04-16 | 2014-06-28 |  |  |  |  |  |  |  |  |  |  |  |  |  |  |  |  |  |  |  |  |
|  | 10 | **ROOF** |  | 2014-04-16 | 2014-06-25 |  |  |  |  |  |  |  |  |  |  |  |  |  |  |  |  |  |  |  |  |
| DUKHCONP1BZ4ARRF3630 |  | Leveling Screed for Waterproofing | 25d | 2014-04-16 | 2014-05-14 | DUKHCONP1BZ3ARRF3630, DUKHCONP1BZ4STRF2065 SS+10d, DUKHCONP1BZ4STRF2060 FF+10d, DUKHCONP1BZ4STRF2060 SS+10d, DUKHCONP1BZ4STRF2065 FF+10d | 67d | 0d | SCREED MASON SK [455 h]; LABOR- SUBCONTRACTOR [256.5 h]; ROOF WP SCREED QTY [1136 Sqm] | 48,872 | 10 | REM | 1BP4EFRF10 | DUKHCON1BP4ARRF3630 | DUKHCONP1BZ4ARRF3630 | DH | CON | 1B | Z4 | FIN | EF | RF | B04 | B04-D04 | RES-1B |
| DUKHCONP1BZ4ARRF3635 |  | Laying of Waterproofing Membrane | 25d | 2014-04-20 | 2014-05-18 | DUKHCONP1BZ4ARRF3630 FF+3d, DUKHCONP1BZ4ARRF3630 SS+3d | 67d | 0d | LABOR- SUBCONTRACTOR [269.25 h]; ROOF WP MEMBRANE QTY [1344 Sqm]; WATERPROOFING SPECIALIST SK [717 h] | 35,274 | 15 | REM | 1BP4EFRF15 | DUKHCON1BP4ARRF3635 | DUKHCONP1BZ4ARRF3635 | DH | CON | 1B | Z4 | FIN | EF | RF | B04 | B04-D04 | RES-1B |
| DUKHCONP1BZ4ARRF3640 |  | Installation of Insulation & Protection | 25d | 2014-04-24 | 2014-05-22 | DUKHCONP1BZ4ARRF3635 FF+4d, DUKHCONP1BZ4ARRF3635 SS+4d | 67d | 0d | LABOR- SUBCONTRACTOR [341.25 h]; ROOF WP INSULATION QTY [2272 Sqm]; WATERPROOFING SPECIALIST SK [909 h] | 42,832 | 20 | REM | 1BP4EFRF20 | DUKHCON1BP4ARRF3640 | DUKHCONP1BZ4ARRF3640 | DH | CON | 1B | Z4 | FIN | EF | RF | B04 | B04-D04 | RES-1B |
| DUKHCONP1BZ4ARRF3645 |  | Lime Stone Chips & Paving slab Installation | 25d | 2014-04-29 | 2014-05-27 | DUKHCONP1BZ4ARRF3640 SS+4d, DUKHCONP1BZ4ARRF3640 FF+4d | 67d | 0d | TILE MASON SK [26 h]; LABOR- SUBCONTRACTOR [171 h]; LIME STONE QTY [64 Sqm]; PRECAST PAVING SLAB QTY [1072 Sqm]; PRE CAST CONCRETE SK [429 h] | 77,648 | 25 | REM | 1BP4EFRF25 | DUKHCON1BP4ARRF3645 | DUKHCONP1BZ4ARRF3645 | DH | CON | 1B | Z4 | FIN | EF | RF | B04 | B04-D04 | RES-1B |
| DUKHCONP1BZ4ARRF3650 |  | Install. of Gal. Frame & Aluminum Slat Screen | 25d | 2014-05-07 | 2014-06-04 | DUKHCONP1BZ4ARRF3645 FF+7d, DUKHCONP1BZ4ARRF3645 SS+7d | 67d | 0d | LABOR- SUBCONTRACTOR [368.25 h]; ALUMINIUM SCREEN QTY [184 Sqm]; DOOR ERECTOR SK [491 h] | 52,035 | 35 | REM | 1BP4EFRF35 | DUKHCON1BP4ARRF3650 | DUKHCONP1BZ4ARRF3650 | DH | CON | 1B | Z4 | FIN | EF | RF | B04 | B04-D06 | RES-1B |
| DUKHCONP1BZ4ARRF3655 |  | Installation of Pumps Protection cabinets | 20d | 2014-05-22 | 2014-06-14 | DUKHCONP1BZ4ARRF3650 SS+8d, DUKHCONP1BZ4ARRF3650 FF+8d, DUKHCONP1BZ3ARRF3655, DUKHCONP1BZ4ARRF3645 FF+7d, DUKHCONP1BZ4ARRF3645 SS+7d | 67d | 0d | LABOR- SUBCONTRACTOR [168 h]; CABINET QTY [56 ea]; JOINERY WORK SK [448 h] | 26,600 | 30 | REM | 1BP4EFRF30 | DUKHCON1BP4ARRF3655 | DUKHCONP1BZ4ARRF3655 | DH | CON | 1B | Z4 | FIN | EF | RF | B04 | B04-D04 | RES-1B |
| DUKHCONP1BZ4ARRF3660 |  | Installation of Access Ladder | 15d | 2014-06-09 | 2014-06-25 | DUKHCONP1BZ4ARRF3655 SS+10d, DUKHCONP1BZ4ARRF3620 SS+5d, DUKHCONP1BZ4ARRF3655 FF+10d | 67d | 75d | LABOR- SUBCONTRACTOR [96 h]; LADDER QTY [32 ea]; LADDER ERECTOR SK [256 h] | 35,112 | 40 | REM | 1BP4EFRF40 | DUKHCON1BP4ARRF3660 | DUKHCONP1BZ4ARRF3660 | DH | CON | 1B | Z4 | FIN | EF | RF | B04 | B04-D06 | RES-1B |
|  | 15 | **ELEVATION** |  | 2014-05-01 | 2014-06-28 |  |  |  |  |  |  |  |  |  |  |  |  |  |  |  |  |  |  |  |  |
| DUKHCONP1BZ4AREL3665 |  | External Plastering | 25d | 2014-05-01 | 2014-05-29 | DUKHCONP1BZ4STRF2065 SS+7d, DUKHCONP1BZ4ARRF3605 SS+7d, DUKHCONP1BZ4STRF2065 FF+7d, DUKHCONP1BZ3AREL3665, DUKHCONP1BZ4ARFF3305 SS+7d, DUKHCONP1BZ4ARFF3305 FF+7d | 65d | 0d | PLASTER MASON SK [7808 h]; LABOR- SUBCONTRACTOR [4392 h]; EXTERNAL PLASTER QTY [3904 Sqm] | 151,217 | 10 | REM | 1BP4EFEL10 | DUKHCON1BP4AREL3665 | DUKHCONP1BZ4AREL3665 | DH | CON | 1B | Z4 | FIN | EF | EL | B04 | B04-D10 | RES-1B |
| DUKHCONP1BZ4AREL3670 |  | External stone cladding works | 20d | 2014-05-19 | 2014-06-10 | DUKHCONP1BZ4AREL3665 SS+10d, DUKHCONP1BZ4AREL3665 FF+10d, DUKHCONP1BZ3AREL3670 | 65d | 0d | TILE MASON SK [672 h]; LABOR- SUBCONTRACTOR [264 h]; STONE CLADDING QTY [336 Sqm] | 5,326 | 15 |  | 1BP4EFEL15 | DUKHCON1BP4AREL3670 | DUKHCONP1BZ4AREL3670 | DH | CON | 1B | Z4 | FIN | EF | EL | B04 | B04-D10 | RES-1B |
| DUKHCONP1BZ4AREL3675 |  | GRC works | 20d | 2014-05-25 | 2014-06-16 | DUKHCONP1BZ4AREL3670 SS+5d, DUKHCONP1BZ3AREL3675, DUKHCONP1BZ4AREL3665 SS+10d, DUKHCONP1BZ4AREL3665 FF+10d | 65d | 0d | LABOR- SUBCONTRACTOR [150 h]; GRC SK [400 h] | 12,320 | 15 |  | 1BP4EFEL18 | DUKHCON1BP4AREL3675 | DUKHCONP1BZ4AREL3675 | DH | CON | 1B | Z4 | FIN | EF | EL | B04 | B04-D10 | RES-1B |
| DUKHCONP1BZ4AREL3680 |  | External Painting | 20d | 2014-06-05 | 2014-06-28 | DUKHCONP1BZ4AREL3670 FF+10d, DUKHCONP1BZ4AREL3675 SS+10d, DUKHCONP1BZ4ARRF3695 SS+4d, DUKHCONP1BZ4ARRF3695 FF+4d, DUKHCONP1BZ3AREL3680, DUKHCONP1BZ4AREL3670 SS+10d, DUKHCONP1BZ4AREL3675 FF+10d | 65d | 5d | LABOR- SUBCONTRACTOR [1152 h]; PAINT QTY [3840 Sqm]; PAINTERS SK [3072 h] | 114,294 | 20 |  | 1BP4EFEL20 | DUKHCON1BP4AREL3680 | DUKHCONP1BZ4AREL3680 | DH | CON | 1B | Z4 | FIN | EF | EL | B04 | B04-D11 | RES-1B |
|  | 20 | **MEP WORKS** |  | 2013-11-07 | 2014-09-24 |  |  |  |  |  |  |  |  |  |  |  |  |  |  |  |  |  |  |  |  |
|  | 10 | **ELECTRICAL WORKS** |  | 2014-02-13 | 2014-09-24 |  |  |  |  |  |  |  |  |  |  |  |  |  |  |  |  |  |  |  |  |
|  | 10 | **GROUND FLOOR** |  | 2014-02-13 | 2014-06-22 |  |  |  |  |  |  |  |  |  |  |  |  |  |  |  |  |  |  |  |  |
| DUKHCONP1BZ4ELGF4000 |  | Fixing of wall conduits & switch socket boxes | 25d | 2014-02-13 | 2014-03-13 | DUKHCONP1BZ4ARGF3000 SS+5d, DUKHCONP1BZ4ARGF3000 FF+5d | 47d | 0d | LABOR- SUBCONTRACTOR [384 h]; ELECTRICIANS SK [2195.2 h]; SOCKET BOXES QTY [1520 ea]; CODUITS QTY [448 lm] | 34,322 | 10 |  | 1BP4EWGF10 | DUKHCON1BP4ELGF4000 | DUKHCONP1BZ4ELGF4000 | DH | CON | 1B | Z4 | MEP | EW | GF | B04 | B04-D09 | RES-1B |
| DUKHCONP1BZ4ELGF4005 |  | Cable tray & trunking installation | 20d | 2014-02-25 | 2014-03-19 | DUKHCONP1BZ4ELGF4000 SS+5d, DUKHCONP1BZ4ELGF4000 FF+5d, DUKHCONP1BZ3ELGF4005 | 65d | 0d | CABLE TRAY QTY [448 lm]; LABOR- SUBCONTRACTOR [672 h]; ELECTRICIANS SK [2508.8 h] | 7,536 | 15 |  | 1BP4EWGF15 | DUKHCON1BP4ELGF4005 | DUKHCONP1BZ4ELGF4005 | DH | CON | 1B | Z4 | MEP | EW | GF | B04 | B04-D09 | RES-1B |
| DUKHCONP1BZ4ELGF4010 |  | Installation of wiring & Main Cabling | 25d | 2014-03-05 | 2014-04-02 | DUKHCONP1BZ4ELGF4005 SS+7d, DUKHCONP1BZ4ELGF4005 FF+7d | 65d | 27d | LABOR- SUBCONTRACTOR [144 h]; ELECTRICIANS SK [492.8 h]; CABLE QTY [448 lm] | 117,914 | 20 |  | 1BP4EWGF20 | DUKHCON1BP4ELGF4010 | DUKHCONP1BZ4ELGF4010 | DH | CON | 1B | Z4 | MEP | EW | GF | B04 | B04-D09 | RES-1B |
| DUKHCONP1BZ4ELGF4015 |  | Install. of CAMS & Fire Fighting Accessories | 25d | 2014-05-07 | 2014-06-04 | DUKHCONP1BZ4ARGF3055 SS+7d, DUKHCONP1BZ4ARGF3060 SS+7d, DUKHCONP1BZ4ARGF3055 FF+7d, DUKHCONP1BZ4ARGF3060 FF+7d, DUKHCONP1BZ3ELGF4015 | 60d | 0d | LABOR- SUBCONTRACTOR [1632 h]; MECHANICALS SK [2937.6 h]; SMOKE DETECTOR POINTS QTY [400 ea]; FIRE EXTINGUISHER QTY [144 ea] | 85,204 | 35 |  | 1BP4EWGF35 | DUKHCON1BP4ELGF4015 | DUKHCONP1BZ4ELGF4015 | DH | CON | 1B | Z4 | MEP | EW | GF | B04 | B04-D09 | RES-1B |
| DUKHCONP1BZ4ELGF4020 |  | Installation of DBS,MCCB Accessories. | 20d | 2014-05-13 | 2014-06-04 | DUKHCONP1BZ4ARGF3055 SS+7d, DUKHCONP1BZ4ELGF4010 FF+5d, DUKHCONP1BZ4ELGF4010 SS+5d, DUKHCONP1BZ4ARGF3055 FF+7d, DUKHCONP1BZ4ARGF3060 FF+7d, DUKHCONP1BZ4ARGF3060 SS+7d | 38d | 0d | LABOR- SUBCONTRACTOR [96 h]; ELECTRICIANS SK [358.4 h]; MCCB QTY [160 ea]; DB QTY [16 ea] | 16,497 | 25 |  | 1BP4EWGF25 | DUKHCON1BP4ELGF4020 | DUKHCONP1BZ4ELGF4020 | DH | CON | 1B | Z4 | MEP | EW | GF | B04 | B04-D09 | RES-1B |
| DUKHCONP1BZ4ELGF4025 |  | Installation of Lighting fixtures & Accessories | 25d | 2014-05-25 | 2014-06-22 | DUKHCONP1BZ4ARGF3060 SS+10d, DUKHCONP1BZ4ELGF4020 SS+10d, DUKHCONP1BZ3ELGF4025, DUKHCONP1BZ4ARGF3060 FF+10d, DUKHCONP1BZ4ARGF3055 FF+10d, DUKHCONP1BZ4ARGF3055 SS+10d, DUKHCONP1BZ4ELGF4020 FF+10d | 40d | 0d | LABOR- SUBCONTRACTOR [1152 h]; ELECTRICIANS SK [2150.4 h]; LIGHTS QTY [960 ea] | 176,155 | 30 |  | 1BP4EWGF30 | DUKHCON1BP4ELGF4025 | DUKHCONP1BZ4ELGF4025 | DH | CON | 1B | Z4 | MEP | EW | GF | B04 | B04-D09 | RES-1B |
| DUKHCONP1BZ4ELGF4030 |  | Installation of Telephone System | 20d | 2014-05-25 | 2014-06-16 | DUKHCONP1BZ4ELGF4020 FF+10d, DUKHCONP1BZ4ARGF3060 SS+5d, DUKHCONP1BZ4ARGF3060 FF+5d, DUKHCONP1BZ4ELGF4020 SS+10d, DUKHCONP1BZ3ELGF4030 | 38d | 5d | LABOR- SUBCONTRACTOR [168 h]; ELECTRICIANS SK [1254.4 h]; TELEPHONE SOCKETS QTY [112 ea] | 38,706 | 40 |  | 1BP4EWGF40 | DUKHCON1BP4ELGF4030 | DUKHCONP1BZ4ELGF4030 | DH | CON | 1B | Z4 | MEP | EW | GF | B04 | B04-D09 | RES-1B |

Notes:
- DUKHCONP1BZ4ARRF3630: Expenses: P1B-Roofing 48872
- DUKHCONP1BZ4ARRF3635: Expenses: P1B-Roofing 35274
- DUKHCONP1BZ4ARRF3640: Expenses: P1B-Roofing 42832
- DUKHCONP1BZ4ARRF3645: Expenses: P1B-Roofing 77648
- DUKHCONP1BZ4ARRF3650: Expenses: P1B-Metal work 52035
- DUKHCONP1BZ4ARRF3655: Expenses: P1B-Roofing 26600
- DUKHCONP1BZ4ARRF3660: Expenses: P1B-Metal work 35112
- DUKHCONP1BZ4AREL3665: Expenses: P1B-Finishes 151217
- DUKHCONP1BZ4AREL3670: Expenses: P1B-Finishes 5326
- DUKHCONP1BZ4AREL3675: Expenses: P1B-Finishes 12320
- DUKHCONP1BZ4AREL3680: Expenses: P1B-Painting and Decorating 114294
- DUKHCONP1BZ4ELGF4000: Expenses: P1B-Electrical Installations 34322
- DUKHCONP1BZ4ELGF4005: Expenses: P1B-Electrical Installations 7536
- DUKHCONP1BZ4ELGF4010: Expenses: P1B-Electrical Installations 117914
- DUKHCONP1BZ4ELGF4015: Expenses: P1B-Electrical Installations 85204
- DUKHCONP1BZ4ELGF4020: Expenses: P1B-Electrical Installations 16497
- DUKHCONP1BZ4ELGF4025: Expenses: P1B-Electrical Installations 176155
- DUKHCONP1BZ4ELGF4030: Expenses: P1B-Electrical Installations 38706

| ID | WBS | Activity | Duration | Start | Finish | Predecessors | Total float | Free float | Resources | Cost | CODE | P3 ACTID | P6 ID (old) | NP61D | PROJECT | PHASES | PACKAGE | PART | ELEMENTS | STEP | FLOORS | BILL NOS | BILL DIVISION | RES PACK |
| --- | --- | --- | --- | --- | --- | --- | --- | --- | --- | --- | --- | --- | --- | --- | --- | --- | --- | --- | --- | --- | --- | --- | --- | --- |
|  | 15 | **FIRST FLOORS** |  | 2014-03-26 | 2014-08-26 |  |  |  |  |  |  |  |  |  |  |  |  |  |  |  |  |  |  |  |
| DUKHCONP1BZ4ELFF4035 |  | Fixing of wall conduits & switch socket boxes | 25d | 2014-03-26 | 2014-04-23 | DUKHCONP1BZ4ARFF3300 SS+5d, DUKHCONP1BZ4ARFF3300 FF+5d | 5d | 0d | LABOR- SUBCONTRACTOR [384 h]; ELECTRICIANS SK [2195.2 h]; SOCKET BOXES QTY [1520 ea]; CODUITS QTY [448 lm] | 33,912 | 10 | 1BP4EWFF10 | DUKHCON1BP4ELFF4035 | DUKHCONP1BZ4ELFF4035 | DH | CON | 1B | Z4 | MEP | EW | FF | B04 | B04-D09 | RES-1B |
| DUKHCONP1BZ4ELFF4040 |  | Cable tray & trunking installation | 20d | 2014-04-07 | 2014-04-29 | DUKHCONP1BZ4ELFF4035 FF+5d, DUKHCONP1BZ4ELFF4035 SS+5d | 35d | 0d | LABOR- SUBCONTRACTOR [672 h]; ELECTRICIANS SK [2508.8 h]; CABLE TRAY QTY [448 lm] | 7,520 | 15 | 1BP4EWFF15 | DUKHCON1BP4ELFF4040 | DUKHCONP1BZ4ELFF4040 | DH | CON | 1B | Z4 | MEP | EW | FF | B04 | B04-D09 | RES-1B |
| DUKHCONP1BZ4ELFF4045 |  | Installation of wiring & Main Cabling | 25d | 2014-04-15 | 2014-05-13 | DUKHCONP1BZ3ELFF4045, DUKHCONP1BZ4ELFF4040 FF+7d, DUKHCONP1BZ4ELFF4040 SS+7d | 35d | 0d | LABOR- SUBCONTRACTOR [144 h]; ELECTRICIANS SK [492.8 h]; CABLE QTY [448 lm] | 116,330 | 20 | 1BP4EWFF20 | DUKHCON1BP4ELFF4045 | DUKHCONP1BZ4ELFF4045 | DH | CON | 1B | Z4 | MEP | EW | FF | B04 | B04-D09 | RES-1B |
| DUKHCONP1BZ4ELFF4050 |  | Installation of Telephone System | 25d | 2014-07-03 | 2014-07-31 | DUKHCONP1BZ4ELGF4030 SS+10d, DUKHCONP1BZ4ELGF4030 FF+10d, DUKHCONP1BZ4MSEX5010, DUKHCONP1BZ4ARFF3360 SS+5d, DUKHCONP1BZ4ARFF3360 FF+5d | 14d | 22d | LABOR- SUBCONTRACTOR [168 h]; ELECTRICIANS SK [1254.4 h]; TELEPHONE SOCKETS QTY [112 ea] | 37,070 | 40 | 1BP4EWFF40 | DUKHCON1BP4ELFF4050 | DUKHCONP1BZ4ELFF4050 | DH | CON | 1B | Z4 | MEP | EW | FF | B04 | B04-D09 | RES-1B |
| DUKHCONP1BZ4ELFF4055 |  | Install. of CAMS & Fire Fighting Accessories | 25d | 2014-07-06 | 2014-08-06 | DUKHCONP1BZ4ARFF3360 FF+7d, DUKHCONP1BZ4ELGF4015 FF+5d, DUKHCONP1BZ3ELFF4055, DUKHCONP1BZ4ELGF4015 SS+5d, DUKHCONP1BZ4ARFF3360 SS+7d | 34d | 0d | LABOR- SUBCONTRACTOR [1632 h]; MECHANICALS SK [2937.6 h]; SMOKE DETECTOR POINTS QTY [400 ea]; FIRE EXTINGUISHER QTY [144 ea] | 85,180 | 35 | 1BP4EWFF35 | DUKHCON1BP4ELFF4055 | DUKHCONP1BZ4ELFF4055 | DH | CON | 1B | Z4 | MEP | EW | FF | B04 | B04-D09 | RES-1B |
| DUKHCONP1BZ4ELFF4060 |  | Installation of DBS,MCCB Accessories. | 20d | 2014-07-13 | 2014-08-07 | DUKHCONP1BZ3ELFF4060, DUKHCONP1BZ4ARFF3360 SS+8d, DUKHCONP1BZ4ARFF3360 FF+8d, DUKHCONP1BZ4ELFF4045 FF+5d, DUKHCONP1BZ4ELFF4045 SS+5d | -8d | 0d | LABOR- SUBCONTRACTOR [96 h]; ELECTRICIANS SK [358.4 h]; MCCB QTY [160 ea]; DB QTY [16 ea] | 16,488 | 25 | 1BP4EWFF25 | DUKHCON1BP4ELFF4060 | DUKHCONP1BZ4ELFF4060 | DH | CON | 1B | Z4 | MEP | EW | FF | B04 | B04-D09 | RES-1B |
| DUKHCONP1BZ4ELFF4065 |  | Installation of Lighting fixtures & Accessories | 25d | 2014-07-26 | 2014-08-26 | DUKHCONP1BZ4ELGF4025 SS+5d, DUKHCONP1BZ4ARFF3360 FF+10d, DUKHCONP1BZ4ELFF4060 FF+11d, DUKHCONP1BZ3ELFF4065, DUKHCONP1BZ4ELFF4060 SS+11d, DUKHCONP1BZ4ARFF3360 SS+10d, DUKHCONP1BZ4ELGF4025 FF+5d | -8d | 0d | LABOR- SUBCONTRACTOR [1152 h]; ELECTRICIANS SK [2150.4 h]; LIGHTS QTY [960 ea] | 176,151 | 30 | 1BP4EWFF30 | DUKHCON1BP4ELFF4065 | DUKHCONP1BZ4ELFF4065 | DH | CON | 1B | Z4 | MEP | EW | FF | B04 | B04-D09 | RES-1B |
|  | 20 | **ROOF** |  | 2014-08-18 | 2014-09-24 |  |  |  |  |  |  |  |  |  |  |  |  |  |  |  |  |  |  |  |
| DUKHCONP1BZ4ELRF4070 |  | Installation of Isolator | 18d | 2014-08-18 | 2014-09-07 | DUKHCONP1BZ4ARRF3645 FF+7d, DUKHCONP1BZ4ELFF4065 FF+10d, DUKHCONP1BZ4ELFF4065 SS+10d, DUKHCONP1BZ4ELFF4050 SS+5d, DUKHCONP1BZ4ELFF4045 SS+10d, DUKHCONP1BZ4ELFF4050 FF+7d, DUKHCONP1BZ4ARRF3645 SS+7d, DUKHCONP1BZ4ELFF4045 FF+10d | -8d | 0d | LABOR- SUBCONTRACTOR [288 h]; ELECTRICIANS SK [537.6 h]; ISOLATOR QTY [96 ea] | 46,262 | 10 | 1BP4EWRF10 | DUKHCON1BP4ELRF4070 | DUKHCONP1BZ4ELRF4070 | DH | CON | 1B | Z4 | MEP | EW | RF | B04 | B04-D09 | RES-1B |
| DUKHCONP1BZ4ELRF4075 |  | Installation of TV Dish Antenna | 23d | 2014-08-30 | 2014-09-24 | DUKHCONP1BZ4ELRF4070 SS+10d, DUKHCONP1BZ4ELRF4070 FF+10d | -8d | 0d | LABOR- SUBCONTRACTOR [576 h]; ELECTRICIANS SK [1254.4 h]; CONTROL BOX QTY [32 ea]; SWITCHING BOX QTY [80 ea] | 32,745 | 15 | 1BP4EWRF15 | DUKHCON1BP4ELRF4075 | DUKHCONP1BZ4ELRF4075 | DH | CON | 1B | Z4 | MEP | EW | RF | B04 | B04-D09 | RES-1B |
|  | 15 | **PLUMBING, DRAINAGE & FIRE FIGHTING WORKS** |  | 2013-11-07 | 2014-09-06 |  |  |  |  |  |  |  |  |  |  |  |  |  |  |  |  |  |  |  |
|  | 10 | **GROUND FLOOR** |  | 2013-11-07 | 2014-06-22 |  |  |  |  |  |  |  |  |  |  |  |  |  |  |  |  |  |  |  |
| DUKHCONP1BZ4PLUG4300 |  | Drainage / Storm Pipes in Grade Slab | 20d | 2013-11-07 | 2013-11-30 | DUKHCONP1BZ4STUG1040 FF+10d, DUKHCONP1BZ4STUG1040 SS+10d | 0d |  | LABOR- SUBCONTRACTOR [24 h]; MECHANICALS SK [86.4 h]; DRAINAGE PIPES QTY [144 lm] | 29,221 | 10 | 1BP4PLUG10 | DUKHCON1BP4PLUG4300 | DUKHCONP1BZ4PLUG4300 | DH | CON | 1B | Z4 | ST | SB | UG | B04 | B04-D07 | RES-1B |
| DUKHCONP1BZ4PLGF4305 |  | Installation of Plumbing pipes & testing | 18d | 2014-02-24 | 2014-03-16 | DUKHCONP1BZ4ARGF3000 FF+7d, DUKHCONP1BZ3PLGF4305, DUKHCONP1BZ4ARGF3000 SS+7d | 38d | 0d | LABOR- SUBCONTRACTOR [192 h]; MECHANICALS SK [691.2 h]; PLUMB PIPES QTY [624 lm] | 69,653 | 10 | 1BP4PLGF10 | DUKHCON1BP4PLGF4305 | DUKHCONP1BZ4PLGF4305 | DH | CON | 1B | Z4 | MEP | PL | GF | B04 | B04-D07 | RES-1B |
| DUKHCONP1BZ4PLGF4310 |  | Installation of Drainage pipes &testing | 18d | 2014-02-24 | 2014-03-16 | DUKHCONP1BZ4PLGF4305 FF, DUKHCONP1BZ4ARGF3000 FF+7d, DUKHCONP1BZ4ARGF3000 SS+7d, DUKHCONP1BZ4PLGF4305 SS | 41d | 9d | LABOR- SUBCONTRACTOR [72 h]; MECHANICALS SK [259.2 h]; DRAINAGE PIPES QTY [464 lm] | 5,128 | 15 | 1BP4PLGF15 | DUKHCON1BP4PLGF4310 | DUKHCONP1BZ4PLGF4310 | DH | CON | 1B | Z4 | MEP | PL | GF | B04 | B04-D07 | RES-1B |
| DUKHCONP1BZ4PLGF4315 |  | Sanitary Fittings & Accessories | 20d | 2014-05-25 | 2014-06-16 | DUKHCONP1BZ4PLGF4310 FF+5d, DUKHCONP1BZ4ARGF3065 FF+5d, DUKHCONP1BZ4ARGF3065 SS+5d, DUKHCONP1BZ4PLGF4310 SS+5d, DUKHCONP1BZ3PLGF4315 | 70d | 0d | LABOR- SUBCONTRACTOR [72 h]; MECHANICALS SK [129.6 h]; SANITARY ACC QTY [120 ea] | 100,216 | 20 | 1BP4PLGF20 | DUKHCON1BP4PLGF4315 | DUKHCONP1BZ4PLGF4315 | DH | CON | 1B | Z4 | MEP | PL | GF | B04 | B04-D07 | RES-1B |
| DUKHCONP1BZ4PLGF4320 |  | Installation of Water Heater | 15d | 2014-06-05 | 2014-06-22 | DUKHCONP1BZ4PLGF4315 FF+5d, DUKHCONP1BZ3PLGF4320, DUKHCONP1BZ4ARGF3060 FF+5d, DUKHCONP1BZ4ARGF3060 SS+5d, DUKHCONP1BZ4PLGF4315 SS+5d | 70d | 10d | LABOR- SUBCONTRACTOR [72 h]; MECHANICALS SK [129.6 h]; WATER HEATER QTY [24 ea] | 12,460 | 25 | 1BP4PLGF25 | DUKHCON1BP4PLGF4320 | DUKHCONP1BZ4PLGF4320 | DH | CON | 1B | Z4 | MEP | PL | GF | B04 | B04-D07 | RES-1B |
|  | 15 | **FIRST FLOORS** |  | 2014-04-07 | 2014-08-19 |  |  |  |  |  |  |  |  |  |  |  |  |  |  |  |  |  |  |  |
| DUKHCONP1BZ4PLFF4325 |  | Installation of Plumbing pipes & testing | 18d | 2014-04-07 | 2014-04-27 | DUKHCONP1BZ4ARFF3300 SS+8d, DUKHCONP1BZ4ARFF3300 FF+8d | -8d | 0d | LABOR- SUBCONTRACTOR [192 h]; MECHANICALS SK [691.2 h]; PLUMB PIPES QTY [624 lm] | 67,368 | 10 | 1BP4PLFF10 | DUKHCON1BP4PLFF4325 | DUKHCONP1BZ4PLFF4325 | DH | CON | 1B | Z4 | MEP | PL | FF | B04 | B04-D07 | RES-1B |
| DUKHCONP1BZ4PLFF4330 |  | Installation of Drainage pipes & testing | 18d | 2014-04-07 | 2014-04-27 | DUKHCONP1BZ4ARFF3300 SS+7d, DUKHCONP1BZ4ARFF3300 FF+7d, DUKHCONP1BZ3PLFF4330, DUKHCONP1BZ4PLFF4325 FF, DUKHCONP1BZ4PLFF4325 SS | 19d | 7d | LABOR- SUBCONTRACTOR [72 h]; MECHANICALS SK [259.2 h]; DRAINAGE PIPES QTY [464 lm] | 4,400 | 15 | 1BP4PLFF15 | DUKHCON1BP4PLFF4330 | DUKHCONP1BZ4PLFF4330 | DH | CON | 1B | Z4 | MEP | PL | FF | B04 | B04-D07 | RES-1B |
| DUKHCONP1BZ4PLFF4335 |  | Sanitary Fittings & Accessories | 20d | 2014-07-19 | 2014-08-13 | DUKHCONP1BZ4PLFF4330 FF+5d, DUKHCONP1BZ4ARFF3365 SS+5d, DUKHCONP1BZ4PLFF4330 SS+5d, DUKHCONP1BZ4ARFF3365 FF+5d | 8d | 0d | LABOR- SUBCONTRACTOR [72 h]; MECHANICALS SK [129.6 h]; SANITARY ACC QTY [120 ea] | 104,000 | 20 | 1BP4PLFF20 | DUKHCON1BP4PLFF4335 | DUKHCONP1BZ4PLFF4335 | DH | CON | 1B | Z4 | MEP | PL | FF | B04 | B04-D07 | RES-1B |
| DUKHCONP1BZ4PLFF4340 |  | Installation of Water Heater | 15d | 2014-07-30 | 2014-08-19 | DUKHCONP1BZ4PLFF4335 SS+5d, DUKHCONP1BZ4PLFF4335 FF+5d, DUKHCONP1BZ3PLFF4340, DUKHCONP1BZ4ARFF3360 FF+5d, DUKHCONP1BZ4ARFF3360 SS+5d | 8d | 0d | WATER HEATER QTY [16 ea]; LABOR- SUBCONTRACTOR [48 h]; MECHANICALS SK [86.4 h] | 6,070 | 25 | 1BP4PLFF25 | DUKHCON1BP4PLFF4340 | DUKHCONP1BZ4PLFF4340 | DH | CON | 1B | Z4 | MEP | PL | FF | B04 | B04-D07 | RES-1B |
|  | 20 | **ROOF** |  | 2014-05-04 | 2014-09-06 |  |  |  |  |  |  |  |  |  |  |  |  |  |  |  |  |  |  |  |
| DUKHCONP1BZ4PLRF4345 |  | Installation of Plumbing pipes & fittings | 14d | 2014-05-04 | 2014-05-19 | DUKHCONP1BZ4ARRF3605 FF+8d, DUKHCONP1BZ4ARRF3605 SS+8d, DUKHCONP1BZ3PLRF4345 | 75d | 7d | LABOR- SUBCONTRACTOR [72 h]; MECHANICALS SK [216 h]; PLUMB PIPES QTY [192 lm] | 11,527 | 10 | 1BP4PLRF10 | DUKHCON1BP4PLRF4345 | DUKHCONP1BZ4PLRF4345 | DH | CON | 1B | Z4 | MEP | PL | RF | B04 | B04-D07 | RES-1B |
| DUKHCONP1BZ4PLRF4350 |  | Installation of Rain water Pipes | 15d | 2014-05-21 | 2014-06-07 | DUKHCONP1BZ4ARRF3645 SS+5d, DUKHCONP1BZ4PLFF4330 FF+5d, DUKHCONP1BZ4PLFF4330 SS+5d, DUKHCONP1BZ3PLRF4350, DUKHCONP1BZ4ARRF3645 FF+5d, DUKHCONP1BZ4AREL3665 SS+7d, DUKHCONP1BZ4PLRF4345 FF+8d, DUKHCONP1BZ4AREL3665 FF+7d, DUKHCONP1BZ4PLRF4345 SS+8d | 68d | 10d | DRAINAGE PIPES QTY [32 lm] | 95,272 | 15 | 1BP4PLRF15 | DUKHCON1BP4PLRF4350 | DUKHCONP1BZ4PLRF4350 | DH | CON | 1B | Z4 | MEP | PL | RF | B04 | B04-D07 | RES-1B |
| DUKHCONP1BZ4PLRF4355 |  | Roof Water Tank Installation & Connections | 25d | 2014-08-09 | 2014-09-06 | DUKHCONP1BZ4PLRF4350 SS+5d, DUKHCONP1BZ4PLFF4340 FF+5d, DUKHCONP1BZ4WEEX5065 FF, DUKHCONP1BZ4ARRF3655 FF+5d, DUKHCONP1BZ4PLRF4350 FF+5d, DUKHCONP1BZ3PLRF4355, DUKHCONP1BZ4ARRF3655 SS+5d, DUKHCONP1BZ4PLFF4340 SS+5d, DUKHCONP1BZ4PLRF4345 FF+8d, DUKHCONP1BZ4PLRF4345 SS+8d | 8d | 0d | LABOR- SUBCONTRACTOR [240 h]; MECHANICALS SK [432 h]; WATER TANK QTY [40 ea] | 593,900 | 20 | 1BP4PLRF20 | DUKHCON1BP4PLRF4355 | DUKHCONP1BZ4PLRF4355 | DH | CON | 1B | Z4 | MEP | PL | RF | B04 | B04-D07 | RES-1B |

Notes:
- DUKHCONP1BZ4ELFF4035: Expenses: P1B-Electrical Installations 33912
- DUKHCONP1BZ4ELFF4040: Expenses: P1B-Electrical Installations 7520
- DUKHCONP1BZ4ELFF4045: Expenses: P1B-Electrical Installations 116330
- DUKHCONP1BZ4ELFF4050: Expenses: P1B-Electrical Installations 37070
- DUKHCONP1BZ4ELFF4055: Expenses: P1B-Electrical Installations 85180
- DUKHCONP1BZ4ELFF4060: Expenses: P1B-Electrical Installations 16488
- DUKHCONP1BZ4ELFF4065: Expenses: P1B-Electrical Installations 176151
- DUKHCONP1BZ4ELRF4070: Expenses: P1B-Electrical Installations 46262
- DUKHCONP1BZ4ELRF4075: Expenses: P1B-Electrical Installations 32745
- DUKHCONP1BZ4PLUG4300: Expenses: P1B-Plumbing and Drainage works 29221
- DUKHCONP1BZ4PLGF4305: Expenses: P1B-Plumbing and Drainage works 69653
- DUKHCONP1BZ4PLGF4310: Expenses: P1B-Plumbing and Drainage works 5128
- DUKHCONP1BZ4PLGF4315: Expenses: P1B-Plumbing and Drainage works 100216
- DUKHCONP1BZ4PLGF4320: Expenses: P1B-Plumbing and Drainage works 12460
- DUKHCONP1BZ4PLFF4325: Expenses: P1B-Plumbing and Drainage works 67368
- DUKHCONP1BZ4PLFF4330: Expenses: P1B-Plumbing and Drainage works 4400
- DUKHCONP1BZ4PLFF4335: Expenses: P1B-Plumbing and Drainage works 104000
- DUKHCONP1BZ4PLFF4340: Expenses: P1B-Plumbing and Drainage works 6070
- DUKHCONP1BZ4PLRF4345: Expenses: P1B-Plumbing and Drainage works 11527
- DUKHCONP1BZ4PLRF4350: Expenses: P1B-Plumbing and Drainage works 95272
- DUKHCONP1BZ4PLRF4355: Expenses: P1B-Plumbing and Drainage works 593900

| ID | WBS | Activity | Duration | Start | Finish | Predecessors | Total float | Free float | Resources | Cost | CODE | P3 ACTID | P6 ID (old) | NP61D | PROJECT | PHASES | PACKAGE | PART | ELEMENTS | STEP | FLOORS | BILL NOS | BILL DIVISION | RES PACK |
| --- | --- | --- | --- | --- | --- | --- | --- | --- | --- | --- | --- | --- | --- | --- | --- | --- | --- | --- | --- | --- | --- | --- | --- | --- |
|  | 20 | **AC WORKS** |  | 2014-03-16 | 2014-09-02 |  |  |  |  |  |  |  |  |  |  |  |  |  |  |  |  |  |  |  |
|  | 10 | **GROUND FLOOR** |  | 2014-03-16 | 2014-06-19 |  |  |  |  |  |  |  |  |  |  |  |  |  |  |  |  |  |  |  |
| DUKHCONP1BZ4ACGF4600 |  | Installation AC Pipes | 20d | 2014-03-16 | 2014-04-07 | DUKHCONP1BZ4ARGF3005 FF+7d, DUKHCONP1BZ3ACGF4600, DUKHCONP1BZ4ARGF3005 SS+7d | 69d | 5d | LABOR- SUBCONTRACTOR [408 h]; AC TECHNICIAN SK [1478.4 h]; AC PIPES QTY [4000 lm] | 7,099 | 10 | 1BP4ACGF10 | DUKHCON1BP4ACGF4600 | DUKHCONP1BZ4ACGF4600 | DH | CON | 1B | Z4 | MEP | AC | GF | B04 | B04-D08 | RES-1B |
| DUKHCONP1BZ4ACGF4605 |  | Fixing of Ventilation Equipments | 25d | 2014-05-07 | 2014-06-04 | DUKHCONP1BZ4ACGF4600 FF+10d, DUKHCONP1BZ4ARGF3060 SS+7d, DUKHCONP1BZ4ARGF3055 FF+7d, DUKHCONP1BZ3ACGF4605, DUKHCONP1BZ4ACGF4600 SS+10d, DUKHCONP1BZ4ARGF3055 SS+7d, DUKHCONP1BZ4ARGF3060 FF+7d | 57d | 0d | LABOR- SUBCONTRACTOR [72 h]; AC TECHNICIAN SK [224 h]; VENTILIATION EQP QTY [80 ea] | 29,118 | 15 | 1BP4ACGF15 | DUKHCON1BP4ACGF4605 | DUKHCONP1BZ4ACGF4605 | DH | CON | 1B | Z4 | MEP | AC | GF | B04 | B04-D08 | RES-1B |
| DUKHCONP1BZ4ACGF4610 |  | Fixing of Split AC | 20d | 2014-05-28 | 2014-06-19 | DUKHCONP1BZ3ACGF4610, DUKHCONP1BZ4ACGF4605 FF+13d, DUKHCONP1BZ4ACGF4605 SS+13d | 57d | 5d | LABOR- SUBCONTRACTOR [120 h]; AC TECHNICIAN SK [448 h]; SPLIT UNIT QTY [80 ea] | 57,350 | 20 | 1BP4ACGF20 | DUKHCON1BP4ACGF4610 | DUKHCONP1BZ4ACGF4610 | DH | CON | 1B | Z4 | MEP | AC | GF | B04 | B04-D08 | RES-1B |
|  | 15 | **FIRST FLOORS** |  | 2014-04-30 | 2014-08-21 |  |  |  |  |  |  |  |  |  |  |  |  |  |  |  |  |  |  |  |
| DUKHCONP1BZ4ACFF4615 |  | Installation AC Pipes | 20d | 2014-04-30 | 2014-05-22 | DUKHCONP1BZ4ARFF3305 SS+7d, DUKHCONP1BZ4ARFF3305 FF+7d, DUKHCONP1BZ3ACFF4615 | 35d | 3d | LABOR- SUBCONTRACTOR [408 h]; AC TECHNICIAN SK [1478.4 h]; AC PIPES QTY [4000 lm] | 4,983 | 10 | 1BP4ACFF10 | DUKHCON1BP4ACFF4615 | DUKHCONP1BZ4ACFF4615 | DH | CON | 1B | Z4 | MEP | AC | FF | B04 | B04-D08 | RES-1B |
| DUKHCONP1BZ4ACFF4620 |  | Fixing of Ventilation Equipments | 25d | 2014-07-06 | 2014-08-06 | DUKHCONP1BZ4ACFF4615 FF+10d, DUKHCONP1BZ3ACFF4620, DUKHCONP1BZ4ARFF3360 SS+7d, DUKHCONP1BZ4ACFF4615 SS+10d, DUKHCONP1BZ4ARFF3360 FF+7d | 6d | 0d | LABOR- SUBCONTRACTOR [48 h]; AC TECHNICIAN SK [134.4 h]; VENTILIATION EQP QTY [48 ea] | 5,633 | 15 | 1BP4ACFF15 | DUKHCON1BP4ACFF4620 | DUKHCONP1BZ4ACFF4620 | DH | CON | 1B | Z4 | MEP | AC | FF | B04 | B04-D08 | RES-1B |
| DUKHCONP1BZ4ACFF4625 |  | Fixing of Split AC | 20d | 2014-07-27 | 2014-08-21 | DUKHCONP1BZ4ACFF4620 SS+13d, DUKHCONP1BZ3ACFF4625, DUKHCONP1BZ4ACFF4620 FF+13d | 6d | 0d | LABOR- SUBCONTRACTOR [120 h]; AC TECHNICIAN SK [448 h]; SPLIT UNIT QTY [80 ea] | 43,882 | 20 | 1BP4ACFF20 | DUKHCON1BP4ACFF4625 | DUKHCONP1BZ4ACFF4625 | DH | CON | 1B | Z4 | MEP | AC | FF | B04 | B04-D08 | RES-1B |
|  | 20 | **ROOF** |  | 2014-05-12 | 2014-09-02 |  |  |  |  |  |  |  |  |  |  |  |  |  |  |  |  |  |  |  |
| DUKHCONP1BZ4ACRF4630 |  | Installation of Refrigerant Pipes | 25d | 2014-05-12 | 2014-06-09 | DUKHCONP1BZ4ACGF4600 SS+7d, DUKHCONP1BZ4ARRF3645 FF+7d, DUKHCONP1BZ4ARRF3645 SS+7d, DUKHCONP1BZ4ACFF4615 SS+7d, DUKHCONP1BZ3ACRF4630, DUKHCONP1BZ4ACFF4615 FF+7d, DUKHCONP1BZ4ACGF4600 FF+7d | 76d | 0d | LABOR- SUBCONTRACTOR [168 h]; AC TECHNICIAN SK [627.2 h]; AC PIPES QTY [1640 lm] | 24,000 | 10 | 1BP4ACRF10 | DUKHCON1BP4ACRF4630 | DUKHCONP1BZ4ACRF4630 | DH | CON | 1B | Z4 | MEP | AC | RF | B04 | B04-D08 | RES-1B |
| DUKHCONP1BZ4ACRF4635 |  | Installation of Condensing Unit | 25d | 2014-08-05 | 2014-09-02 | DUKHCONP1BZ4ACRF4630 SS+5d, DUKHCONP1BZ4ACFF4625 SS+5d, DUKHCONP1BZ4ACGF4610 SS+5d, DUKHCONP1BZ3ACRF4635, DUKHCONP1BZ4ACRF4630 FF+5d, DUKHCONP1BZ4ACGF4610 FF+5d, DUKHCONP1BZ4ACFF4625 FF+5d | 11d | 0d | LABOR- SUBCONTRACTOR [240 h]; AC TECHNICIAN SK [896 h]; AC UNITS QTY [160 ea] | 130,673 | 15 | 1BP4ACRF15 | DUKHCON1BP4ACRF4635 | DUKHCONP1BZ4ACRF4635 | DH | CON | 1B | Z4 | MEP | AC | RF | B04 | B04-D08 | RES-1B |
|  | 25 | **EXTERNAL WORKS** |  | 2014-03-18 | 2014-09-28 |  |  |  |  |  |  |  |  |  |  |  |  |  |  |  |  |  |  |  |
|  | 10 | **MISCELLANEOUS** |  | 2014-03-18 | 2014-09-28 |  |  |  |  |  |  |  |  |  |  |  |  |  |  |  |  |  |  |  |
| DUKHCONP1BZ4MSEX5000 |  | Construction of Manholes | 25d | 2014-03-18 | 2014-04-15 | DUKHCONP1BZ4PLGF4310 SS+10d, DUKHCONP1BZ4PLGF4310 FF+10d, DUKHCONP1BZ4STRF2055 SS+5d, DUKHCONP1BZ4STRF2055 FF+5d | 32d | 0d | MANHOLES SK [640 h]; LABOR- SUBCONTRACTOR [240 h]; MANHOLES QTY [80 ea] | 27,797 | 25 | 1BP4MSEX25 | DUKHCON1BP4MS005000 | DUKHCONP1BZ4MSEX5000 | DH | CON | 1B | Z4 | EX | MS |  | B04 | B04-D12 | RES-1B |
| DUKHCONP1BZ4MSEX5020 |  | Construction Entrance Ramp | 25d | 2014-03-22 | 2014-04-19 | DUKHCONP1BZ4STRF2055 FF, DUKHCONP1BZ4STRF2055 SS, DUKHCONP1BZ3MSEX5020 | 58d | 0d | SCREED MASON SK [192 h]; CONCRETE MASON SK [384 h]; INTERLOCK MASON SK [256 h]; LABOR- SUBCONTRACTOR [360 h]; LABOR- SUBCONTRACTOR [96 h]; SCREED QTY [224 Sqm]; CONCRETE QTY [192 Cum]; INTERLOCK QTY [304 Sqm] | 25,080 | 10 | 1BP4MSEX10 | DUKHCON1BP4MS005020 | DUKHCONP1BZ4MSEX5020 | DH | CON | 1B | Z4 | EX | MS |  | B04 | B04-D12 | RES-1B |
| DUKHCONP1BZ4MSEX5005 |  | Construction of Soak pit, Chambers | 25d | 2014-04-01 | 2014-04-29 | DUKHCONP1BZ4MSEX5000 SS+12d, DUKHCONP1BZ4MSEX5000 FF+12d | 32d | 0d | MANHOLES SK [128 h]; LABOR- SUBCONTRACTOR [48 h]; SOAKPIT QTY [16 ea] | 47,088 | 30 | 1BP4MSEX30 | DUKHCON1BP4MS005005 | DUKHCONP1BZ4MSEX5005 | DH | CON | 1B | Z4 | EX | MS |  | B04 | B04-D12 | RES-1B |
| DUKHCONP1BZ4MSEX5025 |  | SS.Handrails and Balustrades | 20d | 2014-04-08 | 2014-04-30 | DUKHCONP1BZ4MSEX5020 FF+10d, DUKHCONP1BZ4MSEX5020 SS+10d | 61d | 0d | LABOR- SUBCONTRACTOR [144 h]; S.S.BALUSTRADE QTY [120 lm]; HANDRAIL ERECTOR SKILLED [256 h] | 113,987 | 15 | 1BP4MSEX15 | DUKHCON1BP4MS005025 | DUKHCONP1BZ4MSEX5025 | DH | CON | 1B | Z4 | EX | MS |  | B04 | B04-D12 | RES-1B |
| DUKHCONP1BZ4MSEX5015 |  | Construction of grease Trap | 20d | 2014-04-21 | 2014-05-13 | DUKHCONP1BZ4MSEX5005 SS+12d, DUKHCONP1BZ4MSEX5005 FF+12d | 32d | 0d | LABOR- SUBCONTRACTOR [24 h]; GREASE TRAP QTY [32 lm]; HANDRAIL ERECTOR SKILLED [64 h] | 22,696 | 20 | 1BP4MSEX20 | DUKHCON1BP4MS005015 | DUKHCONP1BZ4MSEX5015 | DH | CON | 1B | Z4 | EX | MS |  | B04 | B04-D07 | RES-1B |
| DUKHCONP1BZ4MSEX5010 |  | Telephone cable laying | 25d | 2014-05-14 | 2014-06-11 | DUKHCONP1BZ4MSEX5015 | 32d | 18d | LABOR- SUBCONTRACTOR [125 h]; ELECTRICIANS SK [125 h]; CONCRETE MASON SK [125 h] | 3,238 |  | 1BP4MSEX40 | DUKHCON1BP4MS005010 | DUKHCONP1BZ4MSEX5010 | DH | CON | 1B | Z4 | EX | MS |  | B04 | B04-D12 | RES-1B |
| DUKHCONP1BZ4MSEX5335 |  | Aluminum Roll-up Shutter with 2m Wall | 25d | 2014-08-31 | 2014-09-28 | DUKHCONP1BZ3MSEX5335, DUKHCONI1BZ2BWGL5325 | 14d | 0d | LABOR- SUBCONTRACTOR [200 h]; DOOR ERECTOR SK [200 h]; ROLLING SHUTTER QTY [8 ea] | 57,372 | 25 | 1BP4BWFR25 | DUKHCON1BP4MS005335 | DUKHCONP1BZ4MSEX5335 | DH | CON | 1B | Z4 | EX | MS |  | B04 | B04-D12 | RES-1B |
|  | 15 | **WATER TANK ENCLOSURE** |  | 2014-04-16 | 2014-07-23 |  |  |  |  |  |  |  |  |  |  |  |  |  |  |  |  |  |  |  |
| DUKHCONP1BZ4WEEX5030 |  | Excavation | 20d | 2014-04-16 | 2014-05-08 | DUKHCONP1BZ4STRF2055 SS+5d, DUKHCONP1BZ4STRF2055 FF+5d, DUKHCONP1BZ3WEEX5035 | 40d | 0d | LABOR- SUBCONTRACTOR [48 h]; EXCAVATION QTY [80 Cum]; LOADER [20 h]; POCLAIN [40 h]; TRUCK [20 h]; EQUIP OPERATORS [80 h] | 896 | 10 | 1BP4WEEX10 | DUKHCON1BP4WE005030 | DUKHCONP1BZ4WEEX5030 | DH | CON | 1B | Z4 | EX | WE |  | B04 | B04-D12 | RES-1B |
| DUKHCONP1BZ4WEEX5035 |  | Construction of Raft | 25d | 2014-04-22 | 2014-05-20 | DUKHCONP1BZ4WEEX5030 SS+5d, DUKHCONP1BZ4WEEX5030 FF+10d | 43d | 0d | STEEL FIXERS SK [96 h]; CARPENTERS SK [736 h]; CONCRETE MASON SK [96 h]; LABOR- SUBCONTRACTOR [696 h]; REINFORCEMENT BARS QTY [1248 kg]; FORMWORK QTY [368 Sqm]; CONCRETE QTY [40 Cum] | 13,680 | 15 | 1BP4WEEX15 | DUKHCON1BP4WE005035 | DUKHCONP1BZ4WEEX5035 | DH | CON | 1B | Z4 | EX | WE |  | B04 | B04-D12 | RES-1B |
| DUKHCONP1BZ4WEEX5040 |  | Block works & Plastering | 25d | 2014-05-04 | 2014-06-01 | DUKHCONP1BZ4WEEX5035 FF+10d, DUKHCONP1BZ4WEEX5035 SS+10d | 43d | 0d | BLOCK MASON SK [224 h]; PLASTER MASON SK [352 h]; LABOR- SUBCONTRACTOR [312 h]; BLOCK QTY [112 Sqm]; PLASTER QTY [224 Sqm] | 19,727 | 20 | 1BP4WEEX20 | DUKHCON1BP4WE005040 | DUKHCONP1BZ4WEEX5040 | DH | CON | 1B | Z4 | EX | WE |  | B04 | B04-D12 | RES-1B |
| DUKHCONP1BZ4WEEX5045 |  | Flooring & Painting | 25d | 2014-05-15 | 2014-06-12 | DUKHCONP1BZ4MSEX5025 SS+5d, DUKHCONP1BZ4WEEX5040 SS+10d, DUKHCONP1BZ4WEEX5040 FF+10d | 43d | 0d | LABOR- SUBCONTRACTOR [120 h]; PAINT QTY [312 Sqm]; EPOXY QTY [88 Sqm]; PAINTERS SK [256 h]; EPOXY SK [32 h] | 18,792 | 25 | 1BP4WEEX25 | DUKHCON1BP4WE005045 | DUKHCONP1BZ4WEEX5045 | DH | CON | 1B | Z4 | EX | WE |  | B04 | B04-D12 | RES-1B |
| DUKHCONP1BZ4WEEX5050 |  | Installation of Steel Gate | 20d | 2014-06-02 | 2014-06-24 | DUKHCONP1BZ4WEEX5045 FF+10d, DUKHCONP1BZ4MSEX5025 FF+10d, DUKHCONP1BZ4WEEX5045 SS+10d, DUKHCONP1BZ4MSEX5015 SS+10d | 43d | 0d | LABOR- SUBCONTRACTOR [48 h]; GATE QTY [8 ea]; GATE ERECTOR SK [64 h] | 75,504 | 30 | 1BP4WEEX30 | DUKHCON1BP4WE005050 | DUKHCONP1BZ4WEEX5050 | DH | CON | 1B | Z4 | EX | WE |  | B04 | B04-D12 | RES-1B |
| DUKHCONP1BZ4WEEX5060 |  | Structural steel & SS Shed cover installation | 25d | 2014-06-14 | 2014-07-12 | DUKHCONP1BZ4MSEX5025 FF+10d, DUKHCONP1BZ4WEEX5050 SS+10d, DUKHCONP1BZ4WEEX5050 FF+10d, DUKHCONP1BZ3WEEX5060 | 43d | 0d | LABOR- SUBCONTRACTOR [264 h]; STRUCTURAL STEEL QTY [256 kg]; SS SHED COVER QTY [80 Sqm]; STEEL ERECTOR SK [352 h] | 45,463 | 35 | 1BP4WEEX35 | DUKHCON1BP4WE005060 | DUKHCONP1BZ4WEEX5060 | DH | CON | 1B | Z4 | EX | WE |  | B04 | B04-D12 | RES-1B |
| DUKHCONP1BZ4WEEX5065 |  | Install. of Water Tank,Chiller,Pump & Meter | 25d | 2014-06-25 | 2014-07-23 | DUKHCONP1BZ4PLRF4350 FF+5d, DUKHCONP1BZ4WEEX5060 SS+10d, DUKHCONP1BZ3WEEX5065, DUKHCONP1BZ4MSEX5015 SS+5d, DUKHCONP1BZ4WEEX5060 FF+10d, DUKHCONP1BZ4PLRF4350 SS+5d, DUKHCONP1BZ4MSEX5015 FF+5d | 43d | 0d | LABOR- SUBCONTRACTOR [120 h]; AC TECHNICIAN SK [89.6 h]; MECHANICALS SK [172.8 h]; WATER TANK QTY [8 ea]; PUMP QTY [8 ea]; CHILLER QTY [80 ea] | 122,333 | 40 | 1BP4WEEX40 | DUKHCON1BP4WE005065 | DUKHCONP1BZ4WEEX5065 | DH | CON | 1B | Z4 | EX | WE |  | B04 | B04-D07 | RES-1B |

Notes:
- DUKHCONP1BZ4ACGF4600: Expenses: P1B-Air-conditioning and Ventilation works 7099
- DUKHCONP1BZ4ACGF4605: Expenses: P1B-Air-conditioning and Ventilation works 29118
- DUKHCONP1BZ4ACGF4610: Expenses: P1B-Air-conditioning and Ventilation works 57350
- DUKHCONP1BZ4ACFF4615: Expenses: P1B-Air-conditioning and Ventilation works 4983
- DUKHCONP1BZ4ACFF4620: Expenses: P1B-Air-conditioning and Ventilation works 5633
- DUKHCONP1BZ4ACFF4625: Expenses: P1B-Air-conditioning and Ventilation works 43882
- DUKHCONP1BZ4ACRF4630: Expenses: P1B-Air-conditioning and Ventilation works 24000
- DUKHCONP1BZ4ACRF4635: Expenses: P1B-Air-conditioning and Ventilation works 130673
- DUKHCONP1BZ4MSEX5000: Expenses: P1B-External works within the Plot Curtilage 27797
- DUKHCONP1BZ4MSEX5020: Expenses: P1B-External works within the Plot Curtilage 25080
- DUKHCONP1BZ4MSEX5005: Expenses: P1B-External works within the Plot Curtilage 47088
- DUKHCONP1BZ4MSEX5025: Expenses: P1B-External works within the Plot Curtilage 113987
- DUKHCONP1BZ4MSEX5015: Expenses: P1B-Plumbing and Drainage works 22696
- DUKHCONP1BZ4MSEX5010: Expenses: P1B-External works within the Plot Curtilage 3238
- DUKHCONP1BZ4MSEX5335: Expenses: P1B-External works within the Plot Curtilage 57372
- DUKHCONP1BZ4WEEX5030: Expenses: P1B-External works within the Plot Curtilage 896
- DUKHCONP1BZ4WEEX5035: Expenses: P1B-External works within the Plot Curtilage 13680
- DUKHCONP1BZ4WEEX5040: Expenses: P1B-External works within the Plot Curtilage 19727
- DUKHCONP1BZ4WEEX5045: Expenses: P1B-External works within the Plot Curtilage 18792
- DUKHCONP1BZ4WEEX5050: Expenses: P1B-External works within the Plot Curtilage 75504
- DUKHCONP1BZ4WEEX5060: Expenses: P1B-External works within the Plot Curtilage 45463
- DUKHCONP1BZ4WEEX5065: Expenses: P1B-Plumbing and Drainage works 122333

| ID | WBS | Activity | Duration | Start | Finish | Predecessors | Total float | Free float | Resources | Cost | CODE | P3 ACTID | P6 ID (old) | NP61D | PROJECT | PHASES | PACKAGE | PART | ELEMENTS | STEP | BILL NOS | BILL DIVISION | RES PACK | FLOORS | rem |
| --- | --- | --- | --- | --- | --- | --- | --- | --- | --- | --- | --- | --- | --- | --- | --- | --- | --- | --- | --- | --- | --- | --- | --- | --- | --- |
|  | 20 | **HARD LANDSCAPING** |  | 2014-04-16 | 2014-06-03 |  |  |  |  |  |  |  |  |  |  |  |  |  |  |  |  |  |  |  |  |
| DUKHCONP1BZ4HDEX5090 |  | kerb works | 20d | 2014-04-16 | 2014-05-08 | DUKHCONP1BZ4MSEX5020 SS+7d, DUKHCONP1BZ4MSEX5025 SS+7d, DUKHCONP1BZ4MSEX5020 FF+7d, DUKHCONP1BZ3HDEX5090 | 61d | 0d | KERBSTONE MASON SK [448 h]; LABOR- SUBCONTRACTOR [264 h]; KERBSTONE QTY [576 lm] | 12,546 | 10 | 1BP4HDEX10 | DUKHCON1BP4HD005090 | DUKHCONP1BZ4HDEX5090 | DH | CON | 1B | Z4 | EX | HD | B04 | B04-D12 | RES-1B |  |  |
| DUKHCONP1BZ4HDEX5095 |  | Cobble Stone Works | 20d | 2014-04-28 | 2014-05-20 | DUKHCONP1BZ4HDEX5090 SS+10d, DUKHCONP1BZ4HDEX5090 FF+10d | 61d | 0d | TILE MASON SK [288 h]; LABOR- SUBCONTRACTOR [168 h]; COBBLE STONE QTY [176 Sqm] | 35,584 | 15 | 1BP4HDEX15 | DUKHCON1BP4HD005095 | DUKHCONP1BZ4HDEX5095 | DH | CON | 1B | Z4 | EX | HD | B04 | B04-D12 | RES-1B |  |  |
| DUKHCONP1BZ4HDEX5100 |  | Interlock works | 20d | 2014-05-12 | 2014-06-03 | DUKHCONP1BZ4HDEX5095 SS+12d, DUKHCONP1BZ4HDEX5095 FF+12d | 61d | 0d | INTERLOCK MASON SK [288 h]; LABOR- SUBCONTRACTOR [120 h]; INTERLOCK QTY [368 Sqm] | 42,407 | 20 | 1BP4HDEX20 | DUKHCON1BP4HD005100 | DUKHCONP1BZ4HDEX5100 | DH | CON | 1B | Z4 | EX | HD | B04 | B04-D12 | RES-1B |  |  |
|  | 25 | **SOFT LANDSCAPING** |  | 2014-05-24 | 2014-07-02 |  |  |  |  |  |  |  |  |  |  |  |  |  |  |  |  |  |  |  |  |
| DUKHCONP1BZ4SLEX5105 |  | Laying of Grass/ green area | 25d | 2014-05-24 | 2014-06-21 | DUKHCONP1BZ4HDEX5100 SS+10d, DUKHCONP1BZ4HDEX5100 FF+10d | 61d | 0d | LABOR- SUBCONTRACTOR [2352 h]; SWEET SOIL QTY [672 Cum]; GRASS QTY [672 Sqm]; LANDSCAPING SK [3136 h] | 50,184 | 10 | 1BP4SLEX10 | DUKHCON1BP4SL005105 | DUKHCONP1BZ4SLEX5105 | DH | CON | 1B | Z4 | EX | SL | B04 | B04-D12 | RES-1B |  |  |
| DUKHCONP1BZ4SLEX5110 |  | Laying of Palm tree | 25d | 2014-06-04 | 2014-07-02 | DUKHCONP1BZ4SLEX5105 SS+10d, DUKHCONP1BZ4SLEX5105 FF+10d | 61d | 69d | LABOR- SUBCONTRACTOR [144 h]; SWEET SOIL QTY [96 Cum]; PLAM TREES QTY [32 ea]; LANDSCAPING SK [192 h] | 120,888 | 15 | 1BP4SLEX15 | DUKHCON1BP4SL005110 | DUKHCONP1BZ4SLEX5110 | DH | CON | 1B | Z4 | EX | SL | B04 | B04-D12 | RES-1B |  |  |
|  | 30 | **TESTING AND COMMISSIONING** |  | 2014-09-25 | 2014-10-26 |  |  |  |  |  |  |  |  |  |  |  |  |  |  |  |  |  |  |  |  |
| DUKHCONP1BZ4ACTC8000 |  | Pre-Commissioning & Testing of AC Works | 25d | 2014-09-25 | 2014-10-26 | DUKHCONP1BZ4ACFF4625, DUKHCONP1BZ4HDEX5100, DUKHCONP1BZ4MSEX5005, DUKHCONP1BZ3ACTC8000, DUKHCONP1BZ4ARRF3660, DUKHCONP1BZ4AREL3680, DUKHCONP1BZ4ARFF3395, DUKHCONP1BZ4SLEX5105, DUKHCONP1BZ4ARRF3620, DUKHCONP1BZ4ACRF4635, DUKHCONP1BZ4ARGF3095, DUKHCONP1BZ4SLEX5110 | -8d | 0d | LABOR- SUBCONTRACTOR [500 h]; AC TECHNICIAN SK [1000 h] | 1,696 |  | 1BP4ACU100 | DUKHCON1BP4AC008000 | DUKHCONP1BZ4ACTC8000 | DH | CON | 1B | Z4 | TES |  | B04 | B04-D08 | RES-1B |  |  |
| DUKHCONP1BZ4ELTC8010 |  | Pre-Commissioning & Testing of Electrical Works | 25d | 2014-09-25 | 2014-10-26 | DUKHCONP1BZ4ARGF3095, DUKHCONP1BZ4ELRF4075, DUKHCONP1BZ4ELGF4015, DUKHCONP1BZ4SLEX5105, DUKHCONP1BZ4ARRF3655, DUKHCONP1BZ4ARRF3660, DUKHCONP1BZ4ELFF4065, DUKHCONP1BZ4ELGF4030, DUKHCONP1BZ4MSEX5005, DUKHCONP1BZ4ARFF3395, DUKHCONP1BZ4ELFF4050, DUKHCONP1BZ4ELGF4025, DUKHCONP1BZ3ELTC8010, DUKHCONP1BZ4ELFF4055, DUKHCONP1BZ4SLEX5110, DUKHCONP1BZ4HDEX5100, DUKHCONP1BZ4AREL3680, DUKHCONP1BZ4ARRF3620 | -8d | 0d | LABOR- SUBCONTRACTOR [1000 h]; ELECTRICIANS SK [2000 h] | 45,560 |  | 1BP4ELE100 | DUKHCON1BP4EL008010 | DUKHCONP1BZ4ELTC8010 | DH | CON | 1B | Z4 | TES |  | B04 | B04-D09 | RES-1B |  |  |
| DUKHCONP1BZ4PLTC8005 |  | Pre-Commissioning & Testing of Plumbing Works | 25d | 2014-09-25 | 2014-10-26 | DUKHCONP1BZ4ARRF3655, DUKHCONP1BZ4PLRF4355, DUKHCONP1BZ4AREL3680, DUKHCONP1BZ4PLRF4350, DUKHCONP1BZ4SLEX5105, DUKHCONP1BZ4HDEX5100, DUKHCONP1BZ4SLEX5110, DUKHCONP1BZ4MSEX5005, DUKHCONP1BZ4ARRF3620, DUKHCONP1BZ4PLGF4320, DUKHCONP1BZ4WEEX5065, DUKHCONP1BZ4ARRF3660, DUKHCONP1BZ4ARFF3395, DUKHCONP1BZ4ARGF3095, DUKHCONP1BZ3PLTC8005 | -8d | 0d | LABOR- SUBCONTRACTOR [1000 h]; MECHANICALS SK [2000 h] | 7,112 |  | 1BP4PLU100 | DUKHCON1BP4PL008005 | DUKHCONP1BZ4PLTC8005 | DH | CON | 1B | Z4 | TES |  | B04 | B04-D07 | RES-1B |  |  |
|  | 30 | **ZONE - 5 (5 Twin Villas)** |  | 2013-08-25 | 2014-11-24 |  |  |  |  |  |  |  |  |  |  |  |  |  |  |  |  |  |  |  |  |
|  | 10 | **STRUCTURAL WORKS** |  | 2013-08-25 | 2014-06-01 |  |  |  |  |  |  |  |  |  |  |  |  |  |  |  |  |  |  |  |  |
|  | 10 | **SUB STRUCTURE** |  | 2013-08-25 | 2014-01-14 |  |  |  |  |  |  |  |  |  |  |  |  |  |  |  |  |  |  |  |  |
|  | 10 | **UPTO GRADE SLAB** |  | 2013-08-25 | 2014-01-14 |  |  |  |  |  |  |  |  |  |  |  |  |  |  |  |  |  |  |  |  |
| DUKHCONP1BZ5STUG1000 |  | Footing Excavation | 25d | 2013-08-25 | 2013-09-22 | DUKHCONP1BZ4STUG1000 | 0d |  | LABOR- SUBCONTRACTOR [948 h]; EXCAVATION QTY [1580 Cum]; LOADER [211 h]; POCLAIN [421 h]; TRUCK [211 h]; EQUIP OPERATORS [843 h] | 101,871 | 10 | 1BP5SBUG10 | DUKHCON1BP5STUG1000 | DUKHCONP1BZ5STUG1000 | DH | CON | 1B | Z5 | ST | SB | B04 | B04-D01 | RES-1B | UG |  |
| DUKHCONP1BZ5STUG1005 |  | Footing Antitermite | 23d | 2013-09-05 | 2013-10-01 | DUKHCONP1BZ5STUG1000 SS+10d, DUKHCONP1BZ5STUG1000 FF+5d | 0d |  | LABOR- SUBCONTRACTOR [634.5 h]; ANTITERMITE QTY [4230 sqft]; ANTITERMITE SK [1692 h] | 12,689 | 15 | 1BP5SBUG15 | DUKHCON1BP5STUG1005 | DUKHCONP1BZ5STUG1005 | DH | CON | 1B | Z5 | ST | SB | B04 | B04-D01 | RES-1B | UG | REM |
| DUKHCONP1BZ5STUG1010 |  | Footing Blinding | 23d | 2013-09-10 | 2013-10-06 | DUKHCONP1BZ5STUG1005 FF+4d, DUKHCONP1BZ5STUG1005 SS+4d | 0d |  | BLINDING MASON SK [748 h]; LABOR- SUBCONTRACTOR [561 h]; BLINDING QTY [935 Sqm] | 23,571 | 15 | 1BP5SBUG18 | DUKHCON1BP5STUG1010 | DUKHCONP1BZ5STUG1010 | DH | CON | 1B | Z5 | ST | SB | B04 | B04-D02 | RES-1B | UG | REM |
| DUKHCONP1BZ5STUG1015 |  | Footing Waterproofing & Screed | 25d | 2013-09-16 | 2013-10-14 | DUKHCONP1BZ5STUG1010 SS+5d, DUKHCONP1BZ5STUG1010 FF+5d | 0d |  | SCREED MASON SK [749 h]; LABOR- SUBCONTRACTOR [281.25 h]; SCREED QTY [936 Sqm]; WATERPROOFING QTY [1934 Sqm] | 73,833 | 20 | 1BP5SBUG20 | DUKHCON1BP5STUG1015 | DUKHCONP1BZ5STUG1015 | DH | CON | 1B | Z5 | ST | SB | B04 | B04-D02 | RES-1B | UG | REM |
| DUKHCONP1BZ5STUG1020 |  | Construction of foundations | 20d | 2013-10-01 | 2013-10-26 | DUKHCONP1BZ5STUG1015 FF+8d, DUKHCONP1BZ5STUG1015 SS+7d | 0d |  | STEEL FIXERS SK [3473 h]; CARPENTERS SK [1420 h]; CONCRETE MASON SK [800 h]; LABOR- SUBCONTRACTOR [4269.75 h]; REINFORCEMENT BARS QTY [43402 kg]; FORMWORK QTY [710 Sqm]; CONCRETE QTY [400 Cum] | 277,654 | 25 | 1BP5SBUG25 | DUKHCON1BP5STUG1020 | DUKHCONP1BZ5STUG1020 | DH | CON | 1B | Z5 | ST | SB | B04 | B04-D02 | RES-1B | UG | REM |
| DUKHCONP1BZ5STUG1025 |  | Construction of neck of columns | 25d | 2013-10-10 | 2013-11-10 | DUKHCONP1BZ5STUG1020 SS+8d, DUKHCONP1BZ4STUG1025, DUKHCONP1BZ5STUG1020 FF+7d | 0d |  | STEEL FIXERS SK [289 h]; CARPENTERS SK [1040 h]; CONCRETE MASON SK [60 h]; LABOR- SUBCONTRACTOR [1041.75 h]; REINFORCEMENT BARS QTY [3612 kg]; FORMWORK QTY [520 Sqm]; CONCRETE QTY [30 Cum] | 52,146 | 30 | 1BP5SBUG30 | DUKHCON1BP5STUG1025 | DUKHCONP1BZ5STUG1025 | DH | CON | 1B | Z5 | ST | SB | B04 | B04-D02 | RES-1B | UG | REM |
| DUKHCONP1BZ5STUG1030 |  | Waterproofing Footing & Neck Column | 25d | 2013-10-22 | 2013-11-19 | DUKHCONP1BZ5STUG1025 SS+8d, DUKHCONP1BZ5STUG1025 FF+8d | 0d |  | LABOR- SUBCONTRACTOR [183 h]; WATERPROOFING QTY [608 Sqm]; WATERPROOFING SPECIALIST SK [487 h] | 29,705 | 35 | 1BP5SBUG35 | DUKHCON1BP5STUG1030 | DUKHCONP1BZ5STUG1030 | DH | CON | 1B | Z5 | ST | SB | B04 | B04-D02 | RES-1B | UG | REM |
| DUKHCONP1BZ5STUG1035 |  | Backfilling Upto Grade Beam Bottom | 25d | 2013-11-03 | 2013-12-01 | DUKHCONP1BZ4STUG1035, DUKHCONP1BZ5STUG1030 FF+10d, DUKHCONP1BZ5STUG1030 SS+10d | 0d |  | LABOR- SUBCONTRACTOR [420 h]; BACKFILLING QTY [1710 Cum]; BOBCAT [500 h]; PLATE COMPACTOR [500 h]; TRUCK [100 h]; EQUIP OPERATORS [1100 h] | 43,497 | 40 | 1BP5SBUG40 | DUKHCON1BP5STUG1035 | DUKHCONP1BZ5STUG1035 | DH | CON | 1B | Z5 | ST | SB | B04 | B04-D01 | RES-1B | UG |  |
| DUKHCONP1BZ5STUG1040 |  | Construction of Grade Beams | 25d | 2013-11-19 | 2013-12-17 | DUKHCONP1BZ5STUG1035 FF+14d, DUKHCONP1BZ5STUG1035 SS+14d | 0d |  | BLINDING MASON SK [401 h]; SCREED MASON SK [401 h]; STEEL FIXERS SK [2027 h]; CARPENTERS SK [2640 h]; CONCRETE MASON SK [400 h]; LABOR- SUBCONTRACTOR [4251.75 h]; BLINDING QTY [501 Sqm]; SCREED QTY [501 Sqm]; REINFORCEMENT BARS QTY [25326 kg]; FORMWORK QTY [1320 Sqm]; CONCRETE QTY [200 Cum] | 466,317 | 45 | 1BP5SBUG45 | DUKHCON1BP5STUG1040 | DUKHCONP1BZ5STUG1040 | DH | CON | 1B | Z5 | ST | SB | B04 | B04-D02 | RES-1B | UG | REM |
| DUKHCONP1BZ5STUG1045 |  | Construction of slab on grade | 25d | 2013-12-16 | 2014-01-14 | DUKHCONP1BZ5STUG1040 SS+10d, DUKHCONP1BZ5PLUG4300 SS+8d, DUKHCONP1BZ5STUG1040 FF+10d, DUKHCONP1BZ5PLUG4300 FF+8d, DUKHCONP1BZ4STUG1045 | 0d |  | BLINDING MASON SK [1524 h]; SCREED MASON SK [1523 h]; STEEL FIXERS SK [616 h]; CONCRETE MASON SK [620 h]; LABOR- SUBCONTRACTOR [2641.5 h]; BLINDING QTY [1904 Sqm]; SCREED QTY [1903 Sqm]; CONCRETE QTY [310 Cum]; WELDED WIRE MESH [2310 Sqm] | 354,141 | 50 | 1BP5SBUG50 | DUKHCON1BP5STUG1045 | DUKHCONP1BZ5STUG1045 | DH | CON | 1B | Z5 | ST | SB | B04 | B04-D02 | RES-1B | UG | REM |

Notes:
- DUKHCONP1BZ4HDEX5090: Expenses: P1B-External works within the Plot Curtilage 12546
- DUKHCONP1BZ4HDEX5095: Expenses: P1B-External works within the Plot Curtilage 35584
- DUKHCONP1BZ4HDEX5100: Expenses: P1B-External works within the Plot Curtilage 42407
- DUKHCONP1BZ4SLEX5105: Expenses: P1B-External works within the Plot Curtilage 50184
- DUKHCONP1BZ4SLEX5110: Expenses: P1B-External works within the Plot Curtilage 120888
- DUKHCONP1BZ4ACTC8000: Expenses: P1B-Air-conditioning and Ventilation works 1696
- DUKHCONP1BZ4ELTC8010: Expenses: P1B-Electrical Installations 45560
- DUKHCONP1BZ4PLTC8005: Expenses: P1B-Plumbing and Drainage works 7112
- DUKHCONP1BZ5STUG1000: Expenses: P1B-Excavation and Earth Works 101871
- DUKHCONP1BZ5STUG1005: Expenses: P1B-Excavation and Earth Works 12689
- DUKHCONP1BZ5STUG1010: Expenses: P1B-Concrete Works 23571
- DUKHCONP1BZ5STUG1015: Expenses: P1B-Concrete Works 73833
- DUKHCONP1BZ5STUG1020: Expenses: P1B-Concrete Works 277654
- DUKHCONP1BZ5STUG1025: Expenses: P1B-Concrete Works 52146
- DUKHCONP1BZ5STUG1030: Expenses: P1B-Concrete Works 29705
- DUKHCONP1BZ5STUG1035: Expenses: P1B-Excavation and Earth Works 43497
- DUKHCONP1BZ5STUG1040: Expenses: P1B-Concrete Works 466317
- DUKHCONP1BZ5STUG1045: Expenses: P1B-Concrete Works 354141

| ID | WBS | Activity | Duration | Start | Finish | Predecessors | Total float | Free float | Resources | Cost | CODE | rem | P3 ACTID | P6 ID (old) | NP61D | PROJECT | PHASES | PACKAGE | PART | ELEMENTS | STEP | FLOORS | BILL NOS | BILL DIVISION | RES PACK | EXECUTER |
| --- | --- | --- | --- | --- | --- | --- | --- | --- | --- | --- | --- | --- | --- | --- | --- | --- | --- | --- | --- | --- | --- | --- | --- | --- | --- | --- |
|  | 15 | **SUPERSTRUCTURE** |  | 2014-01-02 | 2014-06-01 |  |  |  |  |  |  |  |  |  |  |  |  |  |  |  |  |  |  |  |  |  |
|  | 10 | **GROUND FLOOR** |  | 2014-01-02 | 2014-02-27 |  |  |  |  |  |  |  |  |  |  |  |  |  |  |  |  |  |  |  |  |  |
| DUKHCONP1BZ5STGF2000 |  | Column-Rebar & Formwork | 25d | 2014-01-02 | 2014-01-30 | DUKHCONP1BZ4STGF2000, DUKHCONP1BZ5STUG1045 FF+7d, DUKHCONP1BZ5STUG1045 SS+14d | 0d |  | STEEL FIXERS SK [1040 h]; CARPENTERS SK [2520 h]; LABOR- SUBCONTRACTOR [2670 h]; REINFORCEMENT BARS QTY [12993 kg]; FORMWORK QTY [1260 Sqm] | 113,418 | 10 | REM | 1BP5SPGF10 | DUKHCON1BP5STGF2000 | DUKHCONP1BZ5STGF2000 | DH | CON | 1B | Z5 | ST | SP | GF | B04 | B04-D02 | RES-1B |  |
| DUKHCONP1BZ5STGF2005 |  | Column-Concrete | 23d | 2014-01-12 | 2014-02-06 | DUKHCONP1BZ5STGF2000 FF+2d, DUKHCONP1BZ5STGF2000 SS+8d | 0d |  | CONCRETE MASON SK [278 h]; LABOR- SUBCONTRACTOR [208.5 h]; CONCRETE QTY [139 Cum] | 39,960 | 15 | REM | 1BP5SPGF15 | DUKHCON1BP5STGF2005 | DUKHCONP1BZ5STGF2005 | DH | CON | 1B | Z5 | ST | SP | GF | B04 | B04-D02 | RES-1B |  |
| DUKHCONP1BZ5STGF2010 |  | Beam, Stairs ,Slab-Rebar & Formwork | 25d | 2014-01-26 | 2014-02-24 | DUKHCONP1BZ5STGF2005 SS+2d, DUKHCONP1BZ5STGF2005 FF+14d | 0d |  | STEEL FIXERS SK [6595 h]; CARPENTERS SK [6778 h]; LABOR- SUBCONTRACTOR [10029.8 h]; REINFORCEMENT BARS QTY [82434 kg]; FORMWORK QTY [3389 Sqm] | 465,984 | 20 | REM | 1BP5SPGF20 | DUKHCON1BP5STGF2010 | DUKHCONP1BZ5STGF2010 | DH | CON | 1B | Z5 | ST | SP | GF | B04 | B04-D02 | RES-1B |  |
| DUKHCONP1BZ5STGF2015 |  | Beam, Stairs ,Slab-Concrete | 14d | 2014-02-12 | 2014-02-27 | DUKHCONP1BZ4STGF2015, DUKHCONP1BZ5STGF2010 FF+3d, DUKHCONP1BZ5STGF2010 SS+10d | 0d |  | CONCRETE MASON SK [1040 h]; LABOR- SUBCONTRACTOR [780 h]; CONCRETE QTY [520 Cum] | 175,158 | 25 | REM | 1BP5SPGF25 | DUKHCON1BP5STGF2015 | DUKHCONP1BZ5STGF2015 | DH | CON | 1B | Z5 | ST | SP | GF | B04 | B04-D02 | RES-1B |  |
|  | 15 | **FIRST FLOORS** |  | 2014-02-15 | 2014-03-31 |  |  |  |  |  |  |  |  |  |  |  |  |  |  |  |  |  |  |  |  |  |
| DUKHCONP1BZ5STFF2020 |  | Column-Rebar & Formwork | 25d | 2014-02-15 | 2014-03-15 | DUKHCONP1BZ5STGF2015 SS+2d, DUKHCONP1BZ4STFF2020, DUKHCONP1BZ5STGF2015 FF+5d | 0d |  | CARPENTERS SK [2240 h]; LABOR- SUBCONTRACTOR [1680 h]; FORMWORK QTY [1120 Sqm]; REINFORCEMENT BARS QTY [4412 kg]; STEEL FIXERS SK [352 h] | 77,760 | 10 | REM | 1BP5SPFF10 | DUKHCON1BP5STFF2020 | DUKHCONP1BZ5STFF2020 | DH | CON | 1B | Z5 | ST | SP | FF | B04 | B04-D02 | RES-1B |  |
| DUKHCONP1BZ5STFF2025 |  | Column-Concrete | 23d | 2014-02-24 | 2014-03-22 | DUKHCONP1BZ5STFF2020 SS+8d, DUKHCONP1BZ5STFF2020 FF+2d | 0d |  | CONCRETE MASON SK [244 h]; LABOR- SUBCONTRACTOR [183 h]; CONCRETE QTY [122 Cum] | 34,974 | 15 | REM | 1BP5SPFF15 | DUKHCON1BP5STFF2025 | DUKHCONP1BZ5STFF2025 | DH | CON | 1B | Z5 | ST | SP | FF | B04 | B04-D02 | RES-1B |  |
| DUKHCONP1BZ5STFF2030 |  | Beam, Stairs ,Slab-Rebar & Formwork | 25d | 2014-02-27 | 2014-03-27 | DUKHCONP1BZ5STFF2025 SS+2d, DUKHCONP1BZ5STFF2025 FF+5d | 0d |  | STEEL FIXERS SK [6851 h]; CARPENTERS SK [6778 h]; LABOR- SUBCONTRACTOR [10221.8 h]; REINFORCEMENT BARS QTY [85628 kg]; FORMWORK QTY [3389 Sqm] | 462,051 | 20 | REM | 1BP5SPFF20 | DUKHCON1BP5STFF2030 | DUKHCONP1BZ5STFF2030 | DH | CON | 1B | Z5 | ST | SP | FF | B04 | B04-D02 | RES-1B |  |
| DUKHCONP1BZ5STFF2035 |  | Beam, Stairs ,Slab-Concrete | 14d | 2014-03-16 | 2014-03-31 | DUKHCONP1BZ5STFF2030 SS+10d, DUKHCONP1BZ4STFF2035, DUKHCONP1BZ5STFF2030 FF+3d | 0d |  | CONCRETE MASON SK [920 h]; LABOR- SUBCONTRACTOR [690 h]; CONCRETE QTY [460 Cum] | 157,662 | 25 | REM | 1BP5SPFF25 | DUKHCON1BP5STFF2035 | DUKHCONP1BZ5STFF2035 | DH | CON | 1B | Z5 | ST | SP | FF | B04 | B04-D02 | RES-1B |  |
|  | 20 | **ROOF** |  | 2014-03-22 | 2014-06-01 |  |  |  |  |  |  |  |  |  |  |  |  |  |  |  |  |  |  |  |  |  |
| DUKHCONP1BZ5STRF2040 |  | Column-Rebar & Formwork | 18d | 2014-03-22 | 2014-04-10 | DUKHCONP1BZ5STFF2035 SS+5d, DUKHCONP1BZ4STRF2040, DUKHCONP1BZ5STFF2035 FF+3d | 9d | 0d | CARPENTERS SK [840 h]; LABOR- SUBCONTRACTOR [630 h]; FORMWORK QTY [420 Sqm] | 23,823 | 10 | REM | 1BP5SPRF10 | DUKHCON1BP5STRF2040 | DUKHCONP1BZ5STRF2040 | DH | CON | 1B | Z5 | ST | SP | RF | B04 | B04-D02 | RES-1B |  |
| DUKHCONP1BZ5STRF2045 |  | Column-Concrete | 17d | 2014-03-25 | 2014-04-13 | DUKHCONP1BZ5STRF2040 FF+1d, DUKHCONP1BZ5STRF2040 SS+3d | 14d | 0d | CONCRETE MASON SK [58 h]; LABOR- SUBCONTRACTOR [43.5 h]; CONCRETE QTY [29 Cum] | 8,325 | 15 | REM | 1BP5SPRF15 | DUKHCON1BP5STRF2045 | DUKHCONP1BZ5STRF2045 | DH | CON | 1B | Z5 | ST | SP | RF | B04 | B04-D02 | RES-1B |  |
| DUKHCONP1BZ5STRF2050 |  | Slab-Rebar & Formwork - Head Room | 20d | 2014-03-27 | 2014-04-19 | DUKHCONP1BZ5STRF2045 FF+5d, DUKHCONP1BZ5STRF2045 SS+2d | 14d | 0d | LABOR- SUBCONTRACTOR [1844.25 h]; REINFORCEMENT BARS QTY [20211 kg]; FORMWORK QTY [421 Sqm]; STEEL FIXERS SK [1617 h]; CARPENTERS SK [842 h] | 100,160 | 20 | REM | 1BP5SPRF20 | DUKHCON1BP5STRF2050 | DUKHCONP1BZ5STRF2050 | DH | CON | 1B | Z5 | ST | SP | RF | B04 | B04-D02 | RES-1B |  |
| DUKHCONP1BZ5STRF2055 |  | Slab-Concrete-Head room | 13d | 2014-04-10 | 2014-04-24 | DUKHCONP1BZ5STRF2050 SS+5d, DUKHCONP1BZ4STRF2055, DUKHCONP1BZ5STRF2050 FF+5d | 14d | 0d | CONCRETE MASON SK [200 h]; LABOR- SUBCONTRACTOR [150 h]; CONCRETE QTY [100 Cum] | 32,380 | 25 | REM | 1BP5SPRF25 | DUKHCON1BP5STRF2055 | DUKHCONP1BZ5STRF2055 | DH | CON | 1B | Z5 | ST | SP | RF | B04 | B04-D02 | RES-1B |  |
| DUKHCONP1BZ5STRF2060 |  | Construction of Parapets | 25d | 2014-04-17 | 2014-05-15 | DUKHCONP1BZ4STRF2060, DUKHCONP1BZ5STRF2055 FF+14d, DUKHCONP1BZ5STRF2055 SS+2d | 62d | 0d | BLOCK MASON SK [940 h]; LABOR- SUBCONTRACTOR [528.75 h]; BLOCK QTY [470 Sqm] | 29,140 | 30 | REM | 1BP5SPRF30 | DUKHCON1BP5STRF2060 | DUKHCONP1BZ5STRF2060 | DH | CON | 1B | Z5 | ST | SP | RF | B04 | B04-D03 | RES-1B |  |
| DUKHCONP1BZ5STRF2065 |  | Construction of up stands/Plinth | 25d | 2014-05-04 | 2014-06-01 | DUKHCONP1BZ4STRF2065, DUKHCONP1BZ5STRF2060 SS+5d, DUKHCONP1BZ5STRF2060 FF+5d | 67d | 0d | STEEL FIXERS SK [73 h]; CARPENTERS SK [300 h]; CONCRETE MASON SK [20 h]; LABOR- SUBCONTRACTOR [294.75 h]; REINFORCEMENT BARS QTY [903 kg]; FORMWORK QTY [150 Sqm]; CONCRETE QTY [10 Cum] | 15,880 | 35 | REM | 1BP5SPRF35 | DUKHCON1BP5STRF2065 | DUKHCONP1BZ5STRF2065 | DH | CON | 1B | Z5 | ST | SP | RF | B04 | B04-D02 | RES-1B |  |
|  | 15 | **FINISHING WORKS** |  | 2014-03-09 | 2014-10-26 |  |  |  |  |  |  |  |  |  |  |  |  |  |  |  |  |  |  |  |  |  |
|  | 10 | **INTERNAL FINISHES** |  | 2014-03-09 | 2014-10-26 |  |  |  |  |  |  |  |  |  |  |  |  |  |  |  |  |  |  |  |  |  |
|  | 10 | **GROUND FLOOR** |  | 2014-03-09 | 2014-08-21 |  |  |  |  |  |  |  |  |  |  |  |  |  |  |  |  |  |  |  |  |  |
| DUKHCONP1BZ5ARGF3000 |  | Block work | 25d | 2014-03-09 | 2014-04-06 | DUKHCONP1BZ5STGF2015 SS+21d, DUKHCONP1BZ5STGF2015 FF+21d, DUKHCONP1BZ4ARGF3000 | 38d | 0d | BLOCK MASON SK [7410 h]; LABOR- SUBCONTRACTOR [4168.5 h]; BLOCK QTY [3705 Sqm] | 244,325 | 10 | REM | 1BP5IFGF10 | DUKHCON1BP5ARGF3000 | DUKHCONP1BZ5ARGF3000 | DH | CON | 1B | Z5 | FIN | IF | GF | B04 | B04-D03 | RES-1B |  |
| DUKHCONP1BZ5ARGF3005 |  | Plastering work | 25d | 2014-03-31 | 2014-04-28 | DUKHCONP1BZ5ELGF4000 SS+5d, DUKHCONP1BZ5PLGF4305 SS+5d, DUKHCONP1BZ5ARGF3000 FF+7d, DUKHCONP1BZ5ELGF4000 FF+5d, DUKHCONP1BZ4ARGF3005, DUKHCONP1BZ5ARGF3000 SS+7d, DUKHCONP1BZ5PLGF4305 FF+5d | 38d | 0d | PLASTER MASON SK [9080 h]; LABOR- SUBCONTRACTOR [5107.5 h]; PLASTER QTY [5675 Sqm] | 74,705 | 12 | REM | 1BP5IFGF12 | DUKHCON1BP5ARGF3005 | DUKHCONP1BZ5ARGF3005 | DH | CON | 1B | Z5 | FIN | IF | GF | B04 | B04-D10 | RES-1B |  |
| DUKHCONP1BZ5ARGF3010 |  | Flooring screed | 21d | 2014-04-08 | 2014-05-01 | DUKHCONP1BZ5ARGF3005 SS+7d, DUKHCONP1BZ5ARGF3005 FF+3d | 46d | 8d | SCREED MASON SK [1973 h]; LABOR- SUBCONTRACTOR [740.25 h]; FLOORING SCREED QTY [2466 Sqm] | 82,460 | 15 | REM | 1BP5IFGF15 | DUKHCON1BP5ARGF3010 | DUKHCONP1BZ5ARGF3010 | DH | CON | 1B | Z5 | FIN | IF | GF | B04 | B04-D10 | RES-1B |  |
| DUKHCONP1BZ5ARGF3030 |  | Paint First coat | 25d | 2014-04-16 | 2014-05-14 | DUKHCONP1BZ4ARGF3030, DUKHCONP1BZ5ARGF3005 FF+14d, DUKHCONP1BZ5ARGF3005 SS+14d | 52d | 0d | LABOR- SUBCONTRACTOR [2023.5 h]; FIRSTCOAT PAINT QTY [6745 Sqm]; PAINTERS SK [5396 h] | 37,425 | 21 | REM | 1BP5IFGF21 | DUKHCON1BP5ARGF3030 | DUKHCONP1BZ5ARGF3030 | DH | CON | 1B | Z5 | FIN | IF | GF | B04 | B04-D11 | RES-1B | ENT |
| DUKHCONP1BZ5ARGF3015 |  | Wet area waterproofing & Protection Screed | 15d | 2014-04-17 | 2014-05-04 | DUKHCONP1BZ5ARGF3005 SS+7d, DUKHCONP1BZ5ARGF3005 FF+5d, DUKHCONP1BZ4ARGF3015 | 38d | 0d | LABOR- SUBCONTRACTOR [144 h]; WETAREA WATERPROOFING QTY [480 Sqm]; WATERPROOFING SPECIALIST SK [384 h] | 16,320 | 18 | REM | 1BP5IFGF18 | DUKHCON1BP5ARGF3015 | DUKHCONP1BZ5ARGF3015 | DH | CON | 1B | Z5 | FIN | IF | GF | B04 | B04-D10 | RES-1B |  |
| DUKHCONP1BZ5ARGF3020 |  | Ceramic Wall Tiling | 25d | 2014-04-23 | 2014-05-21 | DUKHCONP1BZ5PLGF4310 SS+4d, DUKHCONP1BZ4ARGF3020, DUKHCONP1BZ5PLGF4310 FF+4d, DUKHCONP1BZ5PLGF4305 FF+4d, DUKHCONP1BZ5ARGF3015 SS+5d, DUKHCONP1BZ5ARGF3015 FF+5d, DUKHCONP1BZ5PLGF4305 SS+4d | 38d | 0d | TILE MASON SK [2828 h]; LABOR- SUBCONTRACTOR [1590.75 h]; CERAMIC WALL TILE QTY [1414 Sqm] | 80,093 | 24 | REM | 1BP5IFGF24 | DUKHCON1BP5ARGF3020 | DUKHCONP1BZ5ARGF3020 | DH | CON | 1B | Z5 | FIN | IF | GF | B04 | B04-D10 | RES-1B |  |
| DUKHCONP1BZ5ARGF3025 |  | Porcelain Tile flooring | 25d | 2014-04-29 | 2014-05-27 | DUKHCONP1BZ4ARGF3025, DUKHCONP1BZ5ARGF3020 FF+5d, DUKHCONP1BZ5ARGF3010 FF+10d, DUKHCONP1BZ5ARGF3020 SS+5d, DUKHCONP1BZ5ARGF3010 SS+10d | 38d | 0d | TILE MASON SK [1534 h]; LABOR- SUBCONTRACTOR [863.25 h]; PORCELAIN FLOORING QTY [1342 Sqm] | 101,753 | 27 | REM | 1BP5IFGF27 | DUKHCON1BP5ARGF3025 | DUKHCONP1BZ5ARGF3025 | DH | CON | 1B | Z5 | FIN | IF | GF | B04 | B04-D10 | RES-1B |  |
| DUKHCONP1BZ5ARGF3045 |  | Fixing of Suspension systems | 20d | 2014-05-17 | 2014-06-08 | DUKHCONP1BZ5ELGF4010 SS+5d, DUKHCONP1BZ5ARGF3025 SS+10d, DUKHCONP1BZ5ELGF4010 FF+5d, DUKHCONP1BZ5ARGF3025 FF+10d, DUKHCONP1BZ4ARGF3045, DUKHCONP1BZ5ARGF3030 FF+7d, DUKHCONP1BZ5ARGF3030 SS+7d | 38d | 0d | LABOR- SUBCONTRACTOR [594 h]; SUSPENSION QTY [1320 Sqm]; FALSE CEILING SKILLED SK [1056 h] | 26,960 | 39 | REM | 1BP5IFGF39 | DUKHCON1BP5ARGF3045 | DUKHCONP1BZ5ARGF3045 | DH | CON | 1B | Z5 | FIN | IF | GF | B04 | B04-D10 | RES-1B | SUS |
| DUKHCONP1BZ5ARGF3035 |  | Slate Tile Flooring & Skirting | 15d | 2014-05-19 | 2014-06-04 | DUKHCONP1BZ5ARGF3010 FF+13d, DUKHCONP1BZ5ARGF3025 FF+7d, DUKHCONP1BZ5ARGF3010 SS+13d, DUKHCONP1BZ5ARGF3025 SS+13d | 48d | 2d | TILE MASON SK [744 h]; LABOR- SUBCONTRACTOR [418.5 h]; SLATE TILE QTY [465 Sqm] | 97,404 | 33 | REM | 1BP5IFGF33 | DUKHCON1BP5ARGF3035 | DUKHCONP1BZ5ARGF3035 | DH | CON | 1B | Z5 | FIN | IF | GF | B04 | B04-D10 | RES-1B |  |
| DUKHCONP1BZ5ARGF3055 |  | Aluminum tile false ceiling | 25d | 2014-05-25 | 2014-06-22 | DUKHCONP1BZ5ACGF4600 SS+7d, DUKHCONP1BZ5ARGF3045 FF+7d, DUKHCONP1BZ5ARGF3045 SS+7d, DUKHCONP1BZ5ACGF4600 FF+7d | 41d | 3d | LABOR- SUBCONTRACTOR [58.5 h]; FALSE CEILING QTY [130 Sqm]; FALSE CEILING SKILLED SK [104 h] | 8,297 | 42 | REM | 1BP5IFGF42 | DUKHCON1BP5ARGF3055 | DUKHCONP1BZ5ARGF3055 | DH | CON | 1B | Z5 | FIN | IF | GF | B04 | B04-D10 | RES-1B | ALU |
| DUKHCONP1BZ5ARGF3040 |  | Cobble Tile flooring | 15d | 2014-05-26 | 2014-06-11 | DUKHCONP1BZ5ARGF3025 SS+13d, DUKHCONP1BZ5ARGF3010 SS+13d, DUKHCONP1BZ5ARGF3010 FF+13d, DUKHCONP1BZ5ARGF3025 FF+13d, DUKHCONP1BZ5ARGF3035 FF+4d, DUKHCONP1BZ5ARGF3035 SS+4d | 46d | 0d | TILE MASON SK [560 h]; LABOR- SUBCONTRACTOR [315 h]; COBBLE STONE QTY [350 Sqm] | 29,189 | 30 | REM | 1BP5IFGF30 | DUKHCON1BP5ARGF3040 | DUKHCONP1BZ5ARGF3040 | DH | CON | 1B | Z5 | FIN | IF | GF | B04 | B04-D10 | RES-1B |  |
| DUKHCONP1BZ5ARGF3060 |  | Gypsum board false ceiling | 25d | 2014-05-28 | 2014-06-25 | DUKHCONP1BZ5ARGF3045 SS+10d, DUKHCONP1BZ5ACGF4600 SS+7d, DUKHCONP1BZ5ACGF4600 FF+7d, DUKHCONP1BZ5ARGF3045 FF+10d, DUKHCONP1BZ4ARGF3060 | 38d | 0d | LABOR- SUBCONTRACTOR [547.5 h]; FALSE CEILING QTY [1216.02 Sqm]; FALSE CEILING SKILLED SK [973 h] | 66,658 | 45 | REM | 1BP5IFGF45 | DUKHCON1BP5ARGF3060 | DUKHCONP1BZ5ARGF3060 | DH | CON | 1B | Z5 | FIN | IF | GF | B04 | B04-D10 | RES-1B | GYP |
| DUKHCONP1BZ5ARGF3050 |  | Granite - Stair case flooring & Skirting | 20d | 2014-06-03 | 2014-06-25 | DUKHCONP1BZ5ARGF3025 SS+13d, DUKHCONP1BZ5ARGF3040 SS+7d, DUKHCONP1BZ5ARGF3025 FF+13d, DUKHCONP1BZ5ARGF3040 FF+7d | 46d | 0d | GRANITE MASON SK [680 h]; LABOR- SUBCONTRACTOR [382.5 h]; GRANITE QTY [170 Sqm] | 112,400 | 36 | REM | 1BP5IFGF36 | DUKHCON1BP5ARGF3050 | DUKHCONP1BZ5ARGF3050 | DH | CON | 1B | Z5 | FIN | IF | GF | B04 | B04-D10 | RES-1B |  |
| DUKHCONP1BZ5ARGF3065 |  | Wooden door & PVC Door | 15d | 2014-06-17 | 2014-07-03 | DUKHCONP1BZ4ARGF3065, DUKHCONP1BZ5ARGF3035 SS+7d, DUKHCONP1BZ5ARGF3050 SS+7d, DUKHCONP1BZ5ARGF3050 FF+7d, DUKHCONP1BZ5ARGF3035 FF+7d | 46d | 0d | LABOR- SUBCONTRACTOR [225 h]; WOODEN DOOR QTY [150 ea]; DOOR ERECTOR SK [600 h] | 635,284 | 48 | REM | 1BP5IFGF48 | DUKHCON1BP5ARGF3065 | DUKHCONP1BZ5ARGF3065 | DH | CON | 1B | Z5 | FIN | IF | GF | B04 | B04-D05 | RES-1B |  |
| DUKHCONP1BZ5ARGF3070 |  | Aluminum doors | 15d | 2014-06-23 | 2014-07-09 | DUKHCONP1BZ5ARGF3065 FF+5d, DUKHCONP1BZ4ARGF3070, DUKHCONP1BZ5ARGF3065 SS+5d | 46d | 0d | LABOR- SUBCONTRACTOR [30 h]; ALUMINIUM DOOR QTY [20 ea]; DOOR ERECTOR SK [80 h] | 50,266 | 51 | REM | 1BP5IFGF51 | DUKHCON1BP5ARGF3070 | DUKHCONP1BZ5ARGF3070 | DH | CON | 1B | Z5 | FIN | IF | GF | B04 | B04-D06 | RES-1B |  |
| DUKHCONP1BZ5ARGF3075 |  | Carpentry & Joinery Works | 20d | 2014-06-29 | 2014-07-21 | DUKHCONP1BZ5ARGF3070 FF+7d, DUKHCONP1BZ5ARGF3070 SS+5d, DUKHCONP1BZ4ARGF3075 | 46d | 0d | LABOR- SUBCONTRACTOR [180 h]; CABINET QTY [50 ea]; COUNTER QTY [20 ea]; JOINERY WORK SK [400 h]; COUNTER SK [80 h] | 187,296 | 57 | REM | 1BP5IFGF57 | DUKHCON1BP5ARGF3075 | DUKHCONP1BZ5ARGF3075 | DH | CON | 1B | Z5 | FIN | IF | GF | B04 | B04-D05 | RES-1B |  |
| DUKHCONP1BZ5ARGF3080 |  | Aluminum windows | 20d | 2014-06-30 | 2014-07-22 | DUKHCONP1BZ5ARGF3070 SS+6d, DUKHCONP1BZ4ARGF3080, DUKHCONP1BZ5ARGF3070 FF+6d | 56d | 5d | LABOR- SUBCONTRACTOR [88.5 h]; ALUMINIUM WINDOWS QTY [88 ea]; WINDOW ERECTOR SK [235 h] | 32,520 | 54 | REM | 1BP5IFGF54 | DUKHCON1BP5ARGF3080 | DUKHCONP1BZ5ARGF3080 | DH | CON | 1B | Z5 | FIN | IF | GF | B04 | B04-D06 | RES-1B |  |
| DUKHCONP1BZ5ARGF3085 |  | S.S.Balustrade | 20d | 2014-07-07 | 2014-07-29 | DUKHCONP1BZ5ARGF3075 FF+7d, DUKHCONP1BZ5ARGF3050 FF+7d, DUKHCONP1BZ5ARGF3075 SS+7d, DUKHCONP1BZ5ARGF3050 SS+7d | 51d | 5d | LABOR- SUBCONTRACTOR [78.75 h]; S.S.BALUSTRADE QTY [70 lm]; HANDRAIL ERECTOR SKILLED [140 h] | 101,220 | 63 | REM | 1BP5IFGF63 | DUKHCON1BP5ARGF3085 | DUKHCONP1BZ5ARGF3085 | DH | CON | 1B | Z5 | FIN | IF | GF | B04 | B04-D06 | RES-1B |  |
| DUKHCONP1BZ5ARGF3090 |  | Installation of Granite Counter Top | 15d | 2014-07-12 | 2014-07-28 | DUKHCONP1BZ5ARGF3075 FF+6d, DUKHCONP1BZ5ARGF3075 SS+7d | 46d | 0d | GRANITE MASON SK [220 h]; LABOR- SUBCONTRACTOR [82.5 h]; GRANITE COUNTER TOP QTY [55 ea] | 58,568 | 60 | REM | 1BP5IFGF60 | DUKHCON1BP5ARGF3090 | DUKHCONP1BZ5ARGF3090 | DH | CON | 1B | Z5 | FIN | IF | GF | B04 | B04-D10 | RES-1B |  |
| DUKHCONP1BZ5ARGF3095 |  | Final Painting | 25d | 2014-07-21 | 2014-08-21 | DUKHCONP1BZ5ARGF3060 SS+8d, DUKHCONP1BZ5ARGF3070 SS+5d, DUKHCONP1BZ5ARGF3030 SS+10d, DUKHCONP1BZ5ARGF3080 FF+8d, DUKHCONP1BZ5ARGF3030 FF+10d, DUKHCONP1BZ5ARGF3085 FF+7d, DUKHCONP1BZ4ARGF3095, DUKHCONP1BZ5ACGF4610 SS+10d, DUKHCONP1BZ5ARGF3090 FF+8d, DUKHCONP1BZ5ACGF4610 FF+10d, DUKHCONP1BZ5ARGF3080 SS+8d, DUKHCONP1BZ5ARGF3090 SS+8d, DUKHCONP1BZ5ARGF3085 SS+7d, DUKHCONP1BZ5ARGF3040 FF+13d, DUKHCONP1BZ5ARGF3035 SS+13d, DUKHCONP1BZ5ARGF3035 FF+13d, DUKHCONP1BZ5ARGF3070 FF+5d, DUKHCONP1BZ5ARGF3040 SS+13d, DUKHCONP1BZ5ARGF3060 FF+8d | 46d | 0d | LABOR- SUBCONTRACTOR [2023.5 h]; PAINT QTY [6745 Sqm]; PAINTERS SK [5396 h] | 82,416 | 66 | REM | 1BP5IFGF66 | DUKHCON1BP5ARGF3095 | DUKHCONP1BZ5ARGF3095 | DH | CON | 1B | Z5 | FIN | IF | GF | B04 | B04-D11 | RES-1B | PNT |

Notes:
- DUKHCONP1BZ5STGF2000: Expenses: P1B-Concrete Works 113418
- DUKHCONP1BZ5STGF2005: Expenses: P1B-Concrete Works 39960
- DUKHCONP1BZ5STGF2010: Expenses: P1B-Concrete Works 465984
- DUKHCONP1BZ5STGF2015: Expenses: P1B-Concrete Works 175158
- DUKHCONP1BZ5STFF2020: Expenses: P1B-Concrete Works 77760
- DUKHCONP1BZ5STFF2025: Expenses: P1B-Concrete Works 34974
- DUKHCONP1BZ5STFF2030: Expenses: P1B-Concrete Works 462051
- DUKHCONP1BZ5STFF2035: Expenses: P1B-Concrete Works 157662
- DUKHCONP1BZ5STRF2040: Expenses: P1B-Concrete Works 23823
- DUKHCONP1BZ5STRF2045: Expenses: P1B-Concrete Works 8325
- DUKHCONP1BZ5STRF2050: Expenses: P1B-Concrete Works 100160
- DUKHCONP1BZ5STRF2055: Expenses: P1B-Concrete Works 32380
- DUKHCONP1BZ5STRF2060: Expenses: P1B-Block work 29140
- DUKHCONP1BZ5STRF2065: Expenses: P1B-Concrete Works 15880
- DUKHCONP1BZ5ARGF3000: Expenses: P1B-Block work 244325
- DUKHCONP1BZ5ARGF3005: Expenses: P1B-Finishes 74705
- DUKHCONP1BZ5ARGF3010: Expenses: P1B-Finishes 82460
- DUKHCONP1BZ5ARGF3030: Expenses: P1B-Painting and Decorating 37425
- DUKHCONP1BZ5ARGF3015: Expenses: P1B-Finishes 16320
- DUKHCONP1BZ5ARGF3020: Expenses: P1B-Finishes 80093
- DUKHCONP1BZ5ARGF3025: Expenses: P1B-Finishes 101753
- DUKHCONP1BZ5ARGF3045: Expenses: P1B-Finishes 26960
- DUKHCONP1BZ5ARGF3035: Expenses: P1B-Finishes 97404
- DUKHCONP1BZ5ARGF3055: Expenses: P1B-Finishes 8297
- DUKHCONP1BZ5ARGF3040: Expenses: P1B-Finishes 29189
- DUKHCONP1BZ5ARGF3060: Expenses: P1B-Finishes 66658
- DUKHCONP1BZ5ARGF3050: Expenses: P1B-Finishes 112400
- DUKHCONP1BZ5ARGF3065: Expenses: P1B-Carpentry and Joinery 635284
- DUKHCONP1BZ5ARGF3070: Expenses: P1B-Metal work 50266
- DUKHCONP1BZ5ARGF3075: Expenses: P1B-Carpentry and Joinery 187296
- DUKHCONP1BZ5ARGF3080: Expenses: P1B-Metal work 32520
- DUKHCONP1BZ5ARGF3085: Expenses: P1B-Metal work 101220
- DUKHCONP1BZ5ARGF3090: Expenses: P1B-Finishes 58568
- DUKHCONP1BZ5ARGF3095: Expenses: P1B-Painting and Decorating 82416

| ID | WBS | Activity | Duration | Start | Finish | Predecessors | Total float | Free float | Resources | Cost | CODE | rem | P3 ACTID | P6 ID (old) | NP61D | PROJECT | PHASES | PACKAGE | PART | ELEMENTS | STEP | FLOORS | BILL NOS | BILL DIVISION | RES PACK | EXECUTER |
| --- | --- | --- | --- | --- | --- | --- | --- | --- | --- | --- | --- | --- | --- | --- | --- | --- | --- | --- | --- | --- | --- | --- | --- | --- | --- | --- |
|  | 15 | **FIRST FLOORS** |  | 2014-04-19 | 2014-10-26 |  |  |  |  |  |  |  |  |  |  |  |  |  |  |  |  |  |  |  |  |  |
| DUKHCONP1BZ5ARFF3300 |  | Block work | 25d | 2014-04-19 | 2014-05-17 | DUKHCONP1BZ5STFF2020 SS+21d, DUKHCONP1BZ5STFF2035 SS+21d, DUKHCONP1BZ5STFF2020 FF+21d, DUKHCONP1BZ5STFF2035 FF+21d, DUKHCONP1BZ4ARFF3300 | -8d | 0d | BLOCK MASON SK [5872 h]; LABOR- SUBCONTRACTOR [3303 h]; BLOCK QTY [2936 Sqm] | 200,339 | 10 | REM | 1BP5IFFF10 | DUKHCON1BP5ARFF3300 | DUKHCONP1BZ5ARFF3300 | DH | CON | 1B | Z5 | FIN | IF | FF | B04 | B04-D03 | RES-1B |  |
| DUKHCONP1BZ5ARFF3305 |  | Plastering work | 25d | 2014-05-15 | 2014-06-12 | DUKHCONP1BZ5PLFF4325 SS+8d, DUKHCONP1BZ5ARFF3300 SS+7d, DUKHCONP1BZ5ELFF4035 SS+5d, DUKHCONP1BZ4ARFF3305, DUKHCONP1BZ5ELFF4035 FF+5d, DUKHCONP1BZ5PLFF4325 FF+8d, DUKHCONP1BZ5ARFF3300 FF+7d | -8d | 0d | PLASTER MASON SK [6015 h]; LABOR- SUBCONTRACTOR [3384 h]; PLASTER QTY [3759 Sqm] | 49,790 | 12 | REM | 1BP5IFFF12 | DUKHCON1BP5ARFF3305 | DUKHCONP1BZ5ARFF3305 | DH | CON | 1B | Z5 | FIN | IF | FF | B04 | B04-D10 | RES-1B |  |
| DUKHCONP1BZ5ARFF3310 |  | Flooring screed | 21d | 2014-05-24 | 2014-06-16 | DUKHCONP1BZ5ARFF3305 SS+7d, DUKHCONP1BZ5ARFF3305 FF+3d | 9d | 17d | SCREED MASON SK [983 h]; LABOR- SUBCONTRACTOR [369 h]; FLOORING SCREED QTY [1228 Sqm] | 40,540 | 15 | REM | 1BP5IFFF15 | DUKHCON1BP5ARFF3310 | DUKHCONP1BZ5ARFF3310 | DH | CON | 1B | Z5 | FIN | IF | FF | B04 | B04-D10 | RES-1B |  |
| DUKHCONP1BZ5ARFF3330 |  | Paint First coat | 25d | 2014-06-01 | 2014-06-29 | DUKHCONP1BZ5ARFF3305 SS+14d, DUKHCONP1BZ5ARFF3305 FF+14d | 18d | 26d | LABOR- SUBCONTRACTOR [1791.9 h]; FIRSTCOAT PAINT QTY [5973 Sqm]; PAINTERS SK [4778.4 h] | 37,434 | 21 | REM | 1BP5IFFF21 | DUKHCON1BP5ARFF3330 | DUKHCONP1BZ5ARFF3330 | DH | CON | 1B | Z5 | FIN | IF | FF | B04 | B04-D11 | RES-1B | ENT |
| DUKHCONP1BZ5ARFF3315 |  | Wet area waterproofing | 15d | 2014-06-05 | 2014-06-22 | DUKHCONP1BZ5ARFF3305 FF+8d, DUKHCONP1BZ5ARFF3305 SS+7d, DUKHCONP1BZ4ARFF3315 | -8d | 0d | LABOR- SUBCONTRACTOR [468 h]; WETAREA WATERPROOFING QTY [1560 Sqm]; WATERPROOFING SPECIALIST SK [1248 h] | 51,280 | 18 | REM | 1BP5IFFF18 | DUKHCON1BP5ARFF3315 | DUKHCONP1BZ5ARFF3315 | DH | CON | 1B | Z5 | FIN | IF | FF | B04 | B04-D10 | RES-1B |  |
| DUKHCONP1BZ5ARFF3320 |  | Ceramic Wall Tiling | 25d | 2014-06-15 | 2014-07-13 | DUKHCONP1BZ5ARFF3315 FF+7d, DUKHCONP1BZ5ARFF3315 SS+8d, DUKHCONP1BZ5PLFF4330 SS+7d, DUKHCONP1BZ5PLFF4330 FF+7d, DUKHCONP1BZ4ARFF3320, DUKHCONP1BZ5PLFF4325 SS+4d, DUKHCONP1BZ5PLFF4325 FF+4d | -8d | 0d | TILE MASON SK [1212 h]; LABOR- SUBCONTRACTOR [681.75 h]; CERAMIC WALL TILE QTY [606 Sqm] | 38,393 | 24 | REM | 1BP5IFFF24 | DUKHCON1BP5ARFF3320 | DUKHCONP1BZ5ARFF3320 | DH | CON | 1B | Z5 | FIN | IF | FF | B04 | B04-D10 | RES-1B |  |
| DUKHCONP1BZ5ARFF3325 |  | Porcelain Tile flooring | 25d | 2014-06-24 | 2014-07-22 | DUKHCONP1BZ5ARFF3310 FF+10d, DUKHCONP1BZ5ARFF3320 SS+8d, DUKHCONP1BZ4ARFF3325, DUKHCONP1BZ5ARFF3320 FF+8d, DUKHCONP1BZ5ARFF3310 SS+10d | -8d | 0d | TILE MASON SK [1072 h]; LABOR- SUBCONTRACTOR [603 h]; PORCELAIN FLOORING QTY [938 Sqm] | 77,604 | 27 | REM | 1BP5IFFF27 | DUKHCON1BP5ARFF3325 | DUKHCONP1BZ5ARFF3325 | DH | CON | 1B | Z5 | FIN | IF | FF | B04 | B04-D10 | RES-1B |  |
| DUKHCONP1BZ5ARFF3335 |  | Slate Tile Flooring & Skirting | 15d | 2014-07-12 | 2014-07-28 | DUKHCONP1BZ5ARFF3325 SS+13d, DUKHCONP1BZ5ARFF3325 FF+5d, DUKHCONP1BZ5ARFF3310 FF+13d, DUKHCONP1BZ5ARFF3310 SS+13d | 11d | 19d | TILE MASON SK [744 h]; LABOR- SUBCONTRACTOR [418.5 h]; SLATE TILE QTY [465 Sqm] | 92,849 | 30 | REM | 1BP5IFFF30 | DUKHCON1BP5ARFF3335 | DUKHCONP1BZ5ARFF3335 | DH | CON | 1B | Z5 | FIN | IF | FF | B04 | B04-D10 | RES-1B |  |
| DUKHCONP1BZ5ARFF3345 |  | Fixing of Suspension systems | 20d | 2014-07-15 | 2014-08-10 | DUKHCONP1BZ5ELFF4045 FF+5d, DUKHCONP1BZ5ELFF4045 SS+5d, DUKHCONP1BZ5ARFF3330 SS+7d, DUKHCONP1BZ5ARFF3325 FF+13d, DUKHCONP1BZ5ARFF3330 FF+7d, DUKHCONP1BZ5ARFF3325 SS+13d, DUKHCONP1BZ4ARFF3345 | -8d | 0d | LABOR- SUBCONTRACTOR [535.5 h]; SUSPENSION QTY [1190 Sqm]; FALSE CEILING SKILLED SK [952 h] | 23,500 | 36 | REM | 1BP5IFFF36 | DUKHCON1BP5ARFF3345 | DUKHCONP1BZ5ARFF3345 | DH | CON | 1B | Z5 | FIN | IF | FF | B04 | B04-D10 | RES-1B | SUS |
| DUKHCONP1BZ5ARFF3350 |  | Granite - Stair case flooring & Skirting | 20d | 2014-07-15 | 2014-08-10 | DUKHCONP1BZ5ARFF3325 FF+13d, DUKHCONP1BZ5ARFF3325 SS+13d | 3d | 11d | GRANITE MASON SK [680 h]; LABOR- SUBCONTRACTOR [382.5 h]; GRANITE QTY [170 Sqm] | 112,404 | 33 | REM | 1BP5IFFF33 | DUKHCON1BP5ARFF3350 | DUKHCONP1BZ5ARFF3350 | DH | CON | 1B | Z5 | FIN | IF | FF | B04 | B04-D10 | RES-1B |  |
| DUKHCONP1BZ5ARFF3360 |  | Gypsum board false ceiling | 25d | 2014-07-27 | 2014-08-27 | DUKHCONP1BZ5ARFF3345 FF+10d, DUKHCONP1BZ5ACFF4615 FF+7d, DUKHCONP1BZ5ACFF4615 SS+7d, DUKHCONP1BZ5ARFF3345 SS+10d, DUKHCONP1BZ4ARFF3360 | -8d | 0d | LABOR- SUBCONTRACTOR [535.5 h]; FALSE CEILING QTY [1190 Sqm]; FALSE CEILING SKILLED SK [952 h] | 66,658 | 39 | REM | 1BP5IFFF39 | DUKHCON1BP5ARFF3360 | DUKHCONP1BZ5ARFF3360 | DH | CON | 1B | Z5 | FIN | IF | FF | B04 | B04-D10 | RES-1B | GYP |
| DUKHCONP1BZ5ARFF3365 |  | Wooden door | 15d | 2014-08-14 | 2014-08-31 | DUKHCONP1BZ5ARFF3360 FF+3d, DUKHCONP1BZ5ARFF3360 SS+3d, DUKHCONP1BZ4ARFF3365, DUKHCONP1BZ5ARFF3335 FF+7d, DUKHCONP1BZ5ARFF3350 SS+7d, DUKHCONP1BZ5ARFF3335 SS+7d, DUKHCONP1BZ5ARFF3350 FF+7d | -8d | 0d | LABOR- SUBCONTRACTOR [60 h]; WOODEN DOOR QTY [40 ea]; DOOR ERECTOR SK [160 h] | 138,658 | 42 | REM | 1BP5IFFF42 | DUKHCON1BP5ARFF3365 | DUKHCONP1BZ5ARFF3365 | DH | CON | 1B | Z5 | FIN | IF | FF | B04 | B04-D05 | RES-1B |  |
| DUKHCONP1BZ5ARFF3370 |  | Aluminum Door | 20d | 2014-08-23 | 2014-09-14 | DUKHCONP1BZ5ARFF3365 FF+5d, DUKHCONP1BZ4ARFF3370, DUKHCONP1BZ5ARFF3365 SS+7d | -8d | 0d | LABOR- SUBCONTRACTOR [45 h]; ALUMINIUM DOOR QTY [30 ea]; DOOR ERECTOR SK [120 h] | 77,706 | 45 | REM | 1BP5IFFF45 | DUKHCON1BP5ARFF3370 | DUKHCONP1BZ5ARFF3370 | DH | CON | 1B | Z5 | FIN | IF | FF | B04 | B04-D06 | RES-1B |  |
| DUKHCONP1BZ5ARFF3380 |  | Aluminum windows | 20d | 2014-08-30 | 2014-09-21 | DUKHCONP1BZ5ARFF3370 SS+6d, DUKHCONP1BZ5ARFF3370 FF+6d | 5d | 13d | LABOR- SUBCONTRACTOR [92.25 h]; ALUMINIUM WINDOWS QTY [92 ea]; WINDOW ERECTOR SK [246 h] | 54,912 | 48 | REM | 1BP5IFFF48 | DUKHCON1BP5ARFF3380 | DUKHCONP1BZ5ARFF3380 | DH | CON | 1B | Z5 | FIN | IF | FF | B04 | B04-D06 | RES-1B |  |
| DUKHCONP1BZ5ARFF3375 |  | Carpentry & Joinery Works | 25d | 2014-08-31 | 2014-09-28 | DUKHCONP1BZ5ARFF3370 SS+7d, DUKHCONP1BZ5ARFF3370 FF+5d, DUKHCONP1BZ4ARFF3375 | -8d | 0d | LABOR- SUBCONTRACTOR [240 h]; CABINET QTY [20 ea]; COUNTER QTY [20 ea]; WARDROBE QTY [30 ea]; SHELVES QTY [20 ea]; JOINERY WORK SK [560 h]; COUNTER SK [80 h] | 244,116 | 51 | REM | 1BP5IFFF51 | DUKHCON1BP5ARFF3375 | DUKHCONP1BZ5ARFF3375 | DH | CON | 1B | Z5 | FIN | IF | FF | B04 | B04-D05 | RES-1B |  |
| DUKHCONP1BZ5ARFF3385 |  | Handrail & Balustrade | 20d | 2014-09-14 | 2014-10-06 | DUKHCONP1BZ5ARFF3350 FF+7d, DUKHCONP1BZ5ARFF3350 SS+7d, DUKHCONP1BZ5ARFF3375 FF+7d, DUKHCONP1BZ5ARFF3375 SS+7d | -8d | 0d | LABOR- SUBCONTRACTOR [78.75 h]; S.S.BALUSTRADE QTY [70 lm]; HANDRAIL ERECTOR SKILLED [140 h] | 75,914 | 57 | REM | 1BP5IFFF57 | DUKHCON1BP5ARFF3385 | DUKHCONP1BZ5ARFF3385 | DH | CON | 1B | Z5 | FIN | IF | FF | B04 | B04-D06 | RES-1B |  |
| DUKHCONP1BZ5ARFF3390 |  | Installation of Granite Counter Top | 20d | 2014-09-14 | 2014-10-06 | DUKHCONP1BZ5ARFF3375 FF+7d, DUKHCONP1BZ5ARFF3375 SS+7d | -6d | 2d | LABOR- SUBCONTRACTOR [37.5 h]; GRANITE COUNTER TOP QTY [25 ea]; GRANITE MASON SK [100 h] | 11,864 | 54 | REM | 1BP5IFFF54 | DUKHCON1BP5ARFF3390 | DUKHCONP1BZ5ARFF3390 | DH | CON | 1B | Z5 | FIN | IF | FF | B04 | B04-D10 | RES-1B |  |
| DUKHCONP1BZ5ARFF3395 |  | Final Painting | 25d | 2014-09-25 | 2014-10-26 | DUKHCONP1BZ5ARFF3390 FF+8d, DUKHCONP1BZ5ARFF3330 SS+10d, DUKHCONP1BZ5ARFF3375 FF+8d, DUKHCONP1BZ5ARFF3365 SS+8d, DUKHCONP1BZ5ARFF3380 SS+10d, DUKHCONP1BZ5ARFF3350 SS+8d, DUKHCONP1BZ5ARFF3390 SS+8d, DUKHCONP1BZ4ARFF3395, DUKHCONP1BZ5ACFF4625 SS+10d, DUKHCONP1BZ5ARFF3365 FF+8d, DUKHCONP1BZ5ARFF3375 SS+8d, DUKHCONP1BZ5ARFF3360 SS+10d, DUKHCONP1BZ5ACFF4625 FF+10d, DUKHCONP1BZ5ARFF3330 FF+10d, DUKHCONP1BZ5ARFF3335 SS+8d, DUKHCONP1BZ5ARFF3350 FF+8d, DUKHCONP1BZ5ARFF3380 FF+10d, DUKHCONP1BZ5ARFF3385 SS+10d, DUKHCONP1BZ5ARFF3335 FF+8d, DUKHCONP1BZ5ARFF3360 FF+10d, DUKHCONP1BZ5ARFF3385 FF+10d | -8d | 0d | LABOR- SUBCONTRACTOR [1791.9 h]; PAINT QTY [5973 Sqm]; PAINTERS SK [4778.4 h] | 68,714 | 60 | REM | 1BP5IFFF60 | DUKHCON1BP5ARFF3395 | DUKHCONP1BZ5ARFF3395 | DH | CON | 1B | Z5 | FIN | IF | FF | B04 | B04-D11 | RES-1B | PNT |
|  | 20 | **ROOF** |  | 2014-05-05 | 2014-07-19 |  |  |  |  |  |  |  |  |  |  |  |  |  |  |  |  |  |  |  |  |  |
| DUKHCONP1BZ5ARRF3600 |  | Block work | 20d | 2014-05-05 | 2014-05-27 | DUKHCONP1BZ5STRF2055 FF+21d, DUKHCONP1BZ4ARRF3600, DUKHCONP1BZ5STRF2055 SS+21d | 67d | 0d | BLOCK MASON SK [558 h]; LABOR- SUBCONTRACTOR [314.25 h]; BLOCK QTY [279 Sqm] | 20,118 | 10 | REM | 1BP5IFRF10 | DUKHCON1BP5ARRF3600 | DUKHCONP1BZ5ARRF3600 | DH | CON | 1B | Z5 | FIN | IF | RF | B04 | B04-D03 | RES-1B |  |
| DUKHCONP1BZ5ARRF3605 |  | Plastering work | 20d | 2014-05-17 | 2014-06-08 | DUKHCONP1BZ5ARRF3600 SS+10d, DUKHCONP1BZ5ARRF3600 FF+10d | 67d | 0d | PLASTER MASON SK [3066 h]; LABOR- SUBCONTRACTOR [1725 h]; PLASTER QTY [1916 Sqm] | 24,908 | 20 | REM | 1BP5IFRF20 | DUKHCON1BP5ARRF3605 | DUKHCONP1BZ5ARRF3605 | DH | CON | 1B | Z5 | FIN | IF | RF | B04 | B04-D10 | RES-1B |  |
| DUKHCONP1BZ5ARRF3610 |  | Flooring screed | 15d | 2014-06-03 | 2014-06-19 | DUKHCONP1BZ5ARRF3605 FF+10d, DUKHCONP1BZ5ARRF3605 SS+10d | 67d | 0d | SCREED MASON SK [140 h]; LABOR- SUBCONTRACTOR [52.5 h]; FLOORING SCREED QTY [175 Sqm] | 5,790 | 30 | REM | 1BP5IFRF30 | DUKHCON1BP5ARRF3610 | DUKHCONP1BZ5ARRF3610 | DH | CON | 1B | Z5 | FIN | IF | RF | B04 | B04-D10 | RES-1B |  |
| DUKHCONP1BZ5ARRF3695 |  | Painting -Storage area | 20d | 2014-06-15 | 2014-07-07 | DUKHCONP1BZ5ARRF3610 FF+10d, DUKHCONP1BZ5ARRF3610 SS+10d | 67d | 0d | LABOR- SUBCONTRACTOR [570 h]; PAINT QTY [1840 Sqm]; PAINTERS SK [1480 h] | 9,885 | 40 |  | 1BP5IFRF40 | DUKHCON1BP5ARRF3695 | DUKHCONP1BZ5ARRF3695 | DH | CON | 1B | Z5 | FIN | IF | RF | B04 | B04-D11 | RES-1B |  |
| DUKHCONP1BZ5ARRF3620 |  | Epoxy Painting -Storage area | 15d | 2014-07-02 | 2014-07-19 | DUKHCONP1BZ5ARRF3695 SS+10d, DUKHCONP1BZ5ARRF3695 FF+10d | 67d | 0d | LABOR- SUBCONTRACTOR [16.5 h]; EPOXY QTY [80 Sqm]; EPOXY SK [43 h] | 5,700 | 50 | REM | 1BP5IFRF50 | DUKHCON1BP5ARRF3620 | DUKHCONP1BZ5ARRF3620 | DH | CON | 1B | Z5 | FIN | IF | RF | B04 | B04-D11 | RES-1B |  |

Notes:
- DUKHCONP1BZ5ARFF3300: Expenses: P1B-Block work 200339
- DUKHCONP1BZ5ARFF3305: Expenses: P1B-Finishes 49790
- DUKHCONP1BZ5ARFF3310: Expenses: P1B-Finishes 40540
- DUKHCONP1BZ5ARFF3330: Expenses: P1B-Painting and Decorating 37434
- DUKHCONP1BZ5ARFF3315: Expenses: P1B-Finishes 51280
- DUKHCONP1BZ5ARFF3320: Expenses: P1B-Finishes 38393
- DUKHCONP1BZ5ARFF3325: Expenses: P1B-Finishes 77604
- DUKHCONP1BZ5ARFF3335: Expenses: P1B-Finishes 92849
- DUKHCONP1BZ5ARFF3345: Expenses: P1B-Finishes 23500
- DUKHCONP1BZ5ARFF3350: Expenses: P1B-Finishes 112404
- DUKHCONP1BZ5ARFF3360: Expenses: P1B-Finishes 66658
- DUKHCONP1BZ5ARFF3365: Expenses: P1B-Carpentry and Joinery 138658
- DUKHCONP1BZ5ARFF3370: Expenses: P1B-Metal work 77706
- DUKHCONP1BZ5ARFF3380: Expenses: P1B-Metal work 54912
- DUKHCONP1BZ5ARFF3375: Expenses: P1B-Carpentry and Joinery 244116
- DUKHCONP1BZ5ARFF3385: Expenses: P1B-Metal work 75914
- DUKHCONP1BZ5ARFF3390: Expenses: P1B-Finishes 11864
- DUKHCONP1BZ5ARFF3395: Expenses: P1B-Painting and Decorating 68714
- DUKHCONP1BZ5ARRF3600: Expenses: P1B-Block work 20118
- DUKHCONP1BZ5ARRF3605: Expenses: P1B-Finishes 24908
- DUKHCONP1BZ5ARRF3610: Expenses: P1B-Finishes 5790
- DUKHCONP1BZ5ARRF3695: Expenses: P1B-Painting and Decorating 9885
- DUKHCONP1BZ5ARRF3620: Expenses: P1B-Painting and Decorating 5700

| ID | WBS | Activity | Duration | Start | Finish | Predecessors | Total float | Free float | Resources | Cost | CODE | rem | P3 ACTID | P6 ID (old) | NP61D | PROJECT | PHASES | PACKAGE | PART | ELEMENTS | STEP | FLOORS | BILL NOS | BILL DIVISION | RES PACK |
| --- | --- | --- | --- | --- | --- | --- | --- | --- | --- | --- | --- | --- | --- | --- | --- | --- | --- | --- | --- | --- | --- | --- | --- | --- | --- |
|  | 15 | **EXTERNAL FINISHES** |  | 2014-05-15 | 2014-07-27 |  |  |  |  |  |  |  |  |  |  |  |  |  |  |  |  |  |  |  |  |
|  | 10 | **ROOF** |  | 2014-05-15 | 2014-07-24 |  |  |  |  |  |  |  |  |  |  |  |  |  |  |  |  |  |  |  |  |
| DUKHCONP1BZ5ARRF3630 |  | Leveling Screed for Waterproofing | 25d | 2014-05-15 | 2014-06-12 | DUKHCONP1BZ5STRF2060 SS+10d, DUKHCONP1BZ5STRF2065 SS+10d, DUKHCONP1BZ5STRF2060 FF+10d, DUKHCONP1BZ5STRF2065 FF+10d, DUKHCONP1BZ4ARRF3630 | 67d | 0d | SCREED MASON SK [568 h]; LABOR- SUBCONTRACTOR [319.5 h]; ROOF WP SCREED QTY [1420 Sqm] | 61,090 | 10 | REM | 1BP5EFRF10 | DUKHCON1BP5ARRF3630 | DUKHCONP1BZ5ARRF3630 | DH | CON | 1B | Z5 | FIN | EF | RF | B04 | B04-D04 | RES-1B |
| DUKHCONP1BZ5ARRF3635 |  | Laying of Waterproofing Membrane | 25d | 2014-05-19 | 2014-06-16 | DUKHCONP1BZ5ARRF3630 SS+3d, DUKHCONP1BZ5ARRF3630 FF+3d | 67d | 0d | LABOR- SUBCONTRACTOR [336 h]; ROOF WP MEMBRANE QTY [1680 Sqm]; WATERPROOFING SPECIALIST SK [896 h] | 44,092 | 15 | REM | 1BP5EFRF15 | DUKHCON1BP5ARRF3635 | DUKHCONP1BZ5ARRF3635 | DH | CON | 1B | Z5 | FIN | EF | RF | B04 | B04-D04 | RES-1B |
| DUKHCONP1BZ5ARRF3640 |  | Installation of Insulation & Protection | 25d | 2014-05-24 | 2014-06-21 | DUKHCONP1BZ5ARRF3635 SS+4d, DUKHCONP1BZ5ARRF3635 FF+4d | 67d | 0d | LABOR- SUBCONTRACTOR [426 h]; ROOF WP INSULATION QTY [2840 Sqm]; WATERPROOFING SPECIALIST SK [1136 h] | 53,540 | 20 | REM | 1BP5EFRF20 | DUKHCON1BP5ARRF3640 | DUKHCONP1BZ5ARRF3640 | DH | CON | 1B | Z5 | FIN | EF | RF | B04 | B04-D04 | RES-1B |
| DUKHCONP1BZ5ARRF3645 |  | Lime Stone Chips & Paving slab Installation | 25d | 2014-05-28 | 2014-06-25 | DUKHCONP1BZ5ARRF3640 FF+4d, DUKHCONP1BZ5ARRF3640 SS+4d | 67d | 0d | LABOR- SUBCONTRACTOR [213 h]; LIME STONE QTY [80 Sqm]; PRECAST PAVING SLAB QTY [1340 Sqm]; PRE CAST CONCRETE SK [536 h]; TILE MASON SK [32 h] | 97,060 | 25 | REM | 1BP5EFRF25 | DUKHCON1BP5ARRF3645 | DUKHCONP1BZ5ARRF3645 | DH | CON | 1B | Z5 | FIN | EF | RF | B04 | B04-D04 | RES-1B |
| DUKHCONP1BZ5ARRF3650 |  | Install. of Gal. Frame & Aluminum Slat Screen | 25d | 2014-06-05 | 2014-07-03 | DUKHCONP1BZ5ARRF3645 FF+7d, DUKHCONP1BZ5ARRF3645 SS+7d | 67d | 0d | LABOR- SUBCONTRACTOR [460.5 h]; ALUMINIUM SCREEN QTY [230 Sqm]; DOOR ERECTOR SK [614 h] | 65,044 | 35 | REM | 1BP5EFRF35 | DUKHCON1BP5ARRF3650 | DUKHCONP1BZ5ARRF3650 | DH | CON | 1B | Z5 | FIN | EF | RF | B04 | B04-D06 | RES-1B |
| DUKHCONP1BZ5ARRF3655 |  | Installation of Pumps Protection cabinets | 20d | 2014-06-21 | 2014-07-13 | DUKHCONP1BZ5ARRF3645 FF+7d, DUKHCONP1BZ5ARRF3650 SS+8d, DUKHCONP1BZ5ARRF3645 SS+7d, DUKHCONP1BZ5ARRF3650 FF+8d, DUKHCONP1BZ4ARRF3655 | 67d | 0d | LABOR- SUBCONTRACTOR [210 h]; CABINET QTY [70 ea]; JOINERY WORK SK [560 h] | 33,250 | 30 | REM | 1BP5EFRF30 | DUKHCON1BP5ARRF3655 | DUKHCONP1BZ5ARRF3655 | DH | CON | 1B | Z5 | FIN | EF | RF | B04 | B04-D04 | RES-1B |
| DUKHCONP1BZ5ARRF3660 |  | Installation of Access Ladder | 15d | 2014-07-08 | 2014-07-24 | DUKHCONP1BZ5ARRF3655 FF+10d, DUKHCONP1BZ5ARRF3655 SS+10d, DUKHCONP1BZ5ARRF3620 SS+5d | 67d | 75d | LADDER QTY [40 ea]; LADDER ERECTOR SK [320 h]; LABOR- SUBCONTRACTOR [120 h] | 43,890 | 40 | REM | 1BP5EFRF40 | DUKHCON1BP5ARRF3660 | DUKHCONP1BZ5ARRF3660 | DH | CON | 1B | Z5 | FIN | EF | RF | B04 | B04-D06 | RES-1B |
|  | 15 | **ELEVATION** |  | 2014-05-31 | 2014-07-27 |  |  |  |  |  |  |  |  |  |  |  |  |  |  |  |  |  |  |  |  |
| DUKHCONP1BZ5AREL3665 |  | External Plastering | 25d | 2014-05-31 | 2014-06-28 | DUKHCONP1BZ4AREL3665, DUKHCONP1BZ5STRF2065 FF+7d, DUKHCONP1BZ5ARRF3605 SS+7d, DUKHCONP1BZ5ARFF3305 SS+7d, DUKHCONP1BZ5STRF2065 SS+7d, DUKHCONP1BZ5ARFF3305 FF+7d | 65d | 0d | PLASTER MASON SK [9760 h]; LABOR- SUBCONTRACTOR [5490 h]; EXTERNAL PLASTER QTY [4880 Sqm] | 189,022 | 10 | REM | 1BP5EFEL10 | DUKHCON1BP5AREL3665 | DUKHCONP1BZ5AREL3665 | DH | CON | 1B | Z5 | FIN | EF | EL | B04 | B04-D10 | RES-1B |
| DUKHCONP1BZ5AREL3670 |  | External stone cladding works | 20d | 2014-06-17 | 2014-07-09 | DUKHCONP1BZ4AREL3670, DUKHCONP1BZ5AREL3665 FF+10d, DUKHCONP1BZ5AREL3665 SS+10d | 65d | 0d | TILE MASON SK [840 h]; LABOR- SUBCONTRACTOR [330 h]; STONE CLADDING QTY [420 Sqm] | 6,656 | 15 |  | 1BP5EFEL15 | DUKHCON1BP5AREL3670 | DUKHCONP1BZ5AREL3670 | DH | CON | 1B | Z5 | FIN | EF | EL | B04 | B04-D10 | RES-1B |
| DUKHCONP1BZ5AREL3675 |  | GRC works | 20d | 2014-06-23 | 2014-07-15 | DUKHCONP1BZ5AREL3670 SS+5d, DUKHCONP1BZ5AREL3665 FF+10d, DUKHCONP1BZ4AREL3675, DUKHCONP1BZ5AREL3665 SS+10d | 65d | 0d | LABOR- SUBCONTRACTOR [150 h]; GRC SK [400 h] | 15,400 | 15 |  | 1BP5EFEL18 | DUKHCON1BP5AREL3675 | DUKHCONP1BZ5AREL3675 | DH | CON | 1B | Z5 | FIN | EF | EL | B04 | B04-D10 | RES-1B |
| DUKHCONP1BZ5AREL3680 |  | External Painting | 20d | 2014-07-05 | 2014-07-27 | DUKHCONP1BZ5ARRF3695 SS+4d, DUKHCONP1BZ5AREL3670 FF+10d, DUKHCONP1BZ4AREL3680, DUKHCONP1BZ5AREL3670 SS+10d, DUKHCONP1BZ5ARRF3695 FF+4d, DUKHCONP1BZ5AREL3675 FF+10d, DUKHCONP1BZ5AREL3675 SS+10d | 65d | 5d | LABOR- SUBCONTRACTOR [1440 h]; PAINT QTY [4800 Sqm]; PAINTERS SK [3840 h] | 142,868 | 20 |  | 1BP5EFEL20 | DUKHCON1BP5AREL3680 | DUKHCONP1BZ5AREL3680 | DH | CON | 1B | Z5 | FIN | EF | EL | B04 | B04-D11 | RES-1B |
|  | 20 | **MEP WORKS** |  | 2013-12-07 | 2014-10-26 |  |  |  |  |  |  |  |  |  |  |  |  |  |  |  |  |  |  |  |  |
|  | 10 | **ELECTRICAL WORKS** |  | 2014-03-15 | 2014-10-26 |  |  |  |  |  |  |  |  |  |  |  |  |  |  |  |  |  |  |  |  |
|  | 10 | **GROUND FLOOR** |  | 2014-03-15 | 2014-07-21 |  |  |  |  |  |  |  |  |  |  |  |  |  |  |  |  |  |  |  |  |
| DUKHCONP1BZ5ELGF4000 |  | Fixing of wall conduits & switch socket boxes | 25d | 2014-03-15 | 2014-04-12 | DUKHCONP1BZ5ARGF3000 FF+5d, DUKHCONP1BZ5ARGF3000 SS+5d | 47d | 0d | LABOR- SUBCONTRACTOR [480 h]; ELECTRICIANS SK [2744 h]; SOCKET BOXES QTY [1900 ea]; CODUITS QTY [560 lm] | 42,903 | 10 |  | 1BP5EWGF10 | DUKHCON1BP5ELGF4000 | DUKHCONP1BZ5ELGF4000 | DH | CON | 1B | Z5 | MEP | EW | GF | B04 | B04-D09 | RES-1B |
| DUKHCONP1BZ5ELGF4005 |  | Cable tray & trunking installation | 20d | 2014-03-26 | 2014-04-17 | DUKHCONP1BZ5ELGF4000 SS+5d, DUKHCONP1BZ5ELGF4000 FF+5d, DUKHCONP1BZ4ELGF4005 | 65d | 0d | LABOR- SUBCONTRACTOR [840 h]; ELECTRICIANS SK [3136 h]; CABLE TRAY QTY [560 lm] | 9,420 | 15 |  | 1BP5EWGF15 | DUKHCON1BP5ELGF4005 | DUKHCONP1BZ5ELGF4005 | DH | CON | 1B | Z5 | MEP | EW | GF | B04 | B04-D09 | RES-1B |
| DUKHCONP1BZ5ELGF4010 |  | Installation of wiring & Main Cabling | 25d | 2014-04-03 | 2014-05-01 | DUKHCONP1BZ5ELGF4005 FF+7d, DUKHCONP1BZ5ELGF4005 SS+7d | 65d | 27d | LABOR- SUBCONTRACTOR [180 h]; ELECTRICIANS SK [616 h]; CABLE QTY [560 lm] | 147,393 | 20 |  | 1BP5EWGF20 | DUKHCON1BP5ELGF4010 | DUKHCONP1BZ5ELGF4010 | DH | CON | 1B | Z5 | MEP | EW | GF | B04 | B04-D09 | RES-1B |
| DUKHCONP1BZ5ELGF4015 |  | Install. of CAMS & Fire Fighting Accessories | 25d | 2014-06-05 | 2014-07-03 | DUKHCONP1BZ4ELGF4015, DUKHCONP1BZ5ARGF3055 SS+7d, DUKHCONP1BZ5ARGF3055 FF+7d, DUKHCONP1BZ5ARGF3060 SS+7d, DUKHCONP1BZ5ARGF3060 FF+7d | 60d | 0d | LABOR- SUBCONTRACTOR [2040 h]; MECHANICALS SK [3672 h]; SMOKE DETECTOR POINTS QTY [500 ea]; FIRE EXTINGUISHER QTY [180 ea] | 106,508 | 35 |  | 1BP5EWGF35 | DUKHCON1BP5ELGF4015 | DUKHCONP1BZ5ELGF4015 | DH | CON | 1B | Z5 | MEP | EW | GF | B04 | B04-D09 | RES-1B |
| DUKHCONP1BZ5ELGF4020 |  | Installation of DBS,MCCB Accessories. | 20d | 2014-06-11 | 2014-07-03 | DUKHCONP1BZ5ELGF4010 SS+5d, DUKHCONP1BZ5ARGF3055 FF+7d, DUKHCONP1BZ5ARGF3055 SS+7d, DUKHCONP1BZ5ARGF3060 SS+7d, DUKHCONP1BZ5ELGF4010 FF+5d, DUKHCONP1BZ5ARGF3060 FF+7d | 38d | 0d | LABOR- SUBCONTRACTOR [120 h]; ELECTRICIANS SK [448 h]; MCCB QTY [200 ea]; DB QTY [20 ea] | 20,621 | 25 |  | 1BP5EWGF25 | DUKHCON1BP5ELGF4020 | DUKHCONP1BZ5ELGF4020 | DH | CON | 1B | Z5 | MEP | EW | GF | B04 | B04-D09 | RES-1B |
| DUKHCONP1BZ5ELGF4025 |  | Installation of Lighting fixtures & Accessories | 25d | 2014-06-23 | 2014-07-21 | DUKHCONP1BZ5ARGF3055 FF+10d, DUKHCONP1BZ5ARGF3055 SS+10d, DUKHCONP1BZ5ARGF3060 SS+10d, DUKHCONP1BZ5ELGF4020 FF+10d, DUKHCONP1BZ5ARGF3060 FF+10d, DUKHCONP1BZ4ELGF4025, DUKHCONP1BZ5ELGF4020 SS+10d | 40d | 0d | LABOR- SUBCONTRACTOR [1440 h]; ELECTRICIANS SK [2688 h]; LIGHTS QTY [1200 ea] | 220,193 | 30 |  | 1BP5EWGF30 | DUKHCON1BP5ELGF4025 | DUKHCONP1BZ5ELGF4025 | DH | CON | 1B | Z5 | MEP | EW | GF | B04 | B04-D09 | RES-1B |
| DUKHCONP1BZ5ELGF4030 |  | Installation of Telephone System | 20d | 2014-06-23 | 2014-07-15 | DUKHCONP1BZ5ELGF4020 FF+10d, DUKHCONP1BZ4ELGF4030, DUKHCONP1BZ5ARGF3060 SS+5d, DUKHCONP1BZ5ARGF3060 FF+5d, DUKHCONP1BZ5ELGF4020 SS+10d | 38d | 5d | LABOR- SUBCONTRACTOR [210 h]; ELECTRICIANS SK [1568 h]; TELEPHONE SOCKETS QTY [140 ea] | 48,378 | 40 |  | 1BP5EWGF40 | DUKHCON1BP5ELGF4030 | DUKHCONP1BZ5ELGF4030 | DH | CON | 1B | Z5 | MEP | EW | GF | B04 | B04-D09 | RES-1B |

Notes:
- DUKHCONP1BZ5ARRF3630: Expenses: P1B-Roofing 61090
- DUKHCONP1BZ5ARRF3635: Expenses: P1B-Roofing 44092
- DUKHCONP1BZ5ARRF3640: Expenses: P1B-Roofing 53540
- DUKHCONP1BZ5ARRF3645: Expenses: P1B-Roofing 97060
- DUKHCONP1BZ5ARRF3650: Expenses: P1B-Metal work 65044
- DUKHCONP1BZ5ARRF3655: Expenses: P1B-Roofing 33250
- DUKHCONP1BZ5ARRF3660: Expenses: P1B-Metal work 43890
- DUKHCONP1BZ5AREL3665: Expenses: P1B-Finishes 189022
- DUKHCONP1BZ5AREL3670: Expenses: P1B-Finishes 6656
- DUKHCONP1BZ5AREL3675: Expenses: P1B-Finishes 15400
- DUKHCONP1BZ5AREL3680: Expenses: P1B-Painting and Decorating 142868
- DUKHCONP1BZ5ELGF4000: Expenses: P1B-Electrical Installations 42903
- DUKHCONP1BZ5ELGF4005: Expenses: P1B-Electrical Installations 9420
- DUKHCONP1BZ5ELGF4010: Expenses: P1B-Electrical Installations 147393
- DUKHCONP1BZ5ELGF4015: Expenses: P1B-Electrical Installations 106508
- DUKHCONP1BZ5ELGF4020: Expenses: P1B-Electrical Installations 20621
- DUKHCONP1BZ5ELGF4025: Expenses: P1B-Electrical Installations 220193
- DUKHCONP1BZ5ELGF4030: Expenses: P1B-Electrical Installations 48378

| ID | WBS | Activity | Duration | Start | Finish | Predecessors | Total float | Free float | Resources | Cost | CODE | P3 ACTID | P6 ID (old) | NP61D | PROJECT | PHASES | PACKAGE | PART | ELEMENTS | STEP | FLOORS | BILL NOS | BILL DIVISION | RES PACK |
| --- | --- | --- | --- | --- | --- | --- | --- | --- | --- | --- | --- | --- | --- | --- | --- | --- | --- | --- | --- | --- | --- | --- | --- | --- |
|  | 15 | **FIRST FLOORS** |  | 2014-04-24 | 2014-09-24 |  |  |  |  |  |  |  |  |  |  |  |  |  |  |  |  |  |  |  |
| DUKHCONP1BZ5ELFF4035 |  | Fixing of wall conduits & switch socket boxes | 25d | 2014-04-24 | 2014-05-22 | DUKHCONP1BZ5ARFF3300 FF+5d, DUKHCONP1BZ5ARFF3300 SS+5d | 5d | 0d | LABOR- SUBCONTRACTOR [480 h]; ELECTRICIANS SK [2744 h]; SOCKET BOXES QTY [1900 ea]; CODUITS QTY [560 lm] | 42,390 | 10 | 1BP5EWFF10 | DUKHCON1BP5ELFF4035 | DUKHCONP1BZ5ELFF4035 | DH | CON | 1B | Z5 | MEP | EW | FF | B04 | B04-D09 | RES-1B |
| DUKHCONP1BZ5ELFF4040 |  | Cable tray & trunking installation | 20d | 2014-05-06 | 2014-05-28 | DUKHCONP1BZ5ELFF4035 SS+5d, DUKHCONP1BZ5ELFF4035 FF+5d | 35d | 0d | LABOR- SUBCONTRACTOR [840 h]; ELECTRICIANS SK [3136 h]; CABLE TRAY QTY [560 lm] | 9,400 | 15 | 1BP5EWFF15 | DUKHCON1BP5ELFF4040 | DUKHCONP1BZ5ELFF4040 | DH | CON | 1B | Z5 | MEP | EW | FF | B04 | B04-D09 | RES-1B |
| DUKHCONP1BZ5ELFF4045 |  | Installation of wiring & Main Cabling | 25d | 2014-05-14 | 2014-06-11 | DUKHCONP1BZ4ELFF4045, DUKHCONP1BZ5ELFF4040 SS+7d, DUKHCONP1BZ5ELFF4040 FF+7d | 35d | 0d | LABOR- SUBCONTRACTOR [180 h]; ELECTRICIANS SK [616 h]; CABLE QTY [560 lm] | 145,413 | 20 | 1BP5EWFF20 | DUKHCON1BP5ELFF4045 | DUKHCONP1BZ5ELFF4045 | DH | CON | 1B | Z5 | MEP | EW | FF | B04 | B04-D09 | RES-1B |
| DUKHCONP1BZ5ELFF4050 |  | Installation of Telephone System | 25d | 2014-08-05 | 2014-09-02 | DUKHCONP1BZ5MSEX5010, DUKHCONP1BZ5ELGF4030 FF+10d, DUKHCONP1BZ5ARFF3360 SS+5d, DUKHCONP1BZ5ARFF3360 FF+5d, DUKHCONP1BZ5ELGF4030 SS+10d | 14d | 22d | LABOR- SUBCONTRACTOR [210 h]; ELECTRICIANS SK [1568 h]; TELEPHONE SOCKETS QTY [140 ea] | 46,338 | 40 | 1BP5EWFF40 | DUKHCON1BP5ELFF4050 | DUKHCONP1BZ5ELFF4050 | DH | CON | 1B | Z5 | MEP | EW | FF | B04 | B04-D09 | RES-1B |
| DUKHCONP1BZ5ELFF4055 |  | Install. of CAMS & Fire Fighting Accessories | 25d | 2014-08-07 | 2014-09-04 | DUKHCONP1BZ5ELGF4015 SS+5d, DUKHCONP1BZ5ELGF4015 FF+5d, DUKHCONP1BZ4ELFF4055, DUKHCONP1BZ5ARFF3360 SS+7d, DUKHCONP1BZ5ARFF3360 FF+7d | 34d | 0d | LABOR- SUBCONTRACTOR [2040 h]; MECHANICALS SK [3672 h]; SMOKE DETECTOR POINTS QTY [500 ea]; FIRE EXTINGUISHER QTY [180 ea] | 106,473 | 35 | 1BP5EWFF35 | DUKHCON1BP5ELFF4055 | DUKHCONP1BZ5ELFF4055 | DH | CON | 1B | Z5 | MEP | EW | FF | B04 | B04-D09 | RES-1B |
| DUKHCONP1BZ5ELFF4060 |  | Installation of DBS,MCCB Accessories. | 20d | 2014-08-14 | 2014-09-06 | DUKHCONP1BZ5ELFF4045 SS+5d, DUKHCONP1BZ5ARFF3360 SS+8d, DUKHCONP1BZ5ELFF4045 FF+5d, DUKHCONP1BZ5ARFF3360 FF+8d, DUKHCONP1BZ4ELFF4060 | -8d | 0d | LABOR- SUBCONTRACTOR [120 h]; ELECTRICIANS SK [448 h]; MCCB QTY [200 ea]; DB QTY [20 ea] | 20,609 | 25 | 1BP5EWFF25 | DUKHCON1BP5ELFF4060 | DUKHCONP1BZ5ELFF4060 | DH | CON | 1B | Z5 | MEP | EW | FF | B04 | B04-D09 | RES-1B |
| DUKHCONP1BZ5ELFF4065 |  | Installation of Lighting fixtures & Accessories | 25d | 2014-08-27 | 2014-09-24 | DUKHCONP1BZ5ELGF4025 SS+5d, DUKHCONP1BZ5ARFF3360 FF+10d, DUKHCONP1BZ5ELFF4060 SS+11d, DUKHCONP1BZ5ARFF3360 SS+10d, DUKHCONP1BZ5ELGF4025 FF+5d, DUKHCONP1BZ4ELFF4065, DUKHCONP1BZ5ELFF4060 FF+11d | -8d | 0d | LABOR- SUBCONTRACTOR [1440 h]; ELECTRICIANS SK [2688 h]; LIGHTS QTY [1200 ea] | 220,188 | 30 | 1BP5EWFF30 | DUKHCON1BP5ELFF4065 | DUKHCONP1BZ5ELFF4065 | DH | CON | 1B | Z5 | MEP | EW | FF | B04 | B04-D09 | RES-1B |
|  | 20 | **ROOF** |  | 2014-09-16 | 2014-10-26 |  |  |  |  |  |  |  |  |  |  |  |  |  |  |  |  |  |  |  |
| DUKHCONP1BZ5ELRF4070 |  | Installation of Isolator | 18d | 2014-09-16 | 2014-10-06 | DUKHCONP1BZ5ELFF4045 SS+10d, DUKHCONP1BZ5ELFF4065 SS+10d, DUKHCONP1BZ5ELFF4045 FF+10d, DUKHCONP1BZ5ELFF4065 FF+10d, DUKHCONP1BZ5ELFF4050 FF+7d, DUKHCONP1BZ5ARRF3645 SS+7d, DUKHCONP1BZ5ARRF3645 FF+7d, DUKHCONP1BZ5ELFF4050 SS+5d | -8d | 0d | LABOR- SUBCONTRACTOR [360 h]; ELECTRICIANS SK [672 h]; ISOLATOR QTY [120 ea] | 57,826 | 10 | 1BP5EWRF10 | DUKHCON1BP5ELRF4070 | DUKHCONP1BZ5ELRF4070 | DH | CON | 1B | Z5 | MEP | EW | RF | B04 | B04-D09 | RES-1B |
| DUKHCONP1BZ5ELRF4075 |  | Installation of TV Dish Antenna | 23d | 2014-09-28 | 2014-10-26 | DUKHCONP1BZ5ELRF4070 SS+10d, DUKHCONP1BZ5ELRF4070 FF+10d | -8d | 0d | LABOR- SUBCONTRACTOR [720 h]; ELECTRICIANS SK [1568 h]; CONTROL BOX QTY [40 ea]; SWITCHING BOX QTY [100 ea] | 40,931 | 15 | 1BP5EWRF15 | DUKHCON1BP5ELRF4075 | DUKHCONP1BZ5ELRF4075 | DH | CON | 1B | Z5 | MEP | EW | RF | B04 | B04-D09 | RES-1B |
|  | 15 | **PLUMBING, DRAINAGE & FIRE FIGHTING WORKS** |  | 2013-12-07 | 2014-10-05 |  |  |  |  |  |  |  |  |  |  |  |  |  |  |  |  |  |  |  |
|  | 10 | **GROUND FLOOR** |  | 2013-12-07 | 2014-07-21 |  |  |  |  |  |  |  |  |  |  |  |  |  |  |  |  |  |  |  |
| DUKHCONP1BZ5PLUG4300 |  | Drainage / Storm Pipes in Grade Slab | 20d | 2013-12-07 | 2013-12-30 | DUKHCONP1BZ5STUG1040 SS+10d, DUKHCONP1BZ5STUG1040 FF+10d | 0d |  | LABOR- SUBCONTRACTOR [30 h]; MECHANICALS SK [108 h]; DRAINAGE PIPES QTY [180 lm] | 36,526 | 10 | 1BP5PLUG10 | DUKHCON1BP5PLUG4300 | DUKHCONP1BZ5PLUG4300 | DH | CON | 1B | Z5 | ST | SB | UG | B04 | B04-D07 | RES-1B |
| DUKHCONP1BZ5PLGF4305 |  | Installation of Plumbing pipes & testing | 18d | 2014-03-25 | 2014-04-14 | DUKHCONP1BZ5ARGF3000 FF+7d, DUKHCONP1BZ5ARGF3000 SS+7d, DUKHCONP1BZ4PLGF4305 | 38d | 0d | LABOR- SUBCONTRACTOR [240 h]; MECHANICALS SK [864 h]; PLUMB PIPES QTY [780 lm] | 87,065 | 10 | 1BP5PLGF10 | DUKHCON1BP5PLGF4305 | DUKHCONP1BZ5PLGF4305 | DH | CON | 1B | Z5 | MEP | PL | GF | B04 | B04-D07 | RES-1B |
| DUKHCONP1BZ5PLGF4310 |  | Installation of Drainage pipes &testing | 18d | 2014-03-25 | 2014-04-14 | DUKHCONP1BZ5ARGF3000 FF+7d, DUKHCONP1BZ5PLGF4305 FF, DUKHCONP1BZ5ARGF3000 SS+7d, DUKHCONP1BZ5PLGF4305 SS | 41d | 9d | LABOR- SUBCONTRACTOR [90 h]; MECHANICALS SK [324 h]; DRAINAGE PIPES QTY [580 lm] | 6,410 | 15 | 1BP5PLGF15 | DUKHCON1BP5PLGF4310 | DUKHCONP1BZ5PLGF4310 | DH | CON | 1B | Z5 | MEP | PL | GF | B04 | B04-D07 | RES-1B |
| DUKHCONP1BZ5PLGF4315 |  | Sanitary Fittings & Accessories | 20d | 2014-06-23 | 2014-07-15 | DUKHCONP1BZ4PLGF4315, DUKHCONP1BZ5PLGF4310 SS+5d, DUKHCONP1BZ5PLGF4310 FF+5d, DUKHCONP1BZ5ARGF3065 FF+5d, DUKHCONP1BZ5ARGF3065 SS+5d | 70d | 0d | LABOR- SUBCONTRACTOR [90 h]; MECHANICALS SK [162 h]; SANITARY ACC QTY [150 ea] | 125,268 | 20 | 1BP5PLGF20 | DUKHCON1BP5PLGF4315 | DUKHCONP1BZ5PLGF4315 | DH | CON | 1B | Z5 | MEP | PL | GF | B04 | B04-D07 | RES-1B |
| DUKHCONP1BZ5PLGF4320 |  | Installation of Water Heater | 15d | 2014-07-05 | 2014-07-21 | DUKHCONP1BZ5ARGF3060 SS+5d, DUKHCONP1BZ5ARGF3060 FF+5d, DUKHCONP1BZ4PLGF4320, DUKHCONP1BZ5PLGF4315 SS+5d, DUKHCONP1BZ5PLGF4315 FF+5d | 70d | 10d | LABOR- SUBCONTRACTOR [90 h]; MECHANICALS SK [162 h]; WATER HEATER QTY [30 ea] | 15,574 | 25 | 1BP5PLGF25 | DUKHCON1BP5PLGF4320 | DUKHCONP1BZ5PLGF4320 | DH | CON | 1B | Z5 | MEP | PL | GF | B04 | B04-D07 | RES-1B |
|  | 15 | **FIRST FLOORS** |  | 2014-05-06 | 2014-09-17 |  |  |  |  |  |  |  |  |  |  |  |  |  |  |  |  |  |  |  |
| DUKHCONP1BZ5PLFF4325 |  | Installation of Plumbing pipes & testing | 18d | 2014-05-06 | 2014-05-26 | DUKHCONP1BZ5ARFF3300 FF+8d, DUKHCONP1BZ5ARFF3300 SS+8d | -8d | 0d | LABOR- SUBCONTRACTOR [240 h]; MECHANICALS SK [864 h]; PLUMB PIPES QTY [780 lm] | 84,209 | 10 | 1BP5PLFF10 | DUKHCON1BP5PLFF4325 | DUKHCONP1BZ5PLFF4325 | DH | CON | 1B | Z5 | MEP | PL | FF | B04 | B04-D07 | RES-1B |
| DUKHCONP1BZ5PLFF4330 |  | Installation of Drainage pipes & testing | 18d | 2014-05-06 | 2014-05-26 | DUKHCONP1BZ5ARFF3300 SS+7d, DUKHCONP1BZ5PLFF4325 FF, DUKHCONP1BZ4PLFF4330, DUKHCONP1BZ5PLFF4325 SS, DUKHCONP1BZ5ARFF3300 FF+7d | 19d | 7d | LABOR- SUBCONTRACTOR [90 h]; MECHANICALS SK [324 h]; DRAINAGE PIPES QTY [580 lm] | 5,500 | 15 | 1BP5PLFF15 | DUKHCON1BP5PLFF4330 | DUKHCONP1BZ5PLFF4330 | DH | CON | 1B | Z5 | MEP | PL | FF | B04 | B04-D07 | RES-1B |
| DUKHCONP1BZ5PLFF4335 |  | Sanitary Fittings & Accessories | 20d | 2014-08-20 | 2014-09-11 | DUKHCONP1BZ5PLFF4330 FF+5d, DUKHCONP1BZ5PLFF4330 SS+5d, DUKHCONP1BZ5ARFF3365 SS+5d, DUKHCONP1BZ5ARFF3365 FF+5d | 8d | 0d | LABOR- SUBCONTRACTOR [90 h]; MECHANICALS SK [162 h]; SANITARY ACC QTY [150 ea] | 130,000 | 20 | 1BP5PLFF20 | DUKHCON1BP5PLFF4335 | DUKHCONP1BZ5PLFF4335 | DH | CON | 1B | Z5 | MEP | PL | FF | B04 | B04-D07 | RES-1B |
| DUKHCONP1BZ5PLFF4340 |  | Installation of Water Heater | 15d | 2014-09-01 | 2014-09-17 | DUKHCONP1BZ4PLFF4340, DUKHCONP1BZ5ARFF3360 SS+5d, DUKHCONP1BZ5PLFF4335 SS+5d, DUKHCONP1BZ5ARFF3360 FF+5d, DUKHCONP1BZ5PLFF4335 FF+5d | 8d | 0d | LABOR- SUBCONTRACTOR [60 h]; MECHANICALS SK [108 h]; WATER HEATER QTY [20 ea] | 7,588 | 25 | 1BP5PLFF25 | DUKHCON1BP5PLFF4340 | DUKHCONP1BZ5PLFF4340 | DH | CON | 1B | Z5 | MEP | PL | FF | B04 | B04-D07 | RES-1B |
|  | 20 | **ROOF** |  | 2014-06-02 | 2014-10-05 |  |  |  |  |  |  |  |  |  |  |  |  |  |  |  |  |  |  |  |
| DUKHCONP1BZ5PLRF4345 |  | Installation of Plumbing pipes & fittings | 14d | 2014-06-02 | 2014-06-17 | DUKHCONP1BZ5ARRF3605 SS+8d, DUKHCONP1BZ4PLRF4345, DUKHCONP1BZ5ARRF3605 FF+8d | 75d | 7d | LABOR- SUBCONTRACTOR [90 h]; MECHANICALS SK [270 h]; PLUMB PIPES QTY [240 lm] | 14,409 | 10 | 1BP5PLRF10 | DUKHCON1BP5PLRF4345 | DUKHCONP1BZ5PLRF4345 | DH | CON | 1B | Z5 | MEP | PL | RF | B04 | B04-D07 | RES-1B |
| DUKHCONP1BZ5PLRF4350 |  | Installation of Rain water Pipes | 15d | 2014-06-19 | 2014-07-06 | DUKHCONP1BZ5AREL3665 SS+7d, DUKHCONP1BZ4PLRF4350, DUKHCONP1BZ5PLRF4345 FF+8d, DUKHCONP1BZ5ARRF3645 SS+5d, DUKHCONP1BZ5PLRF4345 SS+8d, DUKHCONP1BZ5ARRF3645 FF+5d, DUKHCONP1BZ5AREL3665 FF+7d, DUKHCONP1BZ5PLFF4330 SS+5d, DUKHCONP1BZ5PLFF4330 FF+5d | 68d | 10d | DRAINAGE PIPES QTY [40 lm] | 119,090 | 15 | 1BP5PLRF15 | DUKHCON1BP5PLRF4350 | DUKHCONP1BZ5PLRF4350 | DH | CON | 1B | Z5 | MEP | PL | RF | B04 | B04-D07 | RES-1B |
| DUKHCONP1BZ5PLRF4355 |  | Roof Water Tank Installation & Connections | 25d | 2014-09-07 | 2014-10-05 | DUKHCONP1BZ5PLRF4345 SS+8d, DUKHCONP1BZ4PLRF4355, DUKHCONP1BZ5WEEX5065 FF, DUKHCONP1BZ5ARRF3655 SS+5d, DUKHCONP1BZ5PLFF4340 FF+5d, DUKHCONP1BZ5PLFF4340 SS+5d, DUKHCONP1BZ5PLRF4345 FF+8d, DUKHCONP1BZ5PLRF4350 SS+5d, DUKHCONP1BZ5ARRF3655 FF+5d, DUKHCONP1BZ5PLRF4350 FF+5d | 8d | 0d | LABOR- SUBCONTRACTOR [300 h]; MECHANICALS SK [540 h]; WATER TANK QTY [50 ea] | 742,372 | 20 | 1BP5PLRF20 | DUKHCON1BP5PLRF4355 | DUKHCONP1BZ5PLRF4355 | DH | CON | 1B | Z5 | MEP | PL | RF | B04 | B04-D07 | RES-1B |

Notes:
- DUKHCONP1BZ5ELFF4035: Expenses: P1B-Electrical Installations 42390
- DUKHCONP1BZ5ELFF4040: Expenses: P1B-Electrical Installations 9400
- DUKHCONP1BZ5ELFF4045: Expenses: P1B-Electrical Installations 145413
- DUKHCONP1BZ5ELFF4050: Expenses: P1B-Electrical Installations 46338
- DUKHCONP1BZ5ELFF4055: Expenses: P1B-Electrical Installations 106473
- DUKHCONP1BZ5ELFF4060: Expenses: P1B-Electrical Installations 20609
- DUKHCONP1BZ5ELFF4065: Expenses: P1B-Electrical Installations 220188
- DUKHCONP1BZ5ELRF4070: Expenses: P1B-Electrical Installations 57826
- DUKHCONP1BZ5ELRF4075: Expenses: P1B-Electrical Installations 40931
- DUKHCONP1BZ5PLUG4300: Expenses: P1B-Plumbing and Drainage works 36526
- DUKHCONP1BZ5PLGF4305: Expenses: P1B-Plumbing and Drainage works 87065
- DUKHCONP1BZ5PLGF4310: Expenses: P1B-Plumbing and Drainage works 6410
- DUKHCONP1BZ5PLGF4315: Expenses: P1B-Plumbing and Drainage works 125268
- DUKHCONP1BZ5PLGF4320: Expenses: P1B-Plumbing and Drainage works 15574
- DUKHCONP1BZ5PLFF4325: Expenses: P1B-Plumbing and Drainage works 84209
- DUKHCONP1BZ5PLFF4330: Expenses: P1B-Plumbing and Drainage works 5500
- DUKHCONP1BZ5PLFF4335: Expenses: P1B-Plumbing and Drainage works 130000
- DUKHCONP1BZ5PLFF4340: Expenses: P1B-Plumbing and Drainage works 7588
- DUKHCONP1BZ5PLRF4345: Expenses: P1B-Plumbing and Drainage works 14409
- DUKHCONP1BZ5PLRF4350: Expenses: P1B-Plumbing and Drainage works 119090
- DUKHCONP1BZ5PLRF4355: Expenses: P1B-Plumbing and Drainage works 742372

| ID | WBS | Activity | Duration | Start | Finish | Predecessors | Total float | Free float | Resources | Cost | CODE | P3 ACTID | P6 ID (old) | NP61D | PROJECT | PHASES | PACKAGE | PART | ELEMENTS | STEP | FLOORS | BILL NOS | BILL DIVISION | RES PACK |
| --- | --- | --- | --- | --- | --- | --- | --- | --- | --- | --- | --- | --- | --- | --- | --- | --- | --- | --- | --- | --- | --- | --- | --- | --- |
|  | 20 | **AC WORKS** |  | 2014-04-14 | 2014-10-01 |  |  |  |  |  |  |  |  |  |  |  |  |  |  |  |  |  |  |  |
|  | 10 | **GROUND FLOOR** |  | 2014-04-14 | 2014-07-19 |  |  |  |  |  |  |  |  |  |  |  |  |  |  |  |  |  |  |  |
| DUKHCONP1BZ5ACGF4600 |  | Installation AC Pipes | 20d | 2014-04-14 | 2014-05-06 | DUKHCONP1BZ5ARGF3005 SS+7d, DUKHCONP1BZ4ACGF4600, DUKHCONP1BZ5ARGF3005 FF+7d | 69d | 5d | LABOR- SUBCONTRACTOR [510 h]; AC TECHNICIAN SK [1848 h]; AC PIPES QTY [5000 lm] | 8,873 | 10 | 1BP5ACGF10 | DUKHCON1BP5ACGF4600 | DUKHCONP1BZ5ACGF4600 | DH | CON | 1B | Z5 | MEP | AC | GF | B04 | B04-D08 | RES-1B |
| DUKHCONP1BZ5ACGF4605 |  | Fixing of Ventilation Equipments | 25d | 2014-06-05 | 2014-07-03 | DUKHCONP1BZ5ARGF3060 SS+7d, DUKHCONP1BZ5ARGF3060 FF+7d, DUKHCONP1BZ5ACGF4600 SS+10d, DUKHCONP1BZ4ACGF4605, DUKHCONP1BZ5ACGF4600 FF+10d, DUKHCONP1BZ5ARGF3055 SS+7d, DUKHCONP1BZ5ARGF3055 FF+7d | 57d | 0d | VENTILIATION EQP QTY [100 ea]; LABOR- SUBCONTRACTOR [90 h]; AC TECHNICIAN SK [280 h] | 36,397 | 15 | 1BP5ACGF15 | DUKHCON1BP5ACGF4605 | DUKHCONP1BZ5ACGF4605 | DH | CON | 1B | Z5 | MEP | AC | GF | B04 | B04-D08 | RES-1B |
| DUKHCONP1BZ5ACGF4610 |  | Fixing of Split AC | 20d | 2014-06-26 | 2014-07-19 | DUKHCONP1BZ5ACGF4605 FF+13d, DUKHCONP1BZ5ACGF4605 SS+13d, DUKHCONP1BZ4ACGF4610 | 57d | 5d | LABOR- SUBCONTRACTOR [150 h]; AC TECHNICIAN SK [560 h]; SPLIT UNIT QTY [100 ea] | 71,686 | 20 | 1BP5ACGF20 | DUKHCON1BP5ACGF4610 | DUKHCONP1BZ5ACGF4610 | DH | CON | 1B | Z5 | MEP | AC | GF | B04 | B04-D08 | RES-1B |
|  | 15 | **FIRST FLOORS** |  | 2014-05-29 | 2014-09-20 |  |  |  |  |  |  |  |  |  |  |  |  |  |  |  |  |  |  |  |
| DUKHCONP1BZ5ACFF4615 |  | Installation AC Pipes | 20d | 2014-05-29 | 2014-06-21 | DUKHCONP1BZ5ARFF3305 SS+7d, DUKHCONP1BZ4ACFF4615, DUKHCONP1BZ5ARFF3305 FF+7d | 35d | 3d | LABOR- SUBCONTRACTOR [510 h]; AC TECHNICIAN SK [1848 h]; AC PIPES QTY [5000 lm] | 6,228 | 10 | 1BP5ACFF10 | DUKHCON1BP5ACFF4615 | DUKHCONP1BZ5ACFF4615 | DH | CON | 1B | Z5 | MEP | AC | FF | B04 | B04-D08 | RES-1B |
| DUKHCONP1BZ5ACFF4620 |  | Fixing of Ventilation Equipments | 25d | 2014-08-07 | 2014-09-04 | DUKHCONP1BZ5ACFF4615 SS+10d, DUKHCONP1BZ5ACFF4615 FF+10d, DUKHCONP1BZ5ARFF3360 FF+7d, DUKHCONP1BZ5ARFF3360 SS+7d, DUKHCONP1BZ4ACFF4620 | 6d | 0d | LABOR- SUBCONTRACTOR [60 h]; AC TECHNICIAN SK [168 h]; VENTILIATION EQP QTY [60 ea] | 7,041 | 15 | 1BP5ACFF15 | DUKHCON1BP5ACFF4620 | DUKHCONP1BZ5ACFF4620 | DH | CON | 1B | Z5 | MEP | AC | FF | B04 | B04-D08 | RES-1B |
| DUKHCONP1BZ5ACFF4625 |  | Fixing of Split AC | 20d | 2014-08-28 | 2014-09-20 | DUKHCONP1BZ4ACFF4625, DUKHCONP1BZ5ACFF4620 SS+13d, DUKHCONP1BZ5ACFF4620 FF+13d | 6d | 0d | LABOR- SUBCONTRACTOR [150 h]; AC TECHNICIAN SK [560 h]; SPLIT UNIT QTY [100 ea] | 54,852 | 20 | 1BP5ACFF20 | DUKHCON1BP5ACFF4625 | DUKHCONP1BZ5ACFF4625 | DH | CON | 1B | Z5 | MEP | AC | FF | B04 | B04-D08 | RES-1B |
|  | 20 | **ROOF** |  | 2014-06-10 | 2014-10-01 |  |  |  |  |  |  |  |  |  |  |  |  |  |  |  |  |  |  |  |
| DUKHCONP1BZ5ACRF4630 |  | Installation of Refrigerant Pipes | 25d | 2014-06-10 | 2014-07-08 | DUKHCONP1BZ5ARRF3645 SS+7d, DUKHCONP1BZ5ACGF4600 SS+7d, DUKHCONP1BZ5ACGF4600 FF+7d, DUKHCONP1BZ5ACFF4615 SS+7d, DUKHCONP1BZ5ACFF4615 FF+7d, DUKHCONP1BZ5ARRF3645 FF+7d, DUKHCONP1BZ4ACRF4630 | 76d | 0d | LABOR- SUBCONTRACTOR [210 h]; AC TECHNICIAN SK [784 h]; AC PIPES QTY [2050 lm] | 30,000 | 10 | 1BP5ACRF10 | DUKHCON1BP5ACRF4630 | DUKHCONP1BZ5ACRF4630 | DH | CON | 1B | Z5 | MEP | AC | RF | B04 | B04-D08 | RES-1B |
| DUKHCONP1BZ5ACRF4635 |  | Installation of Condensing Unit | 25d | 2014-09-03 | 2014-10-01 | DUKHCONP1BZ5ACRF4630 FF+5d, DUKHCONP1BZ5ACRF4630 SS+5d, DUKHCONP1BZ5ACFF4625 SS+5d, DUKHCONP1BZ5ACFF4625 FF+5d, DUKHCONP1BZ5ACGF4610 SS+5d, DUKHCONP1BZ5ACGF4610 FF+5d, DUKHCONP1BZ4ACRF4635 | 11d | 0d | LABOR- SUBCONTRACTOR [300 h]; AC TECHNICIAN SK [1120 h]; AC UNITS QTY [200 ea] | 163,341 | 15 | 1BP5ACRF15 | DUKHCON1BP5ACRF4635 | DUKHCONP1BZ5ACRF4635 | DH | CON | 1B | Z5 | MEP | AC | RF | B04 | B04-D08 | RES-1B |
|  | 25 | **EXTERNAL WORKS** |  | 2014-04-16 | 2014-10-29 |  |  |  |  |  |  |  |  |  |  |  |  |  |  |  |  |  |  |  |
|  | 10 | **MISCELLANEOUS** |  | 2014-04-16 | 2014-10-29 |  |  |  |  |  |  |  |  |  |  |  |  |  |  |  |  |  |  |  |
| DUKHCONP1BZ5MSEX5000 |  | Construction of Manholes | 25d | 2014-04-16 | 2014-05-14 | DUKHCONP1BZ5PLGF4310 FF+10d, DUKHCONP1BZ5PLGF4310 SS+10d, DUKHCONP1BZ5STRF2055 SS+5d, DUKHCONP1BZ5STRF2055 FF+5d | 32d | 0d | MANHOLES SK [800 h]; LABOR- SUBCONTRACTOR [300 h]; MANHOLES QTY [100 ea] | 34,748 | 25 | 1BP5MSEX25 | DUKHCON1BP5MS005000 | DUKHCONP1BZ5MSEX5000 | DH | CON | 1B | Z5 | EX | MS |  | B04 | B04-D12 | RES-1B |
| DUKHCONP1BZ5MSEX5020 |  | Construction Entrance Ramp | 25d | 2014-04-20 | 2014-05-18 | DUKHCONP1BZ4MSEX5020, DUKHCONP1BZ5STRF2055 FF, DUKHCONP1BZ5STRF2055 SS | 58d | 0d | SCREED MASON SK [240 h]; CONCRETE MASON SK [480 h]; INTERLOCK MASON SK [320 h]; LABOR- SUBCONTRACTOR [450 h]; LABOR- SUBCONTRACTOR [120 h]; SCREED QTY [280 Sqm]; CONCRETE QTY [240 Cum]; INTERLOCK QTY [380 Sqm] | 31,350 | 10 | 1BP5MSEX10 | DUKHCON1BP5MS005020 | DUKHCONP1BZ5MSEX5020 | DH | CON | 1B | Z5 | EX | MS |  | B04 | B04-D12 | RES-1B |
| DUKHCONP1BZ5MSEX5005 |  | Construction of Soak pit, Chambers | 25d | 2014-04-30 | 2014-05-28 | DUKHCONP1BZ5MSEX5000 SS+12d, DUKHCONP1BZ5MSEX5000 FF+12d | 32d | 0d | MANHOLES SK [160 h]; LABOR- SUBCONTRACTOR [60 h]; SOAKPIT QTY [20 ea] | 58,860 | 30 | 1BP5MSEX30 | DUKHCON1BP5MS005005 | DUKHCONP1BZ5MSEX5005 | DH | CON | 1B | Z5 | EX | MS |  | B04 | B04-D12 | RES-1B |
| DUKHCONP1BZ5MSEX5025 |  | SS.Handrails and Balustrades | 20d | 2014-05-07 | 2014-05-29 | DUKHCONP1BZ5MSEX5020 FF+10d, DUKHCONP1BZ5MSEX5020 SS+10d | 60d | 0d | LABOR- SUBCONTRACTOR [180 h]; S.S.BALUSTRADE QTY [150 lm]; HANDRAIL ERECTOR SKILLED [320 h] | 142,484 | 15 | 1BP5MSEX15 | DUKHCON1BP5MS005025 | DUKHCONP1BZ5MSEX5025 | DH | CON | 1B | Z5 | EX | MS |  | B04 | B04-D12 | RES-1B |
| DUKHCONP1BZ5MSEX5015 |  | Construction of grease Trap | 20d | 2014-05-20 | 2014-06-11 | DUKHCONP1BZ5MSEX5005 FF+12d, DUKHCONP1BZ5MSEX5005 SS+12d | 32d | 0d | LABOR- SUBCONTRACTOR [30 h]; GREASE TRAP QTY [40 lm]; HANDRAIL ERECTOR SKILLED [80 h] | 28,370 | 20 | 1BP5MSEX20 | DUKHCON1BP5MS005015 | DUKHCONP1BZ5MSEX5015 | DH | CON | 1B | Z5 | EX | MS |  | B04 | B04-D07 | RES-1B |
| DUKHCONP1BZ5MSEX5010 |  | Telephone cable laying | 25d | 2014-06-12 | 2014-07-10 | DUKHCONP1BZ5MSEX5015 | 32d | 18d | LABOR- SUBCONTRACTOR [125 h]; ELECTRICIANS SK [125 h]; CONCRETE MASON SK [125 h] | 4,047 |  | 1BP5MSEX40 | DUKHCON1BP5MS005010 | DUKHCONP1BZ5MSEX5010 | DH | CON | 1B | Z5 | EX | MS |  | B04 | B04-D12 | RES-1B |
| DUKHCONP1BZ5MSEX5335 |  | Aluminum Roll-up Shutter with 2m Wall | 25d | 2014-09-29 | 2014-10-29 | DUKHCONP1BZ4MSEX5335, DUKHCONI1BZ3BWGL5325 SS+7d | 14d | 0d | LABOR- SUBCONTRACTOR [200 h]; DOOR ERECTOR SK [200 h]; ROLLING SHUTTER QTY [10 ea] | 71,716 | 25 | 1BP5BWFR25 | DUKHCON1BP5MS005335 | DUKHCONP1BZ5MSEX5335 | DH | CON | 1B | Z5 | EX | MS |  | B04 | B04-D12 | RES-1B |
|  | 15 | **WATER TANK ENCLOSURE** |  | 2014-05-10 | 2014-08-25 |  |  |  |  |  |  |  |  |  |  |  |  |  |  |  |  |  |  |  |
| DUKHCONP1BZ5WEEX5030 |  | Excavation | 20d | 2014-05-10 | 2014-06-01 | DUKHCONP1BZ4WEEX5030, DUKHCONP1BZ5STRF2055 FF+10d, DUKHCONP1BZ5STRF2055 SS+10d | 40d | 0d | LABOR- SUBCONTRACTOR [60 h]; EXCAVATION QTY [100 Cum]; LOADER [20 h]; POCLAIN [40 h]; TRUCK [20 h]; EQUIP OPERATORS [80 h] | 1,120 | 10 | 1BP5WEEX10 | DUKHCON1BP5WE005030 | DUKHCONP1BZ5WEEX5030 | DH | CON | 1B | Z5 | EX | WE |  | B04 | B04-D12 | RES-1B |
| DUKHCONP1BZ5WEEX5035 |  | Construction of Raft | 25d | 2014-05-21 | 2014-06-18 | DUKHCONP1BZ5WEEX5030 FF+10d, DUKHCONP1BZ5WEEX5030 SS+10d | 40d | 0d | STEEL FIXERS SK [120 h]; CARPENTERS SK [920 h]; CONCRETE MASON SK [120 h]; LABOR- SUBCONTRACTOR [870 h]; REINFORCEMENT BARS QTY [1560 kg]; FORMWORK QTY [460 Sqm]; CONCRETE QTY [50 Cum] | 17,100 | 15 | 1BP5WEEX15 | DUKHCON1BP5WE005035 | DUKHCONP1BZ5WEEX5035 | DH | CON | 1B | Z5 | EX | WE |  | B04 | B04-D12 | RES-1B |
| DUKHCONP1BZ5WEEX5040 |  | Block works & Plastering | 25d | 2014-06-02 | 2014-06-30 | DUKHCONP1BZ5WEEX5035 FF+10d, DUKHCONP1BZ5WEEX5035 SS+10d | 48d | 0d | BLOCK MASON SK [280 h]; PLASTER MASON SK [440 h]; LABOR- SUBCONTRACTOR [390 h]; BLOCK QTY [140 Sqm]; PLASTER QTY [280 Sqm] | 24,659 | 20 | 1BP5WEEX20 | DUKHCON1BP5WE005040 | DUKHCONP1BZ5WEEX5040 | DH | CON | 1B | Z5 | EX | WE |  | B04 | B04-D12 | RES-1B |
| DUKHCONP1BZ5WEEX5045 |  | Flooring & Painting | 25d | 2014-06-14 | 2014-07-12 | DUKHCONP1BZ5MSEX5025 SS+10d, DUKHCONP1BZ5WEEX5040 FF+10d, DUKHCONP1BZ5WEEX5040 SS+10d | 48d | 0d | LABOR- SUBCONTRACTOR [150 h]; PAINT QTY [390 Sqm]; EPOXY QTY [110 Sqm]; PAINTERS SK [320 h]; EPOXY SK [40 h] | 23,490 | 25 | 1BP5WEEX25 | DUKHCON1BP5WE005045 | DUKHCONP1BZ5WEEX5045 | DH | CON | 1B | Z5 | EX | WE |  | B04 | B04-D12 | RES-1B |
| DUKHCONP1BZ5WEEX5050 |  | Installation of Steel Gate | 20d | 2014-07-01 | 2014-07-23 | DUKHCONP1BZ5WEEX5045 SS+10d, DUKHCONP1BZ5MSEX5015 SS+10d, DUKHCONP1BZ5MSEX5025 FF+10d, DUKHCONP1BZ5WEEX5045 FF+10d | 48d | 5d | LABOR- SUBCONTRACTOR [60 h]; GATE QTY [10 ea]; GATE ERECTOR SK [80 h] | 94,380 | 30 | 1BP5WEEX30 | DUKHCON1BP5WE005050 | DUKHCONP1BZ5WEEX5050 | DH | CON | 1B | Z5 | EX | WE |  | B04 | B04-D12 | RES-1B |
| DUKHCONP1BZ5WEEX5060 |  | Structural steel & SS Shed cover installation | 25d | 2014-07-13 | 2014-08-13 | DUKHCONP1BZ5WEEX5050 FF+10d, DUKHCONP1BZ5WEEX5050 SS+5d, DUKHCONP1BZ4WEEX5060, DUKHCONP1BZ5MSEX5025 FF+10d | 43d | 0d | LABOR- SUBCONTRACTOR [330 h]; STRUCTURAL STEEL QTY [320 kg]; SS SHED COVER QTY [100 Sqm]; STEEL ERECTOR SK [440 h] | 56,824 | 35 | 1BP5WEEX35 | DUKHCON1BP5WE005060 | DUKHCONP1BZ5WEEX5060 | DH | CON | 1B | Z5 | EX | WE |  | B04 | B04-D12 | RES-1B |
| DUKHCONP1BZ5WEEX5065 |  | Install. of Water Tank,Chiller,Pump & Meter | 25d | 2014-07-24 | 2014-08-25 | DUKHCONP1BZ5MSEX5015 FF+5d, DUKHCONP1BZ5MSEX5015 SS+5d, DUKHCONP1BZ5PLRF4350 SS+5d, DUKHCONP1BZ5WEEX5060 FF+10d, DUKHCONP1BZ5PLRF4350 FF+5d, DUKHCONP1BZ5WEEX5060 SS+10d, DUKHCONP1BZ4WEEX5065 | 43d | 3d | PUMP QTY [10 ea]; LABOR- SUBCONTRACTOR [150 h]; AC TECHNICIAN SK [112 h]; MECHANICALS SK [216 h]; WATER TANK QTY [10 ea]; CHILLER QTY [100 ea] | 152,912 | 40 | 1BP5WEEX40 | DUKHCON1BP5WE005065 | DUKHCONP1BZ5WEEX5065 | DH | CON | 1B | Z5 | EX | WE |  | B04 | B04-D07 | RES-1B |

Notes:
- DUKHCONP1BZ5ACGF4600: Expenses: P1B-Air-conditioning and Ventilation works 8873
- DUKHCONP1BZ5ACGF4605: Expenses: P1B-Air-conditioning and Ventilation works 36397
- DUKHCONP1BZ5ACGF4610: Expenses: P1B-Air-conditioning and Ventilation works 71686
- DUKHCONP1BZ5ACFF4615: Expenses: P1B-Air-conditioning and Ventilation works 6228
- DUKHCONP1BZ5ACFF4620: Expenses: P1B-Air-conditioning and Ventilation works 7041
- DUKHCONP1BZ5ACFF4625: Expenses: P1B-Air-conditioning and Ventilation works 54852
- DUKHCONP1BZ5ACRF4630: Expenses: P1B-Air-conditioning and Ventilation works 30000
- DUKHCONP1BZ5ACRF4635: Expenses: P1B-Air-conditioning and Ventilation works 163341
- DUKHCONP1BZ5MSEX5000: Expenses: P1B-External works within the Plot Curtilage 34748
- DUKHCONP1BZ5MSEX5020: Expenses: P1B-External works within the Plot Curtilage 31350
- DUKHCONP1BZ5MSEX5005: Expenses: P1B-External works within the Plot Curtilage 58860
- DUKHCONP1BZ5MSEX5025: Expenses: P1B-External works within the Plot Curtilage 142484
- DUKHCONP1BZ5MSEX5015: Expenses: P1B-Plumbing and Drainage works 28370
- DUKHCONP1BZ5MSEX5010: Expenses: P1B-External works within the Plot Curtilage 4047
- DUKHCONP1BZ5MSEX5335: Expenses: P1B-External works within the Plot Curtilage 71716
- DUKHCONP1BZ5WEEX5030: Expenses: P1B-External works within the Plot Curtilage 1120
- DUKHCONP1BZ5WEEX5035: Expenses: P1B-External works within the Plot Curtilage 17100
- DUKHCONP1BZ5WEEX5040: Expenses: P1B-External works within the Plot Curtilage 24659
- DUKHCONP1BZ5WEEX5045: Expenses: P1B-External works within the Plot Curtilage 23490
- DUKHCONP1BZ5WEEX5050: Expenses: P1B-External works within the Plot Curtilage 94380
- DUKHCONP1BZ5WEEX5060: Expenses: P1B-External works within the Plot Curtilage 56824
- DUKHCONP1BZ5WEEX5065: Expenses: P1B-Plumbing and Drainage works 152912

| ID | WBS | Activity | Duration | Start | Finish | Predecessors | Total float | Free float | Resources | Cost | CODE | P3 ACTID | P6 ID (old) | NP61D | PROJECT | PHASES | PACKAGE | PART | ELEMENTS | STEP | BILL NOS | BILL DIVISION | RES PACK | FLOORS | rem |
| --- | --- | --- | --- | --- | --- | --- | --- | --- | --- | --- | --- | --- | --- | --- | --- | --- | --- | --- | --- | --- | --- | --- | --- | --- | --- |
|  | 20 | **HARD LANDSCAPING** |  | 2014-05-15 | 2014-07-03 |  |  |  |  |  |  |  |  |  |  |  |  |  |  |  |  |  |  |  |  |
| DUKHCONP1BZ5HDEX5090 |  | kerb works | 20d | 2014-05-15 | 2014-06-07 | DUKHCONP1BZ4HDEX5090, DUKHCONP1BZ5MSEX5020 SS+7d, DUKHCONP1BZ5MSEX5025 SS+7d, DUKHCONP1BZ5MSEX5020 FF+7d | 60d | 0d | KERBSTONE MASON SK [560 h]; LABOR- SUBCONTRACTOR [330 h]; KERBSTONE QTY [720 lm] | 15,682 | 10 | 1BP5HDEX10 | DUKHCON1BP5HD005090 | DUKHCONP1BZ5HDEX5090 | DH | CON | 1B | Z5 | EX | HD | B04 | B04-D12 | RES-1B |  |  |
| DUKHCONP1BZ5HDEX5095 |  | Cobble Stone Works | 20d | 2014-05-27 | 2014-06-18 | DUKHCONP1BZ5HDEX5090 SS+10d, DUKHCONP1BZ5HDEX5090 FF+10d | 60d | 0d | TILE MASON SK [360 h]; LABOR- SUBCONTRACTOR [210 h]; COBBLE STONE QTY [220 Sqm] | 44,480 | 15 | 1BP5HDEX15 | DUKHCON1BP5HD005095 | DUKHCONP1BZ5HDEX5095 | DH | CON | 1B | Z5 | EX | HD | B04 | B04-D12 | RES-1B |  |  |
| DUKHCONP1BZ5HDEX5100 |  | Interlock works | 20d | 2014-06-11 | 2014-07-03 | DUKHCONP1BZ5HDEX5095 SS+13d, DUKHCONP1BZ5HDEX5095 FF+13d | 60d | 0d | INTERLOCK MASON SK [360 h]; LABOR- SUBCONTRACTOR [150 h]; INTERLOCK QTY [460 Sqm] | 53,010 | 20 | 1BP5HDEX20 | DUKHCON1BP5HD005100 | DUKHCONP1BZ5HDEX5100 | DH | CON | 1B | Z5 | EX | HD | B04 | B04-D12 | RES-1B |  |  |
|  | 25 | **SOFT LANDSCAPING** |  | 2014-06-23 | 2014-08-05 |  |  |  |  |  |  |  |  |  |  |  |  |  |  |  |  |  |  |  |  |
| DUKHCONP1BZ5SLEX5105 |  | Laying of Grass/ green area | 25d | 2014-06-23 | 2014-07-21 | DUKHCONP1BZ5HDEX5100 FF+10d, DUKHCONP1BZ5HDEX5100 SS+10d | 60d | 0d | LABOR- SUBCONTRACTOR [2940 h]; SWEET SOIL QTY [840 Cum]; GRASS QTY [840 Sqm]; LANDSCAPING SK [3920 h] | 62,730 | 10 | 1BP5SLEX10 | DUKHCON1BP5SL005105 | DUKHCONP1BZ5SLEX5105 | DH | CON | 1B | Z5 | EX | SL | B04 | B04-D12 | RES-1B |  |  |
| DUKHCONP1BZ5SLEX5110 |  | Laying of Palm tree | 25d | 2014-07-05 | 2014-08-05 | DUKHCONP1BZ5SLEX5105 FF+10d, DUKHCONP1BZ5SLEX5105 SS+10d | 60d | 68d | LABOR- SUBCONTRACTOR [180 h]; SWEET SOIL QTY [120 Cum]; PLAM TREES QTY [40 ea]; LANDSCAPING SK [240 h] | 151,110 | 15 | 1BP5SLEX15 | DUKHCON1BP5SL005110 | DUKHCONP1BZ5SLEX5110 | DH | CON | 1B | Z5 | EX | SL | B04 | B04-D12 | RES-1B |  |  |
|  | 30 | **TESTING AND COMMISSIONING** |  | 2014-10-27 | 2014-11-24 |  |  |  |  |  |  |  |  |  |  |  |  |  |  |  |  |  |  |  |  |
| DUKHCONP1BZ5ACTC8000 |  | Pre-Commissioning & Testing of AC Works | 25d | 2014-10-27 | 2014-11-24 | DUKHCONP1BZ5HDEX5100, DUKHCONP1BZ5ARRF3620, DUKHCONP1BZ4ACTC8000, DUKHCONP1BZ5ACFF4625, DUKHCONP1BZ5ARFF3395, DUKHCONP1BZ5ARRF3660, DUKHCONP1BZ5AREL3680, DUKHCONP1BZ5MSEX5005, DUKHCONP1BZ5SLEX5110, DUKHCONP1BZ5ARGF3095, DUKHCONP1BZ5ACRF4635, DUKHCONP1BZ5SLEX5105 | -8d | 0d | LABOR- SUBCONTRACTOR [500 h]; AC TECHNICIAN SK [1000 h] | 2,120 |  | 1BP5ACU100 | DUKHCON1BP5AC008000 | DUKHCONP1BZ5ACTC8000 | DH | CON | 1B | Z5 | TES |  | B04 | B04-D08 | RES-1B |  |  |
| DUKHCONP1BZ5ELTC8010 |  | Pre-Commissioning & Testing of Electrical Works | 25d | 2014-10-27 | 2014-11-24 | DUKHCONP1BZ5ELRF4075, DUKHCONP1BZ4ELTC8010, DUKHCONP1BZ5ELGF4015, DUKHCONP1BZ5SLEX5105, DUKHCONP1BZ5ARFF3395, DUKHCONP1BZ5ARGF3095, DUKHCONP1BZ5ELGF4025, DUKHCONP1BZ5AREL3680, DUKHCONP1BZ5HDEX5100, DUKHCONP1BZ5ARRF3655, DUKHCONP1BZ5ARRF3660, DUKHCONP1BZ5ELGF4030, DUKHCONP1BZ5ELFF4050, DUKHCONP1BZ5MSEX5005, DUKHCONP1BZ5ARRF3620, DUKHCONP1BZ5ELFF4065, DUKHCONP1BZ5ELFF4055, DUKHCONP1BZ5SLEX5110 | -8d | 0d | LABOR- SUBCONTRACTOR [1000 h]; ELECTRICIANS SK [2000 h] | 56,950 |  | 1BP5ELE100 | DUKHCON1BP5EL008010 | DUKHCONP1BZ5ELTC8010 | DH | CON | 1B | Z5 | TES |  | B04 | B04-D09 | RES-1B |  |  |
| DUKHCONP1BZ5PLTC8005 |  | Pre-Commissioning & Testing of Plumbing Works | 25d | 2014-10-27 | 2014-11-24 | DUKHCONP1BZ5SLEX5110, DUKHCONP1BZ5HDEX5100, DUKHCONP1BZ5PLGF4320, DUKHCONP1BZ5SLEX5105, DUKHCONP1BZ5WEEX5065, DUKHCONP1BZ5ARRF3660, DUKHCONP1BZ5ARGF3095, DUKHCONP1BZ5ARFF3395, DUKHCONP1BZ5ARRF3620, DUKHCONP1BZ5ARRF3655, DUKHCONP1BZ4PLTC8005, DUKHCONP1BZ5PLRF4350, DUKHCONP1BZ5PLRF4355, DUKHCONP1BZ5MSEX5005, DUKHCONP1BZ5AREL3680 | -8d | 0d | LABOR- SUBCONTRACTOR [1000 h]; MECHANICALS SK [2000 h] | 8,890 |  | 1BP5PLU100 | DUKHCON1BP5PL008005 | DUKHCONP1BZ5PLTC8005 | DH | CON | 1B | Z5 | TES |  | B04 | B04-D07 | RES-1B |  |  |
|  | 35 | **ZONE - 6 (5 Twin Villas)** |  | 2013-09-23 | 2014-12-24 |  |  |  |  |  |  |  |  |  |  |  |  |  |  |  |  |  |  |  |  |
|  | 10 | **STRUCTURAL WORKS** |  | 2013-09-23 | 2014-06-30 |  |  |  |  |  |  |  |  |  |  |  |  |  |  |  |  |  |  |  |  |
|  | 10 | **SUB STRUCTURE** |  | 2013-09-23 | 2014-02-13 |  |  |  |  |  |  |  |  |  |  |  |  |  |  |  |  |  |  |  |  |
|  | 10 | **UPTO GRADE SLAB** |  | 2013-09-23 | 2014-02-13 |  |  |  |  |  |  |  |  |  |  |  |  |  |  |  |  |  |  |  |  |
| DUKHCONP1BZ6STUG1000 |  | Footing Excavation | 25d | 2013-09-23 | 2013-10-23 | DUKHCONP1BZ5STUG1000 | 0d |  | LABOR- SUBCONTRACTOR [948 h]; EXCAVATION QTY [1580 Cum]; LOADER [211 h]; POCLAIN [421 h]; TRUCK [211 h]; EQUIP OPERATORS [843 h] | 101,871 | 10 | 1BP6SBUG10 | DUKHCON1BP6STUG1000 | DUKHCONP1BZ6STUG1000 | DH | CON | 1B | Z6 | ST | SB | B04 | B04-D01 | RES-1B | UG |  |
| DUKHCONP1BZ6STUG1005 |  | Footing Antitermite | 23d | 2013-10-05 | 2013-11-02 | DUKHCONP1BZ6STUG1000 SS+10d, DUKHCONP1BZ6STUG1000 FF+5d | 0d |  | LABOR- SUBCONTRACTOR [634.5 h]; ANTITERMITE QTY [4230 sqft]; ANTITERMITE SK [1692 h] | 12,689 | 15 | 1BP6SBUG15 | DUKHCON1BP6STUG1005 | DUKHCONP1BZ6STUG1005 | DH | CON | 1B | Z6 | ST | SB | B04 | B04-D01 | RES-1B | UG | REM |
| DUKHCONP1BZ6STUG1010 |  | Footing Blinding | 23d | 2013-10-09 | 2013-11-06 | DUKHCONP1BZ6STUG1005 SS+4d, DUKHCONP1BZ6STUG1005 FF+4d | 0d |  | BLINDING MASON SK [748 h]; LABOR- SUBCONTRACTOR [561 h]; BLINDING QTY [935 Sqm] | 23,571 | 15 | 1BP6SBUG18 | DUKHCON1BP6STUG1010 | DUKHCONP1BZ6STUG1010 | DH | CON | 1B | Z6 | ST | SB | B04 | B04-D02 | RES-1B | UG | REM |
| DUKHCONP1BZ6STUG1015 |  | Footing Waterproofing & Screed | 25d | 2013-10-15 | 2013-11-14 | DUKHCONP1BZ6STUG1010 SS+5d, DUKHCONP1BZ6STUG1010 FF+5d | 0d |  | SCREED MASON SK [749 h]; LABOR- SUBCONTRACTOR [281.25 h]; SCREED QTY [936 Sqm]; WATERPROOFING QTY [1934 Sqm] | 73,833 | 20 | 1BP6SBUG20 | DUKHCON1BP6STUG1015 | DUKHCONP1BZ6STUG1015 | DH | CON | 1B | Z6 | ST | SB | B04 | B04-D02 | RES-1B | UG | REM |
| DUKHCONP1BZ6STUG1020 |  | Construction of foundations | 20d | 2013-11-02 | 2013-11-24 | DUKHCONP1BZ6STUG1015 SS+7d, DUKHCONP1BZ6STUG1015 FF+8d | 0d |  | STEEL FIXERS SK [3473 h]; CARPENTERS SK [1420 h]; CONCRETE MASON SK [800 h]; LABOR- SUBCONTRACTOR [4269.75 h]; REINFORCEMENT BARS QTY [43402 kg]; FORMWORK QTY [710 Sqm]; CONCRETE QTY [400 Cum] | 277,654 | 25 | 1BP6SBUG25 | DUKHCON1BP6STUG1020 | DUKHCONP1BZ6STUG1020 | DH | CON | 1B | Z6 | ST | SB | B04 | B04-D02 | RES-1B | UG | REM |
| DUKHCONP1BZ6STUG1025 |  | Construction of neck of columns | 25d | 2013-11-11 | 2013-12-09 | DUKHCONP1BZ5STUG1025, DUKHCONP1BZ6STUG1020 SS+8d, DUKHCONP1BZ6STUG1020 FF+7d | 0d |  | STEEL FIXERS SK [289 h]; CARPENTERS SK [1040 h]; CONCRETE MASON SK [60 h]; LABOR- SUBCONTRACTOR [1041.75 h]; REINFORCEMENT BARS QTY [3612 kg]; FORMWORK QTY [520 Sqm]; CONCRETE QTY [30 Cum] | 52,146 | 30 | 1BP6SBUG30 | DUKHCON1BP6STUG1025 | DUKHCONP1BZ6STUG1025 | DH | CON | 1B | Z6 | ST | SB | B04 | B04-D02 | RES-1B | UG | REM |
| DUKHCONP1BZ6STUG1030 |  | Waterproofing Footing & Neck Column | 25d | 2013-11-20 | 2013-12-19 | DUKHCONP1BZ6STUG1025 FF+8d, DUKHCONP1BZ6STUG1025 SS+8d | 0d |  | LABOR- SUBCONTRACTOR [183 h]; WATERPROOFING QTY [608 Sqm]; WATERPROOFING SPECIALIST SK [487 h] | 29,705 | 35 | 1BP6SBUG35 | DUKHCON1BP6STUG1030 | DUKHCONP1BZ6STUG1030 | DH | CON | 1B | Z6 | ST | SB | B04 | B04-D02 | RES-1B | UG | REM |
| DUKHCONP1BZ6STUG1035 |  | Backfilling Upto Grade Beam Bottom | 25d | 2013-12-02 | 2013-12-31 | DUKHCONP1BZ6STUG1030 SS+10d, DUKHCONP1BZ5STUG1035, DUKHCONP1BZ6STUG1030 FF+10d | 0d |  | LABOR- SUBCONTRACTOR [420 h]; BOBCAT [500 h]; PLATE COMPACTOR [500 h]; TRUCK [100 h]; EQUIP OPERATORS [1100 h]; BACKFILLING QTY [1710 Cum] | 43,497 | 40 | 1BP6SBUG40 | DUKHCON1BP6STUG1035 | DUKHCONP1BZ6STUG1035 | DH | CON | 1B | Z6 | ST | SB | B04 | B04-D01 | RES-1B | UG |  |
| DUKHCONP1BZ6STUG1040 |  | Construction of Grade Beams | 25d | 2013-12-19 | 2014-01-16 | DUKHCONP1BZ6STUG1035 FF+14d, DUKHCONP1BZ6STUG1035 SS+14d | 0d |  | BLINDING MASON SK [401 h]; SCREED MASON SK [401 h]; STEEL FIXERS SK [2027 h]; CARPENTERS SK [2640 h]; CONCRETE MASON SK [400 h]; LABOR- SUBCONTRACTOR [4251.75 h]; BLINDING QTY [501 Sqm]; SCREED QTY [501 Sqm]; REINFORCEMENT BARS QTY [25326 kg]; FORMWORK QTY [1320 Sqm]; CONCRETE QTY [200 Cum] | 466,317 | 45 | 1BP6SBUG45 | DUKHCON1BP6STUG1040 | DUKHCONP1BZ6STUG1040 | DH | CON | 1B | Z6 | ST | SB | B04 | B04-D02 | RES-1B | UG | REM |
| DUKHCONP1BZ6STUG1045 |  | Construction of slab on grade | 25d | 2014-01-15 | 2014-02-13 | DUKHCONP1BZ6STUG1040 FF+10d, DUKHCONP1BZ6PLUG4300 FF+8d, DUKHCONP1BZ6PLUG4300 SS+8d, DUKHCONP1BZ6STUG1040 SS+10d, DUKHCONP1BZ5STUG1045 | 0d |  | BLINDING MASON SK [1524 h]; SCREED MASON SK [1523 h]; STEEL FIXERS SK [616 h]; CONCRETE MASON SK [620 h]; LABOR- SUBCONTRACTOR [2641.5 h]; BLINDING QTY [1904 Sqm]; SCREED QTY [1903 Sqm]; CONCRETE QTY [310 Cum]; WELDED WIRE MESH [2310 Sqm] | 354,141 | 50 | 1BP6SBUG50 | DUKHCON1BP6STUG1045 | DUKHCONP1BZ6STUG1045 | DH | CON | 1B | Z6 | ST | SB | B04 | B04-D02 | RES-1B | UG | REM |

Notes:
- DUKHCONP1BZ5HDEX5090: Expenses: P1B-External works within the Plot Curtilage 15682
- DUKHCONP1BZ5HDEX5095: Expenses: P1B-External works within the Plot Curtilage 44480
- DUKHCONP1BZ5HDEX5100: Expenses: P1B-External works within the Plot Curtilage 53010
- DUKHCONP1BZ5SLEX5105: Expenses: P1B-External works within the Plot Curtilage 62730
- DUKHCONP1BZ5SLEX5110: Expenses: P1B-External works within the Plot Curtilage 151110
- DUKHCONP1BZ5ACTC8000: Expenses: P1B-Air-conditioning and Ventilation works 2120
- DUKHCONP1BZ5ELTC8010: Expenses: P1B-Electrical Installations 56950
- DUKHCONP1BZ5PLTC8005: Expenses: P1B-Plumbing and Drainage works 8890
- DUKHCONP1BZ6STUG1000: Expenses: P1B-Excavation and Earth Works 101871
- DUKHCONP1BZ6STUG1005: Expenses: P1B-Excavation and Earth Works 12689
- DUKHCONP1BZ6STUG1010: Expenses: P1B-Concrete Works 23571
- DUKHCONP1BZ6STUG1015: Expenses: P1B-Concrete Works 73833
- DUKHCONP1BZ6STUG1020: Expenses: P1B-Concrete Works 277654
- DUKHCONP1BZ6STUG1025: Expenses: P1B-Concrete Works 52146
- DUKHCONP1BZ6STUG1030: Expenses: P1B-Concrete Works 29705
- DUKHCONP1BZ6STUG1035: Expenses: P1B-Excavation and Earth Works 43497
- DUKHCONP1BZ6STUG1040: Expenses: P1B-Concrete Works 466317
- DUKHCONP1BZ6STUG1045: Expenses: P1B-Concrete Works 354141

| ID | WBS | Activity | Duration | Start | Finish | Predecessors | Total float | Free float | Resources | Cost | CODE | rem | P3 ACTID | P6 ID (old) | NP61D | PROJECT | PHASES | PACKAGE | PART | ELEMENTS | STEP | FLOORS | BILL NOS | BILL DIVISION | RES PACK | EXECUTER |
| --- | --- | --- | --- | --- | --- | --- | --- | --- | --- | --- | --- | --- | --- | --- | --- | --- | --- | --- | --- | --- | --- | --- | --- | --- | --- | --- |
|  | 15 | **SUPERSTRUCTURE** |  | 2014-02-01 | 2014-06-30 |  |  |  |  |  |  |  |  |  |  |  |  |  |  |  |  |  |  |  |  |  |
|  | 10 | **GROUND FLOOR** |  | 2014-02-01 | 2014-03-29 |  |  |  |  |  |  |  |  |  |  |  |  |  |  |  |  |  |  |  |  |  |
| DUKHCONP1BZ6STGF2000 |  | Column-Rebar & Formwork | 25d | 2014-02-01 | 2014-03-02 | DUKHCONP1BZ5STGF2000, DUKHCONP1BZ6STUG1045 FF+7d, DUKHCONP1BZ6STUG1045 SS+14d | 0d |  | STEEL FIXERS SK [1040 h]; CARPENTERS SK [2520 h]; LABOR- SUBCONTRACTOR [2670 h]; REINFORCEMENT BARS QTY [12993 kg]; FORMWORK QTY [1260 Sqm] | 113,418 | 10 | REM | 1BP6SPGF10 | DUKHCON1BP6STGF2000 | DUKHCONP1BZ6STGF2000 | DH | CON | 1B | Z6 | ST | SP | GF | B04 | B04-D02 | RES-1B |  |
| DUKHCONP1BZ6STGF2005 |  | Column-Concrete | 23d | 2014-02-10 | 2014-03-09 | DUKHCONP1BZ6STGF2000 SS+8d, DUKHCONP1BZ6STGF2000 FF+2d | 0d |  | CONCRETE MASON SK [278 h]; LABOR- SUBCONTRACTOR [208.5 h]; CONCRETE QTY [139 Cum] | 39,960 | 15 | REM | 1BP6SPGF15 | DUKHCON1BP6STGF2005 | DUKHCONP1BZ6STGF2005 | DH | CON | 1B | Z6 | ST | SP | GF | B04 | B04-D02 | RES-1B |  |
| DUKHCONP1BZ6STGF2010 |  | Beam, Stairs ,Slab-Rebar & Formwork | 25d | 2014-02-25 | 2014-03-25 | DUKHCONP1BZ6STGF2005 SS+2d, DUKHCONP1BZ6STGF2005 FF+14d | 0d |  | STEEL FIXERS SK [6595 h]; CARPENTERS SK [6778 h]; LABOR- SUBCONTRACTOR [10029.8 h]; REINFORCEMENT BARS QTY [82434 kg]; FORMWORK QTY [3389 Sqm] | 465,984 | 20 | REM | 1BP6SPGF20 | DUKHCON1BP6STGF2010 | DUKHCONP1BZ6STGF2010 | DH | CON | 1B | Z6 | ST | SP | GF | B04 | B04-D02 | RES-1B |  |
| DUKHCONP1BZ6STGF2015 |  | Beam, Stairs ,Slab-Concrete | 14d | 2014-03-13 | 2014-03-29 | DUKHCONP1BZ6STGF2010 FF+3d, DUKHCONP1BZ5STGF2015, DUKHCONP1BZ6STGF2010 SS+10d | 0d |  | CONCRETE MASON SK [1040 h]; LABOR- SUBCONTRACTOR [780 h]; CONCRETE QTY [520 Cum] | 175,158 | 25 | REM | 1BP6SPGF25 | DUKHCON1BP6STGF2015 | DUKHCONP1BZ6STGF2015 | DH | CON | 1B | Z6 | ST | SP | GF | B04 | B04-D02 | RES-1B |  |
|  | 15 | **FIRST FLOORS** |  | 2014-03-16 | 2014-04-29 |  |  |  |  |  |  |  |  |  |  |  |  |  |  |  |  |  |  |  |  |  |
| DUKHCONP1BZ6STFF2020 |  | Column-Rebar & Formwork | 25d | 2014-03-16 | 2014-04-13 | DUKHCONP1BZ6STGF2015 FF+5d, DUKHCONP1BZ5STFF2020, DUKHCONP1BZ6STGF2015 SS+2d | 0d |  | CARPENTERS SK [2240 h]; LABOR- SUBCONTRACTOR [1680 h]; FORMWORK QTY [1120 Sqm]; REINFORCEMENT BARS QTY [4412 kg]; STEEL FIXERS SK [352 h] | 77,760 | 10 | REM | 1BP6SPFF10 | DUKHCON1BP6STFF2020 | DUKHCONP1BZ6STFF2020 | DH | CON | 1B | Z6 | ST | SP | FF | B04 | B04-D02 | RES-1B |  |
| DUKHCONP1BZ6STFF2025 |  | Column-Concrete | 23d | 2014-03-25 | 2014-04-20 | DUKHCONP1BZ6STFF2020 FF+2d, DUKHCONP1BZ6STFF2020 SS+8d | 0d |  | CONCRETE MASON SK [244 h]; LABOR- SUBCONTRACTOR [183 h]; CONCRETE QTY [122 Cum] | 34,974 | 15 | REM | 1BP6SPFF15 | DUKHCON1BP6STFF2025 | DUKHCONP1BZ6STFF2025 | DH | CON | 1B | Z6 | ST | SP | FF | B04 | B04-D02 | RES-1B |  |
| DUKHCONP1BZ6STFF2030 |  | Beam, Stairs ,Slab-Rebar & Formwork | 25d | 2014-03-29 | 2014-04-26 | DUKHCONP1BZ6STFF2025 SS+2d, DUKHCONP1BZ6STFF2025 FF+5d | 0d |  | LABOR- SUBCONTRACTOR [10221.8 h]; REINFORCEMENT BARS QTY [85628 kg]; FORMWORK QTY [3389 Sqm]; STEEL FIXERS SK [6851 h]; CARPENTERS SK [6778 h] | 462,051 | 20 | REM | 1BP6SPFF20 | DUKHCON1BP6STFF2030 | DUKHCONP1BZ6STFF2030 | DH | CON | 1B | Z6 | ST | SP | FF | B04 | B04-D02 | RES-1B |  |
| DUKHCONP1BZ6STFF2035 |  | Beam, Stairs ,Slab-Concrete | 14d | 2014-04-14 | 2014-04-29 | DUKHCONP1BZ5STFF2035, DUKHCONP1BZ6STFF2030 FF+3d, DUKHCONP1BZ6STFF2030 SS+10d | 0d |  | CONCRETE MASON SK [920 h]; LABOR- SUBCONTRACTOR [690 h]; CONCRETE QTY [460 Cum] | 157,662 | 25 | REM | 1BP6SPFF25 | DUKHCON1BP6STFF2035 | DUKHCONP1BZ6STFF2035 | DH | CON | 1B | Z6 | ST | SP | FF | B04 | B04-D02 | RES-1B |  |
|  | 20 | **ROOF** |  | 2014-04-20 | 2014-06-30 |  |  |  |  |  |  |  |  |  |  |  |  |  |  |  |  |  |  |  |  |  |
| DUKHCONP1BZ6STRF2040 |  | Column-Rebar & Formwork | 18d | 2014-04-20 | 2014-05-10 | DUKHCONP1BZ5STRF2040, DUKHCONP1BZ6STFF2035 FF+3d, DUKHCONP1BZ6STFF2035 SS+5d | 2d | 0d | CARPENTERS SK [840 h]; LABOR- SUBCONTRACTOR [630 h]; FORMWORK QTY [420 Sqm] | 23,823 | 10 | REM | 1BP6SPRF10 | DUKHCON1BP6STRF2040 | DUKHCONP1BZ6STRF2040 | DH | CON | 1B | Z6 | ST | SP | RF | B04 | B04-D02 | RES-1B |  |
| DUKHCONP1BZ6STRF2045 |  | Column-Concrete | 17d | 2014-04-23 | 2014-05-12 | DUKHCONP1BZ6STRF2040 FF+1d, DUKHCONP1BZ6STRF2040 SS+3d | 2d | 0d | CONCRETE MASON SK [58 h]; LABOR- SUBCONTRACTOR [43.5 h]; CONCRETE QTY [29 Cum] | 8,325 | 15 | REM | 1BP6SPRF15 | DUKHCON1BP6STRF2045 | DUKHCONP1BZ6STRF2045 | DH | CON | 1B | Z6 | ST | SP | RF | B04 | B04-D02 | RES-1B |  |
| DUKHCONP1BZ6STRF2050 |  | Slab-Rebar & Formwork - Head Room | 20d | 2014-04-26 | 2014-05-18 | DUKHCONP1BZ6STRF2045 FF+5d, DUKHCONP1BZ6STRF2045 SS+2d | 2d | 0d | STEEL FIXERS SK [1617 h]; CARPENTERS SK [842 h]; LABOR- SUBCONTRACTOR [1844.25 h]; REINFORCEMENT BARS QTY [20211 kg]; FORMWORK QTY [421 Sqm] | 100,160 | 20 | REM | 1BP6SPRF20 | DUKHCON1BP6STRF2050 | DUKHCONP1BZ6STRF2050 | DH | CON | 1B | Z6 | ST | SP | RF | B04 | B04-D02 | RES-1B |  |
| DUKHCONP1BZ6STRF2055 |  | Slab-Concrete-Head room | 13d | 2014-05-10 | 2014-05-24 | DUKHCONP1BZ6STRF2050 SS+5d, DUKHCONP1BZ5STRF2055, DUKHCONP1BZ6STRF2050 FF+5d | 2d | 0d | CONCRETE MASON SK [200 h]; LABOR- SUBCONTRACTOR [150 h]; CONCRETE QTY [100 Cum] | 32,380 | 25 | REM | 1BP6SPRF25 | DUKHCON1BP6STRF2055 | DUKHCONP1BZ6STRF2055 | DH | CON | 1B | Z6 | ST | SP | RF | B04 | B04-D02 | RES-1B |  |
| DUKHCONP1BZ6STRF2060 |  | Construction of Parapets | 25d | 2014-05-17 | 2014-06-14 | DUKHCONP1BZ5STRF2060, DUKHCONP1BZ6STRF2055 SS+2d, DUKHCONP1BZ6STRF2055 FF+14d | 62d | 9d | BLOCK MASON SK [940 h]; LABOR- SUBCONTRACTOR [528.75 h]; BLOCK QTY [470 Sqm] | 29,140 | 30 | REM | 1BP6SPRF30 | DUKHCON1BP6STRF2060 | DUKHCONP1BZ6STRF2060 | DH | CON | 1B | Z6 | ST | SP | RF | B04 | B04-D03 | RES-1B |  |
| DUKHCONP1BZ6STRF2065 |  | Construction of up stands/Plinth | 25d | 2014-06-02 | 2014-06-30 | DUKHCONP1BZ5STRF2065, DUKHCONP1BZ6STRF2060 FF+5d, DUKHCONP1BZ6STRF2060 SS+5d | 67d | 0d | STEEL FIXERS SK [73 h]; CARPENTERS SK [300 h]; CONCRETE MASON SK [20 h]; LABOR- SUBCONTRACTOR [294.75 h]; REINFORCEMENT BARS QTY [903 kg]; FORMWORK QTY [150 Sqm]; CONCRETE QTY [10 Cum] | 15,880 | 35 | REM | 1BP6SPRF35 | DUKHCON1BP6STRF2065 | DUKHCONP1BZ6STRF2065 | DH | CON | 1B | Z6 | ST | SP | RF | B04 | B04-D02 | RES-1B |  |
|  | 15 | **FINISHING WORKS** |  | 2014-04-07 | 2014-11-24 |  |  |  |  |  |  |  |  |  |  |  |  |  |  |  |  |  |  |  |  |  |
|  | 10 | **INTERNAL FINISHES** |  | 2014-04-07 | 2014-11-24 |  |  |  |  |  |  |  |  |  |  |  |  |  |  |  |  |  |  |  |  |  |
|  | 10 | **GROUND FLOOR** |  | 2014-04-07 | 2014-09-20 |  |  |  |  |  |  |  |  |  |  |  |  |  |  |  |  |  |  |  |  |  |
| DUKHCONP1BZ6ARGF3000 |  | Block work | 25d | 2014-04-07 | 2014-05-05 | DUKHCONP1BZ6STGF2015 SS+21d, DUKHCONP1BZ6STGF2015 FF+21d, DUKHCONP1BZ5ARGF3000 | 38d | 0d | BLOCK MASON SK [7410 h]; LABOR- SUBCONTRACTOR [4168.5 h]; BLOCK QTY [3705 Sqm] | 244,325 | 10 | REM | 1BP6IFGF10 | DUKHCON1BP6ARGF3000 | DUKHCONP1BZ6ARGF3000 | DH | CON | 1B | Z6 | FIN | IF | GF | B04 | B04-D03 | RES-1B |  |
| DUKHCONP1BZ6ARGF3005 |  | Plastering work | 25d | 2014-04-29 | 2014-05-27 | DUKHCONP1BZ6ELGF4000 FF+5d, DUKHCONP1BZ5ARGF3005, DUKHCONP1BZ6ARGF3000 FF+7d, DUKHCONP1BZ6ARGF3000 SS+7d, DUKHCONP1BZ6ELGF4000 SS+5d, DUKHCONP1BZ6PLGF4305 SS+5d, DUKHCONP1BZ6PLGF4305 FF+5d | 38d | 0d | PLASTER MASON SK [9080 h]; LABOR- SUBCONTRACTOR [5107.5 h]; PLASTER QTY [5675 Sqm] | 74,705 | 12 | REM | 1BP6IFGF12 | DUKHCON1BP6ARGF3005 | DUKHCONP1BZ6ARGF3005 | DH | CON | 1B | Z6 | FIN | IF | GF | B04 | B04-D10 | RES-1B |  |
| DUKHCONP1BZ6ARGF3010 |  | Flooring screed | 21d | 2014-05-07 | 2014-05-31 | DUKHCONP1BZ6ARGF3005 SS+7d, DUKHCONP1BZ6ARGF3005 FF+3d | 46d | 8d | SCREED MASON SK [1973 h]; LABOR- SUBCONTRACTOR [740.25 h]; FLOORING SCREED QTY [2466 Sqm] | 82,460 | 15 | REM | 1BP6IFGF15 | DUKHCON1BP6ARGF3010 | DUKHCONP1BZ6ARGF3010 | DH | CON | 1B | Z6 | FIN | IF | GF | B04 | B04-D10 | RES-1B |  |
| DUKHCONP1BZ6ARGF3030 |  | Paint First coat | 25d | 2014-05-15 | 2014-06-12 | DUKHCONP1BZ5ARGF3030, DUKHCONP1BZ6ARGF3005 FF+14d, DUKHCONP1BZ6ARGF3005 SS+14d | 52d | 14d | LABOR- SUBCONTRACTOR [2023.5 h]; FIRSTCOAT PAINT QTY [6745 Sqm]; PAINTERS SK [5396 h] | 37,425 | 21 | REM | 1BP6IFGF21 | DUKHCON1BP6ARGF3030 | DUKHCONP1BZ6ARGF3030 | DH | CON | 1B | Z6 | FIN | IF | GF | B04 | B04-D11 | RES-1B | ENT |
| DUKHCONP1BZ6ARGF3015 |  | Wet area waterproofing & Protection Screed | 15d | 2014-05-17 | 2014-06-02 | DUKHCONP1BZ6ARGF3005 FF+5d, DUKHCONP1BZ5ARGF3015, DUKHCONP1BZ6ARGF3005 SS+7d | 38d | 0d | LABOR- SUBCONTRACTOR [144 h]; WETAREA WATERPROOFING QTY [480 Sqm]; WATERPROOFING SPECIALIST SK [384 h] | 16,320 | 18 | REM | 1BP6IFGF18 | DUKHCON1BP6ARGF3015 | DUKHCONP1BZ6ARGF3015 | DH | CON | 1B | Z6 | FIN | IF | GF | B04 | B04-D10 | RES-1B |  |
| DUKHCONP1BZ6ARGF3020 |  | Ceramic Wall Tiling | 25d | 2014-05-22 | 2014-06-19 | DUKHCONP1BZ6ARGF3015 SS+5d, DUKHCONP1BZ6PLGF4310 FF+4d, DUKHCONP1BZ5ARGF3020, DUKHCONP1BZ6ARGF3015 FF+5d, DUKHCONP1BZ6PLGF4305 SS+4d, DUKHCONP1BZ6PLGF4305 FF+4d, DUKHCONP1BZ6PLGF4310 SS+4d | 38d | 0d | TILE MASON SK [2828 h]; LABOR- SUBCONTRACTOR [1590.75 h]; CERAMIC WALL TILE QTY [1414 Sqm] | 80,093 | 24 | REM | 1BP6IFGF24 | DUKHCON1BP6ARGF3020 | DUKHCONP1BZ6ARGF3020 | DH | CON | 1B | Z6 | FIN | IF | GF | B04 | B04-D10 | RES-1B |  |
| DUKHCONP1BZ6ARGF3025 |  | Porcelain Tile flooring | 25d | 2014-05-28 | 2014-06-25 | DUKHCONP1BZ6ARGF3020 FF+5d, DUKHCONP1BZ5ARGF3025, DUKHCONP1BZ6ARGF3010 FF+10d, DUKHCONP1BZ6ARGF3020 SS+5d, DUKHCONP1BZ6ARGF3010 SS+10d | 38d | 0d | TILE MASON SK [1534 h]; LABOR- SUBCONTRACTOR [863.25 h]; PORCELAIN FLOORING QTY [1342 Sqm] | 101,753 | 27 | REM | 1BP6IFGF27 | DUKHCON1BP6ARGF3025 | DUKHCONP1BZ6ARGF3025 | DH | CON | 1B | Z6 | FIN | IF | GF | B04 | B04-D10 | RES-1B |  |
| DUKHCONP1BZ6ARGF3045 |  | Fixing of Suspension systems | 20d | 2014-06-15 | 2014-07-07 | DUKHCONP1BZ6ARGF3025 FF+10d, DUKHCONP1BZ6ELGF4010 SS+5d, DUKHCONP1BZ6ARGF3030 FF+7d, DUKHCONP1BZ5ARGF3045, DUKHCONP1BZ6ARGF3025 SS+10d, DUKHCONP1BZ6ARGF3030 SS+7d, DUKHCONP1BZ6ELGF4010 FF+5d | 38d | 0d | LABOR- SUBCONTRACTOR [594 h]; SUSPENSION QTY [1320 Sqm]; FALSE CEILING SKILLED SK [1056 h] | 26,960 | 39 | REM | 1BP6IFGF39 | DUKHCON1BP6ARGF3045 | DUKHCONP1BZ6ARGF3045 | DH | CON | 1B | Z6 | FIN | IF | GF | B04 | B04-D10 | RES-1B | SUS |
| DUKHCONP1BZ6ARGF3035 |  | Slate Tile Flooring & Skirting | 15d | 2014-06-17 | 2014-07-03 | DUKHCONP1BZ6ARGF3010 SS+13d, DUKHCONP1BZ6ARGF3010 FF+13d, DUKHCONP1BZ6ARGF3025 FF+7d, DUKHCONP1BZ6ARGF3025 SS+13d | 48d | 2d | TILE MASON SK [744 h]; LABOR- SUBCONTRACTOR [418.5 h]; SLATE TILE QTY [465 Sqm] | 97,404 | 33 | REM | 1BP6IFGF33 | DUKHCON1BP6ARGF3035 | DUKHCONP1BZ6ARGF3035 | DH | CON | 1B | Z6 | FIN | IF | GF | B04 | B04-D10 | RES-1B |  |
| DUKHCONP1BZ6ARGF3055 |  | Aluminum tile false ceiling | 25d | 2014-06-23 | 2014-07-21 | DUKHCONP1BZ6ACGF4600 FF+7d, DUKHCONP1BZ6ACGF4600 SS+7d, DUKHCONP1BZ6ARGF3045 FF+7d, DUKHCONP1BZ6ARGF3045 SS+7d | 41d | 3d | LABOR- SUBCONTRACTOR [58.5 h]; FALSE CEILING QTY [130 Sqm]; FALSE CEILING SKILLED SK [104 h] | 8,297 | 42 | REM | 1BP6IFGF42 | DUKHCON1BP6ARGF3055 | DUKHCONP1BZ6ARGF3055 | DH | CON | 1B | Z6 | FIN | IF | GF | B04 | B04-D10 | RES-1B | ALU |
| DUKHCONP1BZ6ARGF3040 |  | Cobble Tile flooring | 15d | 2014-06-24 | 2014-07-10 | DUKHCONP1BZ6ARGF3010 FF+13d, DUKHCONP1BZ6ARGF3035 FF+4d, DUKHCONP1BZ6ARGF3025 SS+13d, DUKHCONP1BZ6ARGF3010 SS+13d, DUKHCONP1BZ6ARGF3025 FF+13d, DUKHCONP1BZ6ARGF3035 SS+4d | 46d | 0d | TILE MASON SK [560 h]; LABOR- SUBCONTRACTOR [315 h]; COBBLE STONE QTY [350 Sqm] | 29,189 | 30 | REM | 1BP6IFGF30 | DUKHCON1BP6ARGF3040 | DUKHCONP1BZ6ARGF3040 | DH | CON | 1B | Z6 | FIN | IF | GF | B04 | B04-D10 | RES-1B |  |
| DUKHCONP1BZ6ARGF3060 |  | Gypsum board false ceiling | 25d | 2014-06-26 | 2014-07-24 | DUKHCONP1BZ6ACGF4600 SS+7d, DUKHCONP1BZ5ARGF3060, DUKHCONP1BZ6ACGF4600 FF+7d, DUKHCONP1BZ6ARGF3045 FF+10d, DUKHCONP1BZ6ARGF3045 SS+10d | 38d | 0d | LABOR- SUBCONTRACTOR [547.5 h]; FALSE CEILING QTY [1216.02 Sqm]; FALSE CEILING SKILLED SK [973 h] | 66,658 | 45 | REM | 1BP6IFGF45 | DUKHCON1BP6ARGF3060 | DUKHCONP1BZ6ARGF3060 | DH | CON | 1B | Z6 | FIN | IF | GF | B04 | B04-D10 | RES-1B | GYP |
| DUKHCONP1BZ6ARGF3050 |  | Granite - Stair case flooring & Skirting | 20d | 2014-07-02 | 2014-07-24 | DUKHCONP1BZ6ARGF3040 SS+7d, DUKHCONP1BZ6ARGF3025 FF+13d, DUKHCONP1BZ6ARGF3040 FF+7d, DUKHCONP1BZ6ARGF3025 SS+13d | 46d | 0d | GRANITE MASON SK [680 h]; LABOR- SUBCONTRACTOR [382.5 h]; GRANITE QTY [170 Sqm] | 112,400 | 36 | REM | 1BP6IFGF36 | DUKHCON1BP6ARGF3050 | DUKHCONP1BZ6ARGF3050 | DH | CON | 1B | Z6 | FIN | IF | GF | B04 | B04-D10 | RES-1B |  |
| DUKHCONP1BZ6ARGF3065 |  | Wooden door & PVC Door | 15d | 2014-07-16 | 2014-08-05 | DUKHCONP1BZ6ARGF3035 FF+7d, DUKHCONP1BZ5ARGF3065, DUKHCONP1BZ6ARGF3035 SS+7d, DUKHCONP1BZ6ARGF3050 SS+7d, DUKHCONP1BZ6ARGF3050 FF+7d | 46d | 0d | LABOR- SUBCONTRACTOR [225 h]; WOODEN DOOR QTY [150 ea]; DOOR ERECTOR SK [600 h] | 635,284 | 48 | REM | 1BP6IFGF48 | DUKHCON1BP6ARGF3065 | DUKHCONP1BZ6ARGF3065 | DH | CON | 1B | Z6 | FIN | IF | GF | B04 | B04-D05 | RES-1B |  |
| DUKHCONP1BZ6ARGF3070 |  | Aluminum doors | 15d | 2014-07-22 | 2014-08-11 | DUKHCONP1BZ5ARGF3070, DUKHCONP1BZ6ARGF3065 SS+5d, DUKHCONP1BZ6ARGF3065 FF+5d | 46d | 0d | LABOR- SUBCONTRACTOR [30 h]; ALUMINIUM DOOR QTY [20 ea]; DOOR ERECTOR SK [80 h] | 50,266 | 51 | REM | 1BP6IFGF51 | DUKHCON1BP6ARGF3070 | DUKHCONP1BZ6ARGF3070 | DH | CON | 1B | Z6 | FIN | IF | GF | B04 | B04-D06 | RES-1B |  |
| DUKHCONP1BZ6ARGF3075 |  | Carpentry & Joinery Works | 20d | 2014-07-28 | 2014-08-23 | DUKHCONP1BZ5ARGF3075, DUKHCONP1BZ6ARGF3070 SS+5d, DUKHCONP1BZ6ARGF3070 FF+7d | 46d | 0d | LABOR- SUBCONTRACTOR [180 h]; CABINET QTY [50 ea]; COUNTER QTY [20 ea]; JOINERY WORK SK [400 h]; COUNTER SK [80 h] | 187,296 | 57 | REM | 1BP6IFGF57 | DUKHCON1BP6ARGF3075 | DUKHCONP1BZ6ARGF3075 | DH | CON | 1B | Z6 | FIN | IF | GF | B04 | B04-D05 | RES-1B |  |
| DUKHCONP1BZ6ARGF3080 |  | Aluminum windows | 20d | 2014-07-29 | 2014-08-24 | DUKHCONP1BZ6ARGF3070 FF+6d, DUKHCONP1BZ6ARGF3070 SS+6d, DUKHCONP1BZ5ARGF3080 | 56d | 10d | LABOR- SUBCONTRACTOR [88.5 h]; ALUMINIUM WINDOWS QTY [88 ea]; WINDOW ERECTOR SK [235 h] | 32,520 | 54 | REM | 1BP6IFGF54 | DUKHCON1BP6ARGF3080 | DUKHCONP1BZ6ARGF3080 | DH | CON | 1B | Z6 | FIN | IF | GF | B04 | B04-D06 | RES-1B |  |
| DUKHCONP1BZ6ARGF3085 |  | S.S.Balustrade | 20d | 2014-08-09 | 2014-08-31 | DUKHCONP1BZ6ARGF3050 SS+7d, DUKHCONP1BZ6ARGF3075 FF+7d, DUKHCONP1BZ6ARGF3075 SS+7d, DUKHCONP1BZ6ARGF3050 FF+7d | 51d | 5d | LABOR- SUBCONTRACTOR [78.75 h]; S.S.BALUSTRADE QTY [70 lm]; HANDRAIL ERECTOR SKILLED [140 h] | 101,220 | 63 | REM | 1BP6IFGF63 | DUKHCON1BP6ARGF3085 | DUKHCONP1BZ6ARGF3085 | DH | CON | 1B | Z6 | FIN | IF | GF | B04 | B04-D06 | RES-1B |  |
| DUKHCONP1BZ6ARGF3090 |  | Installation of Granite Counter Top | 15d | 2014-08-13 | 2014-08-30 | DUKHCONP1BZ6ARGF3075 FF+6d, DUKHCONP1BZ6ARGF3075 SS+7d | 46d | 0d | GRANITE MASON SK [220 h]; LABOR- SUBCONTRACTOR [82.5 h]; GRANITE COUNTER TOP QTY [55 ea] | 58,568 | 60 | REM | 1BP6IFGF60 | DUKHCON1BP6ARGF3090 | DUKHCONP1BZ6ARGF3090 | DH | CON | 1B | Z6 | FIN | IF | GF | B04 | B04-D10 | RES-1B |  |
| DUKHCONP1BZ6ARGF3095 |  | Final Painting | 25d | 2014-08-23 | 2014-09-20 | DUKHCONP1BZ6ARGF3080 FF+8d, DUKHCONP1BZ6ARGF3090 FF+8d, DUKHCONP1BZ6ARGF3085 FF+7d, DUKHCONP1BZ6ACGF4610 SS+10d, DUKHCONP1BZ6ARGF3040 SS+13d, DUKHCONP1BZ6ARGF3040 FF+13d, DUKHCONP1BZ6ARGF3035 FF+13d, DUKHCONP1BZ6ARGF3060 FF+8d, DUKHCONP1BZ6ARGF3090 SS+8d, DUKHCONP1BZ5ARGF3095, DUKHCONP1BZ6ARGF3030 SS+10d, DUKHCONP1BZ6ARGF3030 FF+10d, DUKHCONP1BZ6ARGF3080 SS+8d, DUKHCONP1BZ6ARGF3085 SS+7d, DUKHCONP1BZ6ARGF3070 SS+5d, DUKHCONP1BZ6ARGF3070 FF+5d, DUKHCONP1BZ6ARGF3035 SS+13d, DUKHCONP1BZ6ACGF4610 FF+10d, DUKHCONP1BZ6ARGF3060 SS+8d | 46d | 54d | LABOR- SUBCONTRACTOR [2023.5 h]; PAINT QTY [6745 Sqm]; PAINTERS SK [5396 h] | 82,416 | 66 | REM | 1BP6IFGF66 | DUKHCON1BP6ARGF3095 | DUKHCONP1BZ6ARGF3095 | DH | CON | 1B | Z6 | FIN | IF | GF | B04 | B04-D11 | RES-1B | PNT |

Notes:
- DUKHCONP1BZ6STGF2000: Expenses: P1B-Concrete Works 113418
- DUKHCONP1BZ6STGF2005: Expenses: P1B-Concrete Works 39960
- DUKHCONP1BZ6STGF2010: Expenses: P1B-Concrete Works 465984
- DUKHCONP1BZ6STGF2015: Expenses: P1B-Concrete Works 175158
- DUKHCONP1BZ6STFF2020: Expenses: P1B-Concrete Works 77760
- DUKHCONP1BZ6STFF2025: Expenses: P1B-Concrete Works 34974
- DUKHCONP1BZ6STFF2030: Expenses: P1B-Concrete Works 462051
- DUKHCONP1BZ6STFF2035: Expenses: P1B-Concrete Works 157662
- DUKHCONP1BZ6STRF2040: Expenses: P1B-Concrete Works 23823
- DUKHCONP1BZ6STRF2045: Expenses: P1B-Concrete Works 8325
- DUKHCONP1BZ6STRF2050: Expenses: P1B-Concrete Works 100160
- DUKHCONP1BZ6STRF2055: Expenses: P1B-Concrete Works 32380
- DUKHCONP1BZ6STRF2060: Expenses: P1B-Block work 29140
- DUKHCONP1BZ6STRF2065: Expenses: P1B-Concrete Works 15880
- DUKHCONP1BZ6ARGF3000: Expenses: P1B-Block work 244325
- DUKHCONP1BZ6ARGF3005: Expenses: P1B-Finishes 74705
- DUKHCONP1BZ6ARGF3010: Expenses: P1B-Finishes 82460
- DUKHCONP1BZ6ARGF3030: Expenses: P1B-Painting and Decorating 37425
- DUKHCONP1BZ6ARGF3015: Expenses: P1B-Finishes 16320
- DUKHCONP1BZ6ARGF3020: Expenses: P1B-Finishes 80093
- DUKHCONP1BZ6ARGF3025: Expenses: P1B-Finishes 101753
- DUKHCONP1BZ6ARGF3045: Expenses: P1B-Finishes 26960
- DUKHCONP1BZ6ARGF3035: Expenses: P1B-Finishes 97404
- DUKHCONP1BZ6ARGF3055: Expenses: P1B-Finishes 8297
- DUKHCONP1BZ6ARGF3040: Expenses: P1B-Finishes 29189
- DUKHCONP1BZ6ARGF3060: Expenses: P1B-Finishes 66658
- DUKHCONP1BZ6ARGF3050: Expenses: P1B-Finishes 112400
- DUKHCONP1BZ6ARGF3065: Expenses: P1B-Carpentry and Joinery 635284
- DUKHCONP1BZ6ARGF3070: Expenses: P1B-Metal work 50266
- DUKHCONP1BZ6ARGF3075: Expenses: P1B-Carpentry and Joinery 187296
- DUKHCONP1BZ6ARGF3080: Expenses: P1B-Metal work 32520
- DUKHCONP1BZ6ARGF3085: Expenses: P1B-Metal work 101220
- DUKHCONP1BZ6ARGF3090: Expenses: P1B-Finishes 58568
- DUKHCONP1BZ6ARGF3095: Expenses: P1B-Painting and Decorating 82416

| ID | WBS | Activity | Duration | Start | Finish | Predecessors | Total float | Free float | Resources | Cost | CODE | rem | P3 ACTID | P6 ID (old) | NP61D | PROJECT | PHASES | PACKAGE | PART | ELEMENTS | STEP | FLOORS | BILL NOS | BILL DIVISION | RES PACK | EXECUTER |
| --- | --- | --- | --- | --- | --- | --- | --- | --- | --- | --- | --- | --- | --- | --- | --- | --- | --- | --- | --- | --- | --- | --- | --- | --- | --- | --- |
|  | 15 | **FIRST FLOORS** |  | 2014-05-18 | 2014-11-24 |  |  |  |  |  |  |  |  |  |  |  |  |  |  |  |  |  |  |  |  |  |
| DUKHCONP1BZ6ARFF3300 |  | Block work | 25d | 2014-05-18 | 2014-06-15 | DUKHCONP1BZ6STFF2020 SS+21d, DUKHCONP1BZ6STFF2035 FF+21d, DUKHCONP1BZ6STFF2020 FF+21d, DUKHCONP1BZ6STFF2035 SS+21d, DUKHCONP1BZ5ARFF3300 | -8d | 0d | BLOCK MASON SK [5872 h]; LABOR- SUBCONTRACTOR [3303 h]; BLOCK QTY [2936 Sqm] | 200,339 | 10 | REM | 1BP6IFFF10 | DUKHCON1BP6ARFF3300 | DUKHCONP1BZ6ARFF3300 | DH | CON | 1B | Z6 | FIN | IF | FF | B04 | B04-D03 | RES-1B |  |
| DUKHCONP1BZ6ARFF3305 |  | Plastering work | 25d | 2014-06-14 | 2014-07-12 | DUKHCONP1BZ6PLFF4325 SS+8d, DUKHCONP1BZ6ELFF4035 FF+5d, DUKHCONP1BZ6ELFF4035 SS+5d, DUKHCONP1BZ6PLFF4325 FF+8d, DUKHCONP1BZ5ARFF3305, DUKHCONP1BZ6ARFF3300 SS+7d, DUKHCONP1BZ6ARFF3300 FF+7d | -8d | 0d | PLASTER MASON SK [6015 h]; LABOR- SUBCONTRACTOR [3384 h]; PLASTER QTY [3759 Sqm] | 49,790 | 12 | REM | 1BP6IFFF12 | DUKHCON1BP6ARFF3305 | DUKHCONP1BZ6ARFF3305 | DH | CON | 1B | Z6 | FIN | IF | FF | B04 | B04-D10 | RES-1B |  |
| DUKHCONP1BZ6ARFF3310 |  | Flooring screed | 21d | 2014-06-22 | 2014-07-15 | DUKHCONP1BZ6ARFF3305 FF+3d, DUKHCONP1BZ6ARFF3305 SS+7d | 9d | 17d | SCREED MASON SK [983 h]; LABOR- SUBCONTRACTOR [369 h]; FLOORING SCREED QTY [1228 Sqm] | 40,540 | 15 | REM | 1BP6IFFF15 | DUKHCON1BP6ARFF3310 | DUKHCONP1BZ6ARFF3310 | DH | CON | 1B | Z6 | FIN | IF | FF | B04 | B04-D10 | RES-1B |  |
| DUKHCONP1BZ6ARFF3330 |  | Paint First coat | 25d | 2014-06-30 | 2014-07-28 | DUKHCONP1BZ6ARFF3305 FF+14d, DUKHCONP1BZ6ARFF3305 SS+14d | 18d | 26d | LABOR- SUBCONTRACTOR [1791.9 h]; FIRSTCOAT PAINT QTY [5973 Sqm]; PAINTERS SK [4778.4 h] | 37,434 | 21 | REM | 1BP6IFFF21 | DUKHCON1BP6ARFF3330 | DUKHCONP1BZ6ARFF3330 | DH | CON | 1B | Z6 | FIN | IF | FF | B04 | B04-D11 | RES-1B | ENT |
| DUKHCONP1BZ6ARFF3315 |  | Wet area waterproofing | 15d | 2014-07-05 | 2014-07-21 | DUKHCONP1BZ5ARFF3315, DUKHCONP1BZ6ARFF3305 SS+7d, DUKHCONP1BZ6ARFF3305 FF+8d | -8d | 0d | LABOR- SUBCONTRACTOR [468 h]; WETAREA WATERPROOFING QTY [1560 Sqm]; WATERPROOFING SPECIALIST SK [1248 h] | 51,280 | 18 | REM | 1BP6IFFF18 | DUKHCON1BP6ARFF3315 | DUKHCONP1BZ6ARFF3315 | DH | CON | 1B | Z6 | FIN | IF | FF | B04 | B04-D10 | RES-1B |  |
| DUKHCONP1BZ6ARFF3320 |  | Ceramic Wall Tiling | 25d | 2014-07-14 | 2014-08-14 | DUKHCONP1BZ6ARFF3315 SS+8d, DUKHCONP1BZ6PLFF4330 FF+7d, DUKHCONP1BZ6PLFF4325 SS+4d, DUKHCONP1BZ6ARFF3315 FF+7d, DUKHCONP1BZ6PLFF4330 SS+7d, DUKHCONP1BZ5ARFF3320, DUKHCONP1BZ6PLFF4325 FF+4d | -8d | 0d | TILE MASON SK [1212 h]; CERAMIC WALL TILE QTY [606 Sqm]; LABOR- SUBCONTRACTOR [681.75 h] | 38,393 | 24 | REM | 1BP6IFFF24 | DUKHCON1BP6ARFF3320 | DUKHCONP1BZ6ARFF3320 | DH | CON | 1B | Z6 | FIN | IF | FF | B04 | B04-D10 | RES-1B |  |
| DUKHCONP1BZ6ARFF3325 |  | Porcelain Tile flooring | 25d | 2014-07-23 | 2014-08-24 | DUKHCONP1BZ6ARFF3320 SS+8d, DUKHCONP1BZ6ARFF3320 FF+8d, DUKHCONP1BZ6ARFF3310 SS+10d, DUKHCONP1BZ6ARFF3310 FF+10d, DUKHCONP1BZ5ARFF3325 | -8d | 0d | TILE MASON SK [1072 h]; LABOR- SUBCONTRACTOR [603 h]; PORCELAIN FLOORING QTY [938 Sqm] | 77,604 | 27 | REM | 1BP6IFFF27 | DUKHCON1BP6ARFF3325 | DUKHCONP1BZ6ARFF3325 | DH | CON | 1B | Z6 | FIN | IF | FF | B04 | B04-D10 | RES-1B |  |
| DUKHCONP1BZ6ARFF3335 |  | Slate Tile Flooring & Skirting | 15d | 2014-08-13 | 2014-08-30 | DUKHCONP1BZ6ARFF3310 SS+13d, DUKHCONP1BZ6ARFF3325 FF+5d, DUKHCONP1BZ6ARFF3310 FF+13d, DUKHCONP1BZ6ARFF3325 SS+13d | 11d | 19d | TILE MASON SK [744 h]; LABOR- SUBCONTRACTOR [418.5 h]; SLATE TILE QTY [465 Sqm] | 92,849 | 30 | REM | 1BP6IFFF30 | DUKHCON1BP6ARFF3335 | DUKHCONP1BZ6ARFF3335 | DH | CON | 1B | Z6 | FIN | IF | FF | B04 | B04-D10 | RES-1B |  |
| DUKHCONP1BZ6ARFF3345 |  | Fixing of Suspension systems | 20d | 2014-08-17 | 2014-09-08 | DUKHCONP1BZ6ARFF3330 SS+7d, DUKHCONP1BZ6ELFF4045 FF+5d, DUKHCONP1BZ6ELFF4045 SS+5d, DUKHCONP1BZ6ARFF3330 FF+7d, DUKHCONP1BZ5ARFF3345, DUKHCONP1BZ6ARFF3325 FF+13d, DUKHCONP1BZ6ARFF3325 SS+13d | -8d | 0d | LABOR- SUBCONTRACTOR [535.5 h]; SUSPENSION QTY [1190 Sqm]; FALSE CEILING SKILLED SK [952 h] | 23,500 | 36 | REM | 1BP6IFFF36 | DUKHCON1BP6ARFF3345 | DUKHCONP1BZ6ARFF3345 | DH | CON | 1B | Z6 | FIN | IF | FF | B04 | B04-D10 | RES-1B | SUS |
| DUKHCONP1BZ6ARFF3350 |  | Granite - Stair case flooring & Skirting | 20d | 2014-08-17 | 2014-09-08 | DUKHCONP1BZ6ARFF3325 SS+13d, DUKHCONP1BZ6ARFF3325 FF+13d | 3d | 11d | GRANITE MASON SK [680 h]; LABOR- SUBCONTRACTOR [382.5 h]; GRANITE QTY [170 Sqm] | 112,404 | 33 | REM | 1BP6IFFF33 | DUKHCON1BP6ARFF3350 | DUKHCONP1BZ6ARFF3350 | DH | CON | 1B | Z6 | FIN | IF | FF | B04 | B04-D10 | RES-1B |  |
| DUKHCONP1BZ6ARFF3360 |  | Gypsum board false ceiling | 25d | 2014-08-28 | 2014-09-25 | DUKHCONP1BZ6ACFF4615 FF+7d, DUKHCONP1BZ6ACFF4615 SS+7d, DUKHCONP1BZ6ARFF3345 FF+10d, DUKHCONP1BZ6ARFF3345 SS+10d, DUKHCONP1BZ5ARFF3360 | -8d | 0d | LABOR- SUBCONTRACTOR [535.5 h]; FALSE CEILING QTY [1190 Sqm]; FALSE CEILING SKILLED SK [952 h] | 66,658 | 39 | REM | 1BP6IFFF39 | DUKHCON1BP6ARFF3360 | DUKHCONP1BZ6ARFF3360 | DH | CON | 1B | Z6 | FIN | IF | FF | B04 | B04-D10 | RES-1B | GYP |
| DUKHCONP1BZ6ARFF3365 |  | Wooden door | 15d | 2014-09-13 | 2014-09-29 | DUKHCONP1BZ5ARFF3365, DUKHCONP1BZ6ARFF3335 SS+7d, DUKHCONP1BZ6ARFF3335 FF+7d, DUKHCONP1BZ6ARFF3350 SS+7d, DUKHCONP1BZ6ARFF3350 FF+7d, DUKHCONP1BZ6ARFF3360 SS+3d, DUKHCONP1BZ6ARFF3360 FF+3d | -8d | 0d | LABOR- SUBCONTRACTOR [60 h]; WOODEN DOOR QTY [40 ea]; DOOR ERECTOR SK [160 h] | 138,658 | 42 | REM | 1BP6IFFF42 | DUKHCON1BP6ARFF3365 | DUKHCONP1BZ6ARFF3365 | DH | CON | 1B | Z6 | FIN | IF | FF | B04 | B04-D05 | RES-1B |  |
| DUKHCONP1BZ6ARFF3370 |  | Aluminum Door | 20d | 2014-09-21 | 2014-10-15 | DUKHCONP1BZ6ARFF3365 SS+7d, DUKHCONP1BZ6ARFF3365 FF+5d, DUKHCONP1BZ5ARFF3370 | -8d | 0d | LABOR- SUBCONTRACTOR [45 h]; ALUMINIUM DOOR QTY [30 ea]; DOOR ERECTOR SK [120 h] | 77,706 | 45 | REM | 1BP6IFFF45 | DUKHCON1BP6ARFF3370 | DUKHCONP1BZ6ARFF3370 | DH | CON | 1B | Z6 | FIN | IF | FF | B04 | B04-D06 | RES-1B |  |
| DUKHCONP1BZ6ARFF3380 |  | Aluminum windows | 20d | 2014-09-28 | 2014-10-22 | DUKHCONP1BZ6ARFF3370 SS+6d, DUKHCONP1BZ6ARFF3370 FF+6d | 5d | 13d | LABOR- SUBCONTRACTOR [92.25 h]; ALUMINIUM WINDOWS QTY [92 ea]; WINDOW ERECTOR SK [246 h] | 54,912 | 48 | REM | 1BP6IFFF48 | DUKHCON1BP6ARFF3380 | DUKHCONP1BZ6ARFF3380 | DH | CON | 1B | Z6 | FIN | IF | FF | B04 | B04-D06 | RES-1B |  |
| DUKHCONP1BZ6ARFF3375 |  | Carpentry & Joinery Works | 25d | 2014-09-29 | 2014-10-29 | DUKHCONP1BZ6ARFF3370 SS+7d, DUKHCONP1BZ5ARFF3375, DUKHCONP1BZ6ARFF3370 FF+5d | -8d | 0d | LABOR- SUBCONTRACTOR [240 h]; CABINET QTY [20 ea]; COUNTER QTY [20 ea]; WARDROBE QTY [30 ea]; SHELVES QTY [20 ea]; JOINERY WORK SK [560 h]; COUNTER SK [80 h] | 244,116 | 51 | REM | 1BP6IFFF51 | DUKHCON1BP6ARFF3375 | DUKHCONP1BZ6ARFF3375 | DH | CON | 1B | Z6 | FIN | IF | FF | B04 | B04-D05 | RES-1B |  |
| DUKHCONP1BZ6ARFF3385 |  | Handrail & Balustrade | 20d | 2014-10-15 | 2014-11-06 | DUKHCONP1BZ6ARFF3350 FF+7d, DUKHCONP1BZ6ARFF3375 SS+7d, DUKHCONP1BZ6ARFF3350 SS+7d, DUKHCONP1BZ6ARFF3375 FF+7d | -8d | 0d | LABOR- SUBCONTRACTOR [78.75 h]; S.S.BALUSTRADE QTY [70 lm]; HANDRAIL ERECTOR SKILLED [140 h] | 75,914 | 57 | REM | 1BP6IFFF57 | DUKHCON1BP6ARFF3385 | DUKHCONP1BZ6ARFF3385 | DH | CON | 1B | Z6 | FIN | IF | FF | B04 | B04-D06 | RES-1B |  |
| DUKHCONP1BZ6ARFF3390 |  | Installation of Granite Counter Top | 20d | 2014-10-15 | 2014-11-06 | DUKHCONP1BZ6ARFF3375 SS+7d, DUKHCONP1BZ6ARFF3375 FF+7d | -6d | 2d | GRANITE MASON SK [100 h]; LABOR- SUBCONTRACTOR [37.5 h]; GRANITE COUNTER TOP QTY [25 ea] | 11,864 | 54 | REM | 1BP6IFFF54 | DUKHCON1BP6ARFF3390 | DUKHCONP1BZ6ARFF3390 | DH | CON | 1B | Z6 | FIN | IF | FF | B04 | B04-D10 | RES-1B |  |
| DUKHCONP1BZ6ARFF3395 |  | Final Painting | 25d | 2014-10-27 | 2014-11-24 | DUKHCONP1BZ5ARFF3395, DUKHCONP1BZ6ACFF4625 FF+10d, DUKHCONP1BZ6ARFF3350 SS+8d, DUKHCONP1BZ6ARFF3360 SS+10d, DUKHCONP1BZ6ARFF3390 SS+8d, DUKHCONP1BZ6ARFF3360 FF+10d, DUKHCONP1BZ6ARFF3380 FF+10d, DUKHCONP1BZ6ARFF3330 SS+10d, DUKHCONP1BZ6ARFF3350 FF+8d, DUKHCONP1BZ6ARFF3365 FF+8d, DUKHCONP1BZ6ARFF3375 FF+8d, DUKHCONP1BZ6ARFF3365 SS+8d, DUKHCONP1BZ6ARFF3390 FF+8d, DUKHCONP1BZ6ACFF4625 SS+10d, DUKHCONP1BZ6ARFF3380 SS+10d, DUKHCONP1BZ6ARFF3385 FF+10d, DUKHCONP1BZ6ARFF3335 FF+8d, DUKHCONP1BZ6ARFF3375 SS+8d, DUKHCONP1BZ6ARFF3385 SS+10d, DUKHCONP1BZ6ARFF3330 FF+10d, DUKHCONP1BZ6ARFF3335 SS+8d | -8d | 0d | LABOR- SUBCONTRACTOR [1791.9 h]; PAINT QTY [5973 Sqm]; PAINTERS SK [4778.4 h] | 68,714 | 60 | REM | 1BP6IFFF60 | DUKHCON1BP6ARFF3395 | DUKHCONP1BZ6ARFF3395 | DH | CON | 1B | Z6 | FIN | IF | FF | B04 | B04-D11 | RES-1B | PNT |
|  | 20 | **ROOF** |  | 2014-06-03 | 2014-08-20 |  |  |  |  |  |  |  |  |  |  |  |  |  |  |  |  |  |  |  |  |  |
| DUKHCONP1BZ6ARRF3600 |  | Block work | 20d | 2014-06-03 | 2014-06-25 | DUKHCONP1BZ6STRF2055 SS+21d, DUKHCONP1BZ5ARRF3600, DUKHCONP1BZ6STRF2055 FF+21d | 67d | 0d | BLOCK MASON SK [558 h]; LABOR- SUBCONTRACTOR [314.25 h]; BLOCK QTY [279 Sqm] | 20,118 | 10 | REM | 1BP6IFRF10 | DUKHCON1BP6ARRF3600 | DUKHCONP1BZ6ARRF3600 | DH | CON | 1B | Z6 | FIN | IF | RF | B04 | B04-D03 | RES-1B |  |
| DUKHCONP1BZ6ARRF3605 |  | Plastering work | 20d | 2014-06-15 | 2014-07-07 | DUKHCONP1BZ6ARRF3600 SS+10d, DUKHCONP1BZ6ARRF3600 FF+10d | 67d | 0d | PLASTER MASON SK [3066 h]; LABOR- SUBCONTRACTOR [1725 h]; PLASTER QTY [1916 Sqm] | 24,908 | 20 | REM | 1BP6IFRF20 | DUKHCON1BP6ARRF3605 | DUKHCONP1BZ6ARRF3605 | DH | CON | 1B | Z6 | FIN | IF | RF | B04 | B04-D10 | RES-1B |  |
| DUKHCONP1BZ6ARRF3610 |  | Flooring screed | 15d | 2014-07-02 | 2014-07-19 | DUKHCONP1BZ6ARRF3605 SS+10d, DUKHCONP1BZ6ARRF3605 FF+10d | 67d | 0d | SCREED MASON SK [140 h]; LABOR- SUBCONTRACTOR [52.5 h]; FLOORING SCREED QTY [175 Sqm] | 5,790 | 30 | REM | 1BP6IFRF30 | DUKHCON1BP6ARRF3610 | DUKHCONP1BZ6ARRF3610 | DH | CON | 1B | Z6 | FIN | IF | RF | B04 | B04-D10 | RES-1B |  |
| DUKHCONP1BZ6ARRF3695 |  | Painting -Storage area | 20d | 2014-07-14 | 2014-08-09 | DUKHCONP1BZ6ARRF3610 FF+10d, DUKHCONP1BZ6ARRF3610 SS+10d | 67d | 0d | LABOR- SUBCONTRACTOR [570 h]; PAINT QTY [1840 Sqm]; PAINTERS SK [1480 h] | 9,885 | 40 |  | 1BP6IFRF40 | DUKHCON1BP6ARRF3695 | DUKHCONP1BZ6ARRF3695 | DH | CON | 1B | Z6 | FIN | IF | RF | B04 | B04-D11 | RES-1B |  |
| DUKHCONP1BZ6ARRF3620 |  | Epoxy Painting -Storage area | 15d | 2014-07-31 | 2014-08-20 | DUKHCONP1BZ6ARRF3695 FF+10d, DUKHCONP1BZ6ARRF3695 SS+10d | 67d | 0d | LABOR- SUBCONTRACTOR [16.5 h]; EPOXY QTY [80 Sqm]; EPOXY SK [43 h] | 5,700 | 50 | REM | 1BP6IFRF50 | DUKHCON1BP6ARRF3620 | DUKHCONP1BZ6ARRF3620 | DH | CON | 1B | Z6 | FIN | IF | RF | B04 | B04-D11 | RES-1B |  |

Notes:
- DUKHCONP1BZ6ARFF3300: Expenses: P1B-Block work 200339
- DUKHCONP1BZ6ARFF3305: Expenses: P1B-Finishes 49790
- DUKHCONP1BZ6ARFF3310: Expenses: P1B-Finishes 40540
- DUKHCONP1BZ6ARFF3330: Expenses: P1B-Painting and Decorating 37434
- DUKHCONP1BZ6ARFF3315: Expenses: P1B-Finishes 51280
- DUKHCONP1BZ6ARFF3320: Expenses: P1B-Finishes 38393
- DUKHCONP1BZ6ARFF3325: Expenses: P1B-Finishes 77604
- DUKHCONP1BZ6ARFF3335: Expenses: P1B-Finishes 92849
- DUKHCONP1BZ6ARFF3345: Expenses: P1B-Finishes 23500
- DUKHCONP1BZ6ARFF3350: Expenses: P1B-Finishes 112404
- DUKHCONP1BZ6ARFF3360: Expenses: P1B-Finishes 66658
- DUKHCONP1BZ6ARFF3365: Expenses: P1B-Carpentry and Joinery 138658
- DUKHCONP1BZ6ARFF3370: Expenses: P1B-Metal work 77706
- DUKHCONP1BZ6ARFF3380: Expenses: P1B-Metal work 54912
- DUKHCONP1BZ6ARFF3375: Expenses: P1B-Carpentry and Joinery 244116
- DUKHCONP1BZ6ARFF3385: Expenses: P1B-Metal work 75914
- DUKHCONP1BZ6ARFF3390: Expenses: P1B-Finishes 11864
- DUKHCONP1BZ6ARFF3395: Expenses: P1B-Painting and Decorating 68714
- DUKHCONP1BZ6ARRF3600: Expenses: P1B-Block work 20118
- DUKHCONP1BZ6ARRF3605: Expenses: P1B-Finishes 24908
- DUKHCONP1BZ6ARRF3610: Expenses: P1B-Finishes 5790
- DUKHCONP1BZ6ARRF3695: Expenses: P1B-Painting and Decorating 9885
- DUKHCONP1BZ6ARRF3620: Expenses: P1B-Painting and Decorating 5700

| ID | WBS | Activity | Duration | Start | Finish | Predecessors | Total float | Free float | Resources | Cost | CODE | rem | P3 ACTID | P6 ID (old) | NP61D | PROJECT | PHASES | PACKAGE | PART | ELEMENTS | STEP | FLOORS | BILL NOS | BILL DIVISION | RES PACK |
| --- | --- | --- | --- | --- | --- | --- | --- | --- | --- | --- | --- | --- | --- | --- | --- | --- | --- | --- | --- | --- | --- | --- | --- | --- | --- |
|  | 15 | **EXTERNAL FINISHES** |  | 2014-06-14 | 2014-08-28 |  |  |  |  |  |  |  |  |  |  |  |  |  |  |  |  |  |  |  |  |
|  | 10 | **ROOF** |  | 2014-06-14 | 2014-08-26 |  |  |  |  |  |  |  |  |  |  |  |  |  |  |  |  |  |  |  |  |
| DUKHCONP1BZ6ARRF3630 |  | Leveling Screed for Waterproofing | 25d | 2014-06-14 | 2014-07-12 | DUKHCONP1BZ5ARRF3630, DUKHCONP1BZ6STRF2065 FF+10d, DUKHCONP1BZ6STRF2060 FF+10d, DUKHCONP1BZ6STRF2060 SS+10d, DUKHCONP1BZ6STRF2065 SS+10d | 67d | 0d | SCREED MASON SK [568 h]; LABOR- SUBCONTRACTOR [319.5 h]; ROOF WP SCREED QTY [1420 Sqm] | 61,090 | 10 | REM | 1BP6EFRF10 | DUKHCON1BP6ARRF3630 | DUKHCONP1BZ6ARRF3630 | DH | CON | 1B | Z6 | FIN | EF | RF | B04 | B04-D04 | RES-1B |
| DUKHCONP1BZ6ARRF3635 |  | Laying of Waterproofing Membrane | 25d | 2014-06-17 | 2014-07-15 | DUKHCONP1BZ6ARRF3630 FF+3d, DUKHCONP1BZ6ARRF3630 SS+3d | 67d | 0d | LABOR- SUBCONTRACTOR [336 h]; ROOF WP MEMBRANE QTY [1680 Sqm]; WATERPROOFING SPECIALIST SK [896 h] | 44,092 | 15 | REM | 1BP6EFRF15 | DUKHCON1BP6ARRF3635 | DUKHCONP1BZ6ARRF3635 | DH | CON | 1B | Z6 | FIN | EF | RF | B04 | B04-D04 | RES-1B |
| DUKHCONP1BZ6ARRF3640 |  | Installation of Insulation & Protection | 25d | 2014-06-22 | 2014-07-20 | DUKHCONP1BZ6ARRF3635 SS+4d, DUKHCONP1BZ6ARRF3635 FF+4d | 67d | 0d | LABOR- SUBCONTRACTOR [426 h]; ROOF WP INSULATION QTY [2840 Sqm]; WATERPROOFING SPECIALIST SK [1136 h] | 53,540 | 20 | REM | 1BP6EFRF20 | DUKHCON1BP6ARRF3640 | DUKHCONP1BZ6ARRF3640 | DH | CON | 1B | Z6 | FIN | EF | RF | B04 | B04-D04 | RES-1B |
| DUKHCONP1BZ6ARRF3645 |  | Lime Stone Chips & Paving slab Installation | 25d | 2014-06-26 | 2014-07-24 | DUKHCONP1BZ6ARRF3640 SS+4d, DUKHCONP1BZ6ARRF3640 FF+4d | 67d | 0d | TILE MASON SK [32 h]; LABOR- SUBCONTRACTOR [213 h]; LIME STONE QTY [80 Sqm]; PRECAST PAVING SLAB QTY [1340 Sqm]; PRE CAST CONCRETE SK [536 h] | 97,060 | 25 | REM | 1BP6EFRF25 | DUKHCON1BP6ARRF3645 | DUKHCONP1BZ6ARRF3645 | DH | CON | 1B | Z6 | FIN | EF | RF | B04 | B04-D04 | RES-1B |
| DUKHCONP1BZ6ARRF3650 |  | Install. of Gal. Frame & Aluminum Slat Screen | 25d | 2014-07-05 | 2014-08-05 | DUKHCONP1BZ6ARRF3645 FF+7d, DUKHCONP1BZ6ARRF3645 SS+7d | 67d | 0d | LABOR- SUBCONTRACTOR [460.5 h]; ALUMINIUM SCREEN QTY [230 Sqm]; DOOR ERECTOR SK [614 h] | 65,044 | 35 | REM | 1BP6EFRF35 | DUKHCON1BP6ARRF3650 | DUKHCONP1BZ6ARRF3650 | DH | CON | 1B | Z6 | FIN | EF | RF | B04 | B04-D06 | RES-1B |
| DUKHCONP1BZ6ARRF3655 |  | Installation of Pumps Protection cabinets | 20d | 2014-07-20 | 2014-08-14 | DUKHCONP1BZ6ARRF3650 FF+8d, DUKHCONP1BZ5ARRF3655, DUKHCONP1BZ6ARRF3645 FF+7d, DUKHCONP1BZ6ARRF3650 SS+8d, DUKHCONP1BZ6ARRF3645 SS+7d | 67d | 0d | LABOR- SUBCONTRACTOR [210 h]; CABINET QTY [70 ea]; JOINERY WORK SK [560 h] | 33,250 | 30 | REM | 1BP6EFRF30 | DUKHCON1BP6ARRF3655 | DUKHCONP1BZ6ARRF3655 | DH | CON | 1B | Z6 | FIN | EF | RF | B04 | B04-D04 | RES-1B |
| DUKHCONP1BZ6ARRF3660 |  | Installation of Access Ladder | 15d | 2014-08-10 | 2014-08-26 | DUKHCONP1BZ6ARRF3655 FF+10d, DUKHCONP1BZ6ARRF3620 SS+5d, DUKHCONP1BZ6ARRF3655 SS+10d | 67d | 75d | LABOR- SUBCONTRACTOR [120 h]; LADDER QTY [40 ea]; LADDER ERECTOR SK [320 h] | 43,890 | 40 | REM | 1BP6EFRF40 | DUKHCON1BP6ARRF3660 | DUKHCONP1BZ6ARRF3660 | DH | CON | 1B | Z6 | FIN | EF | RF | B04 | B04-D06 | RES-1B |
|  | 15 | **ELEVATION** |  | 2014-06-29 | 2014-08-28 |  |  |  |  |  |  |  |  |  |  |  |  |  |  |  |  |  |  |  |  |
| DUKHCONP1BZ6AREL3665 |  | External Plastering | 25d | 2014-06-29 | 2014-07-27 | DUKHCONP1BZ6ARFF3305 SS+7d, DUKHCONP1BZ6STRF2065 SS+7d, DUKHCONP1BZ6STRF2065 FF+7d, DUKHCONP1BZ6ARFF3305 FF+7d, DUKHCONP1BZ5AREL3665, DUKHCONP1BZ6ARRF3605 SS+7d | 65d | 0d | PLASTER MASON SK [9760 h]; LABOR- SUBCONTRACTOR [5490 h]; EXTERNAL PLASTER QTY [4880 Sqm] | 189,022 | 10 | REM | 1BP6EFEL10 | DUKHCON1BP6AREL3665 | DUKHCONP1BZ6AREL3665 | DH | CON | 1B | Z6 | FIN | EF | EL | B04 | B04-D10 | RES-1B |
| DUKHCONP1BZ6AREL3670 |  | External stone cladding works | 20d | 2014-07-16 | 2014-08-11 | DUKHCONP1BZ5AREL3670, DUKHCONP1BZ6AREL3665 FF+10d, DUKHCONP1BZ6AREL3665 SS+10d | 65d | 0d | TILE MASON SK [840 h]; LABOR- SUBCONTRACTOR [330 h]; STONE CLADDING QTY [420 Sqm] | 6,656 | 15 |  | 1BP6EFEL15 | DUKHCON1BP6AREL3670 | DUKHCONP1BZ6AREL3670 | DH | CON | 1B | Z6 | FIN | EF | EL | B04 | B04-D10 | RES-1B |
| DUKHCONP1BZ6AREL3675 |  | GRC works | 20d | 2014-07-22 | 2014-08-17 | DUKHCONP1BZ5AREL3675, DUKHCONP1BZ6AREL3665 FF+10d, DUKHCONP1BZ6AREL3670 SS+5d, DUKHCONP1BZ6AREL3665 SS+10d | 65d | 0d | LABOR- SUBCONTRACTOR [150 h]; GRC SK [400 h] | 15,400 | 15 |  | 1B6PEFEL18 | DUKHCON1BP6AREL3675 | DUKHCONP1BZ6AREL3675 | DH | CON | 1B | Z6 | FIN | EF | EL | B04 | B04-D10 | RES-1B |
| DUKHCONP1BZ6AREL3680 |  | External Painting | 20d | 2014-08-06 | 2014-08-28 | DUKHCONP1BZ6AREL3670 SS+10d, DUKHCONP1BZ6AREL3675 SS+10d, DUKHCONP1BZ6AREL3670 FF+10d, DUKHCONP1BZ6ARRF3695 FF+4d, DUKHCONP1BZ6AREL3675 FF+10d, DUKHCONP1BZ5AREL3680, DUKHCONP1BZ6ARRF3695 SS+4d | 65d | 73d | LABOR- SUBCONTRACTOR [1440 h]; PAINT QTY [4800 Sqm]; PAINTERS SK [3840 h] | 142,868 | 20 |  | 1BP6EFEL20 | DUKHCON1BP6AREL3680 | DUKHCONP1BZ6AREL3680 | DH | CON | 1B | Z6 | FIN | EF | EL | B04 | B04-D11 | RES-1B |
|  | 20 | **MEP WORKS** |  | 2014-01-06 | 2014-11-24 |  |  |  |  |  |  |  |  |  |  |  |  |  |  |  |  |  |  |  |  |
|  | 10 | **ELECTRICAL WORKS** |  | 2014-04-13 | 2014-11-24 |  |  |  |  |  |  |  |  |  |  |  |  |  |  |  |  |  |  |  |  |
|  | 10 | **GROUND FLOOR** |  | 2014-04-13 | 2014-08-23 |  |  |  |  |  |  |  |  |  |  |  |  |  |  |  |  |  |  |  |  |
| DUKHCONP1BZ6ELGF4000 |  | Fixing of wall conduits & switch socket boxes | 25d | 2014-04-13 | 2014-05-11 | DUKHCONP1BZ6ARGF3000 SS+5d, DUKHCONP1BZ6ARGF3000 FF+5d | 47d | 0d | LABOR- SUBCONTRACTOR [480 h]; ELECTRICIANS SK [2744 h]; SOCKET BOXES QTY [1900 ea]; CODUITS QTY [560 lm] | 42,903 | 10 |  | 1BP6EWGF10 | DUKHCON1BP6ELGF4000 | DUKHCONP1BZ6ELGF4000 | DH | CON | 1B | Z6 | MEP | EW | GF | B04 | B04-D09 | RES-1B |
| DUKHCONP1BZ6ELGF4005 |  | Cable tray & trunking installation | 20d | 2014-04-24 | 2014-05-17 | DUKHCONP1BZ6ELGF4000 SS+5d, DUKHCONP1BZ6ELGF4000 FF+5d, DUKHCONP1BZ5ELGF4005 | 65d | 0d | LABOR- SUBCONTRACTOR [840 h]; ELECTRICIANS SK [3136 h]; CABLE TRAY QTY [560 lm] | 9,420 | 15 |  | 1BP6EWGF15 | DUKHCON1BP6ELGF4005 | DUKHCONP1BZ6ELGF4005 | DH | CON | 1B | Z6 | MEP | EW | GF | B04 | B04-D09 | RES-1B |
| DUKHCONP1BZ6ELGF4010 |  | Installation of wiring & Main Cabling | 25d | 2014-05-03 | 2014-05-31 | DUKHCONP1BZ6ELGF4005 SS+7d, DUKHCONP1BZ6ELGF4005 FF+7d | 65d | 27d | LABOR- SUBCONTRACTOR [180 h]; ELECTRICIANS SK [616 h]; CABLE QTY [560 lm] | 147,393 | 20 |  | 1BP6EWGF20 | DUKHCON1BP6ELGF4010 | DUKHCONP1BZ6ELGF4010 | DH | CON | 1B | Z6 | MEP | EW | GF | B04 | B04-D09 | RES-1B |
| DUKHCONP1BZ6ELGF4015 |  | Install. of CAMS & Fire Fighting Accessories | 25d | 2014-07-05 | 2014-08-05 | DUKHCONP1BZ6ARGF3060 SS+7d, DUKHCONP1BZ6ARGF3055 SS+7d, DUKHCONP1BZ6ARGF3060 FF+7d, DUKHCONP1BZ5ELGF4015, DUKHCONP1BZ6ARGF3055 FF+7d | 60d | 26d | LABOR- SUBCONTRACTOR [2040 h]; MECHANICALS SK [3672 h]; SMOKE DETECTOR POINTS QTY [500 ea]; FIRE EXTINGUISHER QTY [180 ea] | 106,508 | 35 |  | 1BP6EWGF35 | DUKHCON1BP6ELGF4015 | DUKHCONP1BZ6ELGF4015 | DH | CON | 1B | Z6 | MEP | EW | GF | B04 | B04-D09 | RES-1B |
| DUKHCONP1BZ6ELGF4020 |  | Installation of DBS,MCCB Accessories. | 20d | 2014-07-10 | 2014-08-05 | DUKHCONP1BZ6ARGF3055 SS+7d, DUKHCONP1BZ6ELGF4010 SS+5d, DUKHCONP1BZ6ARGF3060 SS+7d, DUKHCONP1BZ6ARGF3060 FF+7d, DUKHCONP1BZ6ELGF4010 FF+5d, DUKHCONP1BZ6ARGF3055 FF+7d | 38d | 0d | LABOR- SUBCONTRACTOR [120 h]; ELECTRICIANS SK [448 h]; MCCB QTY [200 ea]; DB QTY [20 ea] | 20,621 | 25 |  | 1BP6EWGF25 | DUKHCON1BP6ELGF4020 | DUKHCONP1BZ6ELGF4020 | DH | CON | 1B | Z6 | MEP | EW | GF | B04 | B04-D09 | RES-1B |
| DUKHCONP1BZ6ELGF4025 |  | Installation of Lighting fixtures & Accessories | 25d | 2014-07-22 | 2014-08-23 | DUKHCONP1BZ6ARGF3055 FF+10d, DUKHCONP1BZ6ARGF3060 SS+10d, DUKHCONP1BZ6ARGF3055 SS+10d, DUKHCONP1BZ6ELGF4020 SS+10d, DUKHCONP1BZ6ELGF4020 FF+10d, DUKHCONP1BZ5ELGF4025, DUKHCONP1BZ6ARGF3060 FF+10d | 40d | 48d | LABOR- SUBCONTRACTOR [1440 h]; ELECTRICIANS SK [2688 h]; LIGHTS QTY [1200 ea] | 220,193 | 30 |  | 1BP6EWGF30 | DUKHCON1BP6ELGF4025 | DUKHCONP1BZ6ELGF4025 | DH | CON | 1B | Z6 | MEP | EW | GF | B04 | B04-D09 | RES-1B |
| DUKHCONP1BZ6ELGF4030 |  | Installation of Telephone System | 20d | 2014-07-22 | 2014-08-17 | DUKHCONP1BZ6ELGF4020 FF+10d, DUKHCONP1BZ6ARGF3060 SS+5d, DUKHCONP1BZ6ELGF4020 SS+10d, DUKHCONP1BZ5ELGF4030, DUKHCONP1BZ6ARGF3060 FF+5d | 38d | 24d | LABOR- SUBCONTRACTOR [210 h]; ELECTRICIANS SK [1568 h]; TELEPHONE SOCKETS QTY [140 ea] | 48,378 | 40 |  | 1BP6EWGF40 | DUKHCON1BP6ELGF4030 | DUKHCONP1BZ6ELGF4030 | DH | CON | 1B | Z6 | MEP | EW | GF | B04 | B04-D09 | RES-1B |

Notes:
- DUKHCONP1BZ6ARRF3630: Expenses: P1B-Roofing 61090
- DUKHCONP1BZ6ARRF3635: Expenses: P1B-Roofing 44092
- DUKHCONP1BZ6ARRF3640: Expenses: P1B-Roofing 53540
- DUKHCONP1BZ6ARRF3645: Expenses: P1B-Roofing 97060
- DUKHCONP1BZ6ARRF3650: Expenses: P1B-Metal work 65044
- DUKHCONP1BZ6ARRF3655: Expenses: P1B-Roofing 33250
- DUKHCONP1BZ6ARRF3660: Expenses: P1B-Metal work 43890
- DUKHCONP1BZ6AREL3665: Expenses: P1B-Finishes 189022
- DUKHCONP1BZ6AREL3670: Expenses: P1B-Finishes 6656
- DUKHCONP1BZ6AREL3675: Expenses: P1B-Finishes 15400
- DUKHCONP1BZ6AREL3680: Expenses: P1B-Painting and Decorating 142868
- DUKHCONP1BZ6ELGF4000: Expenses: P1B-Electrical Installations 42903
- DUKHCONP1BZ6ELGF4005: Expenses: P1B-Electrical Installations 9420
- DUKHCONP1BZ6ELGF4010: Expenses: P1B-Electrical Installations 147393
- DUKHCONP1BZ6ELGF4015: Expenses: P1B-Electrical Installations 106508
- DUKHCONP1BZ6ELGF4020: Expenses: P1B-Electrical Installations 20621
- DUKHCONP1BZ6ELGF4025: Expenses: P1B-Electrical Installations 220193
- DUKHCONP1BZ6ELGF4030: Expenses: P1B-Electrical Installations 48378

| ID | WBS | Activity | Duration | Start | Finish | Predecessors | Total float | Free float | Resources | Cost | CODE | P3 ACTID | P6 ID (old) | NP61D | PROJECT | PHASES | PACKAGE | PART | ELEMENTS | STEP | FLOORS | BILL NOS | BILL DIVISION | RES PACK |
| --- | --- | --- | --- | --- | --- | --- | --- | --- | --- | --- | --- | --- | --- | --- | --- | --- | --- | --- | --- | --- | --- | --- | --- | --- |
|  | 15 | **FIRST FLOORS** |  | 2014-05-24 | 2014-10-26 |  |  |  |  |  |  |  |  |  |  |  |  |  |  |  |  |  |  |  |
| DUKHCONP1BZ6ELFF4035 |  | Fixing of wall conduits & switch socket boxes | 25d | 2014-05-24 | 2014-06-21 | DUKHCONP1BZ6ARFF3300 SS+5d, DUKHCONP1BZ6ARFF3300 FF+5d | 5d | 0d | LABOR- SUBCONTRACTOR [480 h]; ELECTRICIANS SK [2744 h]; SOCKET BOXES QTY [1900 ea]; CODUITS QTY [560 lm] | 42,390 | 10 | 1BP6EWFF10 | DUKHCON1BP6ELFF4035 | DUKHCONP1BZ6ELFF4035 | DH | CON | 1B | Z6 | MEP | EW | FF | B04 | B04-D09 | RES-1B |
| DUKHCONP1BZ6ELFF4040 |  | Cable tray & trunking installation | 20d | 2014-06-04 | 2014-06-26 | DUKHCONP1BZ6ELFF4035 FF+5d, DUKHCONP1BZ6ELFF4035 SS+5d | 35d | 0d | LABOR- SUBCONTRACTOR [840 h]; ELECTRICIANS SK [3136 h]; CABLE TRAY QTY [560 lm] | 9,400 | 15 | 1BP6EWFF15 | DUKHCON1BP6ELFF4040 | DUKHCONP1BZ6ELFF4040 | DH | CON | 1B | Z6 | MEP | EW | FF | B04 | B04-D09 | RES-1B |
| DUKHCONP1BZ6ELFF4045 |  | Installation of wiring & Main Cabling | 25d | 2014-06-12 | 2014-07-10 | DUKHCONP1BZ5ELFF4045, DUKHCONP1BZ6ELFF4040 SS+7d, DUKHCONP1BZ6ELFF4040 FF+7d | 35d | 43d | LABOR- SUBCONTRACTOR [180 h]; ELECTRICIANS SK [616 h]; CABLE QTY [560 lm] | 145,413 | 20 | 1BP6EWFF20 | DUKHCON1BP6ELFF4045 | DUKHCONP1BZ6ELFF4045 | DH | CON | 1B | Z6 | MEP | EW | FF | B04 | B04-D09 | RES-1B |
| DUKHCONP1BZ6ELFF4050 |  | Installation of Telephone System | 25d | 2014-09-03 | 2014-10-01 | DUKHCONP1BZ6ARFF3360 FF+5d, DUKHCONP1BZ6ELGF4030 SS+10d, DUKHCONP1BZ6MSEX5010, DUKHCONP1BZ6ARFF3360 SS+5d, DUKHCONP1BZ6ELGF4030 FF+10d | 14d | 22d | LABOR- SUBCONTRACTOR [210 h]; ELECTRICIANS SK [1568 h]; TELEPHONE SOCKETS QTY [140 ea] | 46,338 | 40 | 1BP6EWFF40 | DUKHCON1BP6ELFF4050 | DUKHCONP1BZ6ELFF4050 | DH | CON | 1B | Z6 | MEP | EW | FF | B04 | B04-D09 | RES-1B |
| DUKHCONP1BZ6ELFF4055 |  | Install. of CAMS & Fire Fighting Accessories | 25d | 2014-09-06 | 2014-10-04 | DUKHCONP1BZ6ELGF4015 SS+5d, DUKHCONP1BZ6ARFF3360 SS+7d, DUKHCONP1BZ6ELGF4015, DUKHCONP1BZ6ARFF3360 FF+7d, DUKHCONP1BZ5ELFF4055, DUKHCONP1BZ6ELGF4015 FF+5d | 34d | 42d | LABOR- SUBCONTRACTOR [2040 h]; MECHANICALS SK [3672 h]; SMOKE DETECTOR POINTS QTY [500 ea]; FIRE EXTINGUISHER QTY [180 ea] | 106,473 | 35 | 1BP6EWFF35 | DUKHCON1BP6ELFF4055 | DUKHCONP1BZ6ELFF4055 | DH | CON | 1B | Z6 | MEP | EW | FF | B04 | B04-D09 | RES-1B |
| DUKHCONP1BZ6ELFF4060 |  | Installation of DBS,MCCB Accessories. | 20d | 2014-09-13 | 2014-10-05 | DUKHCONP1BZ6ELFF4045 SS+5d, DUKHCONP1BZ6ARFF3360 FF+8d, DUKHCONP1BZ5ELFF4060, DUKHCONP1BZ6ARFF3360 SS+8d, DUKHCONP1BZ6ELFF4045 FF+5d | -8d | 0d | LABOR- SUBCONTRACTOR [120 h]; ELECTRICIANS SK [448 h]; MCCB QTY [200 ea]; DB QTY [20 ea] | 20,609 | 25 | 1BP6EWFF25 | DUKHCON1BP6ELFF4060 | DUKHCONP1BZ6ELFF4060 | DH | CON | 1B | Z6 | MEP | EW | FF | B04 | B04-D09 | RES-1B |
| DUKHCONP1BZ6ELFF4065 |  | Installation of Lighting fixtures & Accessories | 25d | 2014-09-25 | 2014-10-26 | DUKHCONP1BZ6ARFF3360 SS+10d, DUKHCONP1BZ6ELFF4060 FF+11d, DUKHCONP1BZ6ARFF3360 FF+10d, DUKHCONP1BZ6ELFF4060 SS+11d, DUKHCONP1BZ6ELGF4025 SS+5d, DUKHCONP1BZ6ELGF4025 FF+5d, DUKHCONP1BZ5ELFF4065 | -8d | 0d | LABOR- SUBCONTRACTOR [1440 h]; ELECTRICIANS SK [2688 h]; LIGHTS QTY [1200 ea] | 220,188 | 30 | 1BP6EWFF30 | DUKHCON1BP6ELFF4065 | DUKHCONP1BZ6ELFF4065 | DH | CON | 1B | Z6 | MEP | EW | FF | B04 | B04-D09 | RES-1B |
|  | 20 | **ROOF** |  | 2014-10-18 | 2014-11-24 |  |  |  |  |  |  |  |  |  |  |  |  |  |  |  |  |  |  |  |
| DUKHCONP1BZ6ELRF4070 |  | Installation of Isolator | 18d | 2014-10-18 | 2014-11-06 | DUKHCONP1BZ6ELFF4045 SS+10d, DUKHCONP1BZ6ELFF4065 FF+10d, DUKHCONP1BZ6ARRF3645 FF+7d, DUKHCONP1BZ6ELFF4050 SS+5d, DUKHCONP1BZ6ARRF3645 SS+7d, DUKHCONP1BZ6ELFF4065 SS+10d, DUKHCONP1BZ6ELFF4045 FF+10d, DUKHCONP1BZ6ELFF4050 FF+7d | -8d | 0d | LABOR- SUBCONTRACTOR [360 h]; ELECTRICIANS SK [672 h]; ISOLATOR QTY [120 ea] | 57,826 | 10 | 1BP6EWRF10 | DUKHCON1BP6ELRF4070 | DUKHCONP1BZ6ELRF4070 | DH | CON | 1B | Z6 | MEP | EW | RF | B04 | B04-D09 | RES-1B |
| DUKHCONP1BZ6ELRF4075 |  | Installation of TV Dish Antenna | 23d | 2014-10-29 | 2014-11-24 | DUKHCONP1BZ6ELRF4070 FF+10d, DUKHCONP1BZ6ELRF4070 SS+10d | -8d | 0d | LABOR- SUBCONTRACTOR [720 h]; ELECTRICIANS SK [1568 h]; CONTROL BOX QTY [40 ea]; SWITCHING BOX QTY [100 ea] | 40,931 | 15 | 1BP6EWRF15 | DUKHCON1BP6ELRF4075 | DUKHCONP1BZ6ELRF4075 | DH | CON | 1B | Z6 | MEP | EW | RF | B04 | B04-D09 | RES-1B |
|  | 15 | **PLUMBING, DRAINAGE & FIRE FIGHTING WORKS** |  | 2014-01-06 | 2014-11-05 |  |  |  |  |  |  |  |  |  |  |  |  |  |  |  |  |  |  |  |
|  | 10 | **GROUND FLOOR** |  | 2014-01-06 | 2014-08-23 |  |  |  |  |  |  |  |  |  |  |  |  |  |  |  |  |  |  |  |
| DUKHCONP1BZ6PLUG4300 |  | Drainage / Storm Pipes in Grade Slab | 20d | 2014-01-06 | 2014-01-28 | DUKHCONP1BZ6STUG1040 FF+10d, DUKHCONP1BZ6STUG1040 SS+10d | 0d |  | LABOR- SUBCONTRACTOR [30 h]; MECHANICALS SK [108 h]; DRAINAGE PIPES QTY [180 lm] | 36,526 | 10 | 1BP6PLUG10 | DUKHCON1BP6PLUG4300 | DUKHCONP1BZ6PLUG4300 | DH | CON | 1B | Z6 | ST | SB | UG | B04 | B04-D07 | RES-1B |
| DUKHCONP1BZ6PLGF4305 |  | Installation of Plumbing pipes & testing | 18d | 2014-04-23 | 2014-05-13 | DUKHCONP1BZ6ARGF3000 FF+7d, DUKHCONP1BZ6ARGF3000 SS+7d, DUKHCONP1BZ5PLGF4305 | 38d | 0d | LABOR- SUBCONTRACTOR [240 h]; MECHANICALS SK [864 h]; PLUMB PIPES QTY [780 lm] | 87,065 | 10 | 1BP6PLGF10 | DUKHCON1BP6PLGF4305 | DUKHCONP1BZ6PLGF4305 | DH | CON | 1B | Z6 | MEP | PL | GF | B04 | B04-D07 | RES-1B |
| DUKHCONP1BZ6PLGF4310 |  | Installation of Drainage pipes &testing | 18d | 2014-04-23 | 2014-05-13 | DUKHCONP1BZ6PLGF4305 FF, DUKHCONP1BZ6ARGF3000 SS+7d, DUKHCONP1BZ6PLGF4305 SS, DUKHCONP1BZ6ARGF3000 FF+7d | 41d | 14d | LABOR- SUBCONTRACTOR [90 h]; MECHANICALS SK [324 h]; DRAINAGE PIPES QTY [580 lm] | 6,410 | 15 | 1BP6PLGF15 | DUKHCON1BP6PLGF4310 | DUKHCONP1BZ6PLGF4310 | DH | CON | 1B | Z6 | MEP | PL | GF | B04 | B04-D07 | RES-1B |
| DUKHCONP1BZ6PLGF4315 |  | Sanitary Fittings & Accessories | 20d | 2014-07-22 | 2014-08-17 | DUKHCONP1BZ6PLGF4310 FF+5d, DUKHCONP1BZ6PLGF4310 SS+5d, DUKHCONP1BZ6ARGF3065 FF+5d, DUKHCONP1BZ5PLGF4315, DUKHCONP1BZ6ARGF3065 SS+5d | 70d | 0d | LABOR- SUBCONTRACTOR [90 h]; MECHANICALS SK [162 h]; SANITARY ACC QTY [150 ea] | 125,268 | 20 | 1BP6PLGF20 | DUKHCON1BP6PLGF4315 | DUKHCONP1BZ6PLGF4315 | DH | CON | 1B | Z6 | MEP | PL | GF | B04 | B04-D07 | RES-1B |
| DUKHCONP1BZ6PLGF4320 |  | Installation of Water Heater | 15d | 2014-08-06 | 2014-08-23 | DUKHCONP1BZ6PLGF4315 SS+5d, DUKHCONP1BZ6ARGF3060 SS+5d, DUKHCONP1BZ5PLGF4320, DUKHCONP1BZ6PLGF4315 FF+5d, DUKHCONP1BZ6ARGF3060 FF+5d | 70d | 78d | LABOR- SUBCONTRACTOR [90 h]; MECHANICALS SK [162 h]; WATER HEATER QTY [30 ea] | 15,574 | 25 | 1BP6PLGF25 | DUKHCON1BP6PLGF4320 | DUKHCONP1BZ6PLGF4320 | DH | CON | 1B | Z6 | MEP | PL | GF | B04 | B04-D07 | RES-1B |
|  | 15 | **FIRST FLOORS** |  | 2014-06-04 | 2014-10-19 |  |  |  |  |  |  |  |  |  |  |  |  |  |  |  |  |  |  |  |
| DUKHCONP1BZ6PLFF4325 |  | Installation of Plumbing pipes & testing | 18d | 2014-06-04 | 2014-06-24 | DUKHCONP1BZ6ARFF3300 FF+8d, DUKHCONP1BZ6ARFF3300 SS+8d | -8d | 0d | LABOR- SUBCONTRACTOR [240 h]; MECHANICALS SK [864 h]; PLUMB PIPES QTY [780 lm] | 84,209 | 10 | 1BP6PLFF10 | DUKHCON1BP6PLFF4325 | DUKHCONP1BZ6PLFF4325 | DH | CON | 1B | Z6 | MEP | PL | FF | B04 | B04-D07 | RES-1B |
| DUKHCONP1BZ6PLFF4330 |  | Installation of Drainage pipes & testing | 18d | 2014-06-04 | 2014-06-24 | DUKHCONP1BZ6PLFF4325 FF, DUKHCONP1BZ6PLFF4325 SS, DUKHCONP1BZ5PLFF4330, DUKHCONP1BZ6ARFF3300 FF+7d, DUKHCONP1BZ6ARFF3300 SS+7d | 19d | 27d | LABOR- SUBCONTRACTOR [90 h]; MECHANICALS SK [324 h]; DRAINAGE PIPES QTY [580 lm] | 5,500 | 15 | 1BP6PLFF15 | DUKHCON1BP6PLFF4330 | DUKHCONP1BZ6PLFF4330 | DH | CON | 1B | Z6 | MEP | PL | FF | B04 | B04-D07 | RES-1B |
| DUKHCONP1BZ6PLFF4335 |  | Sanitary Fittings & Accessories | 20d | 2014-09-18 | 2014-10-13 | DUKHCONP1BZ6PLFF4330 SS+5d, DUKHCONP1BZ6PLFF4330 FF+5d, DUKHCONP1BZ6ARFF3365 SS+5d, DUKHCONP1BZ6ARFF3365 FF+5d | 8d | 0d | LABOR- SUBCONTRACTOR [90 h]; MECHANICALS SK [162 h]; SANITARY ACC QTY [150 ea] | 130,000 | 20 | 1BP6PLFF20 | DUKHCON1BP6PLFF4335 | DUKHCONP1BZ6PLFF4335 | DH | CON | 1B | Z6 | MEP | PL | FF | B04 | B04-D07 | RES-1B |
| DUKHCONP1BZ6PLFF4340 |  | Installation of Water Heater | 15d | 2014-09-30 | 2014-10-19 | DUKHCONP1BZ5PLFF4340, DUKHCONP1BZ6ARFF3360 FF+5d, DUKHCONP1BZ6PLFF4335 SS+5d, DUKHCONP1BZ6ARFF3360 SS+5d, DUKHCONP1BZ6PLFF4335 FF+5d | 8d | 0d | LABOR- SUBCONTRACTOR [60 h]; MECHANICALS SK [108 h]; WATER HEATER QTY [20 ea] | 7,588 | 25 | 1BP6PLFF25 | DUKHCON1BP6PLFF4340 | DUKHCONP1BZ6PLFF4340 | DH | CON | 1B | Z6 | MEP | PL | FF | B04 | B04-D07 | RES-1B |
|  | 20 | **ROOF** |  | 2014-07-01 | 2014-11-05 |  |  |  |  |  |  |  |  |  |  |  |  |  |  |  |  |  |  |  |
| DUKHCONP1BZ6PLRF4345 |  | Installation of Plumbing pipes & fittings | 14d | 2014-07-01 | 2014-07-16 | DUKHCONP1BZ6ARRF3605 FF+8d, DUKHCONP1BZ5PLRF4345, DUKHCONP1BZ6ARRF3605 SS+8d | 75d | 7d | LABOR- SUBCONTRACTOR [90 h]; MECHANICALS SK [270 h]; PLUMB PIPES QTY [240 lm] | 14,409 | 10 | 1BP6PLRF10 | DUKHCON1BP6PLRF4345 | DUKHCONP1BZ6PLRF4345 | DH | CON | 1B | Z6 | MEP | PL | RF | B04 | B04-D07 | RES-1B |
| DUKHCONP1BZ6PLRF4350 |  | Installation of Rain water Pipes | 15d | 2014-07-19 | 2014-08-07 | DUKHCONP1BZ6AREL3665 SS+7d, DUKHCONP1BZ6PLFF4330 SS+5d, DUKHCONP1BZ5PLRF4350, DUKHCONP1BZ6AREL3665 FF+7d, DUKHCONP1BZ6ARRF3645 FF+5d, DUKHCONP1BZ6PLRF4345 SS+8d, DUKHCONP1BZ6PLFF4330 FF+5d, DUKHCONP1BZ6PLRF4345 FF+8d, DUKHCONP1BZ6ARRF3645 SS+5d | 68d | 28d | DRAINAGE PIPES QTY [40 lm] | 119,090 | 15 | 1BP6PLRF15 | DUKHCON1BP6PLRF4350 | DUKHCONP1BZ6PLRF4350 | DH | CON | 1B | Z6 | MEP | PL | RF | B04 | B04-D07 | RES-1B |
| DUKHCONP1BZ6PLRF4355 |  | Roof Water Tank Installation & Connections | 25d | 2014-10-06 | 2014-11-05 | DUKHCONP1BZ5PLRF4355, DUKHCONP1BZ6PLFF4340 FF+5d, DUKHCONP1BZ6WEEX5065 FF, DUKHCONP1BZ6ARRF3655 FF+5d, DUKHCONP1BZ6PLFF4340 SS+5d, DUKHCONP1BZ6PLRF4350 FF+5d, DUKHCONP1BZ6PLRF4350 SS+5d, DUKHCONP1BZ6PLRF4345 SS+8d, DUKHCONP1BZ6ARRF3655 SS+5d, DUKHCONP1BZ6PLRF4345 FF+8d | 8d | 16d | LABOR- SUBCONTRACTOR [300 h]; MECHANICALS SK [540 h]; WATER TANK QTY [50 ea] | 742,372 | 20 | 1BP6PLRF20 | DUKHCON1BP6PLRF4355 | DUKHCONP1BZ6PLRF4355 | DH | CON | 1B | Z6 | MEP | PL | RF | B04 | B04-D07 | RES-1B |

Notes:
- DUKHCONP1BZ6ELFF4035: Expenses: P1B-Electrical Installations 42390
- DUKHCONP1BZ6ELFF4040: Expenses: P1B-Electrical Installations 9400
- DUKHCONP1BZ6ELFF4045: Expenses: P1B-Electrical Installations 145413
- DUKHCONP1BZ6ELFF4050: Expenses: P1B-Electrical Installations 46338
- DUKHCONP1BZ6ELFF4055: Expenses: P1B-Electrical Installations 106473
- DUKHCONP1BZ6ELFF4060: Expenses: P1B-Electrical Installations 20609
- DUKHCONP1BZ6ELFF4065: Expenses: P1B-Electrical Installations 220188
- DUKHCONP1BZ6ELRF4070: Expenses: P1B-Electrical Installations 57826
- DUKHCONP1BZ6ELRF4075: Expenses: P1B-Electrical Installations 40931
- DUKHCONP1BZ6PLUG4300: Expenses: P1B-Plumbing and Drainage works 36526
- DUKHCONP1BZ6PLGF4305: Expenses: P1B-Plumbing and Drainage works 87065
- DUKHCONP1BZ6PLGF4310: Expenses: P1B-Plumbing and Drainage works 6410
- DUKHCONP1BZ6PLGF4315: Expenses: P1B-Plumbing and Drainage works 125268
- DUKHCONP1BZ6PLGF4320: Expenses: P1B-Plumbing and Drainage works 15574
- DUKHCONP1BZ6PLFF4325: Expenses: P1B-Plumbing and Drainage works 84209
- DUKHCONP1BZ6PLFF4330: Expenses: P1B-Plumbing and Drainage works 5500
- DUKHCONP1BZ6PLFF4335: Expenses: P1B-Plumbing and Drainage works 130000
- DUKHCONP1BZ6PLFF4340: Expenses: P1B-Plumbing and Drainage works 7588
- DUKHCONP1BZ6PLRF4345: Expenses: P1B-Plumbing and Drainage works 14409
- DUKHCONP1BZ6PLRF4350: Expenses: P1B-Plumbing and Drainage works 119090
- DUKHCONP1BZ6PLRF4355: Expenses: P1B-Plumbing and Drainage works 742372

| ID | WBS | Activity | Duration | Start | Finish | Predecessors | Total float | Free float | Resources | Cost | CODE | P3 ACTID | P6 ID (old) | NP61D | PROJECT | PHASES | PACKAGE | PART | ELEMENTS | STEP | FLOORS | BILL NOS | BILL DIVISION | RES PACK |
| --- | --- | --- | --- | --- | --- | --- | --- | --- | --- | --- | --- | --- | --- | --- | --- | --- | --- | --- | --- | --- | --- | --- | --- | --- |
|  | 20 | **AC WORKS** |  | 2014-05-13 | 2014-11-02 |  |  |  |  |  |  |  |  |  |  |  |  |  |  |  |  |  |  |  |
|  | 10 | **GROUND FLOOR** |  | 2014-05-13 | 2014-08-20 |  |  |  |  |  |  |  |  |  |  |  |  |  |  |  |  |  |  |  |
| DUKHCONP1BZ6ACGF4600 |  | Installation AC Pipes | 20d | 2014-05-13 | 2014-06-04 | DUKHCONP1BZ5ACGF4600, DUKHCONP1BZ6ARGF3005 SS+7d, DUKHCONP1BZ6ARGF3005 FF+7d | 69d | 28d | LABOR- SUBCONTRACTOR [510 h]; AC TECHNICIAN SK [1848 h]; AC PIPES QTY [5000 lm] | 8,873 | 10 | 1BP6ACGF10 | DUKHCON1BP6ACGF4600 | DUKHCONP1BZ6ACGF4600 | DH | CON | 1B | Z6 | MEP | AC | GF | B04 | B04-D08 | RES-1B |
| DUKHCONP1BZ6ACGF4605 |  | Fixing of Ventilation Equipments | 25d | 2014-07-05 | 2014-08-05 | DUKHCONP1BZ5ACGF4605, DUKHCONP1BZ6ARGF3055 FF+7d, DUKHCONP1BZ6ARGF3060 SS+7d, DUKHCONP1BZ6ACGF4600 SS+10d, DUKHCONP1BZ6ARGF3060 FF+7d, DUKHCONP1BZ6ACGF4600 FF+10d, DUKHCONP1BZ6ARGF3055 SS+7d | 57d | 0d | LABOR- SUBCONTRACTOR [90 h]; AC TECHNICIAN SK [280 h]; VENTILIATION EQP QTY [100 ea] | 36,397 | 15 | 1BP6ACGF15 | DUKHCON1BP6ACGF4605 | DUKHCONP1BZ6ACGF4605 | DH | CON | 1B | Z6 | MEP | AC | GF | B04 | B04-D08 | RES-1B |
| DUKHCONP1BZ6ACGF4610 |  | Fixing of Split AC | 20d | 2014-07-26 | 2014-08-20 | DUKHCONP1BZ5ACGF4610, DUKHCONP1BZ6ACGF4605 FF+13d, DUKHCONP1BZ6ACGF4605 SS+13d | 57d | 11d | LABOR- SUBCONTRACTOR [150 h]; AC TECHNICIAN SK [560 h]; SPLIT UNIT QTY [100 ea] | 71,686 | 20 | 1BP6ACGF20 | DUKHCON1BP6ACGF4610 | DUKHCONP1BZ6ACGF4610 | DH | CON | 1B | Z6 | MEP | AC | GF | B04 | B04-D08 | RES-1B |
|  | 15 | **FIRST FLOORS** |  | 2014-06-28 | 2014-10-21 |  |  |  |  |  |  |  |  |  |  |  |  |  |  |  |  |  |  |  |
| DUKHCONP1BZ6ACFF4615 |  | Installation AC Pipes | 20d | 2014-06-28 | 2014-07-20 | DUKHCONP1BZ6ARFF3305 FF+7d, DUKHCONP1BZ5ACFF4615, DUKHCONP1BZ6ARFF3305 SS+7d | 35d | 3d | LABOR- SUBCONTRACTOR [510 h]; AC TECHNICIAN SK [1848 h]; AC PIPES QTY [5000 lm] | 6,228 | 10 | 1BP6ACFF10 | DUKHCON1BP6ACFF4615 | DUKHCONP1BZ6ACFF4615 | DH | CON | 1B | Z6 | MEP | AC | FF | B04 | B04-D08 | RES-1B |
| DUKHCONP1BZ6ACFF4620 |  | Fixing of Ventilation Equipments | 25d | 2014-09-06 | 2014-10-04 | DUKHCONP1BZ5ACFF4620, DUKHCONP1BZ6ACFF4615 SS+10d, DUKHCONP1BZ6ARFF3360 FF+7d, DUKHCONP1BZ6ARFF3360 SS+7d, DUKHCONP1BZ6ACFF4615 FF+10d | 6d | 0d | LABOR- SUBCONTRACTOR [60 h]; AC TECHNICIAN SK [168 h]; VENTILIATION EQP QTY [60 ea] | 7,041 | 15 | 1BP6ACFF15 | DUKHCON1BP6ACFF4620 | DUKHCONP1BZ6ACFF4620 | DH | CON | 1B | Z6 | MEP | AC | FF | B04 | B04-D08 | RES-1B |
| DUKHCONP1BZ6ACFF4625 |  | Fixing of Split AC | 20d | 2014-09-27 | 2014-10-21 | DUKHCONP1BZ6ACFF4620 FF+13d, DUKHCONP1BZ5ACFF4625, DUKHCONP1BZ6ACFF4620 SS+13d | 6d | 0d | LABOR- SUBCONTRACTOR [150 h]; AC TECHNICIAN SK [560 h]; SPLIT UNIT QTY [100 ea] | 54,852 | 20 | 1BP6ACFF20 | DUKHCON1BP6ACFF4625 | DUKHCONP1BZ6ACFF4625 | DH | CON | 1B | Z6 | MEP | AC | FF | B04 | B04-D08 | RES-1B |
|  | 20 | **ROOF** |  | 2014-07-09 | 2014-11-02 |  |  |  |  |  |  |  |  |  |  |  |  |  |  |  |  |  |  |  |
| DUKHCONP1BZ6ACRF4630 |  | Installation of Refrigerant Pipes | 25d | 2014-07-09 | 2014-08-10 | DUKHCONP1BZ6ARRF3645 FF+7d, DUKHCONP1BZ6ARRF3645 SS+7d, DUKHCONP1BZ5ACRF4630, DUKHCONP1BZ6ACGF4600 SS+7d, DUKHCONP1BZ6ACGF4600 FF+7d, DUKHCONP1BZ6ACFF4615 SS+7d, DUKHCONP1BZ6ACFF4615 FF+7d | 76d | 65d | LABOR- SUBCONTRACTOR [210 h]; AC TECHNICIAN SK [784 h]; AC PIPES QTY [2050 lm] | 30,000 | 10 | 1BP6ACRF10 | DUKHCON1BP6ACRF4630 | DUKHCONP1BZ6ACRF4630 | DH | CON | 1B | Z6 | MEP | AC | RF | B04 | B04-D08 | RES-1B |
| DUKHCONP1BZ6ACRF4635 |  | Installation of Condensing Unit | 25d | 2014-10-02 | 2014-11-02 | DUKHCONP1BZ6ACGF4610 FF+5d, DUKHCONP1BZ5ACRF4635, DUKHCONP1BZ6ACFF4625 FF+5d, DUKHCONP1BZ6ACGF4610 SS+5d, DUKHCONP1BZ6ACRF4630 FF+5d, DUKHCONP1BZ6ACFF4625 SS+5d, DUKHCONP1BZ6ACRF4630 SS+5d | 11d | 19d | LABOR- SUBCONTRACTOR [300 h]; AC TECHNICIAN SK [1120 h]; AC UNITS QTY [200 ea] | 163,341 | 15 | 1BP6ACRF15 | DUKHCON1BP6ACRF4635 | DUKHCONP1BZ6ACRF4635 | DH | CON | 1B | Z6 | MEP | AC | RF | B04 | B04-D08 | RES-1B |
|  | 25 | **EXTERNAL WORKS** |  | 2014-05-19 | 2014-11-27 |  |  |  |  |  |  |  |  |  |  |  |  |  |  |  |  |  |  |  |
|  | 10 | **MISCELLANEOUS** |  | 2014-05-19 | 2014-11-27 |  |  |  |  |  |  |  |  |  |  |  |  |  |  |  |  |  |  |  |
| DUKHCONP1BZ6MSEX5020 |  | Construction Entrance Ramp | 25d | 2014-05-19 | 2014-06-16 | DUKHCONP1BZ6STRF2055 SS, DUKHCONP1BZ6STRF2055 FF, DUKHCONP1BZ5MSEX5020 | 58d | 0d | SCREED MASON SK [240 h]; CONCRETE MASON SK [480 h]; INTERLOCK MASON SK [320 h]; LABOR- SUBCONTRACTOR [450 h]; LABOR- SUBCONTRACTOR [120 h]; SCREED QTY [280 Sqm]; CONCRETE QTY [240 Cum]; INTERLOCK QTY [380 Sqm] | 31,350 | 10 | 1BP6MSEX10 | DUKHCON1BP6MS005020 | DUKHCONP1BZ6MSEX5020 | DH | CON | 1B | Z6 | EX | MS |  | B04 | B04-D12 | RES-1B |
| DUKHCONP1BZ6MSEX5000 |  | Construction of Manholes | 25d | 2014-05-21 | 2014-06-18 | DUKHCONP1BZ6PLGF4310 SS+10d, DUKHCONP1BZ6STRF2055 SS+10d, DUKHCONP1BZ6STRF2055 FF+10d, DUKHCONP1BZ6PLGF4310 FF+10d | 27d | 0d | MANHOLES SK [800 h]; LABOR- SUBCONTRACTOR [300 h]; MANHOLES QTY [100 ea] | 34,748 | 25 | 1BP6MSEX25 | DUKHCON1BP6MS005000 | DUKHCONP1BZ6MSEX5000 | DH | CON | 1B | Z6 | EX | MS |  | B04 | B04-D12 | RES-1B |
| DUKHCONP1BZ6MSEX5005 |  | Construction of Soak pit, Chambers | 25d | 2014-06-04 | 2014-07-02 | DUKHCONP1BZ6MSEX5000 SS+12d, DUKHCONP1BZ6MSEX5000 FF+12d | 27d | 0d | MANHOLES SK [160 h]; LABOR- SUBCONTRACTOR [60 h]; SOAKPIT QTY [20 ea] | 58,860 | 30 | 1BP6MSEX30 | DUKHCON1BP6MS005005 | DUKHCONP1BZ6MSEX5005 | DH | CON | 1B | Z6 | EX | MS |  | B04 | B04-D12 | RES-1B |
| DUKHCONP1BZ6MSEX5025 |  | SS.Handrails and Balustrades | 20d | 2014-06-08 | 2014-06-30 | DUKHCONP1BZ6MSEX5020 SS+12d, DUKHCONP1BZ6MSEX5020 FF+12d | 58d | 0d | LABOR- SUBCONTRACTOR [180 h]; S.S.BALUSTRADE QTY [150 lm]; HANDRAIL ERECTOR SKILLED [320 h] | 142,484 | 15 | 1BP6MSEX15 | DUKHCON1BP6MS005025 | DUKHCONP1BZ6MSEX5025 | DH | CON | 1B | Z6 | EX | MS |  | B04 | B04-D12 | RES-1B |
| DUKHCONP1BZ6MSEX5015 |  | Construction of grease Trap | 20d | 2014-06-24 | 2014-07-16 | DUKHCONP1BZ6MSEX5005 FF+12d, DUKHCONP1BZ6MSEX5005 SS+12d | 27d | 0d | LABOR- SUBCONTRACTOR [30 h]; GREASE TRAP QTY [40 lm]; HANDRAIL ERECTOR SKILLED [80 h] | 28,370 | 20 | 1BP6MSEX20 | DUKHCON1BP6MS005015 | DUKHCONP1BZ6MSEX5015 | DH | CON | 1B | Z6 | EX | MS |  | B04 | B04-D07 | RES-1B |
| DUKHCONP1BZ6MSEX5010 |  | Telephone cable laying | 25d | 2014-07-17 | 2014-08-18 | DUKHCONP1BZ6MSEX5015 | 27d | 13d | LABOR- SUBCONTRACTOR [125 h]; ELECTRICIANS SK [125 h]; CONCRETE MASON SK [125 h] | 4,047 |  | 1BP6MSEX40 | DUKHCON1BP6MS005010 | DUKHCONP1BZ6MSEX5010 | DH | CON | 1B | Z6 | EX | MS |  | B04 | B04-D12 | RES-1B |
| DUKHCONP1BZ6MSEX5335 |  | Aluminum Roll-up Shutter with 2m Wall | 25d | 2014-10-30 | 2014-11-27 | DUKHCONI1BZ4BWGL5325 SS+7d, DUKHCONP1BZ5MSEX5335 | 14d | 25d | LABOR- SUBCONTRACTOR [200 h]; DOOR ERECTOR SK [200 h]; ROLLING SHUTTER QTY [10 ea] | 71,716 | 25 | 1BP6BWFR25 | DUKHCON1BP6MS005335 | DUKHCONP1BZ6MSEX5335 | DH | CON | 1B | Z6 | EX | MS |  | B04 | B04-D12 | RES-1B |
|  | 15 | **WATER TANK ENCLOSURE** |  | 2014-06-19 | 2014-09-27 |  |  |  |  |  |  |  |  |  |  |  |  |  |  |  |  |  |  |  |
| DUKHCONP1BZ6WEEX5030 |  | Excavation | 20d | 2014-06-19 | 2014-07-12 | DUKHCONP1BZ5WEEX5035, DUKHCONP1BZ6STRF2060 SS+7d, DUKHCONP1BZ6STRF2055 FF+10d, DUKHCONP1BZ6STRF2055 SS+10d | 40d | 0d | LABOR- SUBCONTRACTOR [60 h]; EXCAVATION QTY [100 Cum]; LOADER [20 h]; POCLAIN [40 h]; TRUCK [20 h]; EQUIP OPERATORS [80 h] | 1,120 | 10 | 1BP6WEEX10 | DUKHCON1BP6WE005030 | DUKHCONP1BZ6WEEX5030 | DH | CON | 1B | Z6 | EX | WE |  | B04 | B04-D12 | RES-1B |
| DUKHCONP1BZ6WEEX5035 |  | Construction of Raft | 25d | 2014-07-01 | 2014-07-29 | DUKHCONP1BZ6WEEX5030 SS+10d, DUKHCONP1BZ6WEEX5030 FF+10d | 40d | 0d | STEEL FIXERS SK [120 h]; CARPENTERS SK [920 h]; CONCRETE MASON SK [120 h]; LABOR- SUBCONTRACTOR [870 h]; REINFORCEMENT BARS QTY [1560 kg]; FORMWORK QTY [460 Sqm]; CONCRETE QTY [50 Cum] | 17,100 | 15 | 1BP6WEEX15 | DUKHCON1BP6WE005035 | DUKHCONP1BZ6WEEX5035 | DH | CON | 1B | Z6 | EX | WE |  | B04 | B04-D12 | RES-1B |
| DUKHCONP1BZ6WEEX5040 |  | Block works & Plastering | 25d | 2014-07-10 | 2014-08-11 | DUKHCONP1BZ6WEEX5035 SS+8d, DUKHCONP1BZ6WEEX5035 FF+8d | 40d | 0d | BLOCK MASON SK [280 h]; PLASTER MASON SK [440 h]; LABOR- SUBCONTRACTOR [390 h]; BLOCK QTY [140 Sqm]; PLASTER QTY [280 Sqm] | 24,659 | 20 | 1BP6WEEX20 | DUKHCON1BP6WE005040 | DUKHCONP1BZ6WEEX5040 | DH | CON | 1B | Z6 | EX | WE |  | B04 | B04-D12 | RES-1B |
| DUKHCONP1BZ6WEEX5045 |  | Flooring & Painting | 25d | 2014-07-22 | 2014-08-23 | DUKHCONP1BZ6WEEX5040 FF+10d, DUKHCONP1BZ6MSEX5025 SS+5d, DUKHCONP1BZ6WEEX5040 SS+10d | 40d | 0d | LABOR- SUBCONTRACTOR [150 h]; PAINT QTY [390 Sqm]; EPOXY QTY [110 Sqm]; PAINTERS SK [320 h]; EPOXY SK [40 h] | 23,490 | 25 | 1BP6WEEX25 | DUKHCON1BP6WE005045 | DUKHCONP1BZ6WEEX5045 | DH | CON | 1B | Z6 | EX | WE |  | B04 | B04-D12 | RES-1B |
| DUKHCONP1BZ6WEEX5050 |  | Installation of Steel Gate | 20d | 2014-08-12 | 2014-09-03 | DUKHCONP1BZ6MSEX5025 FF+10d, DUKHCONP1BZ6MSEX5015 SS+5d, DUKHCONP1BZ6WEEX5045 SS+5d, DUKHCONP1BZ6WEEX5045 FF+10d | 40d | 0d | LABOR- SUBCONTRACTOR [60 h]; GATE QTY [10 ea]; GATE ERECTOR SK [80 h] | 94,380 | 30 | 1BP6WEEX30 | DUKHCON1BP6WE005050 | DUKHCONP1BZ6WEEX5050 | DH | CON | 1B | Z6 | EX | WE |  | B04 | B04-D12 | RES-1B |
| DUKHCONP1BZ6WEEX5060 |  | Structural steel & SS Shed cover installation | 25d | 2014-08-18 | 2014-09-15 | DUKHCONP1BZ6WEEX5050 FF+10d, DUKHCONP1BZ6WEEX5050 SS+5d, DUKHCONP1BZ6MSEX5025 FF+10d, DUKHCONP1BZ5WEEX5060 | 40d | 0d | LABOR- SUBCONTRACTOR [330 h]; STRUCTURAL STEEL QTY [320 kg]; SS SHED COVER QTY [100 Sqm]; STEEL ERECTOR SK [440 h] | 56,824 | 35 | 1BP6WEEX35 | DUKHCON1BP6WE005060 | DUKHCONP1BZ6WEEX5060 | DH | CON | 1B | Z6 | EX | WE |  | B04 | B04-D12 | RES-1B |
| DUKHCONP1BZ6WEEX5065 |  | Install. of Water Tank,Chiller,Pump & Meter | 25d | 2014-08-30 | 2014-09-27 | DUKHCONP1BZ6MSEX5015 FF+5d, DUKHCONP1BZ6PLRF4350 SS+5d, DUKHCONP1BZ5WEEX5065, DUKHCONP1BZ6WEEX5060 FF+10d, DUKHCONP1BZ6MSEX5015 SS+5d, DUKHCONP1BZ6WEEX5060 SS+10d, DUKHCONP1BZ6PLRF4350 FF+5d | 40d | 32d | LABOR- SUBCONTRACTOR [150 h]; AC TECHNICIAN SK [112 h]; MECHANICALS SK [216 h]; WATER TANK QTY [10 ea]; CHILLER QTY [100 ea]; PUMP QTY [10 ea] | 152,912 | 40 | 1BP6WEEX40 | DUKHCON1BP6WE005065 | DUKHCONP1BZ6WEEX5065 | DH | CON | 1B | Z6 | EX | WE |  | B04 | B04-D07 | RES-1B |

Notes:
- DUKHCONP1BZ6ACGF4600: Expenses: P1B-Air-conditioning and Ventilation works 8873
- DUKHCONP1BZ6ACGF4605: Expenses: P1B-Air-conditioning and Ventilation works 36397
- DUKHCONP1BZ6ACGF4610: Expenses: P1B-Air-conditioning and Ventilation works 71686
- DUKHCONP1BZ6ACFF4615: Expenses: P1B-Air-conditioning and Ventilation works 6228
- DUKHCONP1BZ6ACFF4620: Expenses: P1B-Air-conditioning and Ventilation works 7041
- DUKHCONP1BZ6ACFF4625: Expenses: P1B-Air-conditioning and Ventilation works 54852
- DUKHCONP1BZ6ACRF4630: Expenses: P1B-Air-conditioning and Ventilation works 30000
- DUKHCONP1BZ6ACRF4635: Expenses: P1B-Air-conditioning and Ventilation works 163341
- DUKHCONP1BZ6MSEX5020: Expenses: P1B-External works within the Plot Curtilage 31350
- DUKHCONP1BZ6MSEX5000: Expenses: P1B-External works within the Plot Curtilage 34748
- DUKHCONP1BZ6MSEX5005: Expenses: P1B-External works within the Plot Curtilage 58860
- DUKHCONP1BZ6MSEX5025: Expenses: P1B-External works within the Plot Curtilage 142484
- DUKHCONP1BZ6MSEX5015: Expenses: P1B-Plumbing and Drainage works 28370
- DUKHCONP1BZ6MSEX5010: Expenses: P1B-External works within the Plot Curtilage 4047
- DUKHCONP1BZ6MSEX5335: Expenses: P1B-External works within the Plot Curtilage 71716
- DUKHCONP1BZ6WEEX5030: Expenses: P1B-External works within the Plot Curtilage 1120
- DUKHCONP1BZ6WEEX5035: Expenses: P1B-External works within the Plot Curtilage 17100
- DUKHCONP1BZ6WEEX5040: Expenses: P1B-External works within the Plot Curtilage 24659
- DUKHCONP1BZ6WEEX5045: Expenses: P1B-External works within the Plot Curtilage 23490
- DUKHCONP1BZ6WEEX5050: Expenses: P1B-External works within the Plot Curtilage 94380
- DUKHCONP1BZ6WEEX5060: Expenses: P1B-External works within the Plot Curtilage 56824
- DUKHCONP1BZ6WEEX5065: Expenses: P1B-Plumbing and Drainage works 152912

| ID | WBS | Activity | Duration | Start | Finish | Predecessors | Total float | Free float | Resources | Cost | CODE | P3 ACTID | P6 ID (old) | NP61D | PROJECT | PHASES | PACKAGE | PART | ELEMENTS | STEP | BILL NOS | BILL DIVISION | RES PACK |
| --- | --- | --- | --- | --- | --- | --- | --- | --- | --- | --- | --- | --- | --- | --- | --- | --- | --- | --- | --- | --- | --- | --- | --- |
|  | 20 | **HARD LANDSCAPING** |  | 2014-06-16 | 2014-08-07 |  |  |  |  |  |  |  |  |  |  |  |  |  |  |  |  |  |  |
| DUKHCONP1BZ6HDEX5090 |  | kerb works | 20d | 2014-06-16 | 2014-07-08 | DUKHCONP1BZ6MSEX5025 SS+7d, DUKHCONP1BZ5HDEX5090, DUKHCONP1BZ6MSEX5020 FF+7d, DUKHCONP1BZ6MSEX5020 SS+7d | 58d | 0d | KERBSTONE MASON SK [560 h]; LABOR- SUBCONTRACTOR [330 h]; KERBSTONE QTY [720 lm] | 15,682 | 10 | 1BP6HDEX10 | DUKHCON1BP6HD005090 | DUKHCONP1BZ6HDEX5090 | DH | CON | 1B | Z6 | EX | HD | B04 | B04-D12 | RES-1B |
| DUKHCONP1BZ6HDEX5095 |  | Cobble Stone Works | 20d | 2014-06-28 | 2014-07-20 | DUKHCONP1BZ6HDEX5090 FF+10d, DUKHCONP1BZ6HDEX5090 SS+10d | 58d | 0d | TILE MASON SK [360 h]; LABOR- SUBCONTRACTOR [210 h]; COBBLE STONE QTY [220 Sqm] | 44,480 | 15 | 1BP6HDEX15 | DUKHCON1BP6HD005095 | DUKHCONP1BZ6HDEX5095 | DH | CON | 1B | Z6 | EX | HD | B04 | B04-D12 | RES-1B |
| DUKHCONP1BZ6HDEX5100 |  | Interlock works | 20d | 2014-07-13 | 2014-08-07 | DUKHCONP1BZ6HDEX5095 FF+13d, DUKHCONP1BZ6HDEX5095 SS+13d | 58d | 0d | INTERLOCK MASON SK [360 h]; LABOR- SUBCONTRACTOR [150 h]; INTERLOCK QTY [460 Sqm] | 53,010 | 20 | 1BP6HDEX20 | DUKHCON1BP6HD005100 | DUKHCONP1BZ6HDEX5100 | DH | CON | 1B | Z6 | EX | HD | B04 | B04-D12 | RES-1B |
|  | 25 | **SOFT LANDSCAPING** |  | 2014-07-24 | 2014-09-06 |  |  |  |  |  |  |  |  |  |  |  |  |  |  |  |  |  |  |
| DUKHCONP1BZ6SLEX5105 |  | Laying of Grass/ green area | 25d | 2014-07-24 | 2014-08-25 | DUKHCONP1BZ6HDEX5100 FF+10d, DUKHCONP1BZ6HDEX5100 SS+10d | 58d | 0d | LABOR- SUBCONTRACTOR [2940 h]; SWEET SOIL QTY [840 Cum]; GRASS QTY [840 Sqm]; LANDSCAPING SK [3920 h] | 62,730 | 10 | 1BP6SLEX10 | DUKHCON1BP6SL005105 | DUKHCONP1BZ6SLEX5105 | DH | CON | 1B | Z6 | EX | SL | B04 | B04-D12 | RES-1B |
| DUKHCONP1BZ6SLEX5110 |  | Laying of Palm tree | 25d | 2014-08-09 | 2014-09-06 | DUKHCONP1BZ6SLEX5105 FF+10d, DUKHCONP1BZ6SLEX5105 SS+10d | 58d | 66d | LABOR- SUBCONTRACTOR [180 h]; SWEET SOIL QTY [120 Cum]; PLAM TREES QTY [40 ea]; LANDSCAPING SK [240 h] | 151,110 | 15 | 1BP6SLEX15 | DUKHCON1BP6SL005110 | DUKHCONP1BZ6SLEX5110 | DH | CON | 1B | Z6 | EX | SL | B04 | B04-D12 | RES-1B |
|  | 30 | **TESTING AND COMMISSIONING** |  | 2014-11-25 | 2014-12-24 |  |  |  |  |  |  |  |  |  |  |  |  |  |  |  |  |  |  |
| DUKHCONP1BZ6ACTC8000 |  | Pre-Commissioning & Testing of AC Works | 25d | 2014-11-25 | 2014-12-24 | DUKHCONP1BZ5ACTC8000, DUKHCONP1BZ6SLEX5105, DUKHMOBI1BPS00002135 FF, DUKHCONP1BZ6AREL3680, DUKHCONP1BZ6MSEX5005, DUKHCONP1BZ6ARFF3395, DUKHCONP1BZ6ARGF3095, DUKHCONP1BZ6ACRF4635, DUKHMOBP1BPS00002100 FF, DUKHCONP1BZ6SLEX5110, DUKHCONP1BZ6HDEX5100, DUKHCONP1BZ6ACFF4625, DUKHCONP1BZ6ARRF3620 | -8d | 3d | LABOR- SUBCONTRACTOR [500 h]; AC TECHNICIAN SK [1000 h] | 2,120 |  | 1BP6ACU100 | DUKHCON1BP6AC008000 | DUKHCONP1BZ6ACTC8000 | DH | CON | 1B | Z6 | TES |  | B04 | B04-D08 | RES-1B |
| DUKHCONP1BZ6ELTC8010 |  | Pre-Commissioning & Testing of Electrical Works | 25d | 2014-11-25 | 2014-12-24 | DUKHCONP1BZ6HDEX5100, DUKHCONP1BZ6MSEX5005, DUKHCONP1BZ6ARRF3660, DUKHCONP1BZ6ARGF3095, DUKHCONP1BZ6ARRF3620, DUKHCONP1BZ6ELGF4025, DUKHMOBI1BPS00002135 FF, DUKHCONP1BZ6ELFF4050, DUKHMOBP1BPS00002100 FF, DUKHCONP1BZ6ARRF3655, DUKHCONP1BZ5ELTC8010, DUKHCONP1BZ6SLEX5110, DUKHCONP1BZ6AREL3680, DUKHCONP1BZ6ARFF3395, DUKHCONP1BZ6ELFF4065, DUKHCONP1BZ6ELRF4075, DUKHCONP1BZ6ELGF4015, DUKHCONP1BZ6ELGF4030, DUKHCONP1BZ6SLEX5105, DUKHCONP1BZ6ELFF4055 | -8d | 3d | LABOR- SUBCONTRACTOR [1000 h]; ELECTRICIANS SK [2000 h] | 56,950 |  | 1BP6ELE100 | DUKHCON1BP6EL008010 | DUKHCONP1BZ6ELTC8010 | DH | CON | 1B | Z6 | TES |  | B04 | B04-D09 | RES-1B |
| DUKHCONP1BZ6PLTC8005 |  | Pre-Commissioning & Testing of Plumbing Works | 25d | 2014-11-25 | 2014-12-24 | DUKHCONP1BZ6SLEX5110, DUKHCONP1BZ6MSEX5005, DUKHCONP1BZ6PLGF4320, DUKHCONP1BZ6ARRF3620, DUKHCONP1BZ6SLEX5105, DUKHCONP1BZ6WEEX5065, DUKHCONP1BZ6ARRF3660, DUKHCONP1BZ6ARFF3395, DUKHCONP1BZ6ARGF3095, DUKHCONP1BZ6HDEX5100, DUKHCONP1BZ6PLRF4355, DUKHCONP1BZ6PLRF4350, DUKHMOBP1BPS00002100 FF, DUKHCONP1BZ5PLTC8005, DUKHCONP1BZ6AREL3680, DUKHCONP1BZ6ARRF3655, DUKHMOBI1BPS00002135 FF | -8d | 3d | LABOR- SUBCONTRACTOR [1000 h]; MECHANICALS SK [2000 h] | 8,890 |  | 1BP6PLU100 | DUKHCON1BP6PL008005 | DUKHCONP1BZ6PLTC8005 | DH | CON | 1B | Z6 | TES |  | B04 | B04-D07 | RES-1B |
|  | L30 | **PACKAGE-1B INFRASTRUCTURE WORKS** |  | 2013-12-08 | 2015-01-14 |  |  |  |  |  |  |  |  |  |  |  |  |  |  |  |  |  |  |
|  | 10 | **ZONE - 1** |  | 2013-12-08 | 2014-08-23 |  |  |  |  |  |  |  |  |  |  |  |  |  |  |  |  |  |  |
|  | 10 | **INFRASTRUCTURE WORKS** |  | 2013-12-08 | 2014-08-23 |  |  |  |  |  |  |  |  |  |  |  |  |  |  |  |  |  |  |
|  | 10 | **DRAINAGE LINES** |  | 2013-12-08 | 2014-01-27 |  |  |  |  |  |  |  |  |  |  |  |  |  |  |  |  |  |  |
| DUKHCONI1BZ1DRGL5115 |  | Excavation for Drainage line | 25d | 2013-12-08 | 2014-01-06 | DUKHCONP1BZ2STFF2025 SS+11d, DUKHENGI1BDWDRAP4650 | -11d | 0d | LABOR- SUBCONTRACTOR [168 h]; EXCAVATION QTY [278 Cum]; LOADER [63 h]; POCLAIN [125 h]; TRUCK [63 h]; EQUIP OPERATORS [251 h] | 11,124 | 10 | 1BP1DRFR10 | DUKHCON1BP1DRGL5115 | DUKHCONI1BZ1DRGL5115 | DH | CON | 1BF | Z1 | FR | DR | B05 | B05-D06 | RES-1B |
| DUKHCONI1BZ1DRGL5120 |  | Laying of Drainage line | 25d | 2013-12-15 | 2014-01-13 | DUKHCONI1BZ1DRGL5115 SS+6d, DUKHCONI1BZ1DRGL5115 FF+6d | -11d | 0d | LABOR- SUBCONTRACTOR [60 h]; MECHANICALS SK [205.2 h]; DRAINAGE PIPES QTY [376 lm] | 29,454.5 | 15 | 1BP1DRFR15 | DUKHCON1BP1DRGL5120 | DUKHCONI1BZ1DRGL5120 | DH | CON | 1BF | Z1 | FR | DR | B05 | B05-D06 | RES-1B |
| DUKHCONI1BZ1DRGL5125 |  | Testing of Drainage line | 25d | 2013-12-24 | 2014-01-21 | DUKHCONI1BZ1DRGL5120 SS+7d, DUKHCONI1BZ1DRGL5120 FF+7d | -11d | 0d | LABOR- SUBCONTRACTOR [48 h]; MECHANICALS SK [86.4 h]; DRAINAGE PIPES TEST QTY [376 lm] | 3,272.75 | 20 | 1BP1DRFR20 | DUKHCON1BP1DRGL5125 | DUKHCONI1BZ1DRGL5125 | DH | CON | 1BF | Z1 | FR | DR | B05 | B05-D06 | RES-1B |
| DUKHCONI1BZ1DRGL5130 |  | Backfilling Drainage line | 15d | 2014-01-11 | 2014-01-27 | DUKHCONI1BZ1DRGL5125 FF+5d, DUKHCONI1BZ1DRGL5125 SS+10d | -11d | 0d | LABOR- SUBCONTRACTOR [66 h]; BOBCAT [113 h]; PLATE COMPACTOR [113 h]; TRUCK [23 h]; EQUIP OPERATORS [249 h]; BACKFILLING QTY [278 Cum] | 12,335.5 | 25 | 1BP1DRFR25 | DUKHCON1BP1DRGL5130 | DUKHCONI1BZ1DRGL5130 | DH | CON | 1BF | Z1 | FR | DR | B05 | B05-D06 | RES-1B |
|  | 15 | **MANHOLES & SOAKAWAY** |  | 2014-01-11 | 2014-04-02 |  |  |  |  |  |  |  |  |  |  |  |  |  |  |  |  |  |  |
| DUKHCONI1BZ1SAGL5135 |  | Construction of manholes Drainage | 25d | 2014-01-11 | 2014-02-08 | DUKHCONI1BZ1DRGL5115, DUKHCONI1BZ1DRGL5130 FF+10d, DUKHENGI1BDWDRAP4650 | 48d | 10d | LABOR- SUBCONTRACTOR [6 h]; EXCAVATION QTY [9 Cum] | 31,914.5 | 10 | 1BP1SAFR10 | DUKHCON1BP1SAGL5135 | DUKHCONI1BZ1SAGL5135 | DH | CON | 1BF | Z1 | FR | SA | B05 | B05-D06 | RES-1B |
| DUKHCONI1BZ1SAGL5140 |  | Construction of soakaways | 25d | 2014-01-11 | 2014-02-08 | DUKHCONI1BZ1DRGL5115, DUKHCONI1BZ1DRGL5130 FF+10d | -11d | 0d | MANHOLES SK [136 h]; LABOR- SUBCONTRACTOR [54 h]; SOAKPIT QTY [17 ea] | 223,920 | 15 | 1BP1SAFR15 | DUKHCON1BP1SAGL5140 | DUKHCONI1BZ1SAGL5140 | DH | CON | 1BF | Z1 | FR | SA | B05 | B05-D06 | RES-1B |
| DUKHCONI1BZ1SAGL5145 |  | Construction of Road gullies | 25d | 2014-02-09 | 2014-03-10 | DUKHCONI1BZ1SAGL5140 | -11d | 0d | MANHOLES SK [128 h]; LABOR- SUBCONTRACTOR [48 h]; ROAD GULLY QTY [16 ea] | 33,092.5 | 20 | 1BP1SAFR20 | DUKHCON1BP1SAGL5145 | DUKHCONI1BZ1SAGL5145 | DH | CON | 1BF | Z1 | FR | SA | B05 | B05-D06 | RES-1B |
| DUKHCONI1BZ1SAGL5150 |  | Connection with existing sewer manhole | 20d | 2014-03-11 | 2014-04-02 | DUKHCONI1BZ1SAGL5135, DUKHCONI1BZ1SAGL5145 | 23d | 34d | LABOR- SUBCONTRACTOR [6 h]; BACKFILLING QTY [9 Cum] | 2,838.25 | 25 | 1BP1SAFR25 | DUKHCON1BP1SAGL5150 | DUKHCONI1BZ1SAGL5150 | DH | CON | 1BF | Z1 | FR | SA | B05 | B05-D06 | RES-1B |

Notes:
- DUKHCONP1BZ6HDEX5090: Expenses: P1B-External works within the Plot Curtilage 15682
- DUKHCONP1BZ6HDEX5095: Expenses: P1B-External works within the Plot Curtilage 44480
- DUKHCONP1BZ6HDEX5100: Expenses: P1B-External works within the Plot Curtilage 53010
- DUKHCONP1BZ6SLEX5105: Expenses: P1B-External works within the Plot Curtilage 62730
- DUKHCONP1BZ6SLEX5110: Expenses: P1B-External works within the Plot Curtilage 151110
- DUKHCONP1BZ6ACTC8000: Expenses: P1B-Air-conditioning and Ventilation works 2120
- DUKHCONP1BZ6ELTC8010: Expenses: P1B-Electrical Installations 56950
- DUKHCONP1BZ6PLTC8005: Expenses: P1B-Plumbing and Drainage works 8890
- DUKHCONI1BZ1DRGL5115: Expenses: I1B-Surface Water drainage and Sewerage system 11124
- DUKHCONI1BZ1DRGL5120: Expenses: I1B-Surface Water drainage and Sewerage system 29454.5
- DUKHCONI1BZ1DRGL5125: Expenses: I1B-Surface Water drainage and Sewerage system 3272.75
- DUKHCONI1BZ1DRGL5130: Expenses: I1B-Surface Water drainage and Sewerage system 12335.5
- DUKHCONI1BZ1SAGL5135: Expenses: I1B-Surface Water drainage and Sewerage system 31914.5
- DUKHCONI1BZ1SAGL5140: Expenses: I1B-Surface Water drainage and Sewerage system 223920
- DUKHCONI1BZ1SAGL5145: Expenses: I1B-Surface Water drainage and Sewerage system 33092.5
- DUKHCONI1BZ1SAGL5150: Expenses: I1B-Surface Water drainage and Sewerage system 2838.25

| ID | WBS | Activity | Duration | Start | Finish | Predecessors | Total float | Free float | Resources | Cost | CODE | P3 ACTID | P6 ID (old) | NP61D | PROJECT | PHASES | PACKAGE | PART | ELEMENTS | STEP | BILL NOS | BILL DIVISION | RES PACK |
| --- | --- | --- | --- | --- | --- | --- | --- | --- | --- | --- | --- | --- | --- | --- | --- | --- | --- | --- | --- | --- | --- | --- | --- |
|  | 20 | **WATER SUPPLY SYSTEM** |  | 2014-01-22 | 2014-04-08 |  |  |  |  |  |  |  |  |  |  |  |  |  |  |  |  |  |  |
| DUKHCONI1BZ1WSGL5155 |  | Excavation for water line | 25d | 2014-01-22 | 2014-02-20 | DUKHENGI1BDWWSAP4670, DUKHCONI1BZ1DRGL5130 SS+10d | -11d | 0d | LABOR- SUBCONTRACTOR [174 h]; EXCAVATION QTY [284 Cum]; LOADER [63 h]; POCLAIN [125 h]; TRUCK [63 h]; EQUIP OPERATORS [251 h] | 7,487 | 10 | 1BP1WSFR10 | DUKHCON1BP1WSGL5155 | DUKHCONI1BZ1WSGL5155 | DH | CON | 1BF | Z1 | FR | WS | B05 | B05-D07 | RES-1B |
| DUKHCONI1BZ1WSGL5160 |  | Laying of water line | 25d | 2014-01-28 | 2014-02-26 | DUKHCONI1BZ1WSGL5155 SS+5d | -11d | 0d | LABOR- SUBCONTRACTOR [114 h]; MECHANICALS SK [205.2 h]; WATER PIPES QTY [284 lm] | 59,693 | 15 | 1BP1WSFR15 | DUKHCON1BP1WSGL5160 | DUKHCONI1BZ1WSGL5160 | DH | CON | 1BF | Z1 | FR | WS | B05 | B05-D07 | RES-1B |
| DUKHCONI1BZ1WSGL5165 |  | Testing of potable water line | 25d | 2014-02-03 | 2014-03-04 | DUKHCONI1BZ1WSGL5160 SS+5d | -11d | 0d | LABOR- SUBCONTRACTOR [36 h]; MECHANICALS SK [64.8 h]; DRAINAGE PIPES TEST QTY [284 lm] | 5,833.5 | 20 | 1BP1WSFR20 | DUKHCON1BP1WSGL5165 | DUKHCONI1BZ1WSGL5165 | DH | CON | 1BF | Z1 | FR | WS | B05 | B05-D07 | RES-1B |
| DUKHCONI1BZ1WSGL5170 |  | Backfilling potable water line | 25d | 2014-02-09 | 2014-03-10 | DUKHCONI1BZ1WSGL5165 SS+5d, DUKHCONI1BZ1SAGL5145 FF | -11d | 0d | LABOR- SUBCONTRACTOR [72 h]; BACKFILLING QTY [284 Cum]; BOBCAT [125 h]; PLATE COMPACTOR [125 h]; TRUCK [25 h]; EQUIP OPERATORS [275 h] | 1,871.75 | 25 | 1BP1WSFR25 | DUKHCON1BP1WSGL5170 | DUKHCONI1BZ1WSGL5170 | DH | CON | 1BF | Z1 | FR | WS | B05 | B05-D07 | RES-1B |
| DUKHCONI1BZ1WSGL5175 |  | Construction of valve chambers & Thrust Blocks | 25d | 2014-02-16 | 2014-03-16 | DUKHCONI1BZ1WSGL5170 FF+5d, DUKHCONI1BZ1WSGL5155 SS+10d | 18d | 0d | MANHOLES SK [64 h]; LABOR- SUBCONTRACTOR [24 h]; MANHOLES QTY [8 ea] | 2,129.5 | 30 | 1BP1WSFR30 | DUKHCON1BP1WSGL5175 | DUKHCONI1BZ1WSGL5175 | DH | CON | 1BF | Z1 | FR | WS | B05 | B05-D07 | RES-1B |
| DUKHCONI1BZ1WSGL5180 |  | Installation of meter ,Accessories & Connection | 20d | 2014-03-17 | 2014-04-08 | DUKHCONI1BZ1WSGL5175 | 18d | 7d | LABOR- SUBCONTRACTOR [18 h]; MECHANICALS SK [32.4 h]; CHAMPER QTY [11 lm] | 13,321.5 | 35 | 1BP1WSFR35 | DUKHCON1BP1WSGL5180 | DUKHCONI1BZ1WSGL5180 | DH | CON | 1BF | Z1 | FR | WS | B05 | B05-D07 | RES-1B |
|  | 25 | **FIREFIGHTING LINES** |  | 2014-02-16 | 2014-04-16 |  |  |  |  |  |  |  |  |  |  |  |  |  |  |  |  |  |  |
| DUKHCONI1BZ1FFGL5185 |  | Excavation for firefighting line | 25d | 2014-02-16 | 2014-03-16 | DUKHENGI1BDWFFAP4660, DUKHCONI1BZ1WSGL5170 SS+5d | -11d | 0d | LABOR- SUBCONTRACTOR [90 h]; EXCAVATION QTY [147 Cum]; LOADER [25 h]; POCLAIN [50 h]; TRUCK [25 h]; EQUIP OPERATORS [100 h] | 16,482.5 | 10 | 1BP1FFFR10 | DUKHCON1BP1FFGL5185 | DUKHCONI1BZ1FFGL5185 | DH | CON | 1BF | Z1 | FR | FF | B05 | B05-D07 | RES-1B |
| DUKHCONI1BZ1FFGL5190 |  | Laying of firefighting line | 25d | 2014-02-24 | 2014-03-24 | DUKHCONI1BZ1FFGL5185 SS+7d | -11d | 0d | LABOR- SUBCONTRACTOR [48 h]; MECHANICALS SK [162 h]; PLUMB PIPES QTY [147 lm] | 24,118.5 | 15 | 1BP1FFFR15 | DUKHCON1BP1FFGL5190 | DUKHCONI1BZ1FFGL5190 | DH | CON | 1BF | Z1 | FR | FF | B05 | B05-D07 | RES-1B |
| DUKHCONI1BZ1FFGL5195 |  | Testing of firefighting line | 25d | 2014-03-02 | 2014-03-30 | DUKHCONI1BZ1FFGL5190 SS+5d | -11d | 0d | LABOR- SUBCONTRACTOR [18 h]; MECHANICALS SK [32.4 h]; DRAINAGE PIPES TEST QTY [147 lm] | 1,930 | 20 | 1BP1FFFR20 | DUKHCON1BP1FFGL5195 | DUKHCONI1BZ1FFGL5195 | DH | CON | 1BF | Z1 | FR | FF | B05 | B05-D07 | RES-1B |
| DUKHCONI1BZ1FFGL5200 |  | Backfilling firefighting line | 25d | 2014-03-08 | 2014-04-05 | DUKHCONI1BZ1FFGL5195 SS+5d | -11d | 0d | LABOR- SUBCONTRACTOR [36 h]; BACKFILLING QTY [147 Cum]; BOBCAT [125 h]; PLATE COMPACTOR [125 h]; TRUCK [25 h]; EQUIP OPERATORS [275 h] | 4,120.5 | 25 | 1BP1FFFR25 | DUKHCON1BP1FFGL5200 | DUKHCONI1BZ1FFGL5200 | DH | CON | 1BF | Z1 | FR | FF | B05 | B05-D07 | RES-1B |
| DUKHCONI1BZ1FFGL5205 |  | Construction of valve chambers & Thrust Blocks | 25d | 2014-03-13 | 2014-04-10 | DUKHCONI1BZ1FFGL5200 FF+5d, DUKHCONI1BZ1FFGL5185 SS+10d | 11d | 0d | CONCRETE MASON SK [24 h]; LABOR- SUBCONTRACTOR [114 h]; EXCAVATION QTY [16 Cum]; REINFORCEMENT BARS QTY [628 kg]; FORMWORK QTY [34 Sqm]; CONCRETE QTY [10 Cum]; CARPENTERS SK [72 h]; STEEL FIXERS SK [56 h] | 1,490.5 | 30 | 1BP1FFFR30 | DUKHCON1BP1FFGL5205 | DUKHCONI1BZ1FFGL5205 | DH | CON | 1BF | Z1 | FR | FF | B05 | B05-D07 | RES-1B |
| DUKHCONI1BZ1FFGL5210 |  | Connection with existing Firewater System | 25d | 2014-03-19 | 2014-04-16 | DUKHCONI1BZ1WSGL5180 FF, DUKHCONI1BZ1FFGL5205 FF+5d | 11d | 15d | LABOR- SUBCONTRACTOR [30 h]; MECHANICALS SK [54 h]; FIRE EXTINGUISHER QTY [10 ea] | 6,453.25 | 35 | 1BP1FFFR35 | DUKHCON1BP1FFGL5210 | DUKHCONI1BZ1FFGL5210 | DH | CON | 1BF | Z1 | FR | FF | B05 | B05-D07 | RES-1B |
|  | 30 | **ELECTRICAL LINES** |  | 2014-03-16 | 2014-05-08 |  |  |  |  |  |  |  |  |  |  |  |  |  |  |  |  |  |  |
| DUKHCONI1BZ1ELGL5215 |  | Excavation Cable Trenches & Duct Banks | 25d | 2014-03-16 | 2014-04-13 | DUKHENGI1BDWELAP4680, DUKHCONI1BZ1FFGL5200 SS+7d | -11d | 0d | LABOR- SUBCONTRACTOR [1896 h]; EXCAVATION QTY [3159 Cum]; LOADER [219 h]; POCLAIN [438 h]; TRUCK [219 h]; EQUIP OPERATORS [876 h] | 15,897.75 | 10 | 1BP1ECFR10 | DUKHCON1BP1ELGL5215 | DUKHCONI1BZ1ELGL5215 | DH | CON | 1BF | Z1 | FR | EC | B05 | B05-D04 | RES-1B |
| DUKHCONI1BZ1ELGL5220 |  | Laying of electrical cables | 25d | 2014-03-22 | 2014-04-19 | DUKHCONI1BZ1ELGL5215 SS+5d | -8d | 0d | LABOR- SUBCONTRACTOR [948 h]; ELECTRICIANS SK [3539.2 h]; CABLE QTY [3159 lm] | 1,166,243.5 | 15 | 1BP1ECFR15 | DUKHCON1BP1ELGL5220 | DUKHCONI1BZ1ELGL5220 | DH | CON | 1BF | Z1 | FR | EC | B05 | B05-D04 | RES-1B |
| DUKHCONI1BZ1ELGL5225 |  | Backfilling Electrical trench | 25d | 2014-03-30 | 2014-04-27 | DUKHCONI1BZ1ELGL5215 FF+7d, DUKHCONI1BZ1ELGL5220 SS+7d | -8d | 0d | LABOR- SUBCONTRACTOR [762 h]; BACKFILLING QTY [3159 Cum]; BOBCAT [500 h]; PLATE COMPACTOR [500 h]; TRUCK [100 h]; EQUIP OPERATORS [1100 h] | 6,812.75 | 20 | 1BP1ECFR20 | DUKHCON1BP1ELGL5225 | DUKHCONI1BZ1ELGL5225 | DH | CON | 1BF | Z1 | FR | EC | B05 | B05-D04 | RES-1B |
| DUKHCONI1BZ1ELGL5230 |  | Construction of Submain Board & Feeder Pillar | 25d | 2014-04-10 | 2014-05-08 | DUKHCONI1BZ1ELGL5225 FF+10d, DUKHCONI1BZ1ELGL5225 SS+10d | 68d | 0d | STEEL FIXERS SK [8 h]; CARPENTERS SK [48 h]; CONCRETE MASON SK [8 h]; LABOR- SUBCONTRACTOR [36 h]; LABOR- SUBCONTRACTOR [48 h]; REINFORCEMENT BARS QTY [27 kg]; FORMWORK QTY [21 Sqm]; CONCRETE QTY [2 Cum]; ALUMINIUM DOOR QTY [3 ea]; DOOR ERECTOR SK [16 h]; EXPANSION JOINT QTY [14 Sqm]; EXPANSION JOINT SKILLED SK [112 h] | 82,371.75 | 25 | 1BP1ECFR25 | DUKHCON1BP1ELGL5230 | DUKHCONI1BZ1ELGL5230 | DH | CON | 1BF | Z1 | FR | EC | B05 | B05-D04 | RES-1B |
|  | 35 | **STREET LIGHTING** |  | 2014-03-16 | 2014-06-07 |  |  |  |  |  |  |  |  |  |  |  |  |  |  |  |  |  |  |
| DUKHCONI1BZ1STGL5235 |  | Excavation for Street lighting | 25d | 2014-03-16 | 2014-04-13 | DUKHENGI1BDWSTAP4690, DUKHCONI1BZ1ELGL5215 SS | -11d | 0d | LABOR- SUBCONTRACTOR [18 h]; EXCAVATION QTY [29 Cum]; LOADER [13 h]; POCLAIN [25 h]; TRUCK [13 h]; EQUIP OPERATORS [51 h] | 2,909.75 | 10 | 1BP1STFR10 | DUKHCON1BP1STGL5235 | DUKHCONI1BZ1STGL5235 | DH | CON | 1BF | Z1 | FR | ST | B05 | B05-D09 | RES-1B |
| DUKHCONI1BZ1STGL5240 |  | Construction of Duct Banks | 25d | 2014-03-22 | 2014-04-19 | DUKHCONI1BZ1STGL5235 SS+5d | -11d | 0d | LABOR- SUBCONTRACTOR [318 h]; ELECTRICIANS SK [1176 h]; DUCT BANK QTY [420 lm] | 79,726.25 | 15 | 1BP1STFR15 | DUKHCON1BP1STGL5240 | DUKHCONI1BZ1STGL5240 | DH | CON | 1BF | Z1 | FR | ST | B05 | B05-D09 | RES-1B |
| DUKHCONI1BZ1STGL5245 |  | Construction of Foundation | 25d | 2014-03-22 | 2014-04-19 | DUKHCONI1BZ1STGL5240 SS | -11d | 0d | MANHOLES SK [456 h]; LABOR- SUBCONTRACTOR [174 h]; COLUMN BASE QTY [29 ea] | 27,122.5 | 20 | 1BP1STFR20 | DUKHCON1BP1STGL5245 | DUKHCONI1BZ1STGL5245 | DH | CON | 1BF | Z1 | FR | ST | B05 | B05-D09 | RES-1B |
| DUKHCONI1BZ1STGL5250 |  | Backfilling Street Lighting | 25d | 2014-03-27 | 2014-04-24 | DUKHCONI1BZ1STGL5245 SS+5d, DUKHCONI1BZ1STGL5235 FF+5d | -11d | 0d | LABOR- SUBCONTRACTOR [12 h]; BACKFILLING QTY [29 Cum]; BOBCAT [50 h]; PLATE COMPACTOR [50 h]; TRUCK [10 h]; EQUIP OPERATORS [110 h] | 2,909.75 | 25 | 1BP1STFR25 | DUKHCON1BP1STGL5250 | DUKHCONI1BZ1STGL5250 | DH | CON | 1BF | Z1 | FR | ST | B05 | B05-D09 | RES-1B |
| DUKHCONI1BZ1STGL5255 |  | Installation of light Post | 25d | 2014-04-08 | 2014-05-06 | DUKHCONI1BZ1STGL5250 SS+10d | 88d | 15d | LABOR- SUBCONTRACTOR [48 h]; ELECTRICIANS SK [168 h]; LIGHTPOST COLUMN QTY [29 ea] | 369,147.75 | 30 | 1BP1STFR30 | DUKHCON1BP1STGL5255 | DUKHCONI1BZ1STGL5255 | DH | CON | 1BF | Z1 | FR | ST | B05 | B05-D09 | RES-1B |
| DUKHCONI1BZ1STGL5260 |  | Electrical Works | 25d | 2014-05-10 | 2014-06-07 | DUKHCONI1BZ1STGL5255 SS+7d, DUKHCONI1BZ1ELGL5230 | 68d | 15d | LABOR- SUBCONTRACTOR [222 h]; ELECTRICIANS SK [817.6 h]; CABLE QTY [725 lm] | 16,658.75 | 35 | 1BP1STFR35 | DUKHCON1BP1STGL5260 | DUKHCONI1BZ1STGL5260 | DH | CON | 1BF | Z1 | FR | ST | B05 | B05-D09 | RES-1B |

Notes:
- DUKHCONI1BZ1WSGL5155: Expenses: I1B-Water supply system 7487
- DUKHCONI1BZ1WSGL5160: Expenses: I1B-Water supply system 59693
- DUKHCONI1BZ1WSGL5165: Expenses: I1B-Water supply system 5833.5
- DUKHCONI1BZ1WSGL5170: Expenses: I1B-Water supply system 1871.75
- DUKHCONI1BZ1WSGL5175: Expenses: I1B-Water supply system 2129.5
- DUKHCONI1BZ1WSGL5180: Expenses: I1B-Water supply system 13321.5
- DUKHCONI1BZ1FFGL5185: Expenses: I1B-Water supply system 16482.5
- DUKHCONI1BZ1FFGL5190: Expenses: I1B-Water supply system 24118.5
- DUKHCONI1BZ1FFGL5195: Expenses: I1B-Water supply system 1930
- DUKHCONI1BZ1FFGL5200: Expenses: I1B-Water supply system 4120.5
- DUKHCONI1BZ1FFGL5205: Expenses: I1B-Water supply system 1490.5
- DUKHCONI1BZ1FFGL5210: Expenses: I1B-Water supply system 6453.25
- DUKHCONI1BZ1ELGL5215: Expenses: I1B-Electrical power supply and distribution 15897.8
- DUKHCONI1BZ1ELGL5220: Expenses: I1B-Electrical power supply and distribution 1166244
- DUKHCONI1BZ1ELGL5225: Expenses: I1B-Electrical power supply and distribution 6812.75
- DUKHCONI1BZ1ELGL5230: Expenses: I1B-Electrical power supply and distribution 82371.8
- DUKHCONI1BZ1STGL5235: Expenses: I1B-Street lighting 2909.75
- DUKHCONI1BZ1STGL5240: Expenses: I1B-Street lighting 79726.2
- DUKHCONI1BZ1STGL5245: Expenses: I1B-Street lighting 27122.5
- DUKHCONI1BZ1STGL5250: Expenses: I1B-Street lighting 2909.75
- DUKHCONI1BZ1STGL5255: Expenses: I1B-Street lighting 369148
- DUKHCONI1BZ1STGL5260: Expenses: I1B-Street lighting 16658.8

| ID | WBS | Activity | Duration | Start | Finish | Predecessors | Total float | Free float | Resources | Cost | CODE | P3 ACTID | P6 ID (old) | NP61D | PROJECT | PHASES | PACKAGE | PART | ELEMENTS | STEP | BILL NOS | BILL DIVISION | RES PACK |
| --- | --- | --- | --- | --- | --- | --- | --- | --- | --- | --- | --- | --- | --- | --- | --- | --- | --- | --- | --- | --- | --- | --- | --- |
|  | 40 | **IRRIGATION LINES** |  | 2014-04-28 | 2014-07-02 |  |  |  |  |  |  |  |  |  |  |  |  |  |  |  |  |  |  |
| DUKHCONI1BZ1IRGL5265 |  | Excavation for irrigation line | 25d | 2014-04-28 | 2014-05-26 | DUKHCONI1BZ1ELGL5225, DUKHENGI1BDWIRAP4710 | -4d | 0d | LABOR- SUBCONTRACTOR [498 h]; EXCAVATION QTY [822 Cum]; LOADER [125 h]; POCLAIN [250 h]; TRUCK [125 h]; EQUIP OPERATORS [500 h] | 13,674.5 | 10 | 1BP1IRFR10 | DUKHCON1BP1IRGL5265 | DUKHCONI1BZ1IRGL5265 | DH | CON | 1BF | Z1 | FR | IR | B05 | B05-D07 | RES-1B |
| DUKHCONI1BZ1IRGL5270 |  | Laying of irrigationline | 25d | 2014-05-04 | 2014-06-01 | DUKHCONI1BZ1IRGL5265 SS+5d | -4d | 0d | LABOR- SUBCONTRACTOR [126 h]; MECHANICALS SK [226.8 h]; IRRIGATION PIPES QTY [822 lm] | 8,538.25 | 15 | 1BP1IRFR15 | DUKHCON1BP1IRGL5270 | DUKHCONI1BZ1IRGL5270 | DH | CON | 1BF | Z1 | FR | IR | B05 | B05-D07 | RES-1B |
| DUKHCONI1BZ1IRGL5275 |  | Testing of irrigation line | 25d | 2014-05-10 | 2014-06-07 | DUKHCONI1BZ1IRGL5270 SS+5d | -4d | 0d | LABOR- SUBCONTRACTOR [102 h]; MECHANICALS SK [183.6 h]; DRAINAGE PIPES TEST QTY [822 lm] | 1,219.25 | 20 | 1BP1IRFR20 | DUKHCON1BP1IRGL5275 | DUKHCONI1BZ1IRGL5275 | DH | CON | 1BF | Z1 | FR | IR | B05 | B05-D07 | RES-1B |
| DUKHCONI1BZ1IRGL5280 |  | Backfilling irrigation line | 25d | 2014-05-15 | 2014-06-12 | DUKHCONI1BZ1IRGL5275 SS+5d | -4d | 0d | LABOR- SUBCONTRACTOR [156 h]; BACKFILLING QTY [642 Cum]; BOBCAT [250 h]; PLATE COMPACTOR [250 h]; TRUCK [50 h]; EQUIP OPERATORS [550 h] | 3,419 | 25 | 1BP1IRFR25 | DUKHCON1BP1IRGL5280 | DUKHCONI1BZ1IRGL5280 | DH | CON | 1BF | Z1 | FR | IR | B05 | B05-D07 | RES-1B |
| DUKHCONI1BZ1IRGL5285 |  | Construction of Thrust Blocks,Pull boxes | 25d | 2014-05-27 | 2014-06-24 | DUKHCONI1BZ1ELGL5225 SS+10d, DUKHCONI1BZ1IRGL5280 FF+10d | 11d | 0d | LABOR- SUBCONTRACTOR [36 h]; ELECTRICIANS SK [33.6 h]; THRUST BLOCKS QTY [3 ea]; PULL BOX QTY [10 ea]; PULL BOX SK [80 h] | 10,378.75 | 30 | 1BP1IRFR30 | DUKHCON1BP1IRGL5285 | DUKHCONI1BZ1IRGL5285 | DH | CON | 1BF | Z1 | FR | IR | B05 | B05-D07 | RES-1B |
| DUKHCONI1BZ1IRGL5290 |  | Irrigation Fittings (Nozzle,Values) | 25d | 2014-06-04 | 2014-07-02 | DUKHCONI1BZ1IRGL5280 SS+10d, DUKHCONI1BZ1IRGL5285 SS+7d | 11d |  | LABOR- SUBCONTRACTOR [126 h]; MECHANICALS SK [226.8 h]; CHAMPER QTY [81 lm] | 26,420.5 | 35 | 1BP1IRFR35 | DUKHCON1BP1IRGL5290 | DUKHCONI1BZ1IRGL5290 | DH | CON | 1BF | Z1 | FR | IR | B05 | B05-D07 | RES-1B |
|  | 45 | **TELECOMMUNICATION LINES** |  | 2014-04-08 | 2014-05-24 |  |  |  |  |  |  |  |  |  |  |  |  |  |  |  |  |  |  |
| DUKHCONI1BZ1TCGL5295 |  | Excavation Telecommunication trenches | 20d | 2014-04-08 | 2014-04-30 | DUKHENGI1BDWTCAP4700, DUKHCONI1BZ1STGL5250 SS+10d | -11d | 0d | LABOR- SUBCONTRACTOR [156 h]; EXCAVATION QTY [255 Cum]; LOADER [50 h]; POCLAIN [100 h]; TRUCK [50 h]; EQUIP OPERATORS [200 h] | 9,762.25 | 10 | 1BP1TCFR10 | DUKHCON1BP1TCGL5295 | DUKHCONI1BZ1TCGL5295 | DH | CON | 1BF | Z1 | FR | TC | B05 | B05-D05 | RES-1B |
| DUKHCONI1BZ1TCGL5300 |  | Laying of cables | 20d | 2014-04-14 | 2014-05-06 | DUKHCONI1BZ1TCGL5295 SS+5d | -11d | 0d | LABOR- SUBCONTRACTOR [156 h]; ELECTRICIANS SK [571.2 h]; CABLE QTY [510 lm] | 2,142 | 15 | 1BP1TCFR15 | DUKHCON1BP1TCGL5300 | DUKHCONI1BZ1TCGL5300 | DH | CON | 1BF | Z1 | FR | TC | B05 | B05-D05 | RES-1B |
| DUKHCONI1BZ1TCGL5305 |  | Backfilling telecommunication trench | 20d | 2014-04-20 | 2014-05-12 | DUKHCONI1BZ1TCGL5300 SS+5d | -11d | 0d | LABOR- SUBCONTRACTOR [66 h]; BACKFILLING QTY [255 Cum]; BOBCAT [100 h]; PLATE COMPACTOR [100 h]; TRUCK [20 h]; EQUIP OPERATORS [220 h] | 4,183.75 | 20 | 1BP1TCFR20 | DUKHCON1BP1TCGL5305 | DUKHCONI1BZ1TCGL5305 | DH | CON | 1BF | Z1 | FR | TC | B05 | B05-D05 | RES-1B |
| DUKHCONI1BZ1TCGL5310 |  | Connection & Installation | 20d | 2014-05-01 | 2014-05-24 | DUKHCONI1BZ1TCGL5305 SS+10d | 80d | 20d | LABOR- SUBCONTRACTOR [36 h]; ELECTRICIANS SK [235.2 h]; TELEPHONE SOCKETS QTY [21 ea] | 60,781.25 | 25 | 1BP1TCFR25 | DUKHCON1BP1TCGL5310 | DUKHCONI1BZ1TCGL5310 | DH | CON | 1BF | Z1 | FR | TC | B05 | B05-D05 | RES-1B |
|  | 50 | **BOUNDARY WALL** |  | 2014-04-08 | 2014-07-02 |  |  |  |  |  |  |  |  |  |  |  |  |  |  |  |  |  |  |
| DUKHCONI1BZ1BWGL5315 |  | Construction of Boundary Wall (Ht-3m) | 25d | 2014-04-08 | 2014-05-06 | DUKHCONI1BZ1STGL5250 SS+10d, DUKHENGI1BDWBWAP4730 | 14d | 0d | STEEL FIXERS SK [112 h]; LABOR- SUBCONTRACTOR [84 h]; BOUNDARY WIRE MESH QTY [275 Sqm] | 405,782 | 10 | 1BP1BWFR10 | DUKHCON1BP1ARGL5315 | DUKHCONI1BZ1BWGL5315 | DH | CON | 1BF | Z1 | FR | BW | B05 | B05-D10 | RES-1B |
| DUKHCONI1BZ1BWGL5320 |  | Install.Steel Gate,Entance Barrier (3m Wall) | 25d | 2014-04-24 | 2014-05-22 | DUKHCONI1BZ1BWGL5315 SS+14d | 14d | 0d | LABOR- SUBCONTRACTOR [6 h]; GATE QTY [1 ea]; GATE ERECTOR SK [8 h] | 5,703.5 | 15 | 1BP1BWFR15 | DUKHCON1BP1ARGL5320 | DUKHCONI1BZ1BWGL5320 | DH | CON | 1BF | Z1 | FR | BW | B05 | B05-D10 | RES-1B |
| DUKHCONI1BZ1BWGL5325 |  | Const. of Villa Front Boundary Wall (Ht-2m) | 25d | 2014-05-24 | 2014-06-21 | DUKHCONI1BZ1BWGL5315 SS+5d, DUKHCONI1BZ1BWGL5320 | 14d | 0d | STEEL FIXERS SK [80 h]; LABOR- SUBCONTRACTOR [60 h]; BOUNDARY WIRE MESH QTY [188 Sqm] | 213,900 | 20 | 1BP1BWFR20 | DUKHCON1BP1ARGL5325 | DUKHCONI1BZ1BWGL5325 | DH | CON | 1BF | Z1 | FR | BW | B05 | B05-D10 | RES-1B |
| DUKHCONI1BZ1BWGL5330 |  | Const. of Blockwork fence Wall (Ht-1.85m) | 25d | 2014-06-04 | 2014-07-02 | DUKHCONI1BZ1BWGL5325 SS+10d | 77d | 15d | STEEL FIXERS SK [80 h]; LABOR- SUBCONTRACTOR [60 h]; BOUNDARY WIRE MESH QTY [201 Sqm] | 239,825 | 30 | 1BP1BWFR30 | DUKHCON1BP1ARGL5330 | DUKHCONI1BZ1BWGL5330 | DH | CON | 1BF | Z1 | FR | BW | B05 | B05-D10 | RES-1B |
|  | 55 | **ROAD WORKS** |  | 2014-05-13 | 2014-07-27 |  |  |  |  |  |  |  |  |  |  |  |  |  |  |  |  |  |  |
| DUKHCONI1BZ1RWGL6000 |  | Excavation & Earth Filling | 10d | 2014-05-13 | 2014-05-24 | DUKHCONI1BZ1STGL5250, DUKHCONI1BZ1TCGL5305, DUKHCONI1BZ1FFGL5200, DUKHCONI1BZ1ELGL5225, DUKHENGI1BDWBWAP4730, DUKHCONI1BZ1FFGL5210, DUKHCONI1BZ1SAGL5150 | -11d | 0d | LABOR- SUBCONTRACTOR [750 h]; EXCAVATION QTY [977 Cum]; BACKFILLING QTY [676 Cum]; LOADER [100 h]; POCLAIN [200 h]; TRUCK [100 h]; EQUIP OPERATORS [400 h] | 112,697.5 | 10 | 1BP1RDFR10 | DUKHCON1BP1RDGL6000 | DUKHCONI1BZ1RWGL6000 | DH | CON | 1BF | Z1 | FR | RD | B05 | B05-D08 | RES-1B |
| DUKHCONI1BZ1RWGL6005 |  | Laying of Sub Grade | 25d | 2014-05-25 | 2014-06-22 | DUKHCONI1BZ1RWGL6000 | -11d | 0d | SUBGRADE QTY [383 Sqm]; LABOR- SUBCONTRACTOR [24 h] | 117,466 | 15 | 1BP1RDFR15 | DUKHCON1BP1RDGL6005 | DUKHCONI1BZ1RWGL6005 | DH | CON | 1BF | Z1 | FR | RD | B05 | B05-D08 | RES-1B |
| DUKHCONI1BZ1RWGL6010 |  | Laying of Precast Kerbs | 25d | 2014-06-05 | 2014-07-03 | DUKHCONI1BZ1RWGL6005 SS+10d | -11d | 0d | LABOR- SUBCONTRACTOR [24 h]; GRANULAR SUBBASE QTY [383 Sqm] | 112,124.25 | 20 | 1BP1RDFR20 | DUKHCON1BP1RDGL6010 | DUKHCONI1BZ1RWGL6010 | DH | CON | 1BF | Z1 | FR | RD | B05 | B05-D08 | RES-1B |
| DUKHCONI1BZ1RWGL6015 |  | Laying of Granular Sub Base Coarse | 20d | 2014-06-17 | 2014-07-09 | DUKHCONI1BZ1RWGL6010 SS+10d | -11d | 0d | KERBSTONE MASON SK [784 h]; LABOR- SUBCONTRACTOR [444 h]; KERBSTONE QTY [491 lm]; EDGE STONE QTY [491 Sqm]; HEAVY ROLLER [400 h]; LOADER [100 h]; TRUCK [100 h]; EQUIP OPERATORS [600 h] | 58,733 | 25 | 1BP1RDFR25 | DUKHCON1BP1RDGL6015 | DUKHCONI1BZ1RWGL6015 | DH | CON | 1BF | Z1 | FR | RD | B05 | B05-D08 | RES-1B |
| DUKHCONI1BZ1RWGL6020 |  | Laying of Road Base Asphalt Concrete | 5d | 2014-07-10 | 2014-07-15 | DUKHCONI1BZ1RWGL6015 | 41d | 0d | LABOR- SUBCONTRACTOR [24 h]; ASPHALT CONCRETE QTY [1913 Cum]; ASPHALT PAVER MACHINE [50 h]; HAND ROLLER [100 h]; EQUIP OPERATORS [150 h] | 149,434.75 | 30 | 1BP1RDFR30 | DUKHCON1BP1RDGL6020 | DUKHCONI1BZ1RWGL6020 | DH | CON | 1BF | Z1 | FR | RD | B05 | B05-D08 | RES-1B |
| DUKHCONI1BZ1RWGL6025 |  | Laying of Asphalt Wearing Coarse | 5d | 2014-07-16 | 2014-07-21 | DUKHCONI1BZ1RWGL6020 | 56d | 0d | LABOR- SUBCONTRACTOR [24 h]; ASPHALT WEARING COURSE QTY [1913 Sqm]; ASPHALT PAVER MACHINE [50 h]; HAND ROLLER [100 h]; EQUIP OPERATORS [150 h] | 77,849 | 35 | 1BP1RDFR35 | DUKHCON1BP1RDGL6025 | DUKHCONI1BZ1RWGL6025 | DH | CON | 1BF | Z1 | FR | RD | B05 | B05-D08 | RES-1B |
| DUKHCONI1BZ1RWGL6030 |  | Traffic Signage & Road Marking | 5d | 2014-07-22 | 2014-07-27 | DUKHCONI1BZ1RWGL6025 | 56d | 15d | LABOR- SUBCONTRACTOR [330 h]; STEEL ERECTOR SK [400 h]; TRAFFIC SIGN QTY [249 ea]; ROAD MARKING QTY [92 lm]; ASPHALT SK [152 h] | 79,931 | 40 | 1BP1RDFR40 | DUKHCON1BP1RDGL6030 | DUKHCONI1BZ1RWGL6030 | DH | CON | 1BF | Z1 | FR | RD | B05 | B05-D08 | RES-1B |

Notes:
- DUKHCONI1BZ1IRGL5265: Expenses: I1B-Water supply system 13674.5
- DUKHCONI1BZ1IRGL5270: Expenses: I1B-Water supply system 8538.25
- DUKHCONI1BZ1IRGL5275: Expenses: I1B-Water supply system 1219.25
- DUKHCONI1BZ1IRGL5280: Expenses: I1B-Water supply system 3419
- DUKHCONI1BZ1IRGL5285: Expenses: I1B-Water supply system 10378.8
- DUKHCONI1BZ1IRGL5290: Expenses: I1B-Water supply system 26420.5
- DUKHCONI1BZ1TCGL5295: Expenses: I1B-Telecommunication 9762.25
- DUKHCONI1BZ1TCGL5300: Expenses: I1B-Telecommunication 2142
- DUKHCONI1BZ1TCGL5305: Expenses: I1B-Telecommunication 4183.75
- DUKHCONI1BZ1TCGL5310: Expenses: I1B-Telecommunication 60781.2
- DUKHCONI1BZ1BWGL5315: Expenses: I1B-Hard and soft landscaping 405782
- DUKHCONI1BZ1BWGL5320: Expenses: I1B-Hard and soft landscaping 5703.5
- DUKHCONI1BZ1BWGL5325: Expenses: I1B-Hard and soft landscaping 213900
- DUKHCONI1BZ1BWGL5330: Expenses: I1B-Hard and soft landscaping 239825
- DUKHCONI1BZ1RWGL6000: Expenses: I1B-Road work 112698
- DUKHCONI1BZ1RWGL6005: Expenses: I1B-Road work 117466
- DUKHCONI1BZ1RWGL6010: Expenses: I1B-Road work 112124
- DUKHCONI1BZ1RWGL6015: Expenses: I1B-Road work 58733
- DUKHCONI1BZ1RWGL6020: Expenses: I1B-Road work 149435
- DUKHCONI1BZ1RWGL6025: Expenses: I1B-Road work 77849
- DUKHCONI1BZ1RWGL6030: Expenses: I1B-Road work 79931

| ID | WBS | Activity | Duration | Start | Finish | Predecessors | Total float | Free float | Resources | Cost | CODE | P3 ACTID | P6 ID (old) | NP61D | PROJECT | PHASES | PACKAGE | PART | ELEMENTS | STEP | BILL NOS | BILL DIVISION | RES PACK |
| --- | --- | --- | --- | --- | --- | --- | --- | --- | --- | --- | --- | --- | --- | --- | --- | --- | --- | --- | --- | --- | --- | --- | --- |
|  | 60 | **PARKING SHED** |  | 2014-06-23 | 2014-08-23 |  |  |  |  |  |  |  |  |  |  |  |  |  |  |  |  |  |  |
| DUKHCONI1BZ1PSGL7000 |  | Excavation | 15d | 2014-06-23 | 2014-07-09 | DUKHCONI1BZ1RWGL6015 SS+5d, DUKHENGI1BDWPSAP4740 | 46d | 5d | LABOR- SUBCONTRACTOR [72 h]; EXCAVATION QTY [120 Cum]; LOADER [23 h]; POCLAIN [45 h]; TRUCK [23 h]; EQUIP OPERATORS [91 h] | 26,553.5 | 10 | 1BP1PSFR10 | DUKHCON1BP1PSGL7000 | DUKHCONI1BZ1PSGL7000 | DH | CON | 1BF | Z1 | FR | PS | B05 | B05-D08 | RES-1B |
| DUKHCONI1BZ1PSGL7005 |  | Foundation casting | 15d | 2014-07-05 | 2014-07-21 | DUKHCONI1BZ1PSGL7000 FF+5d, DUKHCONI1BZ1RWGL6015 FF+10d, DUKHCONI1BZ1PSGL7000 SS+5d | 41d | 0d | CONCRETE QTY [12 Cum]; STEEL FIXERS SK [96 h]; CARPENTERS SK [56 h]; CONCRETE MASON SK [24 h]; LABOR- SUBCONTRACTOR [126 h]; REINFORCEMENT BARS QTY [1120 kg]; FORMWORK QTY [27 Sqm] | 26,553.5 | 15 | 1BP1PSFR15 | DUKHCON1BP1PSGL7005 | DUKHCONI1BZ1PSGL7005 | DH | CON | 1BF | Z1 | FR | PS | B05 | B05-D08 | RES-1B |
| DUKHCONI1BZ1PSGL7010 |  | Column, Frame& Fabrics Erection | 25d | 2014-07-16 | 2014-08-17 | DUKHCONI1BZ1BWGL5330 FF, DUKHCONI1BZ1RWGL6020, DUKHCONI1BZ1RWGL6030 FF, DUKHCONI1BZ1PSGL7005 SS+10d | 41d | 0d | LABOR- SUBCONTRACTOR [114 h]; STEEL ERECTOR SK [200 h]; PARKING SHED QTY [614 ea] | 132,765.25 | 20 | 1BP1PSFR20 | DUKHCON1BP1PSGL7010 | DUKHCONI1BZ1PSGL7010 | DH | CON | 1BF | Z1 | FR | PS | B05 | B05-D08 | RES-1B |
| DUKHCONI1BZ1PSGL7015 |  | Electrical Works-Parking Shed | 25d | 2014-07-22 | 2014-08-23 | DUKHCONI1BZ1STGL5260, DUKHCONI1BZ1PSGL7010 SS+5d | 41d | 15d | ELECTRICIANS SK [33.6 h]; LIGHTS QTY [13 ea]; LABOR- SUBCONTRACTOR [18 h] | 13,276.75 | 25 | 1BP1PSFR25 | DUKHCON1BP1PSGL7015 | DUKHCONI1BZ1PSGL7015 | DH | CON | 1BF | Z1 | FR | PS | B05 | B05-D08 | RES-1B |
|  | 65 | **HARD LANDSCAPING** |  | 2014-05-13 | 2014-08-05 |  |  |  |  |  |  |  |  |  |  |  |  |  |  |  |  |  |  |
| DUKHCONI1BZ1HDGL7020 |  | Precast Concrete Kerbs works | 20d | 2014-05-13 | 2014-06-04 | DUKHENGI1BDWSLAP4720, DUKHCONI1BZ1RWGL6000 SS | 0d |  | KERBSTONE MASON SK [512 h]; LABOR- SUBCONTRACTOR [288 h]; KERBSTONE QTY [633 lm] | 75,770 | 10 | 1BP1HDFR10 | DUKHCON1BP1HDGL7020 | DUKHCONI1BZ1HDGL7020 | DH | CON | 1BF | Z1 | FR | HD | B05 | B05-D10 | RES-1B |
| DUKHCONI1BZ1HDGL7025 |  | Interlocking for Walkways | 25d | 2014-05-25 | 2014-06-22 | DUKHCONI1BZ1HDGL7020 SS+10d | 0d |  | INTERLOCK MASON SK [592 h]; LABOR- SUBCONTRACTOR [222 h]; INTERLOCK QTY [736 Sqm] | 88,099 | 15 | 1BP1HDFR15 | DUKHCON1BP1HDGL7025 | DUKHCONI1BZ1HDGL7025 | DH | CON | 1BF | Z1 | FR | HD | B05 | B05-D10 | RES-1B |
| DUKHCONI1BZ1HDGL7030 |  | Construction of Retaining wall | 25d | 2014-06-05 | 2014-07-03 | DUKHCONI1BZ1HDGL7025 SS+10d | 0d |  | STEEL FIXERS SK [520 h]; CARPENTERS SK [1208 h]; CONCRETE MASON SK [160 h]; LABOR- SUBCONTRACTOR [1452 h]; EXCAVATION QTY [62 Cum]; REINFORCEMENT BARS QTY [6503 kg]; FORMWORK QTY [603 Sqm]; CONCRETE QTY [77 Cum] | 105,489.75 | 20 | 1BP1HDFR20 | DUKHCON1BP1HDGL7030 | DUKHCONI1BZ1HDGL7030 | DH | CON | 1BF | Z1 | FR | HD | B05 | B05-D10 | RES-1B |
| DUKHCONI1BZ1HDGL7035 |  | Construction of Wash Stone Boulders | 25d | 2014-06-05 | 2014-07-03 | DUKHCONI1BZ1HDGL7030 SS | 0d |  | TILE MASON SK [16 h]; LABOR- SUBCONTRACTOR [6 h]; STONE BOULDERS QTY [5 Sqm] | 22,800 | 25 | 1BP1HDFR25 | DUKHCON1BP1HDGL7035 | DUKHCONI1BZ1HDGL7035 | DH | CON | 1BF | Z1 | FR | HD | B05 | B05-D10 | RES-1B |
| DUKHCONI1BZ1HDGL7040 |  | Construction of Speed Humps | 10d | 2014-07-22 | 2014-08-05 | DUKHCONI1BZ1RWGL6025, DUKHCONI1BZ1HDGL7035 SS | 80d | 30d | CONCRETE MASON SK [8 h]; LABOR- SUBCONTRACTOR [6 h]; SPEED HUMPS [3 ea] | 3,206 | 30 | 1BP1HDFR30 | DUKHCON1BP1HDGL7040 | DUKHCONI1BZ1HDGL7040 | DH | CON | 1BF | Z1 | FR | HD | B05 | B05-D10 | RES-1B |
|  | 70 | **SOFT LANDSCAPING** |  | 2014-06-17 | 2014-08-11 |  |  |  |  |  |  |  |  |  |  |  |  |  |  |  |  |  |  |
| DUKHCONI1BZ1SLGL7200 |  | Excavation | 25d | 2014-06-17 | 2014-07-15 | DUKHCONI1BZ1IRGL5290 SS, DUKHCONI1BZ1HDGL7035 SS+10d, DUKHENGI1BDWSLAP4720 | 0d |  | LABOR- SUBCONTRACTOR [426 h]; EXCAVATION QTY [704 Cum]; LOADER [125 h]; POCLAIN [250 h]; TRUCK [125 h]; EQUIP OPERATORS [500 h] | 47,004.5 | 10 | 1BP1SLFR10 | DUKHCON1BP1SLGL7200 | DUKHCONI1BZ1SLGL7200 | DH | CON | 1BF | Z1 | FR | SL | B05 | B05-D10 | RES-1B |
| DUKHCONI1BZ1SLGL7205 |  | Sweet Soil Laying | 25d | 2014-06-29 | 2014-07-27 | DUKHCONI1BZ1SLGL7200 SS+10d | 0d |  | LABOR- SUBCONTRACTOR [1758 h]; SWEET SOIL QTY [3517 Cum]; LANDSCAPING SK [2344 h] | 266,359.5 | 15 | 1BP1SLFR15 | DUKHCON1BP1SLGL7205 | DUKHCONI1BZ1SLGL7205 | DH | CON | 1BF | Z1 | FR | SL | B05 | B05-D10 | RES-1B |
| DUKHCONI1BZ1SLGL7210 |  | Plantation works | 25d | 2014-07-10 | 2014-08-11 | DUKHCONI1BZ1SLGL7205 SS+10d | 30d | 15d | LABOR- SUBCONTRACTOR [312 h]; PLAM TREES QTY [18 ea]; LANDSCAPING SK [416 h]; GROUND COVER QTY [3335 Sqm]; SHRUBS QTY [92 ea] | 141,533 | 20 | 1BP1SLFR20 | DUKHCON1BP1SLGL7210 | DUKHCONI1BZ1SLGL7210 | DH | CON | 1BF | Z1 | FR | SL | B05 | B05-D10 | RES-1B |
|  | 15 | **ZONE - 2** |  | 2014-01-19 | 2014-10-08 |  |  |  |  |  |  |  |  |  |  |  |  |  |  |  |  |  |  |
|  | 10 | **INFRASTRUCTURE WORKS** |  | 2014-01-19 | 2014-10-08 |  |  |  |  |  |  |  |  |  |  |  |  |  |  |  |  |  |  |
|  | 10 | **DRAINAGE LINES** |  | 2014-01-19 | 2014-03-10 |  |  |  |  |  |  |  |  |  |  |  |  |  |  |  |  |  |  |
| DUKHCONI1BZ2DRGL5115 |  | Excavation for Drainage line | 25d | 2014-01-19 | 2014-02-17 | DUKHCONI1BZ1DRGL5130 SS+7d | -6d | 0d | LABOR- SUBCONTRACTOR [168 h]; EXCAVATION QTY [278 Cum]; LOADER [63 h]; POCLAIN [125 h]; TRUCK [63 h]; EQUIP OPERATORS [251 h] | 11,124 | 10 | 1BP2DRFR10 | DUKHCON1BP2DRGL5115 | DUKHCONI1BZ2DRGL5115 | DH | CON | 1BF | Z2 | FR | DR | B05 | B05-D06 | RES-1B |
| DUKHCONI1BZ2DRGL5120 |  | Laying of Drainage line | 25d | 2014-01-26 | 2014-02-24 | DUKHCONI1BZ2DRGL5115 SS+6d, DUKHCONI1BZ2DRGL5115 FF+6d | -6d | 0d | LABOR- SUBCONTRACTOR [60 h]; MECHANICALS SK [205.2 h]; DRAINAGE PIPES QTY [376 lm] | 29,454.5 | 15 | 1BP2DRFR15 | DUKHCON1BP2DRGL5120 | DUKHCONI1BZ2DRGL5120 | DH | CON | 1BF | Z2 | FR | DR | B05 | B05-D06 | RES-1B |
| DUKHCONI1BZ2DRGL5125 |  | Testing of Drainage line | 25d | 2014-02-03 | 2014-03-04 | DUKHCONI1BZ2DRGL5120 SS+7d, DUKHCONI1BZ2DRGL5120 FF+7d | -6d | 0d | LABOR- SUBCONTRACTOR [48 h]; MECHANICALS SK [86.4 h]; DRAINAGE PIPES TEST QTY [376 lm] | 3,272.75 | 20 | 1BP2DRFR20 | DUKHCON1BP2DRGL5125 | DUKHCONI1BZ2DRGL5125 | DH | CON | 1BF | Z2 | FR | DR | B05 | B05-D06 | RES-1B |
| DUKHCONI1BZ2DRGL5130 |  | Backfilling Drainage line | 15d | 2014-02-22 | 2014-03-10 | DUKHCONI1BZ2DRGL5125 FF+5d, DUKHCONI1BZ2DRGL5125 SS+10d | -6d | 0d | LABOR- SUBCONTRACTOR [66 h]; BACKFILLING QTY [278 Cum]; BOBCAT [113 h]; PLATE COMPACTOR [113 h]; TRUCK [23 h]; EQUIP OPERATORS [249 h] | 12,335.5 | 25 | 1BP2DRFR25 | DUKHCON1BP2DRGL5130 | DUKHCONI1BZ2DRGL5130 | DH | CON | 1BF | Z2 | FR | DR | B05 | B05-D06 | RES-1B |
|  | 15 | **MANHOLES & SOAKAWAY** |  | 2014-02-22 | 2014-05-13 |  |  |  |  |  |  |  |  |  |  |  |  |  |  |  |  |  |  |
| DUKHCONI1BZ2SAGL5135 |  | Construction of manholes Drainage | 25d | 2014-02-22 | 2014-03-22 | DUKHCONI1BZ1SAGL5135, DUKHCONI1BZ2DRGL5115, DUKHCONI1BZ2DRGL5130 FF+10d | 53d | 10d | LABOR- SUBCONTRACTOR [6 h]; EXCAVATION QTY [9 Cum] | 31,914.5 | 10 | 1BP2SAFR10 | DUKHCON1BP2SAGL5135 | DUKHCONI1BZ2SAGL5135 | DH | CON | 1BF | Z2 | FR | SA | B05 | B05-D06 | RES-1B |
| DUKHCONI1BZ2SAGL5140 |  | Construction of soakaways | 25d | 2014-02-22 | 2014-03-22 | DUKHCONI1BZ2DRGL5130 FF+10d, DUKHCONI1BZ2DRGL5115 | -6d | 0d | MANHOLES SK [136 h]; LABOR- SUBCONTRACTOR [54 h]; SOAKPIT QTY [17 ea] | 223,920 | 15 | 1BP2SAFR15 | DUKHCON1BP2SAGL5140 | DUKHCONI1BZ2SAGL5140 | DH | CON | 1BF | Z2 | FR | SA | B05 | B05-D06 | RES-1B |
| DUKHCONI1BZ2SAGL5145 |  | Construction of Road gullies | 25d | 2014-03-23 | 2014-04-20 | DUKHCONI1BZ2SAGL5140, DUKHCONI1BZ1SAGL5145 | -6d | 0d | ROAD GULLY QTY [16 ea]; MANHOLES SK [128 h]; LABOR- SUBCONTRACTOR [48 h] | 33,092.5 | 20 | 1BP2SAFR20 | DUKHCON1BP2SAGL5145 | DUKHCONI1BZ2SAGL5145 | DH | CON | 1BF | Z2 | FR | SA | B05 | B05-D06 | RES-1B |
| DUKHCONI1BZ2SAGL5150 |  | Connection with existing sewer manhole | 20d | 2014-04-21 | 2014-05-13 | DUKHCONI1BZ2SAGL5135, DUKHCONI1BZ2SAGL5145 | 28d | 39d | LABOR- SUBCONTRACTOR [6 h]; BACKFILLING QTY [9 Cum] | 2,838.25 | 25 | 1BP2SAFR25 | DUKHCON1BP2SAGL5150 | DUKHCONI1BZ2SAGL5150 | DH | CON | 1BF | Z2 | FR | SA | B05 | B05-D06 | RES-1B |

Notes:
- DUKHCONI1BZ1PSGL7000: Expenses: I1B-Road work 26553.5
- DUKHCONI1BZ1PSGL7005: Expenses: I1B-Road work 26553.5
- DUKHCONI1BZ1PSGL7010: Expenses: I1B-Road work 132765
- DUKHCONI1BZ1PSGL7015: Expenses: I1B-Road work 13276.8
- DUKHCONI1BZ1HDGL7020: Expenses: I1B-Hard and soft landscaping 75770
- DUKHCONI1BZ1HDGL7025: Expenses: I1B-Hard and soft landscaping 88099
- DUKHCONI1BZ1HDGL7030: Expenses: I1B-Hard and soft landscaping 105490
- DUKHCONI1BZ1HDGL7035: Expenses: I1B-Hard and soft landscaping 22800
- DUKHCONI1BZ1HDGL7040: Expenses: I1B-Hard and soft landscaping 3206
- DUKHCONI1BZ1SLGL7200: Expenses: I1B-Hard and soft landscaping 47004.5
- DUKHCONI1BZ1SLGL7205: Expenses: I1B-Hard and soft landscaping 266360
- DUKHCONI1BZ1SLGL7210: Expenses: I1B-Hard and soft landscaping 141533
- DUKHCONI1BZ2DRGL5115: Expenses: I1B-Surface Water drainage and Sewerage system 11124
- DUKHCONI1BZ2DRGL5120: Expenses: I1B-Surface Water drainage and Sewerage system 29454.5
- DUKHCONI1BZ2DRGL5125: Expenses: I1B-Surface Water drainage and Sewerage system 3272.75
- DUKHCONI1BZ2DRGL5130: Expenses: I1B-Surface Water drainage and Sewerage system 12335.5
- DUKHCONI1BZ2SAGL5135: Expenses: I1B-Surface Water drainage and Sewerage system 31914.5
- DUKHCONI1BZ2SAGL5140: Expenses: I1B-Surface Water drainage and Sewerage system 223920
- DUKHCONI1BZ2SAGL5145: Expenses: I1B-Surface Water drainage and Sewerage system 33092.5
- DUKHCONI1BZ2SAGL5150: Expenses: I1B-Surface Water drainage and Sewerage system 2838.25

| ID | WBS | Activity | Duration | Start | Finish | Predecessors | Total float | Free float | Resources | Cost | CODE | P3 ACTID | P6 ID (old) | NP61D | PROJECT | PHASES | PACKAGE | PART | ELEMENTS | STEP | BILL NOS | BILL DIVISION | RES PACK |
| --- | --- | --- | --- | --- | --- | --- | --- | --- | --- | --- | --- | --- | --- | --- | --- | --- | --- | --- | --- | --- | --- | --- | --- |
|  | 20 | **WATER SUPPLY SYSTEM** |  | 2014-03-11 | 2014-05-25 |  |  |  |  |  |  |  |  |  |  |  |  |  |  |  |  |  |  |
| DUKHCONI1BZ2WSGL5155 |  | Excavation for water line | 25d | 2014-03-11 | 2014-04-08 | DUKHCONI1BZ2DRGL5130 SS+10d, DUKHCONI1BZ1WSGL5170 | -11d | 0d | LABOR- SUBCONTRACTOR [174 h]; EXCAVATION QTY [284 Cum]; LOADER [63 h]; POCLAIN [125 h]; TRUCK [63 h]; EQUIP OPERATORS [251 h] | 7,487 | 10 | 1BP2WSFR10 | DUKHCON1BP2WSGL5155 | DUKHCONI1BZ2WSGL5155 | DH | CON | 1BF | Z2 | FR | WS | B05 | B05-D07 | RES-1B |
| DUKHCONI1BZ2WSGL5160 |  | Laying of water line | 25d | 2014-03-17 | 2014-04-14 | DUKHCONI1BZ2WSGL5155 SS+5d | -11d | 0d | LABOR- SUBCONTRACTOR [114 h]; MECHANICALS SK [205.2 h]; WATER PIPES QTY [284 lm] | 59,693 | 15 | 1BP2WSFR15 | DUKHCON1BP2WSGL5160 | DUKHCONI1BZ2WSGL5160 | DH | CON | 1BF | Z2 | FR | WS | B05 | B05-D07 | RES-1B |
| DUKHCONI1BZ2WSGL5165 |  | Testing of potable water line | 25d | 2014-03-23 | 2014-04-20 | DUKHCONI1BZ2WSGL5160 SS+5d | -11d | 0d | LABOR- SUBCONTRACTOR [36 h]; MECHANICALS SK [64.8 h]; DRAINAGE PIPES TEST QTY [284 lm] | 5,833.5 | 20 | 1BP2WSFR20 | DUKHCON1BP2WSGL5165 | DUKHCONI1BZ2WSGL5165 | DH | CON | 1BF | Z2 | FR | WS | B05 | B05-D07 | RES-1B |
| DUKHCONI1BZ2WSGL5170 |  | Backfilling potable water line | 25d | 2014-03-29 | 2014-04-26 | DUKHCONI1BZ2WSGL5165 SS+5d, DUKHCONI1BZ2SAGL5145 FF | -11d | 0d | LABOR- SUBCONTRACTOR [72 h]; BACKFILLING QTY [284 Cum]; BOBCAT [125 h]; PLATE COMPACTOR [125 h]; TRUCK [25 h]; EQUIP OPERATORS [275 h] | 1,871.75 | 25 | 1BP2WSFR25 | DUKHCON1BP2WSGL5170 | DUKHCONI1BZ2WSGL5170 | DH | CON | 1BF | Z2 | FR | WS | B05 | B05-D07 | RES-1B |
| DUKHCONI1BZ2WSGL5175 |  | Construction of valve chambers & Thrust Blocks | 25d | 2014-04-03 | 2014-05-01 | DUKHCONI1BZ2WSGL5155 SS+10d, DUKHCONI1BZ1WSGL5175, DUKHCONI1BZ2WSGL5170 FF+5d | 18d | 0d | MANHOLES SK [64 h]; LABOR- SUBCONTRACTOR [24 h]; MANHOLES QTY [8 ea] | 2,129.5 | 30 | 1BP2WSFR30 | DUKHCON1BP2WSGL5175 | DUKHCONI1BZ2WSGL5175 | DH | CON | 1BF | Z2 | FR | WS | B05 | B05-D07 | RES-1B |
| DUKHCONI1BZ2WSGL5180 |  | Installation of meter ,Accessories & Connection | 20d | 2014-05-03 | 2014-05-25 | DUKHCONI1BZ1WSGL5180, DUKHCONI1BZ2WSGL5175 | 18d | 7d | LABOR- SUBCONTRACTOR [18 h]; MECHANICALS SK [32.4 h]; CHAMPER QTY [11 lm] | 13,321.5 | 35 | 1BP2WSFR35 | DUKHCON1BP2WSGL5180 | DUKHCONI1BZ2WSGL5180 | DH | CON | 1BF | Z2 | FR | WS | B05 | B05-D07 | RES-1B |
|  | 25 | **FIREFIGHTING LINES** |  | 2014-04-03 | 2014-06-02 |  |  |  |  |  |  |  |  |  |  |  |  |  |  |  |  |  |  |
| DUKHCONI1BZ2FFGL5185 |  | Excavation for firefighting line | 25d | 2014-04-03 | 2014-05-01 | DUKHCONI1BZ1FFGL5200 SS+10d, DUKHCONI1BZ2WSGL5170 SS+5d | -11d | 0d | LABOR- SUBCONTRACTOR [90 h]; EXCAVATION QTY [147 Cum]; LOADER [25 h]; POCLAIN [50 h]; TRUCK [25 h]; EQUIP OPERATORS [100 h] | 16,482.5 | 10 | 1BP2FFFR10 | DUKHCON1BP2FFGL5185 | DUKHCONI1BZ2FFGL5185 | DH | CON | 1BF | Z2 | FR | FF | B05 | B05-D07 | RES-1B |
| DUKHCONI1BZ2FFGL5190 |  | Laying of firefighting line | 25d | 2014-04-12 | 2014-05-10 | DUKHCONI1BZ2FFGL5185 SS+7d | -11d | 0d | LABOR- SUBCONTRACTOR [48 h]; MECHANICALS SK [162 h]; PLUMB PIPES QTY [147 lm] | 24,118.5 | 15 | 1BP2FFFR15 | DUKHCON1BP2FFGL5190 | DUKHCONI1BZ2FFGL5190 | DH | CON | 1BF | Z2 | FR | FF | B05 | B05-D07 | RES-1B |
| DUKHCONI1BZ2FFGL5195 |  | Testing of firefighting line | 25d | 2014-04-17 | 2014-05-15 | DUKHCONI1BZ2FFGL5190 SS+5d | -11d | 0d | LABOR- SUBCONTRACTOR [18 h]; MECHANICALS SK [32.4 h]; DRAINAGE PIPES TEST QTY [147 lm] | 1,930 | 20 | 1BP2FFFR20 | DUKHCON1BP2FFGL5195 | DUKHCONI1BZ2FFGL5195 | DH | CON | 1BF | Z2 | FR | FF | B05 | B05-D07 | RES-1B |
| DUKHCONI1BZ2FFGL5200 |  | Backfilling firefighting line | 25d | 2014-04-23 | 2014-05-21 | DUKHCONI1BZ2FFGL5195 SS+5d | -11d | 0d | LABOR- SUBCONTRACTOR [36 h]; BACKFILLING QTY [147 Cum]; BOBCAT [125 h]; PLATE COMPACTOR [125 h]; TRUCK [25 h]; EQUIP OPERATORS [275 h] | 4,120.5 | 25 | 1BP2FFFR25 | DUKHCON1BP2FFGL5200 | DUKHCONI1BZ2FFGL5200 | DH | CON | 1BF | Z2 | FR | FF | B05 | B05-D07 | RES-1B |
| DUKHCONI1BZ2FFGL5205 |  | Construction of valve chambers & Thrust Blocks | 25d | 2014-04-29 | 2014-05-27 | DUKHCONI1BZ2FFGL5200 FF+5d, DUKHCONI1BZ1FFGL5205, DUKHCONI1BZ2FFGL5185 SS+10d | 11d | 0d | STEEL FIXERS SK [56 h]; CARPENTERS SK [72 h]; CONCRETE MASON SK [24 h]; LABOR- SUBCONTRACTOR [114 h]; EXCAVATION QTY [16 Cum]; REINFORCEMENT BARS QTY [628 kg]; FORMWORK QTY [34 Sqm]; CONCRETE QTY [10 Cum] | 1,490.5 | 30 | 1BP2FFFR30 | DUKHCON1BP2FFGL5205 | DUKHCONI1BZ2FFGL5205 | DH | CON | 1BF | Z2 | FR | FF | B05 | B05-D07 | RES-1B |
| DUKHCONI1BZ2FFGL5210 |  | Connection with existing Firewater System | 25d | 2014-05-05 | 2014-06-02 | DUKHCONI1BZ2WSGL5180 FF, DUKHCONI1BZ2FFGL5205 FF+5d, DUKHCONI1BZ1FFGL5210 | 11d | 15d | LABOR- SUBCONTRACTOR [30 h]; MECHANICALS SK [54 h]; FIRE EXTINGUISHER QTY [10 ea] | 6,453.25 | 35 | 1BP2FFFR35 | DUKHCON1BP2FFGL5210 | DUKHCONI1BZ2FFGL5210 | DH | CON | 1BF | Z2 | FR | FF | B05 | B05-D07 | RES-1B |
|  | 30 | **ELECTRICAL LINES** |  | 2014-05-01 | 2014-06-24 |  |  |  |  |  |  |  |  |  |  |  |  |  |  |  |  |  |  |
| DUKHCONI1BZ2ELGL5215 |  | Excavation Cable Trenches & Duct Banks | 25d | 2014-05-01 | 2014-05-29 | DUKHCONI1BZ2FFGL5200 SS+7d, DUKHCONI1BZ1ELGL5225 | -11d | 0d | LABOR- SUBCONTRACTOR [1896 h]; EXCAVATION QTY [3159 Cum]; LOADER [219 h]; POCLAIN [438 h]; TRUCK [219 h]; EQUIP OPERATORS [876 h] | 15,897.75 | 10 | 1BP2ECFR10 | DUKHCON1BP2ELGL5215 | DUKHCONI1BZ2ELGL5215 | DH | CON | 1BF | Z2 | FR | EC | B05 | B05-D04 | RES-1B |
| DUKHCONI1BZ2ELGL5220 |  | Laying of electrical cables | 25d | 2014-05-07 | 2014-06-04 | DUKHCONI1BZ2ELGL5215 SS+5d | -8d | 0d | LABOR- SUBCONTRACTOR [948 h]; ELECTRICIANS SK [3539.2 h]; CABLE QTY [3159 lm] | 1,166,243.5 | 15 | 1BP2ECFR15 | DUKHCON1BP2ELGL5220 | DUKHCONI1BZ2ELGL5220 | DH | CON | 1BF | Z2 | FR | EC | B05 | B05-D04 | RES-1B |
| DUKHCONI1BZ2ELGL5225 |  | Backfilling Electrical trench | 25d | 2014-05-15 | 2014-06-12 | DUKHCONI1BZ2ELGL5220 SS+7d, DUKHCONI1BZ2ELGL5215 FF+7d | -8d | 0d | LABOR- SUBCONTRACTOR [762 h]; BACKFILLING QTY [3159 Cum]; BOBCAT [500 h]; PLATE COMPACTOR [500 h]; TRUCK [100 h]; EQUIP OPERATORS [1100 h] | 6,812.75 | 20 | 1BP2ECFR20 | DUKHCON1BP2ELGL5225 | DUKHCONI1BZ2ELGL5225 | DH | CON | 1BF | Z2 | FR | EC | B05 | B05-D04 | RES-1B |
| DUKHCONI1BZ2ELGL5230 |  | Construction of Submain Board & Feeder Pillar | 25d | 2014-05-27 | 2014-06-24 | DUKHCONI1BZ1ELGL5230, DUKHCONI1BZ2ELGL5225 FF+10d, DUKHCONI1BZ2ELGL5225 SS+10d | 53d | 0d | STEEL FIXERS SK [8 h]; CARPENTERS SK [48 h]; CONCRETE MASON SK [8 h]; LABOR- SUBCONTRACTOR [36 h]; LABOR- SUBCONTRACTOR [48 h]; REINFORCEMENT BARS QTY [27 kg]; FORMWORK QTY [21 Sqm]; CONCRETE QTY [2 Cum]; ALUMINIUM DOOR QTY [3 ea]; DOOR ERECTOR SK [16 h]; EXPANSION JOINT QTY [14 Sqm]; EXPANSION JOINT SKILLED SK [112 h] | 82,371.75 | 25 | 1BP2ECFR25 | DUKHCON1BP2ELGL5230 | DUKHCONI1BZ2ELGL5230 | DH | CON | 1BF | Z2 | FR | EC | B05 | B05-D04 | RES-1B |
|  | 35 | **STREET LIGHTING** |  | 2014-05-01 | 2014-07-23 |  |  |  |  |  |  |  |  |  |  |  |  |  |  |  |  |  |  |
| DUKHCONI1BZ2STGL5235 |  | Excavation for Street lighting | 25d | 2014-05-01 | 2014-05-29 | DUKHCONI1BZ2ELGL5215 SS, DUKHCONI1BZ1STGL5250 SS+10d | -11d | 0d | LABOR- SUBCONTRACTOR [18 h]; EXCAVATION QTY [29 Cum]; LOADER [13 h]; POCLAIN [25 h]; TRUCK [13 h]; EQUIP OPERATORS [51 h] | 2,909.75 | 10 | 1BP2STFR10 | DUKHCON1BP2STGL5235 | DUKHCONI1BZ2STGL5235 | DH | CON | 1BF | Z2 | FR | ST | B05 | B05-D09 | RES-1B |
| DUKHCONI1BZ2STGL5240 |  | Construction of Duct Banks | 25d | 2014-05-07 | 2014-06-04 | DUKHCONI1BZ2STGL5235 SS+5d | -11d | 0d | LABOR- SUBCONTRACTOR [318 h]; ELECTRICIANS SK [1176 h]; DUCT BANK QTY [420 lm] | 79,726.25 | 15 | 1BP2STFR15 | DUKHCON1BP2STGL5240 | DUKHCONI1BZ2STGL5240 | DH | CON | 1BF | Z2 | FR | ST | B05 | B05-D09 | RES-1B |
| DUKHCONI1BZ2STGL5245 |  | Construction of Foundation | 25d | 2014-05-07 | 2014-06-04 | DUKHCONI1BZ2STGL5240 SS | -11d | 0d | MANHOLES SK [456 h]; LABOR- SUBCONTRACTOR [174 h]; COLUMN BASE QTY [29 ea] | 27,122.5 | 20 | 1BP2STFR20 | DUKHCON1BP2STGL5245 | DUKHCONI1BZ2STGL5245 | DH | CON | 1BF | Z2 | FR | ST | B05 | B05-D09 | RES-1B |
| DUKHCONI1BZ2STGL5250 |  | Backfilling Street Lighting | 25d | 2014-05-13 | 2014-06-10 | DUKHCONI1BZ2STGL5245 SS+5d, DUKHCONI1BZ2STGL5235 FF+5d | -11d | 0d | LABOR- SUBCONTRACTOR [12 h]; BACKFILLING QTY [29 Cum]; BOBCAT [50 h]; PLATE COMPACTOR [50 h]; TRUCK [10 h]; EQUIP OPERATORS [110 h] | 2,909.75 | 25 | 1BP2STFR25 | DUKHCON1BP2STGL5250 | DUKHCONI1BZ2STGL5250 | DH | CON | 1BF | Z2 | FR | ST | B05 | B05-D09 | RES-1B |
| DUKHCONI1BZ2STGL5255 |  | Installation of light Post | 25d | 2014-05-25 | 2014-06-22 | DUKHCONI1BZ2STGL5250 SS+10d, DUKHCONI1BZ1STGL5255 | 73d | 15d | LABOR- SUBCONTRACTOR [48 h]; ELECTRICIANS SK [168 h]; LIGHTPOST COLUMN QTY [29 ea] | 369,147.75 | 30 | 1BP2STFR30 | DUKHCON1BP2STGL5255 | DUKHCONI1BZ2STGL5255 | DH | CON | 1BF | Z2 | FR | ST | B05 | B05-D09 | RES-1B |
| DUKHCONI1BZ2STGL5260 |  | Electrical Works | 25d | 2014-06-25 | 2014-07-23 | DUKHCONI1BZ2STGL5255 SS+7d, DUKHCONI1BZ2ELGL5230, DUKHCONI1BZ1STGL5260 | 53d | 15d | LABOR- SUBCONTRACTOR [222 h]; ELECTRICIANS SK [817.6 h]; CABLE QTY [725 lm] | 16,658.75 | 35 | 1BP2STFR35 | DUKHCON1BP2STGL5260 | DUKHCONI1BZ2STGL5260 | DH | CON | 1BF | Z2 | FR | ST | B05 | B05-D09 | RES-1B |

Notes:
- DUKHCONI1BZ2WSGL5155: Expenses: I1B-Water supply system 7487
- DUKHCONI1BZ2WSGL5160: Expenses: I1B-Water supply system 59693
- DUKHCONI1BZ2WSGL5165: Expenses: I1B-Water supply system 5833.5
- DUKHCONI1BZ2WSGL5170: Expenses: I1B-Water supply system 1871.75
- DUKHCONI1BZ2WSGL5175: Expenses: I1B-Water supply system 2129.5
- DUKHCONI1BZ2WSGL5180: Expenses: I1B-Water supply system 13321.5
- DUKHCONI1BZ2FFGL5185: Expenses: I1B-Water supply system 16482.5
- DUKHCONI1BZ2FFGL5190: Expenses: I1B-Water supply system 24118.5
- DUKHCONI1BZ2FFGL5195: Expenses: I1B-Water supply system 1930
- DUKHCONI1BZ2FFGL5200: Expenses: I1B-Water supply system 4120.5
- DUKHCONI1BZ2FFGL5205: Expenses: I1B-Water supply system 1490.5
- DUKHCONI1BZ2FFGL5210: Expenses: I1B-Water supply system 6453.25
- DUKHCONI1BZ2ELGL5215: Expenses: I1B-Electrical power supply and distribution 15897.8
- DUKHCONI1BZ2ELGL5220: Expenses: I1B-Electrical power supply and distribution 1166244
- DUKHCONI1BZ2ELGL5225: Expenses: I1B-Electrical power supply and distribution 6812.75
- DUKHCONI1BZ2ELGL5230: Expenses: I1B-Electrical power supply and distribution 82371.8
- DUKHCONI1BZ2STGL5235: Expenses: I1B-Street lighting 2909.75
- DUKHCONI1BZ2STGL5240: Expenses: I1B-Street lighting 79726.2
- DUKHCONI1BZ2STGL5245: Expenses: I1B-Street lighting 27122.5
- DUKHCONI1BZ2STGL5250: Expenses: I1B-Street lighting 2909.75
- DUKHCONI1BZ2STGL5255: Expenses: I1B-Street lighting 369148
- DUKHCONI1BZ2STGL5260: Expenses: I1B-Street lighting 16658.8

| ID | WBS | Activity | Duration | Start | Finish | Predecessors | Total float | Free float | Resources | Cost | CODE | P3 ACTID | P6 ID (old) | NP61D | PROJECT | PHASES | PACKAGE | PART | ELEMENTS | STEP | BILL NOS | BILL DIVISION | RES PACK |
| --- | --- | --- | --- | --- | --- | --- | --- | --- | --- | --- | --- | --- | --- | --- | --- | --- | --- | --- | --- | --- | --- | --- | --- |
|  | 40 | **IRRIGATION LINES** |  | 2014-06-14 | 2014-08-21 |  |  |  |  |  |  |  |  |  |  |  |  |  |  |  |  |  |  |
| DUKHCONI1BZ2IRGL5265 |  | Excavation for irrigation line | 25d | 2014-06-14 | 2014-07-12 | DUKHCONI1BZ2ELGL5225, DUKHCONI1BZ1IRGL5280 | -4d | 0d | LABOR- SUBCONTRACTOR [498 h]; EXCAVATION QTY [822 Cum]; LOADER [125 h]; POCLAIN [250 h]; TRUCK [125 h]; EQUIP OPERATORS [500 h] | 13,674.5 | 10 | 1BP2IRFR10 | DUKHCON1BP2IRGL5265 | DUKHCONI1BZ2IRGL5265 | DH | CON | 1BF | Z2 | FR | IR | B05 | B05-D07 | RES-1B |
| DUKHCONI1BZ2IRGL5270 |  | Laying of irrigationline | 25d | 2014-06-19 | 2014-07-17 | DUKHCONI1BZ2IRGL5265 SS+5d | -4d | 0d | LABOR- SUBCONTRACTOR [126 h]; MECHANICALS SK [226.8 h]; IRRIGATION PIPES QTY [822 lm] | 8,538.25 | 15 | 1BP2IRFR15 | DUKHCON1BP2IRGL5270 | DUKHCONI1BZ2IRGL5270 | DH | CON | 1BF | Z2 | FR | IR | B05 | B05-D07 | RES-1B |
| DUKHCONI1BZ2IRGL5275 |  | Testing of irrigation line | 25d | 2014-06-25 | 2014-07-23 | DUKHCONI1BZ2IRGL5270 SS+5d | -4d | 0d | LABOR- SUBCONTRACTOR [102 h]; MECHANICALS SK [183.6 h]; DRAINAGE PIPES TEST QTY [822 lm] | 1,219.25 | 20 | 1BP2IRFR20 | DUKHCON1BP2IRGL5275 | DUKHCONI1BZ2IRGL5275 | DH | CON | 1BF | Z2 | FR | IR | B05 | B05-D07 | RES-1B |
| DUKHCONI1BZ2IRGL5280 |  | Backfilling irrigation line | 25d | 2014-07-01 | 2014-07-29 | DUKHCONI1BZ2IRGL5275 SS+5d | -4d | 0d | LABOR- SUBCONTRACTOR [156 h]; BACKFILLING QTY [642 Cum]; BOBCAT [250 h]; PLATE COMPACTOR [250 h]; TRUCK [50 h]; EQUIP OPERATORS [550 h] | 3,419 | 25 | 1BP2IRFR25 | DUKHCON1BP2IRGL5280 | DUKHCONI1BZ2IRGL5280 | DH | CON | 1BF | Z2 | FR | IR | B05 | B05-D07 | RES-1B |
| DUKHCONI1BZ2IRGL5285 |  | Construction of Thrust Blocks,Pull boxes | 25d | 2014-07-13 | 2014-08-13 | DUKHCONI1BZ2ELGL5225 SS+10d, DUKHCONI1BZ2IRGL5280 FF+10d | 6d | 0d | LABOR- SUBCONTRACTOR [36 h]; ELECTRICIANS SK [33.6 h]; THRUST BLOCKS QTY [3 ea]; PULL BOX QTY [10 ea]; PULL BOX SK [80 h] | 10,378.75 | 30 | 1BP2IRFR30 | DUKHCON1BP2IRGL5285 | DUKHCONI1BZ2IRGL5285 | DH | CON | 1BF | Z2 | FR | IR | B05 | B05-D07 | RES-1B |
| DUKHCONI1BZ2IRGL5290 |  | Irrigation Fittings (Nozzle,Values) | 25d | 2014-07-21 | 2014-08-21 | DUKHCONI1BZ2IRGL5285 SS+7d, DUKHCONI1BZ2IRGL5280 SS+10d | 6d | 11d | LABOR- SUBCONTRACTOR [126 h]; MECHANICALS SK [226.8 h]; CHAMPER QTY [81 lm] | 26,420.5 | 35 | 1BP2IRFR35 | DUKHCON1BP2IRGL5290 | DUKHCONI1BZ2IRGL5290 | DH | CON | 1BF | Z2 | FR | IR | B05 | B05-D07 | RES-1B |
|  | 45 | **TELECOMMUNICATION LINES** |  | 2014-05-25 | 2014-07-09 |  |  |  |  |  |  |  |  |  |  |  |  |  |  |  |  |  |  |
| DUKHCONI1BZ2TCGL5295 |  | Excavation Telecommunication trenches | 20d | 2014-05-25 | 2014-06-16 | DUKHCONI1BZ2STGL5250 SS+10d, DUKHCONI1BZ1TCGL5305 | -11d | 0d | LABOR- SUBCONTRACTOR [156 h]; EXCAVATION QTY [255 Cum]; LOADER [50 h]; POCLAIN [100 h]; TRUCK [50 h]; EQUIP OPERATORS [200 h] | 9,762.25 | 10 | 1BP2TCFR10 | DUKHCON1BP2TCGL5295 | DUKHCONI1BZ2TCGL5295 | DH | CON | 1BF | Z2 | FR | TC | B05 | B05-D05 | RES-1B |
| DUKHCONI1BZ2TCGL5300 |  | Laying of cables | 20d | 2014-05-31 | 2014-06-22 | DUKHCONI1BZ2TCGL5295 SS+5d | -11d | 0d | LABOR- SUBCONTRACTOR [156 h]; ELECTRICIANS SK [571.2 h]; CABLE QTY [510 lm] | 2,142 | 15 | 1BP2TCFR15 | DUKHCON1BP2TCGL5300 | DUKHCONI1BZ2TCGL5300 | DH | CON | 1BF | Z2 | FR | TC | B05 | B05-D05 | RES-1B |
| DUKHCONI1BZ2TCGL5305 |  | Backfilling telecommunication trench | 20d | 2014-06-05 | 2014-06-28 | DUKHCONI1BZ2TCGL5300 SS+5d | -11d | 0d | LABOR- SUBCONTRACTOR [66 h]; BACKFILLING QTY [255 Cum]; BOBCAT [100 h]; PLATE COMPACTOR [100 h]; TRUCK [20 h]; EQUIP OPERATORS [220 h] | 4,183.75 | 20 | 1BP2TCFR20 | DUKHCON1BP2TCGL5305 | DUKHCONI1BZ2TCGL5305 | DH | CON | 1BF | Z2 | FR | TC | B05 | B05-D05 | RES-1B |
| DUKHCONI1BZ2TCGL5310 |  | Connection & Installation | 20d | 2014-06-17 | 2014-07-09 | DUKHCONI1BZ1TCGL5310, DUKHCONI1BZ2TCGL5305 SS+10d | 60d | 20d | LABOR- SUBCONTRACTOR [36 h]; ELECTRICIANS SK [235.2 h]; TELEPHONE SOCKETS QTY [21 ea] | 60,781.25 | 25 | 1BP2TCFR25 | DUKHCON1BP2TCGL5310 | DUKHCONI1BZ2TCGL5310 | DH | CON | 1BF | Z2 | FR | TC | B05 | B05-D05 | RES-1B |
|  | 50 | **BOUNDARY WALL** |  | 2014-05-25 | 2014-08-21 |  |  |  |  |  |  |  |  |  |  |  |  |  |  |  |  |  |  |
| DUKHCONI1BZ2BWGL5315 |  | Construction of Boundary Wall (Ht-3m) | 25d | 2014-05-25 | 2014-06-22 | DUKHCONI1BZ2STGL5250 SS+10d, DUKHCONI1BZ1BWGL5315 | 24d | 0d | STEEL FIXERS SK [112 h]; LABOR- SUBCONTRACTOR [84 h]; BOUNDARY WIRE MESH QTY [275 Sqm] | 405,782 | 10 | 1BP2BWFR10 | DUKHCON1BP2ARGL5315 | DUKHCONI1BZ2BWGL5315 | DH | CON | 1BF | Z2 | FR | BW | B05 | B05-D10 | RES-1B |
| DUKHCONI1BZ2BWGL5320 |  | Install.Steel Gate,Entance Barrier (3m Wall) | 25d | 2014-06-10 | 2014-07-08 | DUKHCONI1BZ2BWGL5315 SS+14d | 24d | 0d | LABOR- SUBCONTRACTOR [6 h]; GATE QTY [1 ea]; GATE ERECTOR SK [8 h] | 5,703.5 | 15 | 1BP2BWFR15 | DUKHCON1BP2ARGL5320 | DUKHCONI1BZ2BWGL5320 | DH | CON | 1BF | Z2 | FR | BW | B05 | B05-D10 | RES-1B |
| DUKHCONI1BZ2BWGL5325 |  | Const. of Villa Front Boundary Wall (Ht-2m) | 25d | 2014-07-09 | 2014-08-10 | DUKHCONI1BZ2BWGL5320, DUKHCONI1BZ2BWGL5315 SS+5d, DUKHCONI1BZ1BWGL5325 | 24d | 0d | LABOR- SUBCONTRACTOR [60 h]; BOUNDARY WIRE MESH QTY [188 Sqm]; STEEL FIXERS SK [80 h] | 213,900 | 20 | 1BP2BWFR20 | DUKHCON1BP2ARGL5325 | DUKHCONI1BZ2BWGL5325 | DH | CON | 1BF | Z2 | FR | BW | B05 | B05-D10 | RES-1B |
| DUKHCONI1BZ2BWGL5330 |  | Const. of Blockwork fence Wall (Ht-1.85m) | 25d | 2014-07-21 | 2014-08-21 | DUKHCONI1BZ2BWGL5325 SS+10d, DUKHCONI1BZ1BWGL5330 | 62d | 15d | STEEL FIXERS SK [80 h]; LABOR- SUBCONTRACTOR [60 h]; BOUNDARY WIRE MESH QTY [201 Sqm] | 239,825 | 30 | 1BP2BWFR30 | DUKHCON1BP2ARGL5330 | DUKHCONI1BZ2BWGL5330 | DH | CON | 1BF | Z2 | FR | BW | B05 | B05-D10 | RES-1B |
|  | 55 | **ROAD WORKS** |  | 2014-06-29 | 2014-09-15 |  |  |  |  |  |  |  |  |  |  |  |  |  |  |  |  |  |  |
| DUKHCONI1BZ2RWGL6000 |  | Excavation & Earth Filling | 10d | 2014-06-29 | 2014-07-09 | DUKHCONI1BZ2SAGL5150, DUKHCONI1BZ2FFGL5210, DUKHCONI1BZ2TCGL5305, DUKHCONI1BZ2FFGL5200, DUKHCONI1BZ1RWGL6015 SS+10d, DUKHCONI1BZ2STGL5250, DUKHCONI1BZ2ELGL5225 | -11d | 0d | LABOR- SUBCONTRACTOR [750 h]; EXCAVATION QTY [977 Cum]; BACKFILLING QTY [676 Cum]; LOADER [100 h]; POCLAIN [200 h]; TRUCK [100 h]; EQUIP OPERATORS [400 h] | 112,697.5 | 10 | 1BP2RDFR10 | DUKHCON1BP2RDGL6000 | DUKHCONI1BZ2RWGL6000 | DH | CON | 1BF | Z2 | FR | RD | B05 | B05-D08 | RES-1B |
| DUKHCONI1BZ2RWGL6005 |  | Laying of Sub Grade | 25d | 2014-07-10 | 2014-08-11 | DUKHCONI1BZ2RWGL6000 | -11d | 0d | LABOR- SUBCONTRACTOR [24 h]; SUBGRADE QTY [383 Sqm] | 117,466 | 15 | 1BP2RDFR15 | DUKHCON1BP2RDGL6005 | DUKHCONI1BZ2RWGL6005 | DH | CON | 1BF | Z2 | FR | RD | B05 | B05-D08 | RES-1B |
| DUKHCONI1BZ2RWGL6010 |  | Laying of Precast Kerbs | 25d | 2014-07-22 | 2014-08-23 | DUKHCONI1BZ2RWGL6005 SS+10d | -11d | 0d | LABOR- SUBCONTRACTOR [24 h]; GRANULAR SUBBASE QTY [383 Sqm] | 112,124.25 | 20 | 1BP2RDFR20 | DUKHCON1BP2RDGL6010 | DUKHCONI1BZ2RWGL6010 | DH | CON | 1BF | Z2 | FR | RD | B05 | B05-D08 | RES-1B |
| DUKHCONI1BZ2RWGL6015 |  | Laying of Granular Sub Base Coarse | 20d | 2014-08-06 | 2014-08-28 | DUKHCONI1BZ2RWGL6010 SS+10d | -11d | 0d | KERBSTONE MASON SK [784 h]; LABOR- SUBCONTRACTOR [444 h]; KERBSTONE QTY [491 lm]; EDGE STONE QTY [491 Sqm]; HEAVY ROLLER [400 h]; LOADER [100 h]; TRUCK [100 h]; EQUIP OPERATORS [600 h] | 58,733 | 25 | 1BP2RDFR25 | DUKHCON1BP2RDGL6015 | DUKHCONI1BZ2RWGL6015 | DH | CON | 1BF | Z2 | FR | RD | B05 | B05-D08 | RES-1B |
| DUKHCONI1BZ2RWGL6020 |  | Laying of Road Base Asphalt Concrete | 5d | 2014-08-30 | 2014-09-03 | DUKHCONI1BZ2RWGL6015 | 26d | 0d | LABOR- SUBCONTRACTOR [24 h]; ASPHALT CONCRETE QTY [1913 Cum]; ASPHALT PAVER MACHINE [50 h]; HAND ROLLER [100 h]; EQUIP OPERATORS [150 h] | 149,434.75 | 30 | 1BP2RDFR30 | DUKHCON1BP2RDGL6020 | DUKHCONI1BZ2RWGL6020 | DH | CON | 1BF | Z2 | FR | RD | B05 | B05-D08 | RES-1B |
| DUKHCONI1BZ2RWGL6025 |  | Laying of Asphalt Wearing Coarse | 5d | 2014-09-04 | 2014-09-09 | DUKHCONI1BZ1RWGL6025, DUKHCONI1BZ2RWGL6020 | 41d | 0d | LABOR- SUBCONTRACTOR [24 h]; ASPHALT WEARING COURSE QTY [1913 Sqm]; ASPHALT PAVER MACHINE [50 h]; HAND ROLLER [100 h]; EQUIP OPERATORS [150 h] | 77,849 | 35 | 1BP2RDFR35 | DUKHCON1BP2RDGL6025 | DUKHCONI1BZ2RWGL6025 | DH | CON | 1BF | Z2 | FR | RD | B05 | B05-D08 | RES-1B |
| DUKHCONI1BZ2RWGL6030 |  | Traffic Signage & Road Marking | 5d | 2014-09-10 | 2014-09-15 | DUKHCONI1BZ1RWGL6030, DUKHCONI1BZ2RWGL6025 | 41d | 15d | LABOR- SUBCONTRACTOR [330 h]; STEEL ERECTOR SK [400 h]; TRAFFIC SIGN QTY [249 ea]; ROAD MARKING QTY [92 lm]; ASPHALT SK [152 h] | 79,931 | 40 | 1BP2RDFR40 | DUKHCON1BP2RDGL6030 | DUKHCONI1BZ2RWGL6030 | DH | CON | 1BF | Z2 | FR | RD | B05 | B05-D08 | RES-1B |

Notes:
- DUKHCONI1BZ2IRGL5265: Expenses: I1B-Water supply system 13674.5
- DUKHCONI1BZ2IRGL5270: Expenses: I1B-Water supply system 8538.25
- DUKHCONI1BZ2IRGL5275: Expenses: I1B-Water supply system 1219.25
- DUKHCONI1BZ2IRGL5280: Expenses: I1B-Water supply system 3419
- DUKHCONI1BZ2IRGL5285: Expenses: I1B-Water supply system 10378.8
- DUKHCONI1BZ2IRGL5290: Expenses: I1B-Water supply system 26420.5
- DUKHCONI1BZ2TCGL5295: Expenses: I1B-Telecommunication 9762.25
- DUKHCONI1BZ2TCGL5300: Expenses: I1B-Telecommunication 2142
- DUKHCONI1BZ2TCGL5305: Expenses: I1B-Telecommunication 4183.75
- DUKHCONI1BZ2TCGL5310: Expenses: I1B-Telecommunication 60781.2
- DUKHCONI1BZ2BWGL5315: Expenses: I1B-Hard and soft landscaping 405782
- DUKHCONI1BZ2BWGL5320: Expenses: I1B-Hard and soft landscaping 5703.5
- DUKHCONI1BZ2BWGL5325: Expenses: I1B-Hard and soft landscaping 213900
- DUKHCONI1BZ2BWGL5330: Expenses: I1B-Hard and soft landscaping 239825
- DUKHCONI1BZ2RWGL6000: Expenses: I1B-Road work 112698
- DUKHCONI1BZ2RWGL6005: Expenses: I1B-Road work 117466
- DUKHCONI1BZ2RWGL6010: Expenses: I1B-Road work 112124
- DUKHCONI1BZ2RWGL6015: Expenses: I1B-Road work 58733
- DUKHCONI1BZ2RWGL6020: Expenses: I1B-Road work 149435
- DUKHCONI1BZ2RWGL6025: Expenses: I1B-Road work 77849
- DUKHCONI1BZ2RWGL6030: Expenses: I1B-Road work 79931

| ID | WBS | Activity | Duration | Start | Finish | Predecessors | Total float | Free float | Resources | Cost | CODE | P3 ACTID | P6 ID (old) | NP61D | PROJECT | PHASES | PACKAGE | PART | ELEMENTS | STEP | BILL NOS | BILL DIVISION | RES PACK |
| --- | --- | --- | --- | --- | --- | --- | --- | --- | --- | --- | --- | --- | --- | --- | --- | --- | --- | --- | --- | --- | --- | --- | --- |
|  | 60 | **PARKING SHED** |  | 2014-08-12 | 2014-10-08 |  |  |  |  |  |  |  |  |  |  |  |  |  |  |  |  |  |  |
| DUKHCONI1BZ2PSGL7000 |  | Excavation | 15d | 2014-08-12 | 2014-08-28 | DUKHCONI1BZ2RWGL6015 SS+5d, DUKHCONI1BZ1PSGL7005 | 31d | 5d | LABOR- SUBCONTRACTOR [72 h]; EXCAVATION QTY [120 Cum]; LOADER [23 h]; POCLAIN [45 h]; TRUCK [23 h]; EQUIP OPERATORS [91 h] | 26,553.5 | 10 | 1BP2PSFR10 | DUKHCON1BP2PSGL7000 | DUKHCONI1BZ2PSGL7000 | DH | CON | 1BF | Z2 | FR | PS | B05 | B05-D08 | RES-1B |
| DUKHCONI1BZ2PSGL7005 |  | Foundation casting | 15d | 2014-08-24 | 2014-09-09 | DUKHCONI1BZ2RWGL6015 FF+10d, DUKHCONI1BZ2PSGL7000 SS+5d, DUKHCONI1BZ2PSGL7000 FF+5d | 26d | 0d | STEEL FIXERS SK [96 h]; CARPENTERS SK [56 h]; CONCRETE MASON SK [24 h]; LABOR- SUBCONTRACTOR [126 h]; REINFORCEMENT BARS QTY [1120 kg]; FORMWORK QTY [27 Sqm]; CONCRETE QTY [12 Cum] | 26,553.5 | 15 | 1BP2PSFR15 | DUKHCON1BP2PSGL7005 | DUKHCONI1BZ2PSGL7005 | DH | CON | 1BF | Z2 | FR | PS | B05 | B05-D08 | RES-1B |
| DUKHCONI1BZ2PSGL7010 |  | Column, Frame& Fabrics Erection | 25d | 2014-09-04 | 2014-10-02 | DUKHCONI1BZ2RWGL6030 FF, DUKHCONI1BZ2BWGL5330 FF, DUKHCONI1BZ2RWGL6020, DUKHCONI1BZ1PSGL7010, DUKHCONI1BZ2PSGL7005 SS+10d | 26d | 0d | LABOR- SUBCONTRACTOR [114 h]; STEEL ERECTOR SK [200 h]; PARKING SHED QTY [614 ea] | 132,765.25 | 20 | 1BP2PSFR20 | DUKHCON1BP2PSGL7010 | DUKHCONI1BZ2PSGL7010 | DH | CON | 1BF | Z2 | FR | PS | B05 | B05-D08 | RES-1B |
| DUKHCONI1BZ2PSGL7015 |  | Electrical Works-Parking Shed | 25d | 2014-09-10 | 2014-10-08 | DUKHCONI1BZ2STGL5260, DUKHCONI1BZ1PSGL7015, DUKHCONI1BZ2PSGL7010 SS+5d | 26d | 15d | LABOR- SUBCONTRACTOR [18 h]; ELECTRICIANS SK [33.6 h]; LIGHTS QTY [13 ea] | 13,276.75 | 25 | 1BP2PSFR25 | DUKHCON1BP2PSGL7015 | DUKHCONI1BZ2PSGL7015 | DH | CON | 1BF | Z2 | FR | PS | B05 | B05-D08 | RES-1B |
|  | 65 | **HARD LANDSCAPING** |  | 2014-06-29 | 2014-09-21 |  |  |  |  |  |  |  |  |  |  |  |  |  |  |  |  |  |  |
| DUKHCONI1BZ2HDGL7020 |  | Precast Concrete Kerbs works | 20d | 2014-06-29 | 2014-07-21 | DUKHCONI1BZ2RWGL6000 SS | -5d | 0d | KERBSTONE MASON SK [512 h]; LABOR- SUBCONTRACTOR [288 h]; KERBSTONE QTY [633 lm] | 75,770 | 10 | 1BP2HDFR10 | DUKHCON1BP2HDGL7020 | DUKHCONI1BZ2HDGL7020 | DH | CON | 1BF | Z2 | FR | HD | B05 | B05-D10 | RES-1B |
| DUKHCONI1BZ2HDGL7025 |  | Interlocking for Walkways | 25d | 2014-07-10 | 2014-08-11 | DUKHCONI1BZ2HDGL7020 SS+10d | -5d | 0d | INTERLOCK MASON SK [592 h]; LABOR- SUBCONTRACTOR [222 h]; INTERLOCK QTY [736 Sqm] | 88,099 | 15 | 1BP2HDFR15 | DUKHCON1BP2HDGL7025 | DUKHCONI1BZ2HDGL7025 | DH | CON | 1BF | Z2 | FR | HD | B05 | B05-D10 | RES-1B |
| DUKHCONI1BZ2HDGL7030 |  | Construction of Retaining wall | 25d | 2014-07-22 | 2014-08-23 | DUKHCONI1BZ1HDGL7030, DUKHCONI1BZ2HDGL7025 SS+10d | -5d | 0d | LABOR- SUBCONTRACTOR [1452 h]; EXCAVATION QTY [62 Cum]; REINFORCEMENT BARS QTY [6503 kg]; FORMWORK QTY [603 Sqm]; CONCRETE QTY [77 Cum]; STEEL FIXERS SK [520 h]; CARPENTERS SK [1208 h]; CONCRETE MASON SK [160 h] | 105,489.75 | 20 | 1BP2HDFR20 | DUKHCON1BP2HDGL7030 | DUKHCONI1BZ2HDGL7030 | DH | CON | 1BF | Z2 | FR | HD | B05 | B05-D10 | RES-1B |
| DUKHCONI1BZ2HDGL7035 |  | Construction of Wash Stone Boulders | 25d | 2014-07-22 | 2014-08-23 | DUKHCONI1BZ1HDGL7035, DUKHCONI1BZ2HDGL7030 SS | -5d | 0d | TILE MASON SK [16 h]; LABOR- SUBCONTRACTOR [6 h]; STONE BOULDERS QTY [5 Sqm] | 22,800 | 25 | 1BP2HDFR25 | DUKHCON1BP2HDGL7035 | DUKHCONI1BZ2HDGL7035 | DH | CON | 1BF | Z2 | FR | HD | B05 | B05-D10 | RES-1B |
| DUKHCONI1BZ2HDGL7040 |  | Construction of Speed Humps | 10d | 2014-09-10 | 2014-09-21 | DUKHCONI1BZ2RWGL6025, DUKHCONI1BZ2HDGL7035 SS, DUKHCONI1BZ1HDGL7040 | 50d | 30d | CONCRETE MASON SK [8 h]; LABOR- SUBCONTRACTOR [6 h]; SPEED HUMPS [3 ea] | 3,206 | 30 | 1BP2HDFR30 | DUKHCON1BP2HDGL7040 | DUKHCONI1BZ2HDGL7040 | DH | CON | 1BF | Z2 | FR | HD | B05 | B05-D10 | RES-1B |
|  | 70 | **SOFT LANDSCAPING** |  | 2014-08-06 | 2014-09-27 |  |  |  |  |  |  |  |  |  |  |  |  |  |  |  |  |  |  |
| DUKHCONI1BZ2SLGL7200 |  | Excavation | 25d | 2014-08-06 | 2014-09-03 | DUKHCONI1BZ2IRGL5290 SS, DUKHCONI1BZ1SLGL7205, DUKHCONI1BZ2HDGL7035 SS+10d | -5d | 0d | LABOR- SUBCONTRACTOR [426 h]; EXCAVATION QTY [704 Cum]; LOADER [125 h]; POCLAIN [250 h]; TRUCK [125 h]; EQUIP OPERATORS [500 h] | 47,004.5 | 10 | 1BP2SLFR10 | DUKHCON1BP2SLGL7200 | DUKHCONI1BZ2SLGL7200 | DH | CON | 1BF | Z2 | FR | SL | B05 | B05-D10 | RES-1B |
| DUKHCONI1BZ2SLGL7205 |  | Sweet Soil Laying | 25d | 2014-08-18 | 2014-09-15 | DUKHCONI1BZ2SLGL7200 SS+10d | -5d | 0d | LABOR- SUBCONTRACTOR [1758 h]; SWEET SOIL QTY [3517 Cum]; LANDSCAPING SK [2344 h] | 266,359.5 | 15 | 1BP2SLFR15 | DUKHCON1BP2SLGL7205 | DUKHCONI1BZ2SLGL7205 | DH | CON | 1BF | Z2 | FR | SL | B05 | B05-D10 | RES-1B |
| DUKHCONI1BZ2SLGL7210 |  | Plantation works | 25d | 2014-08-30 | 2014-09-27 | DUKHCONI1BZ2SLGL7205 SS+10d, DUKHCONI1BZ1SLGL7210 | 15d |  | LABOR- SUBCONTRACTOR [312 h]; PLAM TREES QTY [18 ea]; LANDSCAPING SK [416 h]; GROUND COVER QTY [3335 Sqm]; SHRUBS QTY [92 ea] | 141,533 | 20 | 1BP2SLFR20 | DUKHCON1BP2SLGL7210 | DUKHCONI1BZ2SLGL7210 | DH | CON | 1BF | Z2 | FR | SL | B05 | B05-D10 | RES-1B |
|  | 20 | **ZONE - 3** |  | 2014-03-02 | 2014-11-26 |  |  |  |  |  |  |  |  |  |  |  |  |  |  |  |  |  |  |
|  | 10 | **INFRASTRUCTURE WORKS** |  | 2014-03-02 | 2014-11-26 |  |  |  |  |  |  |  |  |  |  |  |  |  |  |  |  |  |  |
|  | 10 | **DRAINAGE LINES** |  | 2014-03-02 | 2014-04-20 |  |  |  |  |  |  |  |  |  |  |  |  |  |  |  |  |  |  |
| DUKHCONI1BZ3DRGL5115 |  | Excavation for Drainage line | 25d | 2014-03-02 | 2014-03-30 | DUKHCONI1BZ2DRGL5130 SS+7d | -1d | 0d | LABOR- SUBCONTRACTOR [168 h]; EXCAVATION QTY [278 Cum]; LOADER [63 h]; POCLAIN [125 h]; TRUCK [63 h]; EQUIP OPERATORS [251 h] | 11,124 | 10 | 1BP3DRFR10 | DUKHCON1BP3DRGL5115 | DUKHCONI1BZ3DRGL5115 | DH | CON | 1BF | Z3 | FR | DR | B05 | B05-D06 | RES-1B |
| DUKHCONI1BZ3DRGL5120 |  | Laying of Drainage line | 25d | 2014-03-09 | 2014-04-06 | DUKHCONI1BZ3DRGL5115 SS+6d, DUKHCONI1BZ3DRGL5115 FF+6d | -1d | 0d | LABOR- SUBCONTRACTOR [60 h]; MECHANICALS SK [205.2 h]; DRAINAGE PIPES QTY [376 lm] | 29,454.5 | 15 | 1BP3DRFR15 | DUKHCON1BP3DRGL5120 | DUKHCONI1BZ3DRGL5120 | DH | CON | 1BF | Z3 | FR | DR | B05 | B05-D06 | RES-1B |
| DUKHCONI1BZ3DRGL5125 |  | Testing of Drainage line | 25d | 2014-03-17 | 2014-04-14 | DUKHCONI1BZ3DRGL5120 SS+7d, DUKHCONI1BZ3DRGL5120 FF+7d | -1d | 0d | MECHANICALS SK [86.4 h]; DRAINAGE PIPES TEST QTY [376 lm]; LABOR- SUBCONTRACTOR [48 h] | 3,272.75 | 20 | 1BP3DRFR20 | DUKHCON1BP3DRGL5125 | DUKHCONI1BZ3DRGL5125 | DH | CON | 1BF | Z3 | FR | DR | B05 | B05-D06 | RES-1B |
| DUKHCONI1BZ3DRGL5130 |  | Backfilling Drainage line | 15d | 2014-04-03 | 2014-04-20 | DUKHCONI1BZ3DRGL5125 FF+5d, DUKHCONI1BZ3DRGL5125 SS+10d | -1d | 0d | LABOR- SUBCONTRACTOR [66 h]; BACKFILLING QTY [278 Cum]; BOBCAT [113 h]; PLATE COMPACTOR [113 h]; TRUCK [23 h]; EQUIP OPERATORS [249 h] | 12,335.5 | 25 | 1BP3DRFR25 | DUKHCON1BP3DRGL5130 | DUKHCONI1BZ3DRGL5130 | DH | CON | 1BF | Z3 | FR | DR | B05 | B05-D06 | RES-1B |
|  | 15 | **MANHOLES & SOAKAWAY** |  | 2014-04-03 | 2014-06-23 |  |  |  |  |  |  |  |  |  |  |  |  |  |  |  |  |  |  |
| DUKHCONI1BZ3SAGL5135 |  | Construction of manholes Drainage | 25d | 2014-04-03 | 2014-05-01 | DUKHCONI1BZ3DRGL5130 FF+10d, DUKHCONI1BZ3DRGL5115, DUKHCONI1BZ2SAGL5135 | 58d | 10d | LABOR- SUBCONTRACTOR [6 h]; EXCAVATION QTY [9 Cum] | 31,914.5 | 10 | 1BP3SAFR10 | DUKHCON1BP3SAGL5135 | DUKHCONI1BZ3SAGL5135 | DH | CON | 1BF | Z3 | FR | SA | B05 | B05-D06 | RES-1B |
| DUKHCONI1BZ3SAGL5140 |  | Construction of soakaways | 25d | 2014-04-03 | 2014-05-01 | DUKHCONI1BZ3DRGL5115, DUKHCONI1BZ3DRGL5130 FF+10d | -1d | 0d | MANHOLES SK [136 h]; LABOR- SUBCONTRACTOR [54 h]; SOAKPIT QTY [17 ea] | 223,920 | 15 | 1BP3SAFR15 | DUKHCON1BP3SAGL5140 | DUKHCONI1BZ3SAGL5140 | DH | CON | 1BF | Z3 | FR | SA | B05 | B05-D06 | RES-1B |
| DUKHCONI1BZ3SAGL5145 |  | Construction of Road gullies | 25d | 2014-05-03 | 2014-05-31 | DUKHCONI1BZ2SAGL5145, DUKHCONI1BZ3SAGL5140 | -1d | 0d | MANHOLES SK [128 h]; LABOR- SUBCONTRACTOR [48 h]; ROAD GULLY QTY [16 ea] | 33,092.5 | 20 | 1BP3SAFR20 | DUKHCON1BP3SAGL5145 | DUKHCONI1BZ3SAGL5145 | DH | CON | 1BF | Z3 | FR | SA | B05 | B05-D06 | RES-1B |
| DUKHCONI1BZ3SAGL5150 |  | Connection with existing sewer manhole | 20d | 2014-06-01 | 2014-06-23 | DUKHCONI1BZ3SAGL5145, DUKHCONI1BZ3SAGL5135 | 33d | 44d | LABOR- SUBCONTRACTOR [6 h]; BACKFILLING QTY [9 Cum] | 2,838.25 | 25 | 1BP3SAFR25 | DUKHCON1BP3SAGL5150 | DUKHCONI1BZ3SAGL5150 | DH | CON | 1BF | Z3 | FR | SA | B05 | B05-D06 | RES-1B |

Notes:
- DUKHCONI1BZ2PSGL7000: Expenses: I1B-Road work 26553.5
- DUKHCONI1BZ2PSGL7005: Expenses: I1B-Road work 26553.5
- DUKHCONI1BZ2PSGL7010: Expenses: I1B-Road work 132765
- DUKHCONI1BZ2PSGL7015: Expenses: I1B-Road work 13276.8
- DUKHCONI1BZ2HDGL7020: Expenses: I1B-Hard and soft landscaping 75770
- DUKHCONI1BZ2HDGL7025: Expenses: I1B-Hard and soft landscaping 88099
- DUKHCONI1BZ2HDGL7030: Expenses: I1B-Hard and soft landscaping 105490
- DUKHCONI1BZ2HDGL7035: Expenses: I1B-Hard and soft landscaping 22800
- DUKHCONI1BZ2HDGL7040: Expenses: I1B-Hard and soft landscaping 3206
- DUKHCONI1BZ2SLGL7200: Expenses: I1B-Hard and soft landscaping 47004.5
- DUKHCONI1BZ2SLGL7205: Expenses: I1B-Hard and soft landscaping 266360
- DUKHCONI1BZ2SLGL7210: Expenses: I1B-Hard and soft landscaping 141533
- DUKHCONI1BZ3DRGL5115: Expenses: I1B-Surface Water drainage and Sewerage system 11124
- DUKHCONI1BZ3DRGL5120: Expenses: I1B-Surface Water drainage and Sewerage system 29454.5
- DUKHCONI1BZ3DRGL5125: Expenses: I1B-Surface Water drainage and Sewerage system 3272.75
- DUKHCONI1BZ3DRGL5130: Expenses: I1B-Surface Water drainage and Sewerage system 12335.5
- DUKHCONI1BZ3SAGL5135: Expenses: I1B-Surface Water drainage and Sewerage system 31914.5
- DUKHCONI1BZ3SAGL5140: Expenses: I1B-Surface Water drainage and Sewerage system 223920
- DUKHCONI1BZ3SAGL5145: Expenses: I1B-Surface Water drainage and Sewerage system 33092.5
- DUKHCONI1BZ3SAGL5150: Expenses: I1B-Surface Water drainage and Sewerage system 2838.25

| ID | WBS | Activity | Duration | Start | Finish | Predecessors | Total float | Free float | Resources | Cost | CODE | P3 ACTID | P6 ID (old) | NP61D | PROJECT | PHASES | PACKAGE | PART | ELEMENTS | STEP | BILL NOS | BILL DIVISION | RES PACK |
| --- | --- | --- | --- | --- | --- | --- | --- | --- | --- | --- | --- | --- | --- | --- | --- | --- | --- | --- | --- | --- | --- | --- | --- |
|  | 20 | **WATER SUPPLY SYSTEM** |  | 2014-04-27 | 2014-07-10 |  |  |  |  |  |  |  |  |  |  |  |  |  |  |  |  |  |  |
| DUKHCONI1BZ3WSGL5155 |  | Excavation for water line | 25d | 2014-04-27 | 2014-05-25 | DUKHCONI1BZ2WSGL5170, DUKHCONI1BZ3DRGL5130 SS+10d | -11d | 0d | LABOR- SUBCONTRACTOR [174 h]; EXCAVATION QTY [284 Cum]; LOADER [63 h]; POCLAIN [125 h]; TRUCK [63 h]; EQUIP OPERATORS [251 h] | 7,487 | 10 | 1BP3WSFR10 | DUKHCON1BP3WSGL5155 | DUKHCONI1BZ3WSGL5155 | DH | CON | 1BF | Z3 | FR | WS | B05 | B05-D07 | RES-1B |
| DUKHCONI1BZ3WSGL5160 |  | Laying of water line | 25d | 2014-05-03 | 2014-05-31 | DUKHCONI1BZ3WSGL5155 SS+5d | -11d | 0d | LABOR- SUBCONTRACTOR [114 h]; MECHANICALS SK [205.2 h]; WATER PIPES QTY [284 lm] | 59,693 | 15 | 1BP3WSFR15 | DUKHCON1BP3WSGL5160 | DUKHCONI1BZ3WSGL5160 | DH | CON | 1BF | Z3 | FR | WS | B05 | B05-D07 | RES-1B |
| DUKHCONI1BZ3WSGL5165 |  | Testing of potable water line | 25d | 2014-05-08 | 2014-06-05 | DUKHCONI1BZ3WSGL5160 SS+5d | -11d | 0d | LABOR- SUBCONTRACTOR [36 h]; MECHANICALS SK [64.8 h]; DRAINAGE PIPES TEST QTY [284 lm] | 5,833.5 | 20 | 1BP3WSFR20 | DUKHCON1BP3WSGL5165 | DUKHCONI1BZ3WSGL5165 | DH | CON | 1BF | Z3 | FR | WS | B05 | B05-D07 | RES-1B |
| DUKHCONI1BZ3WSGL5170 |  | Backfilling potable water line | 25d | 2014-05-14 | 2014-06-11 | DUKHCONI1BZ3WSGL5165 SS+5d, DUKHCONI1BZ3SAGL5145 FF | -11d | 0d | LABOR- SUBCONTRACTOR [72 h]; BACKFILLING QTY [284 Cum]; BOBCAT [125 h]; PLATE COMPACTOR [125 h]; TRUCK [25 h]; EQUIP OPERATORS [275 h] | 1,871.75 | 25 | 1BP3WSFR25 | DUKHCON1BP3WSGL5170 | DUKHCONI1BZ3WSGL5170 | DH | CON | 1BF | Z3 | FR | WS | B05 | B05-D07 | RES-1B |
| DUKHCONI1BZ3WSGL5175 |  | Construction of valve chambers & Thrust Blocks | 25d | 2014-05-20 | 2014-06-17 | DUKHCONI1BZ2WSGL5175, DUKHCONI1BZ3WSGL5155 SS+10d, DUKHCONI1BZ3WSGL5170 FF+5d | 18d | 0d | MANHOLES SK [64 h]; LABOR- SUBCONTRACTOR [24 h]; MANHOLES QTY [8 ea] | 2,129.5 | 30 | 1BP3WSFR30 | DUKHCON1BP3WSGL5175 | DUKHCONI1BZ3WSGL5175 | DH | CON | 1BF | Z3 | FR | WS | B05 | B05-D07 | RES-1B |
| DUKHCONI1BZ3WSGL5180 |  | Installation of meter ,Accessories & Connection | 20d | 2014-06-18 | 2014-07-10 | DUKHCONI1BZ3WSGL5175, DUKHCONI1BZ2WSGL5180 | 18d | 7d | LABOR- SUBCONTRACTOR [18 h]; MECHANICALS SK [32.4 h]; CHAMPER QTY [11 lm] | 13,321.5 | 35 | 1BP3WSFR35 | DUKHCON1BP3WSGL5180 | DUKHCONI1BZ3WSGL5180 | DH | CON | 1BF | Z3 | FR | WS | B05 | B05-D07 | RES-1B |
|  | 25 | **FIREFIGHTING LINES** |  | 2014-05-20 | 2014-07-19 |  |  |  |  |  |  |  |  |  |  |  |  |  |  |  |  |  |  |
| DUKHCONI1BZ3FFGL5185 |  | Excavation for firefighting line | 25d | 2014-05-20 | 2014-06-17 | DUKHCONI1BZ2FFGL5200 SS+10d, DUKHCONI1BZ3WSGL5170 SS+5d | -11d | 0d | LABOR- SUBCONTRACTOR [90 h]; EXCAVATION QTY [147 Cum]; LOADER [25 h]; POCLAIN [50 h]; TRUCK [25 h]; EQUIP OPERATORS [100 h] | 16,482.5 | 10 | 1BP3FFFR10 | DUKHCON1BP3FFGL5185 | DUKHCONI1BZ3FFGL5185 | DH | CON | 1BF | Z3 | FR | FF | B05 | B05-D07 | RES-1B |
| DUKHCONI1BZ3FFGL5190 |  | Laying of firefighting line | 25d | 2014-05-28 | 2014-06-25 | DUKHCONI1BZ3FFGL5185 SS+7d | -11d | 0d | LABOR- SUBCONTRACTOR [48 h]; MECHANICALS SK [162 h]; PLUMB PIPES QTY [147 lm] | 24,118.5 | 15 | 1BP3FFFR15 | DUKHCON1BP3FFGL5190 | DUKHCONI1BZ3FFGL5190 | DH | CON | 1BF | Z3 | FR | FF | B05 | B05-D07 | RES-1B |
| DUKHCONI1BZ3FFGL5195 |  | Testing of firefighting line | 25d | 2014-06-03 | 2014-07-01 | DUKHCONI1BZ3FFGL5190 SS+5d | -11d | 0d | LABOR- SUBCONTRACTOR [18 h]; MECHANICALS SK [32.4 h]; DRAINAGE PIPES TEST QTY [147 lm] | 1,930 | 20 | 1BP3FFFR20 | DUKHCON1BP3FFGL5195 | DUKHCONI1BZ3FFGL5195 | DH | CON | 1BF | Z3 | FR | FF | B05 | B05-D07 | RES-1B |
| DUKHCONI1BZ3FFGL5200 |  | Backfilling firefighting line | 25d | 2014-06-09 | 2014-07-07 | DUKHCONI1BZ3FFGL5195 SS+5d | -11d | 0d | LABOR- SUBCONTRACTOR [36 h]; BACKFILLING QTY [147 Cum]; BOBCAT [125 h]; PLATE COMPACTOR [125 h]; TRUCK [25 h]; EQUIP OPERATORS [275 h] | 4,120.5 | 25 | 1BP3FFFR25 | DUKHCON1BP3FFGL5200 | DUKHCONI1BZ3FFGL5200 | DH | CON | 1BF | Z3 | FR | FF | B05 | B05-D07 | RES-1B |
| DUKHCONI1BZ3FFGL5205 |  | Construction of valve chambers & Thrust Blocks | 25d | 2014-06-15 | 2014-07-13 | DUKHCONI1BZ3FFGL5200 FF+5d, DUKHCONI1BZ3FFGL5185 SS+10d, DUKHCONI1BZ2FFGL5205 | 11d | 0d | EXCAVATION QTY [16 Cum]; REINFORCEMENT BARS QTY [628 kg]; FORMWORK QTY [34 Sqm]; CONCRETE QTY [10 Cum]; STEEL FIXERS SK [56 h]; CARPENTERS SK [72 h]; CONCRETE MASON SK [24 h]; LABOR- SUBCONTRACTOR [114 h] | 1,490.5 | 30 | 1BP3FFFR30 | DUKHCON1BP3FFGL5205 | DUKHCONI1BZ3FFGL5205 | DH | CON | 1BF | Z3 | FR | FF | B05 | B05-D07 | RES-1B |
| DUKHCONI1BZ3FFGL5210 |  | Connection with existing Firewater System | 25d | 2014-06-21 | 2014-07-19 | DUKHCONI1BZ2FFGL5210, DUKHCONI1BZ3FFGL5205 FF+5d, DUKHCONI1BZ3WSGL5180 FF | 11d | 15d | LABOR- SUBCONTRACTOR [30 h]; MECHANICALS SK [54 h]; FIRE EXTINGUISHER QTY [10 ea] | 6,453.25 | 35 | 1BP3FFFR35 | DUKHCON1BP3FFGL5210 | DUKHCONI1BZ3FFGL5210 | DH | CON | 1BF | Z3 | FR | FF | B05 | B05-D07 | RES-1B |
|  | 30 | **ELECTRICAL LINES** |  | 2014-06-17 | 2014-08-13 |  |  |  |  |  |  |  |  |  |  |  |  |  |  |  |  |  |  |
| DUKHCONI1BZ3ELGL5215 |  | Excavation Cable Trenches & Duct Banks | 25d | 2014-06-17 | 2014-07-15 | DUKHCONI1BZ2ELGL5225, DUKHCONI1BZ3FFGL5200 SS+7d | -11d | 0d | LABOR- SUBCONTRACTOR [1896 h]; EXCAVATION QTY [3159 Cum]; LOADER [219 h]; POCLAIN [438 h]; TRUCK [219 h]; EQUIP OPERATORS [876 h] | 15,897.75 | 10 | 1BP3ECFR10 | DUKHCON1BP3ELGL5215 | DUKHCONI1BZ3ELGL5215 | DH | CON | 1BF | Z3 | FR | EC | B05 | B05-D04 | RES-1B |
| DUKHCONI1BZ3ELGL5220 |  | Laying of electrical cables | 25d | 2014-06-23 | 2014-07-21 | DUKHCONI1BZ3ELGL5215 SS+5d | -8d | 0d | LABOR- SUBCONTRACTOR [948 h]; ELECTRICIANS SK [3539.2 h]; CABLE QTY [3159 lm] | 1,166,243.5 | 15 | 1BP3ECFR15 | DUKHCON1BP3ELGL5220 | DUKHCONI1BZ3ELGL5220 | DH | CON | 1BF | Z3 | FR | EC | B05 | B05-D04 | RES-1B |
| DUKHCONI1BZ3ELGL5225 |  | Backfilling Electrical trench | 25d | 2014-07-01 | 2014-07-29 | DUKHCONI1BZ3ELGL5220 SS+7d, DUKHCONI1BZ3ELGL5215 FF+7d | -8d | 0d | LABOR- SUBCONTRACTOR [762 h]; BACKFILLING QTY [3159 Cum]; BOBCAT [500 h]; PLATE COMPACTOR [500 h]; TRUCK [100 h]; EQUIP OPERATORS [1100 h] | 6,812.75 | 20 | 1BP3ECFR20 | DUKHCON1BP3ELGL5225 | DUKHCONI1BZ3ELGL5225 | DH | CON | 1BF | Z3 | FR | EC | B05 | B05-D04 | RES-1B |
| DUKHCONI1BZ3ELGL5230 |  | Construction of Submain Board & Feeder Pillar | 25d | 2014-07-13 | 2014-08-13 | DUKHCONI1BZ2ELGL5230, DUKHCONI1BZ3ELGL5225 FF+10d, DUKHCONI1BZ3ELGL5225 SS+10d | 38d | 0d | STEEL FIXERS SK [8 h]; CARPENTERS SK [48 h]; CONCRETE MASON SK [8 h]; LABOR- SUBCONTRACTOR [36 h]; LABOR- SUBCONTRACTOR [48 h]; REINFORCEMENT BARS QTY [27 kg]; FORMWORK QTY [21 Sqm]; CONCRETE QTY [2 Cum]; ALUMINIUM DOOR QTY [3 ea]; DOOR ERECTOR SK [16 h]; EXPANSION JOINT QTY [14 Sqm]; EXPANSION JOINT SKILLED SK [112 h] | 82,371.75 | 25 | 1BP3ECFR25 | DUKHCON1BP3ELGL5230 | DUKHCONI1BZ3ELGL5230 | DH | CON | 1BF | Z3 | FR | EC | B05 | B05-D04 | RES-1B |
|  | 35 | **STREET LIGHTING** |  | 2014-06-17 | 2014-09-11 |  |  |  |  |  |  |  |  |  |  |  |  |  |  |  |  |  |  |
| DUKHCONI1BZ3STGL5235 |  | Excavation for Street lighting | 25d | 2014-06-17 | 2014-07-15 | DUKHCONI1BZ2STGL5250 SS+10d, DUKHCONI1BZ3ELGL5215 SS | -11d | 0d | LABOR- SUBCONTRACTOR [18 h]; EXCAVATION QTY [29 Cum]; LOADER [13 h]; POCLAIN [25 h]; TRUCK [13 h]; EQUIP OPERATORS [51 h] | 2,909.75 | 10 | 1BP3STFR10 | DUKHCON1BP3STGL5235 | DUKHCONI1BZ3STGL5235 | DH | CON | 1BF | Z3 | FR | ST | B05 | B05-D09 | RES-1B |
| DUKHCONI1BZ3STGL5240 |  | Construction of Duct Banks | 25d | 2014-06-23 | 2014-07-21 | DUKHCONI1BZ3STGL5235 SS+5d | -11d | 0d | LABOR- SUBCONTRACTOR [318 h]; ELECTRICIANS SK [1176 h]; DUCT BANK QTY [420 lm] | 79,726.25 | 15 | 1BP3STFR15 | DUKHCON1BP3STGL5240 | DUKHCONI1BZ3STGL5240 | DH | CON | 1BF | Z3 | FR | ST | B05 | B05-D09 | RES-1B |
| DUKHCONI1BZ3STGL5245 |  | Construction of Foundation | 25d | 2014-06-23 | 2014-07-21 | DUKHCONI1BZ3STGL5240 SS | -11d | 0d | MANHOLES SK [456 h]; LABOR- SUBCONTRACTOR [174 h]; COLUMN BASE QTY [29 ea] | 27,122.5 | 20 | 1BP3STFR20 | DUKHCON1BP3STGL5245 | DUKHCONI1BZ3STGL5245 | DH | CON | 1BF | Z3 | FR | ST | B05 | B05-D09 | RES-1B |
| DUKHCONI1BZ3STGL5250 |  | Backfilling Street Lighting | 25d | 2014-06-29 | 2014-07-27 | DUKHCONI1BZ3STGL5235 FF+5d, DUKHCONI1BZ3STGL5245 SS+5d | -11d | 0d | LABOR- SUBCONTRACTOR [12 h]; BACKFILLING QTY [29 Cum]; BOBCAT [50 h]; PLATE COMPACTOR [50 h]; TRUCK [10 h]; EQUIP OPERATORS [110 h] | 2,909.75 | 25 | 1BP3STFR25 | DUKHCON1BP3STGL5250 | DUKHCONI1BZ3STGL5250 | DH | CON | 1BF | Z3 | FR | ST | B05 | B05-D09 | RES-1B |
| DUKHCONI1BZ3STGL5255 |  | Installation of light Post | 25d | 2014-07-10 | 2014-08-11 | DUKHCONI1BZ3STGL5250 SS+10d, DUKHCONI1BZ2STGL5255 | 58d | 15d | LABOR- SUBCONTRACTOR [48 h]; ELECTRICIANS SK [168 h]; LIGHTPOST COLUMN QTY [29 ea] | 369,147.75 | 30 | 1BP3STFR30 | DUKHCON1BP3STGL5255 | DUKHCONI1BZ3STGL5255 | DH | CON | 1BF | Z3 | FR | ST | B05 | B05-D09 | RES-1B |
| DUKHCONI1BZ3STGL5260 |  | Electrical Works | 25d | 2014-08-14 | 2014-09-11 | DUKHCONI1BZ3ELGL5230, DUKHCONI1BZ3STGL5255 SS+7d, DUKHCONI1BZ2STGL5260 | 38d | 15d | LABOR- SUBCONTRACTOR [222 h]; ELECTRICIANS SK [817.6 h]; CABLE QTY [725 lm] | 16,658.75 | 35 | 1BP3STFR35 | DUKHCON1BP3STGL5260 | DUKHCONI1BZ3STGL5260 | DH | CON | 1BF | Z3 | FR | ST | B05 | B05-D09 | RES-1B |

Notes:
- DUKHCONI1BZ3WSGL5155: Expenses: I1B-Water supply system 7487
- DUKHCONI1BZ3WSGL5160: Expenses: I1B-Water supply system 59693
- DUKHCONI1BZ3WSGL5165: Expenses: I1B-Water supply system 5833.5
- DUKHCONI1BZ3WSGL5170: Expenses: I1B-Water supply system 1871.75
- DUKHCONI1BZ3WSGL5175: Expenses: I1B-Water supply system 2129.5
- DUKHCONI1BZ3WSGL5180: Expenses: I1B-Water supply system 13321.5
- DUKHCONI1BZ3FFGL5185: Expenses: I1B-Water supply system 16482.5
- DUKHCONI1BZ3FFGL5190: Expenses: I1B-Water supply system 24118.5
- DUKHCONI1BZ3FFGL5195: Expenses: I1B-Water supply system 1930
- DUKHCONI1BZ3FFGL5200: Expenses: I1B-Water supply system 4120.5
- DUKHCONI1BZ3FFGL5205: Expenses: I1B-Water supply system 1490.5
- DUKHCONI1BZ3FFGL5210: Expenses: I1B-Water supply system 6453.25
- DUKHCONI1BZ3ELGL5215: Expenses: I1B-Electrical power supply and distribution 15897.8
- DUKHCONI1BZ3ELGL5220: Expenses: I1B-Electrical power supply and distribution 1166244
- DUKHCONI1BZ3ELGL5225: Expenses: I1B-Electrical power supply and distribution 6812.75
- DUKHCONI1BZ3ELGL5230: Expenses: I1B-Electrical power supply and distribution 82371.8
- DUKHCONI1BZ3STGL5235: Expenses: I1B-Street lighting 2909.75
- DUKHCONI1BZ3STGL5240: Expenses: I1B-Street lighting 79726.2
- DUKHCONI1BZ3STGL5245: Expenses: I1B-Street lighting 27122.5
- DUKHCONI1BZ3STGL5250: Expenses: I1B-Street lighting 2909.75
- DUKHCONI1BZ3STGL5255: Expenses: I1B-Street lighting 369148
- DUKHCONI1BZ3STGL5260: Expenses: I1B-Street lighting 16658.8

| ID | WBS | Activity | Duration | Start | Finish | Predecessors | Total float | Free float | Resources | Cost | CODE | P3 ACTID | P6 ID (old) | NP61D | PROJECT | PHASES | PACKAGE | PART | ELEMENTS | STEP | BILL NOS | BILL DIVISION | RES PACK |
| --- | --- | --- | --- | --- | --- | --- | --- | --- | --- | --- | --- | --- | --- | --- | --- | --- | --- | --- | --- | --- | --- | --- | --- |
|  | 40 | **IRRIGATION LINES** |  | 2014-07-30 | 2014-10-07 |  |  |  |  |  |  |  |  |  |  |  |  |  |  |  |  |  |  |
| DUKHCONI1BZ3IRGL5265 |  | Excavation for irrigation line | 25d | 2014-07-30 | 2014-08-31 | DUKHCONI1BZ2IRGL5280, DUKHCONI1BZ3ELGL5225 | -4d | 0d | LABOR- SUBCONTRACTOR [498 h]; EXCAVATION QTY [822 Cum]; LOADER [125 h]; POCLAIN [250 h]; TRUCK [125 h]; EQUIP OPERATORS [500 h] | 13,674.5 | 10 | 1BP3IRFR10 | DUKHCON1BP3IRGL5265 | DUKHCONI1BZ3IRGL5265 | DH | CON | 1BF | Z3 | FR | IR | B05 | B05-D07 | RES-1B |
| DUKHCONI1BZ3IRGL5270 |  | Laying of irrigationline | 25d | 2014-08-09 | 2014-09-06 | DUKHCONI1BZ3IRGL5265 SS+5d | -4d | 0d | LABOR- SUBCONTRACTOR [126 h]; MECHANICALS SK [226.8 h]; IRRIGATION PIPES QTY [822 lm] | 8,538.25 | 15 | 1BP3IRFR15 | DUKHCON1BP3IRGL5270 | DUKHCONI1BZ3IRGL5270 | DH | CON | 1BF | Z3 | FR | IR | B05 | B05-D07 | RES-1B |
| DUKHCONI1BZ3IRGL5275 |  | Testing of irrigation line | 25d | 2014-08-14 | 2014-09-11 | DUKHCONI1BZ3IRGL5270 SS+5d | -4d | 0d | LABOR- SUBCONTRACTOR [102 h]; MECHANICALS SK [183.6 h]; DRAINAGE PIPES TEST QTY [822 lm] | 1,219.25 | 20 | 1BP3IRFR20 | DUKHCON1BP3IRGL5275 | DUKHCONI1BZ3IRGL5275 | DH | CON | 1BF | Z3 | FR | IR | B05 | B05-D07 | RES-1B |
| DUKHCONI1BZ3IRGL5280 |  | Backfilling irrigation line | 25d | 2014-08-20 | 2014-09-17 | DUKHCONI1BZ3IRGL5275 SS+5d | -4d | 0d | LABOR- SUBCONTRACTOR [156 h]; BACKFILLING QTY [642 Cum]; BOBCAT [250 h]; PLATE COMPACTOR [250 h]; TRUCK [50 h]; EQUIP OPERATORS [550 h] | 3,419 | 25 | 1BP3IRFR25 | DUKHCON1BP3IRGL5280 | DUKHCONI1BZ3IRGL5280 | DH | CON | 1BF | Z3 | FR | IR | B05 | B05-D07 | RES-1B |
| DUKHCONI1BZ3IRGL5285 |  | Construction of Thrust Blocks,Pull boxes | 25d | 2014-09-01 | 2014-09-29 | DUKHCONI1BZ3ELGL5225 SS+10d, DUKHCONI1BZ3IRGL5280 FF+10d | 1d | 0d | LABOR- SUBCONTRACTOR [36 h]; ELECTRICIANS SK [33.6 h]; THRUST BLOCKS QTY [3 ea]; PULL BOX QTY [10 ea]; PULL BOX SK [80 h] | 10,378.75 | 30 | 1BP3IRFR30 | DUKHCON1BP3IRGL5285 | DUKHCONI1BZ3IRGL5285 | DH | CON | 1BF | Z3 | FR | IR | B05 | B05-D07 | RES-1B |
| DUKHCONI1BZ3IRGL5290 |  | Irrigation Fittings (Nozzle,Values) | 25d | 2014-09-09 | 2014-10-07 | DUKHCONI1BZ3IRGL5280 SS+10d, DUKHCONI1BZ3IRGL5285 SS+7d | 1d | 11d | LABOR- SUBCONTRACTOR [126 h]; MECHANICALS SK [226.8 h]; CHAMPER QTY [81 lm] | 26,420.5 | 35 | 1BP3IRFR35 | DUKHCON1BP3IRGL5290 | DUKHCONI1BZ3IRGL5290 | DH | CON | 1BF | Z3 | FR | IR | B05 | B05-D07 | RES-1B |
|  | 45 | **TELECOMMUNICATION LINES** |  | 2014-07-10 | 2014-08-28 |  |  |  |  |  |  |  |  |  |  |  |  |  |  |  |  |  |  |
| DUKHCONI1BZ3TCGL5295 |  | Excavation Telecommunication trenches | 20d | 2014-07-10 | 2014-08-05 | DUKHCONI1BZ3STGL5250 SS+10d, DUKHCONI1BZ2TCGL5305 | -11d | 0d | LABOR- SUBCONTRACTOR [156 h]; EXCAVATION QTY [255 Cum]; LOADER [50 h]; POCLAIN [100 h]; TRUCK [50 h]; EQUIP OPERATORS [200 h] | 9,762.25 | 10 | 1BP3TCFR10 | DUKHCON1BP3TCGL5295 | DUKHCONI1BZ3TCGL5295 | DH | CON | 1BF | Z3 | FR | TC | B05 | B05-D05 | RES-1B |
| DUKHCONI1BZ3TCGL5300 |  | Laying of cables | 20d | 2014-07-16 | 2014-08-11 | DUKHCONI1BZ3TCGL5295 SS+5d | -11d | 0d | LABOR- SUBCONTRACTOR [156 h]; ELECTRICIANS SK [571.2 h]; CABLE QTY [510 lm] | 2,142 | 15 | 1BP3TCFR15 | DUKHCON1BP3TCGL5300 | DUKHCONI1BZ3TCGL5300 | DH | CON | 1BF | Z3 | FR | TC | B05 | B05-D05 | RES-1B |
| DUKHCONI1BZ3TCGL5305 |  | Backfilling telecommunication trench | 20d | 2014-07-22 | 2014-08-17 | DUKHCONI1BZ3TCGL5300 SS+5d | -11d | 0d | LABOR- SUBCONTRACTOR [66 h]; BACKFILLING QTY [255 Cum]; BOBCAT [100 h]; PLATE COMPACTOR [100 h]; TRUCK [20 h]; EQUIP OPERATORS [220 h] | 4,183.75 | 20 | 1BP3TCFR20 | DUKHCON1BP3TCGL5305 | DUKHCONI1BZ3TCGL5305 | DH | CON | 1BF | Z3 | FR | TC | B05 | B05-D05 | RES-1B |
| DUKHCONI1BZ3TCGL5310 |  | Connection & Installation | 20d | 2014-08-06 | 2014-08-28 | DUKHCONI1BZ2TCGL5310, DUKHCONI1BZ3TCGL5305 SS+10d | 40d | 20d | LABOR- SUBCONTRACTOR [36 h]; ELECTRICIANS SK [235.2 h]; TELEPHONE SOCKETS QTY [21 ea] | 60,781.25 | 25 | 1BP3TCFR25 | DUKHCON1BP3TCGL5310 | DUKHCONI1BZ3TCGL5310 | DH | CON | 1BF | Z3 | FR | TC | B05 | B05-D05 | RES-1B |
|  | 50 | **BOUNDARY WALL** |  | 2014-07-10 | 2014-10-07 |  |  |  |  |  |  |  |  |  |  |  |  |  |  |  |  |  |  |
| DUKHCONI1BZ3BWGL5315 |  | Construction of Boundary Wall (Ht-3m) | 25d | 2014-07-10 | 2014-08-11 | DUKHCONI1BZ2BWGL5315, DUKHCONI1BZ3STGL5250 SS+10d | 34d | 0d | STEEL FIXERS SK [112 h]; LABOR- SUBCONTRACTOR [84 h]; BOUNDARY WIRE MESH QTY [275 Sqm] | 405,782 | 10 | 1BP3BWFR10 | DUKHCON1BP3ARGL5315 | DUKHCONI1BZ3BWGL5315 | DH | CON | 1BF | Z3 | FR | BW | B05 | B05-D10 | RES-1B |
| DUKHCONI1BZ3BWGL5320 |  | Install.Steel Gate,Entance Barrier (3m Wall) | 25d | 2014-07-27 | 2014-08-27 | DUKHCONI1BZ3BWGL5315 SS+14d | 34d | 0d | LABOR- SUBCONTRACTOR [6 h]; GATE QTY [1 ea]; GATE ERECTOR SK [8 h] | 5,703.5 | 15 | 1BP3BWFR15 | DUKHCON1BP3ARGL5320 | DUKHCONI1BZ3BWGL5320 | DH | CON | 1BF | Z3 | FR | BW | B05 | B05-D10 | RES-1B |
| DUKHCONI1BZ3BWGL5325 |  | Const. of Villa Front Boundary Wall (Ht-2m) | 25d | 2014-08-28 | 2014-09-25 | DUKHCONI1BZ3BWGL5315 SS+5d, DUKHCONI1BZ3BWGL5320, DUKHCONI1BZ2BWGL5325 | 34d | 0d | STEEL FIXERS SK [80 h]; LABOR- SUBCONTRACTOR [60 h]; BOUNDARY WIRE MESH QTY [188 Sqm] | 213,900 | 20 | 1BP3BWFR20 | DUKHCON1BP3ARGL5325 | DUKHCONI1BZ3BWGL5325 | DH | CON | 1BF | Z3 | FR | BW | B05 | B05-D10 | RES-1B |
| DUKHCONI1BZ3BWGL5330 |  | Const. of Blockwork fence Wall (Ht-1.85m) | 25d | 2014-09-09 | 2014-10-07 | DUKHCONI1BZ2BWGL5330, DUKHCONI1BZ3BWGL5325 SS+10d | 47d | 15d | STEEL FIXERS SK [80 h]; LABOR- SUBCONTRACTOR [60 h]; BOUNDARY WIRE MESH QTY [201 Sqm] | 239,825 | 30 | 1BP3BWFR30 | DUKHCON1BP3ARGL5330 | DUKHCONI1BZ3BWGL5330 | DH | CON | 1BF | Z3 | FR | BW | B05 | B05-D10 | RES-1B |
|  | 55 | **ROAD WORKS** |  | 2014-08-18 | 2014-11-03 |  |  |  |  |  |  |  |  |  |  |  |  |  |  |  |  |  |  |
| DUKHCONI1BZ3RWGL6000 |  | Excavation & Earth Filling | 10d | 2014-08-18 | 2014-08-28 | DUKHCONI1BZ3FFGL5210, DUKHCONI1BZ3ELGL5225, DUKHCONI1BZ2RWGL6015 SS+10d, DUKHCONI1BZ3FFGL5200, DUKHCONI1BZ3SAGL5150, DUKHCONI1BZ1FFGL5210, DUKHCONI1BZ3TCGL5305, DUKHCONI1BZ3STGL5250 | -11d | 0d | LABOR- SUBCONTRACTOR [750 h]; EXCAVATION QTY [977 Cum]; BACKFILLING QTY [676 Cum]; LOADER [100 h]; POCLAIN [200 h]; TRUCK [100 h]; EQUIP OPERATORS [400 h] | 112,697.5 | 10 | 1BP3RDFR10 | DUKHCON1BP3RDGL6000 | DUKHCONI1BZ3RWGL6000 | DH | CON | 1BF | Z3 | FR | RD | B05 | B05-D08 | RES-1B |
| DUKHCONI1BZ3RWGL6005 |  | Laying of Sub Grade | 25d | 2014-08-30 | 2014-09-27 | DUKHCONI1BZ3RWGL6000 | -11d | 0d | LABOR- SUBCONTRACTOR [24 h]; SUBGRADE QTY [383 Sqm] | 117,466 | 15 | 1BP3RDFR15 | DUKHCON1BP3RDGL6005 | DUKHCONI1BZ3RWGL6005 | DH | CON | 1BF | Z3 | FR | RD | B05 | B05-D08 | RES-1B |
| DUKHCONI1BZ3RWGL6010 |  | Laying of Precast Kerbs | 25d | 2014-09-10 | 2014-10-08 | DUKHCONI1BZ3RWGL6005 SS+10d | -11d | 0d | LABOR- SUBCONTRACTOR [24 h]; GRANULAR SUBBASE QTY [383 Sqm] | 112,124.25 | 20 | 1BP3RDFR20 | DUKHCON1BP3RDGL6010 | DUKHCONI1BZ3RWGL6010 | DH | CON | 1BF | Z3 | FR | RD | B05 | B05-D08 | RES-1B |
| DUKHCONI1BZ3RWGL6015 |  | Laying of Granular Sub Base Coarse | 20d | 2014-09-22 | 2014-10-16 | DUKHCONI1BZ3RWGL6010 SS+10d | -11d | 0d | HEAVY ROLLER [400 h]; LOADER [100 h]; TRUCK [100 h]; EQUIP OPERATORS [600 h]; KERBSTONE MASON SK [784 h]; LABOR- SUBCONTRACTOR [444 h]; KERBSTONE QTY [491 lm]; EDGE STONE QTY [491 Sqm] | 58,733 | 25 | 1BP3RDFR25 | DUKHCON1BP3RDGL6015 | DUKHCONI1BZ3RWGL6015 | DH | CON | 1BF | Z3 | FR | RD | B05 | B05-D08 | RES-1B |
| DUKHCONI1BZ3RWGL6020 |  | Laying of Road Base Asphalt Concrete | 5d | 2014-10-18 | 2014-10-22 | DUKHCONI1BZ3RWGL6015 | 11d | 0d | LABOR- SUBCONTRACTOR [24 h]; ASPHALT CONCRETE QTY [1913 Cum]; ASPHALT PAVER MACHINE [50 h]; HAND ROLLER [100 h]; EQUIP OPERATORS [150 h] | 149,434.75 | 30 | 1BP3RDFR30 | DUKHCON1BP3RDGL6020 | DUKHCONI1BZ3RWGL6020 | DH | CON | 1BF | Z3 | FR | RD | B05 | B05-D08 | RES-1B |
| DUKHCONI1BZ3RWGL6025 |  | Laying of Asphalt Wearing Coarse | 5d | 2014-10-23 | 2014-10-28 | DUKHCONI1BZ3RWGL6020, DUKHCONI1BZ2RWGL6025 | 20d | 0d | LABOR- SUBCONTRACTOR [24 h]; ASPHALT WEARING COURSE QTY [1913 Sqm]; ASPHALT PAVER MACHINE [50 h]; HAND ROLLER [100 h]; EQUIP OPERATORS [150 h] | 77,849 | 35 | 1BP3RDFR35 | DUKHCON1BP3RDGL6025 | DUKHCONI1BZ3RWGL6025 | DH | CON | 1BF | Z3 | FR | RD | B05 | B05-D08 | RES-1B |
| DUKHCONI1BZ3RWGL6030 |  | Traffic Signage & Road Marking | 5d | 2014-10-29 | 2014-11-03 | DUKHCONI1BZ2RWGL6030, DUKHCONI1BZ3RWGL6025 | 26d | 15d | LABOR- SUBCONTRACTOR [330 h]; STEEL ERECTOR SK [400 h]; TRAFFIC SIGN QTY [249 ea]; ROAD MARKING QTY [92 lm]; ASPHALT SK [152 h] | 79,931 | 40 | 1BP3RDFR40 | DUKHCON1BP3RDGL6030 | DUKHCONI1BZ3RWGL6030 | DH | CON | 1BF | Z3 | FR | RD | B05 | B05-D08 | RES-1B |

Notes:
- DUKHCONI1BZ3IRGL5265: Expenses: I1B-Water supply system 13674.5
- DUKHCONI1BZ3IRGL5270: Expenses: I1B-Water supply system 8538.25
- DUKHCONI1BZ3IRGL5275: Expenses: I1B-Water supply system 1219.25
- DUKHCONI1BZ3IRGL5280: Expenses: I1B-Water supply system 3419
- DUKHCONI1BZ3IRGL5285: Expenses: I1B-Water supply system 10378.8
- DUKHCONI1BZ3IRGL5290: Expenses: I1B-Water supply system 26420.5
- DUKHCONI1BZ3TCGL5295: Expenses: I1B-Telecommunication 9762.25
- DUKHCONI1BZ3TCGL5300: Expenses: I1B-Telecommunication 2142
- DUKHCONI1BZ3TCGL5305: Expenses: I1B-Telecommunication 4183.75
- DUKHCONI1BZ3TCGL5310: Expenses: I1B-Telecommunication 60781.2
- DUKHCONI1BZ3BWGL5315: Expenses: I1B-Hard and soft landscaping 405782
- DUKHCONI1BZ3BWGL5320: Expenses: I1B-Hard and soft landscaping 5703.5
- DUKHCONI1BZ3BWGL5325: Expenses: I1B-Hard and soft landscaping 213900
- DUKHCONI1BZ3BWGL5330: Expenses: I1B-Hard and soft landscaping 239825
- DUKHCONI1BZ3RWGL6000: Expenses: I1B-Road work 112698
- DUKHCONI1BZ3RWGL6005: Expenses: I1B-Road work 117466
- DUKHCONI1BZ3RWGL6010: Expenses: I1B-Road work 112124
- DUKHCONI1BZ3RWGL6015: Expenses: I1B-Road work 58733
- DUKHCONI1BZ3RWGL6020: Expenses: I1B-Road work 149435
- DUKHCONI1BZ3RWGL6025: Expenses: I1B-Road work 77849
- DUKHCONI1BZ3RWGL6030: Expenses: I1B-Road work 79931

| ID | WBS | Activity | Duration | Start | Finish | Predecessors | Total float | Free float | Resources | Cost | CODE | P3 ACTID | P6 ID (old) | NP61D | PROJECT | PHASES | PACKAGE | PART | ELEMENTS | STEP | BILL NOS | BILL DIVISION | RES PACK |
| --- | --- | --- | --- | --- | --- | --- | --- | --- | --- | --- | --- | --- | --- | --- | --- | --- | --- | --- | --- | --- | --- | --- | --- |
|  | 60 | **PARKING SHED** |  | 2014-09-28 | 2014-11-26 |  |  |  |  |  |  |  |  |  |  |  |  |  |  |  |  |  |  |
| DUKHCONI1BZ3PSGL7000 |  | Excavation | 15d | 2014-09-28 | 2014-10-16 | DUKHCONI1BZ2PSGL7005, DUKHCONI1BZ3RWGL6015 SS+5d | 16d | 5d | LABOR- SUBCONTRACTOR [72 h]; EXCAVATION QTY [120 Cum]; LOADER [23 h]; POCLAIN [45 h]; TRUCK [23 h]; EQUIP OPERATORS [91 h] | 26,553.5 | 10 | 1BP3PSFR10 | DUKHCON1BP3PSGL7000 | DUKHCONI1BZ3PSGL7000 | DH | CON | 1BF | Z3 | FR | PS | B05 | B05-D08 | RES-1B |
| DUKHCONI1BZ3PSGL7005 |  | Foundation casting | 15d | 2014-10-12 | 2014-10-28 | DUKHCONI1BZ3PSGL7000 SS+5d, DUKHCONI1BZ3PSGL7000 FF+5d, DUKHCONI1BZ3RWGL6015 FF+10d | 11d | 0d | STEEL FIXERS SK [96 h]; CARPENTERS SK [56 h]; CONCRETE MASON SK [24 h]; LABOR- SUBCONTRACTOR [126 h]; REINFORCEMENT BARS QTY [1120 kg]; FORMWORK QTY [27 Sqm]; CONCRETE QTY [12 Cum] | 26,553.5 | 15 | 1BP3PSFR15 | DUKHCON1BP3PSGL7005 | DUKHCONI1BZ3PSGL7005 | DH | CON | 1BF | Z3 | FR | PS | B05 | B05-D08 | RES-1B |
| DUKHCONI1BZ3PSGL7010 |  | Column, Frame& Fabrics Erection | 25d | 2014-10-23 | 2014-11-20 | DUKHCONI1BZ3RWGL6020, DUKHCONI1BZ3BWGL5330 FF, DUKHCONI1BZ3PSGL7005 SS+10d, DUKHCONI1BZ3RWGL6030 FF, DUKHCONI1BZ2PSGL7010 | 11d | 0d | LABOR- SUBCONTRACTOR [114 h]; STEEL ERECTOR SK [200 h]; PARKING SHED QTY [614 ea] | 132,765.25 | 20 | 1BP3PSFR20 | DUKHCON1BP3PSGL7010 | DUKHCONI1BZ3PSGL7010 | DH | CON | 1BF | Z3 | FR | PS | B05 | B05-D08 | RES-1B |
| DUKHCONI1BZ3PSGL7015 |  | Electrical Works-Parking Shed | 25d | 2014-10-29 | 2014-11-26 | DUKHCONI1BZ2PSGL7015, DUKHCONI1BZ3STGL5260, DUKHCONI1BZ3PSGL7010 SS+5d | 11d | 16d | LABOR- SUBCONTRACTOR [18 h]; ELECTRICIANS SK [33.6 h]; LIGHTS QTY [13 ea] | 13,276.75 | 25 | 1BP3PSFR25 | DUKHCON1BP3PSGL7015 | DUKHCONI1BZ3PSGL7015 | DH | CON | 1BF | Z3 | FR | PS | B05 | B05-D08 | RES-1B |
|  | 65 | **HARD LANDSCAPING** |  | 2014-08-18 | 2014-11-09 |  |  |  |  |  |  |  |  |  |  |  |  |  |  |  |  |  |  |
| DUKHCONI1BZ3HDGL7020 |  | Precast Concrete Kerbs works | 20d | 2014-08-18 | 2014-09-09 | DUKHCONI1BZ3RWGL6000 SS | -10d | 0d | KERBSTONE MASON SK [512 h]; LABOR- SUBCONTRACTOR [288 h]; KERBSTONE QTY [633 lm] | 75,770 | 10 | 1BP3HDFR10 | DUKHCON1BP3HDGL7020 | DUKHCONI1BZ3HDGL7020 | DH | CON | 1BF | Z3 | FR | HD | B05 | B05-D10 | RES-1B |
| DUKHCONI1BZ3HDGL7025 |  | Interlocking for Walkways | 25d | 2014-08-30 | 2014-09-27 | DUKHCONI1BZ3HDGL7020 SS+10d | -10d | 0d | INTERLOCK MASON SK [592 h]; LABOR- SUBCONTRACTOR [222 h]; INTERLOCK QTY [736 Sqm] | 88,099 | 15 | 1BP3HDFR15 | DUKHCON1BP3HDGL7025 | DUKHCONI1BZ3HDGL7025 | DH | CON | 1BF | Z3 | FR | HD | B05 | B05-D10 | RES-1B |
| DUKHCONI1BZ3HDGL7030 |  | Construction of Retaining wall | 25d | 2014-09-10 | 2014-10-08 | DUKHCONI1BZ2HDGL7030, DUKHCONI1BZ3HDGL7025 SS+10d | -10d | 0d | STEEL FIXERS SK [520 h]; CARPENTERS SK [1208 h]; CONCRETE MASON SK [160 h]; LABOR- SUBCONTRACTOR [1452 h]; EXCAVATION QTY [62 Cum]; REINFORCEMENT BARS QTY [6503 kg]; FORMWORK QTY [603 Sqm]; CONCRETE QTY [77 Cum] | 105,489.75 | 20 | 1BP3HDFR20 | DUKHCON1BP3HDGL7030 | DUKHCONI1BZ3HDGL7030 | DH | CON | 1BF | Z3 | FR | HD | B05 | B05-D10 | RES-1B |
| DUKHCONI1BZ3HDGL7035 |  | Construction of Wash Stone Boulders | 25d | 2014-09-10 | 2014-10-08 | DUKHCONI1BZ2HDGL7035, DUKHCONI1BZ3HDGL7030 SS | -10d | 0d | TILE MASON SK [16 h]; LABOR- SUBCONTRACTOR [6 h]; STONE BOULDERS QTY [5 Sqm] | 22,800 | 25 | 1BP3HDFR25 | DUKHCON1BP3HDGL7035 | DUKHCONI1BZ3HDGL7035 | DH | CON | 1BF | Z3 | FR | HD | B05 | B05-D10 | RES-1B |
| DUKHCONI1BZ3HDGL7040 |  | Construction of Speed Humps | 10d | 2014-10-29 | 2014-11-09 | DUKHCONI1BZ3HDGL7035 SS, DUKHCONI1BZ3RWGL6025, DUKHCONI1BZ2HDGL7040 | 20d | 31d | CONCRETE MASON SK [8 h]; LABOR- SUBCONTRACTOR [6 h]; SPEED HUMPS [3 ea] | 3,206 | 30 | 1BP3HDFR30 | DUKHCON1BP3HDGL7040 | DUKHCONI1BZ3HDGL7040 | DH | CON | 1BF | Z3 | FR | HD | B05 | B05-D10 | RES-1B |
|  | 70 | **SOFT LANDSCAPING** |  | 2014-09-22 | 2014-11-15 |  |  |  |  |  |  |  |  |  |  |  |  |  |  |  |  |  |  |
| DUKHCONI1BZ3SLGL7200 |  | Excavation | 25d | 2014-09-22 | 2014-10-22 | DUKHCONI1BZ3IRGL5290 SS, DUKHCONI1BZ2SLGL7205, DUKHCONI1BZ3HDGL7035 SS+10d | -10d | 0d | LABOR- SUBCONTRACTOR [426 h]; EXCAVATION QTY [704 Cum]; LOADER [125 h]; POCLAIN [250 h]; TRUCK [125 h]; EQUIP OPERATORS [500 h] | 47,004.5 | 10 | 1BP3SLFR10 | DUKHCON1BP3SLGL7200 | DUKHCONI1BZ3SLGL7200 | DH | CON | 1BF | Z3 | FR | SL | B05 | B05-D10 | RES-1B |
| DUKHCONI1BZ3SLGL7205 |  | Sweet Soil Laying | 25d | 2014-10-04 | 2014-11-03 | DUKHCONI1BZ3SLGL7200 SS+10d | -10d | 0d | LABOR- SUBCONTRACTOR [1758 h]; SWEET SOIL QTY [3517 Cum]; LANDSCAPING SK [2344 h] | 266,359.5 | 15 | 1BP3SLFR15 | DUKHCON1BP3SLGL7205 | DUKHCONI1BZ3SLGL7205 | DH | CON | 1BF | Z3 | FR | SL | B05 | B05-D10 | RES-1B |
| DUKHCONI1BZ3SLGL7210 |  | Plantation works | 25d | 2014-10-18 | 2014-11-15 | DUKHCONI1BZ2SLGL7210, DUKHCONI1BZ3SLGL7205 SS+10d | 0d | 11d | LABOR- SUBCONTRACTOR [312 h]; PLAM TREES QTY [18 ea]; LANDSCAPING SK [416 h]; GROUND COVER QTY [3335 Sqm]; SHRUBS QTY [92 ea] | 141,533 | 20 | 1BP3SLFR20 | DUKHCON1BP3SLGL7210 | DUKHCONI1BZ3SLGL7210 | DH | CON | 1BF | Z3 | FR | SL | B05 | B05-D10 | RES-1B |
|  | 25 | **ZONE - 4** |  | 2014-04-12 | 2015-01-14 |  |  |  |  |  |  |  |  |  |  |  |  |  |  |  |  |  |  |
|  | 10 | **INFRASTRUCTURE WORKS** |  | 2014-04-12 | 2015-01-14 |  |  |  |  |  |  |  |  |  |  |  |  |  |  |  |  |  |  |
|  | 10 | **DRAINAGE LINES** |  | 2014-04-12 | 2014-05-31 |  |  |  |  |  |  |  |  |  |  |  |  |  |  |  |  |  |  |
| DUKHCONI1BZ4DRGL5115 |  | Excavation for Drainage line | 25d | 2014-04-12 | 2014-05-10 | DUKHCONI1BZ3DRGL5130 SS+7d | 4d | 0d | LABOR- SUBCONTRACTOR [168 h]; EXCAVATION QTY [278 Cum]; LOADER [63 h]; POCLAIN [125 h]; TRUCK [63 h]; EQUIP OPERATORS [251 h] | 11,124 | 10 | 1BP4DRFR10 | DUKHCON1BP4DRGL5115 | DUKHCONI1BZ4DRGL5115 | DH | CON | 1BF | Z4 | FR | DR | B05 | B05-D06 | RES-1B |
| DUKHCONI1BZ4DRGL5120 |  | Laying of Drainage line | 25d | 2014-04-19 | 2014-05-17 | DUKHCONI1BZ4DRGL5115 FF+6d, DUKHCONI1BZ4DRGL5115 SS+6d | 4d | 0d | LABOR- SUBCONTRACTOR [60 h]; MECHANICALS SK [205.2 h]; DRAINAGE PIPES QTY [376 lm] | 29,454.5 | 15 | 1BP4DRFR15 | DUKHCON1BP4DRGL5120 | DUKHCONI1BZ4DRGL5120 | DH | CON | 1BF | Z4 | FR | DR | B05 | B05-D06 | RES-1B |
| DUKHCONI1BZ4DRGL5125 |  | Testing of Drainage line | 25d | 2014-04-27 | 2014-05-25 | DUKHCONI1BZ4DRGL5120 FF+7d, DUKHCONI1BZ4DRGL5120 SS+7d | 4d | 0d | LABOR- SUBCONTRACTOR [48 h]; MECHANICALS SK [86.4 h]; DRAINAGE PIPES TEST QTY [376 lm] | 3,272.75 | 20 | 1BP4DRFR20 | DUKHCON1BP4DRGL5125 | DUKHCONI1BZ4DRGL5125 | DH | CON | 1BF | Z4 | FR | DR | B05 | B05-D06 | RES-1B |
| DUKHCONI1BZ4DRGL5130 |  | Backfilling Drainage line | 15d | 2014-05-14 | 2014-05-31 | DUKHCONI1BZ4DRGL5125 SS+10d, DUKHCONI1BZ4DRGL5125 FF+5d | 4d | 0d | LABOR- SUBCONTRACTOR [66 h]; BACKFILLING QTY [278 Cum]; BOBCAT [113 h]; PLATE COMPACTOR [113 h]; TRUCK [23 h]; EQUIP OPERATORS [249 h] | 12,335.5 | 25 | 1BP4DRFR25 | DUKHCON1BP4DRGL5130 | DUKHCONI1BZ4DRGL5130 | DH | CON | 1BF | Z4 | FR | DR | B05 | B05-D06 | RES-1B |
|  | 15 | **MANHOLES & SOAKAWAY** |  | 2014-05-14 | 2014-08-06 |  |  |  |  |  |  |  |  |  |  |  |  |  |  |  |  |  |  |
| DUKHCONI1BZ4SAGL5135 |  | Construction of manholes Drainage | 25d | 2014-05-14 | 2014-06-11 | DUKHCONI1BZ3SAGL5135, DUKHCONI1BZ4DRGL5130 FF+10d, DUKHCONI1BZ4DRGL5115 | 63d | 25d | LABOR- SUBCONTRACTOR [6 h]; EXCAVATION QTY [9 Cum] | 31,914.5 | 10 | 1BP4SAFR10 | DUKHCON1BP4SAGL5135 | DUKHCONI1BZ4SAGL5135 | DH | CON | 1BF | Z4 | FR | SA | B05 | B05-D06 | RES-1B |
| DUKHCONI1BZ4SAGL5140 |  | Construction of soakaways | 25d | 2014-05-14 | 2014-06-11 | DUKHCONI1BZ4DRGL5115, DUKHCONI1BZ4DRGL5130 FF+10d | 4d | 0d | MANHOLES SK [136 h]; LABOR- SUBCONTRACTOR [54 h]; SOAKPIT QTY [17 ea] | 223,920 | 15 | 1BP4SAFR15 | DUKHCON1BP4SAGL5140 | DUKHCONI1BZ4SAGL5140 | DH | CON | 1BF | Z4 | FR | SA | B05 | B05-D06 | RES-1B |
| DUKHCONI1BZ4SAGL5145 |  | Construction of Road gullies | 25d | 2014-06-12 | 2014-07-10 | DUKHCONI1BZ3SAGL5145, DUKHCONI1BZ4SAGL5140 | 4d | 0d | MANHOLES SK [128 h]; LABOR- SUBCONTRACTOR [48 h]; ROAD GULLY QTY [16 ea] | 33,092.5 | 20 | 1BP4SAFR20 | DUKHCON1BP4SAGL5145 | DUKHCONI1BZ4SAGL5145 | DH | CON | 1BF | Z4 | FR | SA | B05 | B05-D06 | RES-1B |
| DUKHCONI1BZ4SAGL5150 |  | Connection with existing sewer manhole | 20d | 2014-07-12 | 2014-08-06 | DUKHCONI1BZ4SAGL5145, DUKHCONI1BZ4SAGL5135 | 38d | 49d | LABOR- SUBCONTRACTOR [6 h]; BACKFILLING QTY [9 Cum] | 2,838.25 | 25 | 1BP4SAFR25 | DUKHCON1BP4SAGL5150 | DUKHCONI1BZ4SAGL5150 | DH | CON | 1BF | Z4 | FR | SA | B05 | B05-D06 | RES-1B |

Notes:
- DUKHCONI1BZ3PSGL7000: Expenses: I1B-Road work 26553.5
- DUKHCONI1BZ3PSGL7005: Expenses: I1B-Road work 26553.5
- DUKHCONI1BZ3PSGL7010: Expenses: I1B-Road work 132765
- DUKHCONI1BZ3PSGL7015: Expenses: I1B-Road work 13276.8
- DUKHCONI1BZ3HDGL7020: Expenses: I1B-Hard and soft landscaping 75770
- DUKHCONI1BZ3HDGL7025: Expenses: I1B-Hard and soft landscaping 88099
- DUKHCONI1BZ3HDGL7030: Expenses: I1B-Hard and soft landscaping 105490
- DUKHCONI1BZ3HDGL7035: Expenses: I1B-Hard and soft landscaping 22800
- DUKHCONI1BZ3HDGL7040: Expenses: I1B-Hard and soft landscaping 3206
- DUKHCONI1BZ3SLGL7200: Expenses: I1B-Hard and soft landscaping 47004.5
- DUKHCONI1BZ3SLGL7205: Expenses: I1B-Hard and soft landscaping 266360
- DUKHCONI1BZ3SLGL7210: Expenses: I1B-Hard and soft landscaping 141533
- DUKHCONI1BZ4DRGL5115: Expenses: I1B-Surface Water drainage and Sewerage system 11124
- DUKHCONI1BZ4DRGL5120: Expenses: I1B-Surface Water drainage and Sewerage system 29454.5
- DUKHCONI1BZ4DRGL5125: Expenses: I1B-Surface Water drainage and Sewerage system 3272.75
- DUKHCONI1BZ4DRGL5130: Expenses: I1B-Surface Water drainage and Sewerage system 12335.5
- DUKHCONI1BZ4SAGL5135: Expenses: I1B-Surface Water drainage and Sewerage system 31914.5
- DUKHCONI1BZ4SAGL5140: Expenses: I1B-Surface Water drainage and Sewerage system 223920
- DUKHCONI1BZ4SAGL5145: Expenses: I1B-Surface Water drainage and Sewerage system 33092.5
- DUKHCONI1BZ4SAGL5150: Expenses: I1B-Surface Water drainage and Sewerage system 2838.25

| ID | WBS | Activity | Duration | Start | Finish | Predecessors | Total float | Free float | Resources | Cost | CODE | P3 ACTID | P6 ID (old) | NP61D | PROJECT | PHASES | PACKAGE | PART | ELEMENTS | STEP | BILL NOS | BILL DIVISION | RES PACK |
| --- | --- | --- | --- | --- | --- | --- | --- | --- | --- | --- | --- | --- | --- | --- | --- | --- | --- | --- | --- | --- | --- | --- | --- |
|  | 20 | **WATER SUPPLY SYSTEM** |  | 2014-06-12 | 2014-08-30 |  |  |  |  |  |  |  |  |  |  |  |  |  |  |  |  |  |  |
| DUKHCONI1BZ4WSGL5155 |  | Excavation for water line | 25d | 2014-06-12 | 2014-07-10 | DUKHCONI1BZ3WSGL5170, DUKHCONI1BZ4DRGL5130 SS+10d | -11d | 0d | LABOR- SUBCONTRACTOR [174 h]; EXCAVATION QTY [284 Cum]; LOADER [63 h]; POCLAIN [125 h]; TRUCK [63 h]; EQUIP OPERATORS [251 h] | 7,487 | 10 | 1BP4WSFR10 | DUKHCON1BP4WSGL5155 | DUKHCONI1BZ4WSGL5155 | DH | CON | 1BF | Z4 | FR | WS | B05 | B05-D07 | RES-1B |
| DUKHCONI1BZ4WSGL5160 |  | Laying of water line | 25d | 2014-06-18 | 2014-07-16 | DUKHCONI1BZ4WSGL5155 SS+5d | -11d | 0d | LABOR- SUBCONTRACTOR [114 h]; MECHANICALS SK [205.2 h]; WATER PIPES QTY [284 lm] | 59,693 | 15 | 1BP4WSFR15 | DUKHCON1BP4WSGL5160 | DUKHCONI1BZ4WSGL5160 | DH | CON | 1BF | Z4 | FR | WS | B05 | B05-D07 | RES-1B |
| DUKHCONI1BZ4WSGL5165 |  | Testing of potable water line | 25d | 2014-06-24 | 2014-07-22 | DUKHCONI1BZ4WSGL5160 SS+5d | -11d | 0d | LABOR- SUBCONTRACTOR [36 h]; MECHANICALS SK [64.8 h]; DRAINAGE PIPES TEST QTY [284 lm] | 5,833.5 | 20 | 1BP4WSFR20 | DUKHCON1BP4WSGL5165 | DUKHCONI1BZ4WSGL5165 | DH | CON | 1BF | Z4 | FR | WS | B05 | B05-D07 | RES-1B |
| DUKHCONI1BZ4WSGL5170 |  | Backfilling potable water line | 25d | 2014-06-30 | 2014-07-28 | DUKHCONI1BZ4SAGL5145 FF, DUKHCONI1BZ4WSGL5165 SS+5d | -11d | 0d | TRUCK [25 h]; EQUIP OPERATORS [275 h]; LABOR- SUBCONTRACTOR [72 h]; BACKFILLING QTY [284 Cum]; BOBCAT [125 h]; PLATE COMPACTOR [125 h] | 1,871.75 | 25 | 1BP4WSFR25 | DUKHCON1BP4WSGL5170 | DUKHCONI1BZ4WSGL5170 | DH | CON | 1BF | Z4 | FR | WS | B05 | B05-D07 | RES-1B |
| DUKHCONI1BZ4WSGL5175 |  | Construction of valve chambers & Thrust Blocks | 25d | 2014-07-06 | 2014-08-06 | DUKHCONI1BZ4WSGL5155 SS+10d, DUKHCONI1BZ4WSGL5170 FF+5d, DUKHCONI1BZ3WSGL5175 | 18d | 0d | MANHOLES SK [64 h]; LABOR- SUBCONTRACTOR [24 h]; MANHOLES QTY [8 ea] | 2,129.5 | 30 | 1BP4WSFR30 | DUKHCON1BP4WSGL5175 | DUKHCONI1BZ4WSGL5175 | DH | CON | 1BF | Z4 | FR | WS | B05 | B05-D07 | RES-1B |
| DUKHCONI1BZ4WSGL5180 |  | Installation of meter ,Accessories & Connection | 20d | 2014-08-07 | 2014-08-30 | DUKHCONI1BZ4WSGL5175, DUKHCONI1BZ3WSGL5180 | 18d | 7d | LABOR- SUBCONTRACTOR [18 h]; MECHANICALS SK [32.4 h]; CHAMPER QTY [11 lm] | 13,321.5 | 35 | 1BP4WSFR35 | DUKHCON1BP4WSGL5180 | DUKHCONI1BZ4WSGL5180 | DH | CON | 1BF | Z4 | FR | WS | B05 | B05-D07 | RES-1B |
|  | 25 | **FIREFIGHTING LINES** |  | 2014-07-06 | 2014-09-07 |  |  |  |  |  |  |  |  |  |  |  |  |  |  |  |  |  |  |
| DUKHCONI1BZ4FFGL5185 |  | Excavation for firefighting line | 25d | 2014-07-06 | 2014-08-06 | DUKHCONI1BZ4WSGL5170 SS+5d, DUKHCONI1BZ3FFGL5200 SS+10d | -11d | 0d | LABOR- SUBCONTRACTOR [90 h]; EXCAVATION QTY [147 Cum]; LOADER [25 h]; POCLAIN [50 h]; TRUCK [25 h]; EQUIP OPERATORS [100 h] | 16,482.5 | 10 | 1BP4FFFR10 | DUKHCON1BP4FFGL5185 | DUKHCONI1BZ4FFGL5185 | DH | CON | 1BF | Z4 | FR | FF | B05 | B05-D07 | RES-1B |
| DUKHCONI1BZ4FFGL5190 |  | Laying of firefighting line | 25d | 2014-07-14 | 2014-08-14 | DUKHCONI1BZ4FFGL5185 SS+7d | -11d | 0d | LABOR- SUBCONTRACTOR [48 h]; MECHANICALS SK [162 h]; PLUMB PIPES QTY [147 lm] | 24,118.5 | 15 | 1BP4FFFR15 | DUKHCON1BP4FFGL5190 | DUKHCONI1BZ4FFGL5190 | DH | CON | 1BF | Z4 | FR | FF | B05 | B05-D07 | RES-1B |
| DUKHCONI1BZ4FFGL5195 |  | Testing of firefighting line | 25d | 2014-07-20 | 2014-08-20 | DUKHCONI1BZ4FFGL5190 SS+5d | -11d | 0d | LABOR- SUBCONTRACTOR [18 h]; MECHANICALS SK [32.4 h]; DRAINAGE PIPES TEST QTY [147 lm] | 1,930 | 20 | 1BP4FFFR20 | DUKHCON1BP4FFGL5195 | DUKHCONI1BZ4FFGL5195 | DH | CON | 1BF | Z4 | FR | FF | B05 | B05-D07 | RES-1B |
| DUKHCONI1BZ4FFGL5200 |  | Backfilling firefighting line | 25d | 2014-07-26 | 2014-08-26 | DUKHCONI1BZ4FFGL5195 SS+5d | -11d | 0d | LABOR- SUBCONTRACTOR [36 h]; BACKFILLING QTY [147 Cum]; BOBCAT [125 h]; PLATE COMPACTOR [125 h]; TRUCK [25 h]; EQUIP OPERATORS [275 h] | 4,120.5 | 25 | 1BP4FFFR25 | DUKHCON1BP4FFGL5200 | DUKHCONI1BZ4FFGL5200 | DH | CON | 1BF | Z4 | FR | FF | B05 | B05-D07 | RES-1B |
| DUKHCONI1BZ4FFGL5205 |  | Construction of valve chambers & Thrust Blocks | 25d | 2014-07-31 | 2014-09-01 | DUKHCONI1BZ3FFGL5205, DUKHCONI1BZ4FFGL5200 FF+5d, DUKHCONI1BZ4FFGL5185 SS+10d | 11d | 0d | STEEL FIXERS SK [56 h]; CARPENTERS SK [72 h]; CONCRETE MASON SK [24 h]; LABOR- SUBCONTRACTOR [114 h]; EXCAVATION QTY [16 Cum]; REINFORCEMENT BARS QTY [628 kg]; FORMWORK QTY [34 Sqm]; CONCRETE QTY [10 Cum] | 1,490.5 | 30 | 1BP4FFFR30 | DUKHCON1BP4FFGL5205 | DUKHCONI1BZ4FFGL5205 | DH | CON | 1BF | Z4 | FR | FF | B05 | B05-D07 | RES-1B |
| DUKHCONI1BZ4FFGL5210 |  | Connection with existing Firewater System | 25d | 2014-08-10 | 2014-09-07 | DUKHCONI1BZ4FFGL5205 FF+5d, DUKHCONI1BZ4WSGL5180 FF, DUKHCONI1BZ3FFGL5210 | 11d | 0d | LABOR- SUBCONTRACTOR [30 h]; MECHANICALS SK [54 h]; FIRE EXTINGUISHER QTY [10 ea] | 6,453.25 | 35 | 1BP4FFFR35 | DUKHCON1BP4FFGL5210 | DUKHCONI1BZ4FFGL5210 | DH | CON | 1BF | Z4 | FR | FF | B05 | B05-D07 | RES-1B |
|  | 30 | **ELECTRICAL LINES** |  | 2014-08-06 | 2014-09-29 |  |  |  |  |  |  |  |  |  |  |  |  |  |  |  |  |  |  |
| DUKHCONI1BZ4ELGL5215 |  | Excavation Cable Trenches & Duct Banks | 25d | 2014-08-06 | 2014-09-03 | DUKHCONI1BZ4FFGL5200 SS+7d, DUKHCONI1BZ3ELGL5225 | -11d | 0d | LABOR- SUBCONTRACTOR [1896 h]; EXCAVATION QTY [3159 Cum]; LOADER [219 h]; POCLAIN [438 h]; TRUCK [219 h]; EQUIP OPERATORS [876 h] | 15,897.75 | 10 | 1BP4ECFR10 | DUKHCON1BP4ELGL5215 | DUKHCONI1BZ4ELGL5215 | DH | CON | 1BF | Z4 | FR | EC | B05 | B05-D04 | RES-1B |
| DUKHCONI1BZ4ELGL5220 |  | Laying of electrical cables | 25d | 2014-08-12 | 2014-09-09 | DUKHCONI1BZ4ELGL5215 SS+5d | -4d | 0d | LABOR- SUBCONTRACTOR [948 h]; ELECTRICIANS SK [3539.2 h]; CABLE QTY [3159 lm] | 1,166,243.5 | 15 | 1BP4ECFR15 | DUKHCON1BP4ELGL5220 | DUKHCONI1BZ4ELGL5220 | DH | CON | 1BF | Z4 | FR | EC | B05 | B05-D04 | RES-1B |
| DUKHCONI1BZ4ELGL5225 |  | Backfilling Electrical trench | 25d | 2014-08-20 | 2014-09-17 | DUKHCONI1BZ4ELGL5220 SS+7d, DUKHCONI1BZ4ELGL5215 FF+7d | -4d | 0d | LABOR- SUBCONTRACTOR [762 h]; BACKFILLING QTY [3159 Cum]; BOBCAT [500 h]; PLATE COMPACTOR [500 h]; TRUCK [100 h]; EQUIP OPERATORS [1100 h] | 6,812.75 | 20 | 1BP4ECFR20 | DUKHCON1BP4ELGL5225 | DUKHCONI1BZ4ELGL5225 | DH | CON | 1BF | Z4 | FR | EC | B05 | B05-D04 | RES-1B |
| DUKHCONI1BZ4ELGL5230 |  | Construction of Submain Board & Feeder Pillar | 25d | 2014-09-01 | 2014-09-29 | DUKHCONI1BZ4ELGL5225 FF+10d, DUKHCONI1BZ4ELGL5225 SS+10d, DUKHCONI1BZ3ELGL5230 | 23d | 0d | STEEL FIXERS SK [8 h]; CARPENTERS SK [48 h]; CONCRETE MASON SK [8 h]; LABOR- SUBCONTRACTOR [36 h]; LABOR- SUBCONTRACTOR [48 h]; REINFORCEMENT BARS QTY [27 kg]; FORMWORK QTY [21 Sqm]; CONCRETE QTY [2 Cum]; ALUMINIUM DOOR QTY [3 ea]; DOOR ERECTOR SK [16 h]; EXPANSION JOINT QTY [14 Sqm]; EXPANSION JOINT SKILLED SK [112 h] | 82,371.75 | 25 | 1BP4ECFR25 | DUKHCON1BP4ELGL5230 | DUKHCONI1BZ4ELGL5230 | DH | CON | 1BF | Z4 | FR | EC | B05 | B05-D04 | RES-1B |
|  | 35 | **STREET LIGHTING** |  | 2014-08-06 | 2014-10-30 |  |  |  |  |  |  |  |  |  |  |  |  |  |  |  |  |  |  |
| DUKHCONI1BZ4STGL5235 |  | Excavation for Street lighting | 25d | 2014-08-06 | 2014-09-03 | DUKHCONI1BZ4ELGL5215 SS, DUKHCONI1BZ3STGL5250 SS+10d | -11d | 0d | LABOR- SUBCONTRACTOR [18 h]; EXCAVATION QTY [29 Cum]; LOADER [13 h]; POCLAIN [25 h]; TRUCK [13 h]; EQUIP OPERATORS [51 h] | 2,909.75 | 10 | 1BP4STFR10 | DUKHCON1BP4STGL5235 | DUKHCONI1BZ4STGL5235 | DH | CON | 1BF | Z4 | FR | ST | B05 | B05-D09 | RES-1B |
| DUKHCONI1BZ4STGL5240 |  | Construction of Duct Banks | 25d | 2014-08-12 | 2014-09-09 | DUKHCONI1BZ4STGL5235 SS+5d | -11d | 0d | LABOR- SUBCONTRACTOR [318 h]; ELECTRICIANS SK [1176 h]; DUCT BANK QTY [420 lm] | 79,726.25 | 15 | 1BP4STFR15 | DUKHCON1BP4STGL5240 | DUKHCONI1BZ4STGL5240 | DH | CON | 1BF | Z4 | FR | ST | B05 | B05-D09 | RES-1B |
| DUKHCONI1BZ4STGL5245 |  | Construction of Foundation | 25d | 2014-08-12 | 2014-09-09 | DUKHCONI1BZ4STGL5240 SS | -11d | 0d | MANHOLES SK [456 h]; LABOR- SUBCONTRACTOR [174 h]; COLUMN BASE QTY [29 ea] | 27,122.5 | 20 | 1BP4STFR20 | DUKHCON1BP4STGL5245 | DUKHCONI1BZ4STGL5245 | DH | CON | 1BF | Z4 | FR | ST | B05 | B05-D09 | RES-1B |
| DUKHCONI1BZ4STGL5250 |  | Backfilling Street Lighting | 25d | 2014-08-18 | 2014-09-15 | DUKHCONI1BZ4STGL5235 FF+5d, DUKHCONI1BZ4STGL5245 SS+5d | -11d | 0d | LABOR- SUBCONTRACTOR [12 h]; BACKFILLING QTY [29 Cum]; BOBCAT [50 h]; PLATE COMPACTOR [50 h]; TRUCK [10 h]; EQUIP OPERATORS [110 h] | 2,909.75 | 25 | 1BP4STFR25 | DUKHCON1BP4STGL5250 | DUKHCONI1BZ4STGL5250 | DH | CON | 1BF | Z4 | FR | ST | B05 | B05-D09 | RES-1B |
| DUKHCONI1BZ4STGL5255 |  | Installation of light Post | 25d | 2014-08-30 | 2014-09-27 | DUKHCONI1BZ4STGL5250 SS+10d, DUKHCONI1BZ3STGL5255 | 43d | 20d | LABOR- SUBCONTRACTOR [48 h]; ELECTRICIANS SK [168 h]; LIGHTPOST COLUMN QTY [29 ea] | 369,147.75 | 30 | 1BP4STFR30 | DUKHCON1BP4STGL5255 | DUKHCONI1BZ4STGL5255 | DH | CON | 1BF | Z4 | FR | ST | B05 | B05-D09 | RES-1B |
| DUKHCONI1BZ4STGL5260 |  | Electrical Works | 25d | 2014-09-30 | 2014-10-30 | DUKHCONI1BZ4ELGL5230, DUKHCONI1BZ3STGL5260, DUKHCONI1BZ4STGL5255 SS+7d | 23d | 0d | LABOR- SUBCONTRACTOR [222 h]; ELECTRICIANS SK [817.6 h]; CABLE QTY [725 lm] | 16,658.75 | 35 | 1BP4STFR35 | DUKHCON1BP4STGL5260 | DUKHCONI1BZ4STGL5260 | DH | CON | 1BF | Z4 | FR | ST | B05 | B05-D09 | RES-1B |

Notes:
- DUKHCONI1BZ4WSGL5155: Expenses: I1B-Water supply system 7487
- DUKHCONI1BZ4WSGL5160: Expenses: I1B-Water supply system 59693
- DUKHCONI1BZ4WSGL5165: Expenses: I1B-Water supply system 5833.5
- DUKHCONI1BZ4WSGL5170: Expenses: I1B-Water supply system 1871.75
- DUKHCONI1BZ4WSGL5175: Expenses: I1B-Water supply system 2129.5
- DUKHCONI1BZ4WSGL5180: Expenses: I1B-Water supply system 13321.5
- DUKHCONI1BZ4FFGL5185: Expenses: I1B-Water supply system 16482.5
- DUKHCONI1BZ4FFGL5190: Expenses: I1B-Water supply system 24118.5
- DUKHCONI1BZ4FFGL5195: Expenses: I1B-Water supply system 1930
- DUKHCONI1BZ4FFGL5200: Expenses: I1B-Water supply system 4120.5
- DUKHCONI1BZ4FFGL5205: Expenses: I1B-Water supply system 1490.5
- DUKHCONI1BZ4FFGL5210: Expenses: I1B-Water supply system 6453.25
- DUKHCONI1BZ4ELGL5215: Expenses: I1B-Electrical power supply and distribution 15897.8
- DUKHCONI1BZ4ELGL5220: Expenses: I1B-Electrical power supply and distribution 1166244
- DUKHCONI1BZ4ELGL5225: Expenses: I1B-Electrical power supply and distribution 6812.75
- DUKHCONI1BZ4ELGL5230: Expenses: I1B-Electrical power supply and distribution 82371.8
- DUKHCONI1BZ4STGL5235: Expenses: I1B-Street lighting 2909.75
- DUKHCONI1BZ4STGL5240: Expenses: I1B-Street lighting 79726.2
- DUKHCONI1BZ4STGL5245: Expenses: I1B-Street lighting 27122.5
- DUKHCONI1BZ4STGL5250: Expenses: I1B-Street lighting 2909.75
- DUKHCONI1BZ4STGL5255: Expenses: I1B-Street lighting 369148
- DUKHCONI1BZ4STGL5260: Expenses: I1B-Street lighting 16658.8

| ID | WBS | Activity | Duration | Start | Finish | Predecessors | Total float | Free float | Resources | Cost | CODE | P3 ACTID | P6 ID (old) | NP61D | PROJECT | PHASES | PACKAGE | PART | ELEMENTS | STEP | BILL NOS | BILL DIVISION | RES PACK |
| --- | --- | --- | --- | --- | --- | --- | --- | --- | --- | --- | --- | --- | --- | --- | --- | --- | --- | --- | --- | --- | --- | --- | --- |
|  | 40 | **IRRIGATION LINES** |  | 2014-09-18 | 2014-11-25 |  |  |  |  |  |  |  |  |  |  |  |  |  |  |  |  |  |  |
| DUKHCONI1BZ4IRGL5265 |  | Excavation for irrigation line | 25d | 2014-09-18 | 2014-10-19 | DUKHCONI1BZ3IRGL5280, DUKHCONI1BZ4ELGL5225 | -4d | 0d | LABOR- SUBCONTRACTOR [498 h]; EXCAVATION QTY [822 Cum]; LOADER [125 h]; POCLAIN [250 h]; TRUCK [125 h]; EQUIP OPERATORS [500 h] | 13,674.5 | 10 | 1BP4IRFR10 | DUKHCON1BP4IRGL5265 | DUKHCONI1BZ4IRGL5265 | DH | CON | 1BF | Z4 | FR | IR | B05 | B05-D07 | RES-1B |
| DUKHCONI1BZ4IRGL5270 |  | Laying of irrigationline | 25d | 2014-09-24 | 2014-10-25 | DUKHCONI1BZ4IRGL5265 SS+5d | -4d | 0d | LABOR- SUBCONTRACTOR [126 h]; MECHANICALS SK [226.8 h]; IRRIGATION PIPES QTY [822 lm] | 8,538.25 | 15 | 1BP4IRFR15 | DUKHCON1BP4IRGL5270 | DUKHCONI1BZ4IRGL5270 | DH | CON | 1BF | Z4 | FR | IR | B05 | B05-D07 | RES-1B |
| DUKHCONI1BZ4IRGL5275 |  | Testing of irrigation line | 25d | 2014-09-30 | 2014-10-30 | DUKHCONI1BZ4IRGL5270 SS+5d | -4d | 0d | LABOR- SUBCONTRACTOR [102 h]; MECHANICALS SK [183.6 h]; DRAINAGE PIPES TEST QTY [822 lm] | 1,219.25 | 20 | 1BP4IRFR20 | DUKHCON1BP4IRGL5275 | DUKHCONI1BZ4IRGL5275 | DH | CON | 1BF | Z4 | FR | IR | B05 | B05-D07 | RES-1B |
| DUKHCONI1BZ4IRGL5280 |  | Backfilling irrigation line | 25d | 2014-10-06 | 2014-11-05 | DUKHCONI1BZ4IRGL5275 SS+5d | -4d | 0d | LABOR- SUBCONTRACTOR [156 h]; BACKFILLING QTY [642 Cum]; BOBCAT [250 h]; PLATE COMPACTOR [250 h]; TRUCK [50 h]; EQUIP OPERATORS [550 h] | 3,419 | 25 | 1BP4IRFR25 | DUKHCON1BP4IRGL5280 | DUKHCONI1BZ4IRGL5280 | DH | CON | 1BF | Z4 | FR | IR | B05 | B05-D07 | RES-1B |
| DUKHCONI1BZ4IRGL5285 |  | Construction of Thrust Blocks,Pull boxes | 25d | 2014-10-20 | 2014-11-17 | DUKHCONI1BZ4IRGL5280 FF+10d, DUKHCONI1BZ4ELGL5225 SS+10d | -4d | 0d | LABOR- SUBCONTRACTOR [36 h]; ELECTRICIANS SK [33.6 h]; THRUST BLOCKS QTY [3 ea]; PULL BOX QTY [10 ea]; PULL BOX SK [80 h] | 10,378.75 | 30 | 1BP4IRFR30 | DUKHCON1BP4IRGL5285 | DUKHCONI1BZ4IRGL5285 | DH | CON | 1BF | Z4 | FR | IR | B05 | B05-D07 | RES-1B |
| DUKHCONI1BZ4IRGL5290 |  | Irrigation Fittings (Nozzle,Values) | 25d | 2014-10-28 | 2014-11-25 | DUKHCONI1BZ4IRGL5285 SS+7d, DUKHCONI1BZ4IRGL5280 SS+10d | -4d | 7d | LABOR- SUBCONTRACTOR [126 h]; MECHANICALS SK [226.8 h]; CHAMPER QTY [81 lm] | 26,420.5 | 35 | 1BP4IRFR35 | DUKHCON1BP4IRGL5290 | DUKHCONI1BZ4IRGL5290 | DH | CON | 1BF | Z4 | FR | IR | B05 | B05-D07 | RES-1B |
|  | 45 | **TELECOMMUNICATION LINES** |  | 2014-08-30 | 2014-10-16 |  |  |  |  |  |  |  |  |  |  |  |  |  |  |  |  |  |  |
| DUKHCONI1BZ4TCGL5295 |  | Excavation Telecommunication trenches | 20d | 2014-08-30 | 2014-09-21 | DUKHCONI1BZ3TCGL5305, DUKHCONI1BZ4STGL5250 SS+10d | -11d | 0d | LABOR- SUBCONTRACTOR [156 h]; EXCAVATION QTY [255 Cum]; LOADER [50 h]; POCLAIN [100 h]; TRUCK [50 h]; EQUIP OPERATORS [200 h] | 9,762.25 | 10 | 1BP4TCFR10 | DUKHCON1BP4TCGL5295 | DUKHCONI1BZ4TCGL5295 | DH | CON | 1BF | Z4 | FR | TC | B05 | B05-D05 | RES-1B |
| DUKHCONI1BZ4TCGL5300 |  | Laying of cables | 20d | 2014-09-04 | 2014-09-27 | DUKHCONI1BZ4TCGL5295 SS+5d | -11d | 0d | LABOR- SUBCONTRACTOR [156 h]; ELECTRICIANS SK [571.2 h]; CABLE QTY [510 lm] | 2,142 | 15 | 1BP4TCFR15 | DUKHCON1BP4TCGL5300 | DUKHCONI1BZ4TCGL5300 | DH | CON | 1BF | Z4 | FR | TC | B05 | B05-D05 | RES-1B |
| DUKHCONI1BZ4TCGL5305 |  | Backfilling telecommunication trench | 20d | 2014-09-10 | 2014-10-02 | DUKHCONI1BZ4TCGL5300 SS+5d | -11d | 0d | LABOR- SUBCONTRACTOR [66 h]; BACKFILLING QTY [255 Cum]; BOBCAT [100 h]; PLATE COMPACTOR [100 h]; TRUCK [20 h]; EQUIP OPERATORS [220 h] | 4,183.75 | 20 | 1BP4TCFR20 | DUKHCON1BP4TCGL5305 | DUKHCONI1BZ4TCGL5305 | DH | CON | 1BF | Z4 | FR | TC | B05 | B05-D05 | RES-1B |
| DUKHCONI1BZ4TCGL5310 |  | Connection & Installation | 20d | 2014-09-22 | 2014-10-16 | DUKHCONI1BZ4TCGL5305 SS+10d, DUKHCONI1BZ3TCGL5310 | 20d | 17d | LABOR- SUBCONTRACTOR [36 h]; ELECTRICIANS SK [235.2 h]; TELEPHONE SOCKETS QTY [21 ea] | 60,781.25 | 25 | 1BP4TCFR25 | DUKHCON1BP4TCGL5310 | DUKHCONI1BZ4TCGL5310 | DH | CON | 1BF | Z4 | FR | TC | B05 | B05-D05 | RES-1B |
|  | 50 | **BOUNDARY WALL** |  | 2014-08-30 | 2014-11-25 |  |  |  |  |  |  |  |  |  |  |  |  |  |  |  |  |  |  |
| DUKHCONI1BZ4BWGL5315 |  | Construction of Boundary Wall (Ht-3m) | 25d | 2014-08-30 | 2014-09-27 | DUKHCONI1BZ4STGL5250 SS+10d, DUKHCONI1BZ3BWGL5315 | 19d | 0d | STEEL FIXERS SK [112 h]; LABOR- SUBCONTRACTOR [84 h]; BOUNDARY WIRE MESH QTY [275 Sqm] | 405,782 | 10 | 1BP4BWFR10 | DUKHCON1BP4ARGL5315 | DUKHCONI1BZ4BWGL5315 | DH | CON | 1BF | Z4 | FR | BW | B05 | B05-D10 | RES-1B |
| DUKHCONI1BZ4BWGL5320 |  | Install.Steel Gate,Entance Barrier (3m Wall) | 25d | 2014-09-15 | 2014-10-15 | DUKHCONI1BZ4BWGL5315 SS+14d | 19d | 0d | LABOR- SUBCONTRACTOR [6 h]; GATE QTY [1 ea]; GATE ERECTOR SK [8 h] | 5,703.5 | 15 | 1BP4BWFR15 | DUKHCON1BP4ARGL5320 | DUKHCONI1BZ4BWGL5320 | DH | CON | 1BF | Z4 | FR | BW | B05 | B05-D10 | RES-1B |
| DUKHCONI1BZ4BWGL5325 |  | Const. of Villa Front Boundary Wall (Ht-2m) | 25d | 2014-10-16 | 2014-11-13 | DUKHCONI1BZ4BWGL5315 SS+5d, DUKHCONI1BZ3BWGL5325, DUKHCONI1BZ4BWGL5320 | 19d | 0d | STEEL FIXERS SK [80 h]; LABOR- SUBCONTRACTOR [60 h]; BOUNDARY WIRE MESH QTY [188 Sqm] | 213,900 | 20 | 1BP4BWFR20 | DUKHCON1BP4ARGL5325 | DUKHCONI1BZ4BWGL5325 | DH | CON | 1BF | Z4 | FR | BW | B05 | B05-D10 | RES-1B |
| DUKHCONI1BZ4BWGL5330 |  | Const. of Blockwork fence Wall (Ht-1.85m) | 25d | 2014-10-28 | 2014-11-25 | DUKHCONI1BZ3BWGL5330, DUKHCONI1BZ4BWGL5325 SS+10d | 32d | 37d | STEEL FIXERS SK [80 h]; LABOR- SUBCONTRACTOR [60 h]; BOUNDARY WIRE MESH QTY [201 Sqm] | 239,825 | 30 | 1BP4BWFR30 | DUKHCON1BP4ARGL5330 | DUKHCONI1BZ4BWGL5330 | DH | CON | 1BF | Z4 | FR | BW | B05 | B05-D10 | RES-1B |
|  | 55 | **ROAD WORKS** |  | 2014-10-04 | 2014-12-22 |  |  |  |  |  |  |  |  |  |  |  |  |  |  |  |  |  |  |
| DUKHCONI1BZ4RWGL6000 |  | Excavation & Earth Filling | 10d | 2014-10-04 | 2014-10-16 | DUKHCONI1BZ4SAGL5150, DUKHCONI1BZ4FFGL5200, DUKHCONI1BZ3RWGL6015 SS+10d, DUKHCONI1BZ4FFGL5210, DUKHCONI1BZ4TCGL5305, DUKHCONI1BZ4ELGL5225, DUKHCONI1BZ4STGL5250 | -11d | 0d | LABOR- SUBCONTRACTOR [750 h]; EXCAVATION QTY [977 Cum]; BACKFILLING QTY [676 Cum]; LOADER [100 h]; POCLAIN [200 h]; TRUCK [100 h]; EQUIP OPERATORS [400 h] | 112,697.5 | 10 | 1BP4RDFR10 | DUKHCON1BP4RDGL6000 | DUKHCONI1BZ4RWGL6000 | DH | CON | 1BF | Z4 | FR | RD | B05 | B05-D08 | RES-1B |
| DUKHCONI1BZ4RWGL6005 |  | Laying of Sub Grade | 25d | 2014-10-18 | 2014-11-15 | DUKHCONI1BZ4RWGL6000 | -11d | 0d | LABOR- SUBCONTRACTOR [24 h]; SUBGRADE QTY [383 Sqm] | 117,466 | 15 | 1BP4RDFR15 | DUKHCON1BP4RDGL6005 | DUKHCONI1BZ4RWGL6005 | DH | CON | 1BF | Z4 | FR | RD | B05 | B05-D08 | RES-1B |
| DUKHCONI1BZ4RWGL6010 |  | Laying of Precast Kerbs | 25d | 2014-10-29 | 2014-11-26 | DUKHCONI1BZ4RWGL6005 SS+10d | -11d | 0d | LABOR- SUBCONTRACTOR [24 h]; GRANULAR SUBBASE QTY [383 Sqm] | 112,124.25 | 20 | 1BP4RDFR20 | DUKHCON1BP4RDGL6010 | DUKHCONI1BZ4RWGL6010 | DH | CON | 1BF | Z4 | FR | RD | B05 | B05-D08 | RES-1B |
| DUKHCONI1BZ4RWGL6015 |  | Laying of Granular Sub Base Coarse | 20d | 2014-11-10 | 2014-12-02 | DUKHCONI1BZ4RWGL6010 SS+10d | -11d | 0d | KERBSTONE MASON SK [784 h]; LABOR- SUBCONTRACTOR [444 h]; KERBSTONE QTY [491 lm]; EDGE STONE QTY [491 Sqm]; HEAVY ROLLER [400 h]; LOADER [100 h]; TRUCK [100 h]; EQUIP OPERATORS [600 h] | 58,733 | 25 | 1BP4RDFR25 | DUKHCON1BP4RDGL6015 | DUKHCONI1BZ4RWGL6015 | DH | CON | 1BF | Z4 | FR | RD | B05 | B05-D08 | RES-1B |
| DUKHCONI1BZ4RWGL6020 |  | Laying of Road Base Asphalt Concrete | 6d | 2014-12-03 | 2014-12-09 | DUKHCONI1BZ4RWGL6015 | -11d | 0d | LABOR- SUBCONTRACTOR [24 h]; ASPHALT CONCRETE QTY [1913 Cum]; ASPHALT PAVER MACHINE [50 h]; HAND ROLLER [100 h]; EQUIP OPERATORS [150 h] | 149,434.75 | 30 | 1BP4RDFR30 | DUKHCON1BP4RDGL6020 | DUKHCONI1BZ4RWGL6020 | DH | CON | 1BF | Z4 | FR | RD | B05 | B05-D08 | RES-1B |
| DUKHCONI1BZ4RWGL6025 |  | Laying of Asphalt Wearing Coarse | 5d | 2014-12-10 | 2014-12-15 | DUKHCONI1BZ3RWGL6025, DUKHCONI1BZ4RWGL6020 | -11d | 0d | LABOR- SUBCONTRACTOR [24 h]; ASPHALT WEARING COURSE QTY [1913 Sqm]; ASPHALT PAVER MACHINE [50 h]; HAND ROLLER [100 h]; EQUIP OPERATORS [150 h] | 77,849 | 35 | 1BP4RDFR35 | DUKHCON1BP4RDGL6025 | DUKHCONI1BZ4RWGL6025 | DH | CON | 1BF | Z4 | FR | RD | B05 | B05-D08 | RES-1B |
| DUKHCONI1BZ4RWGL6030 |  | Traffic Signage & Road Marking | 5d | 2014-12-16 | 2014-12-22 | DUKHCONI1BZ3RWGL6030, DUKHCONI1BZ4RWGL6025 | 10d | 15d | LABOR- SUBCONTRACTOR [330 h]; STEEL ERECTOR SK [400 h]; TRAFFIC SIGN QTY [249 ea]; ROAD MARKING QTY [92 lm]; ASPHALT SK [152 h] | 79,931 | 40 | 1BP4RDFR40 | DUKHCON1BP4RDGL6030 | DUKHCONI1BZ4RWGL6030 | DH | CON | 1BF | Z4 | FR | RD | B05 | B05-D08 | RES-1B |

Notes:
- DUKHCONI1BZ4IRGL5265: Expenses: I1B-Water supply system 13674.5
- DUKHCONI1BZ4IRGL5270: Expenses: I1B-Water supply system 8538.25
- DUKHCONI1BZ4IRGL5275: Expenses: I1B-Water supply system 1219.25
- DUKHCONI1BZ4IRGL5280: Expenses: I1B-Water supply system 3419
- DUKHCONI1BZ4IRGL5285: Expenses: I1B-Water supply system 10378.8
- DUKHCONI1BZ4IRGL5290: Expenses: I1B-Water supply system 26420.5
- DUKHCONI1BZ4TCGL5295: Expenses: I1B-Telecommunication 9762.25
- DUKHCONI1BZ4TCGL5300: Expenses: I1B-Telecommunication 2142
- DUKHCONI1BZ4TCGL5305: Expenses: I1B-Telecommunication 4183.75
- DUKHCONI1BZ4TCGL5310: Expenses: I1B-Telecommunication 60781.2
- DUKHCONI1BZ4BWGL5315: Expenses: I1B-Hard and soft landscaping 405782
- DUKHCONI1BZ4BWGL5320: Expenses: I1B-Hard and soft landscaping 5703.5
- DUKHCONI1BZ4BWGL5325: Expenses: I1B-Hard and soft landscaping 213900
- DUKHCONI1BZ4BWGL5330: Expenses: I1B-Hard and soft landscaping 239825
- DUKHCONI1BZ4RWGL6000: Expenses: I1B-Road work 112698
- DUKHCONI1BZ4RWGL6005: Expenses: I1B-Road work 117466
- DUKHCONI1BZ4RWGL6010: Expenses: I1B-Road work 112124
- DUKHCONI1BZ4RWGL6015: Expenses: I1B-Road work 58733
- DUKHCONI1BZ4RWGL6020: Expenses: I1B-Road work 149435
- DUKHCONI1BZ4RWGL6025: Expenses: I1B-Road work 77849
- DUKHCONI1BZ4RWGL6030: Expenses: I1B-Road work 79931

| ID | WBS | Activity | Duration | Start | Finish | Predecessors | Total float | Free float | Resources | Cost | CODE | P3 ACTID | P6 ID (old) | NP61D | PROJECT | PHASES | PACKAGE | PART | ELEMENTS | STEP | BILL NOS | BILL DIVISION | RES PACK |
| --- | --- | --- | --- | --- | --- | --- | --- | --- | --- | --- | --- | --- | --- | --- | --- | --- | --- | --- | --- | --- | --- | --- | --- |
|  | 60 | **PARKING SHED** |  | 2014-11-16 | 2015-01-14 |  |  |  |  |  |  |  |  |  |  |  |  |  |  |  |  |  |  |
| DUKHCONI1BZ4PSGL7000 |  | Excavation | 15d | 2014-11-16 | 2014-12-02 | DUKHCONI1BZ3PSGL7005, DUKHCONI1BZ4RWGL6015 SS+5d | 1d | 5d | LABOR- SUBCONTRACTOR [72 h]; EXCAVATION QTY [120 Cum]; LOADER [23 h]; POCLAIN [45 h]; TRUCK [23 h]; EQUIP OPERATORS [91 h] | 26,553.5 | 10 | 1BP4PSFR10 | DUKHCON1BP4PSGL7000 | DUKHCONI1BZ4PSGL7000 | DH | CON | 1BF | Z4 | FR | PS | B05 | B05-D08 | RES-1B |
| DUKHCONI1BZ4PSGL7005 |  | Foundation casting | 15d | 2014-11-27 | 2014-12-14 | DUKHCONI1BZ4PSGL7000 FF+5d, DUKHCONI1BZ4RWGL6015 FF+10d, DUKHCONI1BZ4PSGL7000 SS+5d | -4d | 1d | STEEL FIXERS SK [96 h]; CARPENTERS SK [56 h]; CONCRETE MASON SK [24 h]; LABOR- SUBCONTRACTOR [126 h]; REINFORCEMENT BARS QTY [1120 kg]; FORMWORK QTY [27 Sqm]; CONCRETE QTY [12 Cum] | 26,553.5 | 15 | 1BP4PSFR15 | DUKHCON1BP4PSGL7005 | DUKHCONI1BZ4PSGL7005 | DH | CON | 1BF | Z4 | FR | PS | B05 | B05-D08 | RES-1B |
| DUKHCONI1BZ4PSGL7010 |  | Column, Frame& Fabrics Erection | 25d | 2014-12-10 | 2015-01-08 | DUKHCONI1BZ3PSGL7010, DUKHCONI1BZ4RWGL6030 FF, DUKHCONI1BZ4RWGL6020, DUKHCONI1BZ4PSGL7005 SS+10d, DUKHCONI1BZ4BWGL5330 FF | -5d | 0d | LABOR- SUBCONTRACTOR [114 h]; STEEL ERECTOR SK [200 h]; PARKING SHED QTY [614 ea] | 132,765.25 | 20 | 1BP4PSFR20 | DUKHCON1BP4PSGL7010 | DUKHCONI1BZ4PSGL7010 | DH | CON | 1BF | Z4 | FR | PS | B05 | B05-D08 | RES-1B |
| DUKHCONI1BZ4PSGL7015 |  | Electrical Works-Parking Shed | 25d | 2014-12-16 | 2015-01-14 | DUKHCONI1BZ3PSGL7015, DUKHCONI1BZ4PSGL7010 SS+5d, DUKHCONI1BZ4STGL5260 | -5d | 6d | LABOR- SUBCONTRACTOR [18 h]; ELECTRICIANS SK [33.6 h]; LIGHTS QTY [13 ea] | 13,276.75 | 25 | 1BP4PSFR25 | DUKHCON1BP4PSGL7015 | DUKHCONI1BZ4PSGL7015 | DH | CON | 1BF | Z4 | FR | PS | B05 | B05-D08 | RES-1B |
|  | 65 | **HARD LANDSCAPING** |  | 2014-10-04 | 2014-12-28 |  |  |  |  |  |  |  |  |  |  |  |  |  |  |  |  |  |  |
| DUKHCONI1BZ4HDGL7020 |  | Precast Concrete Kerbs works | 20d | 2014-10-04 | 2014-10-28 | DUKHCONI1BZ4RWGL6000 SS | -11d | 0d | KERBSTONE MASON SK [512 h]; LABOR- SUBCONTRACTOR [288 h]; KERBSTONE QTY [633 lm] | 75,770 | 10 | 1BP4HDFR10 | DUKHCON1BP4HDGL7020 | DUKHCONI1BZ4HDGL7020 | DH | CON | 1BF | Z4 | FR | HD | B05 | B05-D10 | RES-1B |
| DUKHCONI1BZ4HDGL7025 |  | Interlocking for Walkways | 25d | 2014-10-18 | 2014-11-15 | DUKHCONI1BSBGZGL7910 FF, DUKHCONI1BZ4HDGL7020 SS+10d | -11d | 0d | INTERLOCK MASON SK [592 h]; LABOR- SUBCONTRACTOR [222 h]; INTERLOCK QTY [736 Sqm] | 82,812.72 | 15 | 1BP4HDFR15 | DUKHCON1BP4HDGL7025 | DUKHCONI1BZ4HDGL7025 | DH | CON | 1BF | Z4 | FR | HD | B05 | B05-D10 | RES-1B |
| DUKHCONI1BZ4HDGL7030 |  | Construction of Retaining wall | 25d | 2014-10-29 | 2014-11-26 | DUKHCONI1BZ3HDGL7030, DUKHCONI1BZ4HDGL7025 SS+10d | -11d | 0d | STEEL FIXERS SK [520 h]; CARPENTERS SK [1208 h]; CONCRETE MASON SK [160 h]; LABOR- SUBCONTRACTOR [1452 h]; EXCAVATION QTY [62 Cum]; REINFORCEMENT BARS QTY [6503 kg]; FORMWORK QTY [603 Sqm]; CONCRETE QTY [77 Cum] | 105,489.75 | 20 | 1BP4HDFR20 | DUKHCON1BP4HDGL7030 | DUKHCONI1BZ4HDGL7030 | DH | CON | 1BF | Z4 | FR | HD | B05 | B05-D10 | RES-1B |
| DUKHCONI1BZ4HDGL7035 |  | Construction of Wash Stone Boulders | 25d | 2014-10-29 | 2014-11-26 | DUKHCONI1BZ3HDGL7035, DUKHCONI1BZ4HDGL7030 SS | -11d | 0d | TILE MASON SK [16 h]; LABOR- SUBCONTRACTOR [6 h]; STONE BOULDERS QTY [5 Sqm] | 22,800 | 25 | 1BP4HDFR25 | DUKHCON1BP4HDGL7035 | DUKHCONI1BZ4HDGL7035 | DH | CON | 1BF | Z4 | FR | HD | B05 | B05-D10 | RES-1B |
| DUKHCONI1BZ4HDGL7040 |  | Construction of Speed Humps | 10d | 2014-12-16 | 2014-12-28 | DUKHCONI1BZ4RWGL6025, DUKHCONI1BZ4HDGL7035 SS, DUKHCONI1BZ3HDGL7040 | -11d | 0d | CONCRETE MASON SK [8 h]; LABOR- SUBCONTRACTOR [6 h]; SPEED HUMPS [3 ea] | 3,206 | 30 | 1BP4HDFR30 | DUKHCON1BP4HDGL7040 | DUKHCONI1BZ4HDGL7040 | DH | CON | 1BF | Z4 | FR | HD | B05 | B05-D10 | RES-1B |
|  | 70 | **SOFT LANDSCAPING** |  | 2014-11-05 | 2014-12-28 |  |  |  |  |  |  |  |  |  |  |  |  |  |  |  |  |  |  |
| DUKHCONI1BZ4SLGL7200 |  | Excavation for Landscaping | 25d | 2014-11-05 | 2014-12-03 | DUKHCONI1BZ4HDGL7035 SS+6d, DUKHCONI1BZ3SLGL7205, DUKHCONI1BZ4IRGL5290 SS | -11d | 0d | LABOR- SUBCONTRACTOR [426 h]; EXCAVATION QTY [704 Cum]; LOADER [125 h]; POCLAIN [250 h]; TRUCK [125 h]; EQUIP OPERATORS [500 h] | 47,004.5 | 10 | 1BP4SLFR10 | DUKHCON1BP4SLGL7200 | DUKHCONI1BZ4SLGL7200 | DH | CON | 1BF | Z4 | FR | SL | B05 | B05-D10 | RES-1B |
| DUKHCONI1BZ4SLGL7205 |  | Sweet Soil Laying | 25d | 2014-11-17 | 2014-12-15 | DUKHCONI1BZ4SLGL7200 SS+10d | -11d | 0d | LABOR- SUBCONTRACTOR [1758 h]; SWEET SOIL QTY [3517 Cum]; LANDSCAPING SK [2344 h] | 266,359.5 | 15 | 1BP4SLFR15 | DUKHCON1BP4SLGL7205 | DUKHCONI1BZ4SLGL7205 | DH | CON | 1BF | Z4 | FR | SL | B05 | B05-D10 | RES-1B |
| DUKHCONI1BZ4SLGL7210 |  | Plantation works | 25d | 2014-11-29 | 2014-12-28 | DUKHCONI1BZ3SLGL7210, DUKHCONI1BZ4SLGL7205 SS+10d | -11d | 0d | LABOR- SUBCONTRACTOR [312 h]; PLAM TREES QTY [18 ea]; LANDSCAPING SK [416 h]; GROUND COVER QTY [3335 Sqm]; SHRUBS QTY [92 ea] | 141,533 | 20 | 1BP4SLFR20 | DUKHCON1BP4SLGL7210 | DUKHCONI1BZ4SLGL7210 | DH | CON | 1BF | Z4 | FR | SL | B05 | B05-D10 | RES-1B |
|  | 30 | **SECONDARY BUILDINGS** |  | 2014-05-10 | 2014-12-11 |  |  |  |  |  |  |  |  |  |  |  |  |  |  |  |  |  |  |
|  | 10 | **INFRASTRUCTURE WORKS** |  | 2014-05-10 | 2014-12-11 |  |  |  |  |  |  |  |  |  |  |  |  |  |  |  |  |  |  |
|  | 10 | **IRRIGATION WATER TANK & PUMP ROOM** |  | 2014-05-10 | 2014-11-17 |  |  |  |  |  |  |  |  |  |  |  |  |  |  |  |  |  |  |
| DUKHCONI1BSBIWGL7400 |  | Excavation | 15d | 2014-05-10 | 2014-05-26 | DUKHENGI1BDWIWAP4760, DUKHCONP1BZ6STRF2055 SS | 2d | 0d | LABOR- SUBCONTRACTOR [144 h]; EXCAVATION QTY [235 Cum]; LOADER [38 h]; POCLAIN [75 h]; TRUCK [38 h]; EQUIP OPERATORS [151 h] | 28,369 | 10 | 1BOBIWFR10 | DUKHCON1BOBIWGL7400 | DUKHCONI1BSBIWGL7400 | DH | CON | 1BF | OB | FR | IW | B05 | B05-D07 | RES-1B |
| DUKHCONI1BSBIWGL7405 |  | Blinding & base waterproofing | 10d | 2014-05-27 | 2014-06-07 | DUKHCONI1BSBIWGL7400 | 2d | 0d | BLINDING MASON SK [64 h]; LABOR- SUBCONTRACTOR [48 h]; LABOR- SUBCONTRACTOR [24 h]; BLINDING QTY [78 Sqm]; WATERPROOFING QTY [78 Sqm]; WATERPROOFING SPECIALIST SK [64 h] | 13,134 | 15 | 1BOBIWFR15 | DUKHCON1BOBIWGL7405 | DUKHCONI1BSBIWGL7405 | DH | CON | 1BF | OB | FR | IW | B05 | B05-D07 | RES-1B |
| DUKHCONI1BSBIWGL7410 |  | Construction of Raft slab | 10d | 2014-06-08 | 2014-06-18 | DUKHCONI1BSBIWGL7405 | 2d | 0d | STEEL FIXERS SK [264 h]; CARPENTERS SK [32 h]; CONCRETE MASON SK [64 h]; LABOR- SUBCONTRACTOR [270 h]; REINFORCEMENT BARS QTY [3300 kg]; FORMWORK QTY [17 Sqm]; CONCRETE QTY [33 Cum] | 40,678 | 20 | 1BOBIWFR20 | DUKHCON1BOBIWGL7410 | DUKHCONI1BSBIWGL7410 | DH | CON | 1BF | OB | FR | IW | B05 | B05-D07 | RES-1B |
| DUKHCONI1BSBIWGL7415 |  | Construction of RCC Wall | 25d | 2014-06-19 | 2014-07-17 | DUKHCONI1BSBIWGL7410 | 2d | 0d | STEEL FIXERS SK [424 h]; CARPENTERS SK [448 h]; CONCRETE MASON SK [104 h]; LABOR- SUBCONTRACTOR [732 h]; REINFORCEMENT BARS QTY [5300 kg]; FORMWORK QTY [222 Sqm]; CONCRETE QTY [53 Cum] | 94,813 | 25 | 1BOBIWFR25 | DUKHCON1BOBIWGL7415 | DUKHCONI1BSBIWGL7415 | DH | CON | 1BF | OB | FR | IW | B05 | B05-D07 | RES-1B |
| DUKHCONI1BSBIWGL7420 |  | Construction of Roof Slab | 20d | 2014-07-19 | 2014-08-13 | DUKHCONI1BSBIWGL7415 | 43d | 0d | STEEL FIXERS SK [112 h]; CARPENTERS SK [136 h]; CONCRETE MASON SK [32 h]; LABOR- SUBCONTRACTOR [210 h]; REINFORCEMENT BARS QTY [1400 kg]; FORMWORK QTY [66 Sqm]; CONCRETE QTY [14 Cum] | 29,134 | 30 | 1BOBIWFR30 | DUKHCON1BOBIWGL7420 | DUKHCONI1BSBIWGL7420 | DH | CON | 1BF | OB | FR | IW | B05 | B05-D07 | RES-1B |
| DUKHCONI1BSBIWGL7425 |  | Waterproofing & Backfilling | 15d | 2014-08-14 | 2014-08-31 | DUKHCONI1BSBIWGL7420 | 43d | 0d | BOBCAT [15 h]; PLATE COMPACTOR [15 h]; TRUCK [3 h]; EQUIP OPERATORS [33 h]; LABOR- SUBCONTRACTOR [30 h]; WATERPROOFING QTY [93 Sqm]; BACKFILLING QTY [33 Cum]; WATERPROOFING SPECIALIST SK [72 h]; LABOR- SUBCONTRACTOR [6 h] | 25,340 | 35 | 1BOBIWFR35 | DUKHCON1BOBIWGL7425 | DUKHCONI1BSBIWGL7425 | DH | CON | 1BF | OB | FR | IW | B05 | B05-D07 | RES-1B |
| DUKHCONI1BSBIWGL7430 |  | Floor screed | 5d | 2014-09-01 | 2014-09-06 | DUKHCONI1BSBIWGL7425 | 43d | 1d | SCREED MASON SK [48 h]; LABOR- SUBCONTRACTOR [18 h]; FLOORING SCREED QTY [64 Sqm] | 2,072 | 40 | 1BOBIWFR40 | DUKHCON1BOBIWGL7430 | DUKHCONI1BSBIWGL7430 | DH | CON | 1BF | OB | FR | IW | B05 | B05-D07 | RES-1B |
| DUKHCONI1BSBIWGL7950 |  | Laying of Interlock | 10d | 2014-09-01 | 2014-09-11 | DUKHCONI1BSBIWGL7425 | 58d | 0d | INTERLOCK MASON SK [40 h]; LABOR- SUBCONTRACTOR [18 h]; INTERLOCK QTY [48 Sqm] | 5,873.28 | 75 | 1BOBIWFR75 | DUKHCON1BOBIWGL7950 | DUKHCONI1BSBIWGL7950 | DH | CON | 1BF | OB | FR | IW | B05 | B05-D10 | RES-1B |
| DUKHCONI1BSBIWGL7440 |  | Plumbing , Drainage & Firefighting works | 25d | 2014-09-08 | 2014-10-06 | DUKHCONI1BZ1FFGL5210, DUKHCONI1BZ3FFGL5210, DUKHCONI1BSBIWGL7430, DUKHCONI1BZ2FFGL5210, DUKHCONI1BZ4FFGL5210 | 42d | 0d | LABOR- SUBCONTRACTOR [18 h]; MECHANICALS SK [32.4 h]; PUMP QTY [3 ea] | 153,951 | 60 | 1BOBIWFR60 | DUKHCON1BOBIWGL7440 | DUKHCONI1BSBIWGL7440 | DH | CON | 1BF | OB | FR | IW | B05 | B05-D07 | RES-1B |
| DUKHCONI1BSBIWGL7445 |  | AC Works | 25d | 2014-09-08 | 2014-10-06 | DUKHCONI1BSBIWGL7440 SS | 42d | 19d | LABOR- SUBCONTRACTOR [36 h]; AC TECHNICIAN SK [123.2 h]; AC PIPES QTY [17 lm]; VENTILIATION EQP QTY [1 ea] | 2,228 | 65 | 1BOBIWFR65 | DUKHCON1BOBIWGL7445 | DUKHCONI1BSBIWGL7445 | DH | CON | 1BF | OB | FR | IW | B05 | B05-D07 | RES-1B |
| DUKHCONI1BSBIWGL7435 |  | Installation of Boundary Fences | 15d | 2014-09-13 | 2014-09-29 | DUKHCONI1BSBIWGL7950 | 58d | 35d | STEEL FIXERS SK [24 h]; LABOR- SUBCONTRACTOR [18 h]; BOUNDARY WIRE MESH QTY [55 Sqm] | 32,769 | 80 | 1BOBIWFR80 | DUKHCON1BOBIWGL7435 | DUKHCONI1BSBIWGL7435 | DH | CON | 1BF | OB | FR | IW | B05 | B05-D07 | RES-1B |
| DUKHCONI1BSBIWGL7450 |  | Electrical Works | 25d | 2014-09-30 | 2014-10-30 | DUKHCONI1BSBIWGL7445 SS, DUKHCONI1BZ4STGL5260 SS, DUKHCONI1BZ4ELGL5230 | 23d | 0d | ELECTRICIANS SK [235.2 h]; CODUITS QTY [60 lm]; CABLE QTY [50 lm]; DB QTY [2 ea]; LIGHTS QTY [31 ea]; ISOLATOR QTY [4 ea]; LABOR- SUBCONTRACTOR [90 h] | 9,783 | 70 | 1BOBIWFR70 | DUKHCON1BOBIWGL7450 | DUKHCONI1BSBIWGL7450 | DH | CON | 1BF | OB | FR | IW | B05 | B05-D07 | RES-1B |
| DUKHCONI1BSBIWGL7455 |  | Internal epoxy coating & Painting | 5d | 2014-11-01 | 2014-11-05 | DUKHCONI1BSBIWGL7450 | 23d | 0d | LABOR- SUBCONTRACTOR [12 h]; EPOXY QTY [64 Sqm]; EPOXY SK [32 h] | 6,198 | 45 | 1BOBIWFR45 | DUKHCON1BOBIWGL7455 | DUKHCONI1BSBIWGL7455 | DH | CON | 1BF | OB | FR | IW | B05 | B05-D07 | RES-1B |
| DUKHCONI1BSBIWGL7460 |  | Installation of Steel Ladder | 5d | 2014-11-06 | 2014-11-11 | DUKHCONI1BSBIWGL7455 | 23d | 0d | LABOR- SUBCONTRACTOR [6 h]; LADDER QTY [1 ea]; LADDER ERECTOR SK [8 h] | 3,970 | 50 | 1BOBIWFR50 | DUKHCON1BOBIWGL7460 | DUKHCONI1BSBIWGL7460 | DH | CON | 1BF | OB | FR | IW | B05 | B05-D07 | RES-1B |
| DUKHCONI1BSBIWGL7465 |  | Installation of G.I Handrails | 5d | 2014-11-12 | 2014-11-17 | DUKHCONI1BSBIWGL7460, DUKHCONI1BSBIWGL7435 | 23d | 34d | LABOR- SUBCONTRACTOR [60 h]; STEEL ERECTOR SK [104 h]; HANDRAIL QTY [50 lm] | 18,447 | 55 | 1BOBIWFR55 | DUKHCON1BOBIWGL7465 | DUKHCONI1BSBIWGL7465 | DH | CON | 1BF | OB | FR | IW | B05 | B05-D07 | RES-1B |

Notes:
- DUKHCONI1BZ4PSGL7000: Expenses: I1B-Road work 26553.5
- DUKHCONI1BZ4PSGL7005: Expenses: I1B-Road work 26553.5
- DUKHCONI1BZ4PSGL7010: Expenses: I1B-Road work 132765
- DUKHCONI1BZ4PSGL7015: Expenses: I1B-Road work 13276.8
- DUKHCONI1BZ4HDGL7020: Expenses: I1B-Hard and soft landscaping 75770
- DUKHCONI1BZ4HDGL7025: Expenses: I1B-Hard and soft landscaping 82812.7
- DUKHCONI1BZ4HDGL7030: Expenses: I1B-Hard and soft landscaping 105490
- DUKHCONI1BZ4HDGL7035: Expenses: I1B-Hard and soft landscaping 22800
- DUKHCONI1BZ4HDGL7040: Expenses: I1B-Hard and soft landscaping 3206
- DUKHCONI1BZ4SLGL7200: Expenses: I1B-Hard and soft landscaping 47004.5
- DUKHCONI1BZ4SLGL7205: Expenses: I1B-Hard and soft landscaping 266360
- DUKHCONI1BZ4SLGL7210: Expenses: I1B-Hard and soft landscaping 141533
- DUKHCONI1BSBIWGL7400: Expenses: I1B-Water supply system 28369
- DUKHCONI1BSBIWGL7405: Expenses: I1B-Water supply system 13134
- DUKHCONI1BSBIWGL7410: Expenses: I1B-Water supply system 40678
- DUKHCONI1BSBIWGL7415: Expenses: I1B-Water supply system 94813
- DUKHCONI1BSBIWGL7420: Expenses: I1B-Water supply system 29134
- DUKHCONI1BSBIWGL7425: Expenses: I1B-Water supply system 25340
- DUKHCONI1BSBIWGL7430: Expenses: I1B-Water supply system 2072
- DUKHCONI1BSBIWGL7950: Expenses: I1B-Hard and soft landscaping 5873.28
- DUKHCONI1BSBIWGL7440: Expenses: I1B-Water supply system 153951
- DUKHCONI1BSBIWGL7445: Expenses: I1B-Water supply system 2228
- DUKHCONI1BSBIWGL7435: Expenses: I1B-Water supply system 32769
- DUKHCONI1BSBIWGL7450: Expenses: I1B-Water supply system 9783
- DUKHCONI1BSBIWGL7455: Expenses: I1B-Water supply system 6198
- DUKHCONI1BSBIWGL7460: Expenses: I1B-Water supply system 3970
- DUKHCONI1BSBIWGL7465: Expenses: I1B-Water supply system 18447

| ID | WBS | Activity | Duration | Start | Finish | Predecessors | Complete | Planned start | Planned finish | Total float | Free float | Resources | Cost | CODE | P3 ACTID | P6 ID (old) | NP61D | PROJECT | PHASES | PACKAGE | PART | ELEMENTS | STEP | BILL NOS | BILL DIVISION | RES PACK |
| --- | --- | --- | --- | --- | --- | --- | --- | --- | --- | --- | --- | --- | --- | --- | --- | --- | --- | --- | --- | --- | --- | --- | --- | --- | --- | --- |
|  | 15 | **TELECOMMUNICATION ROOM** |  | 2014-07-19 | 2014-12-10 |  |  |  |  |  |  |  |  |  |  |  |  |  |  |  |  |  |  |  |  |  |
| DUKHCONI1BSBTRGL7600 |  | Excavation | 10d | 2014-07-19 | 2014-07-29 | DUKHCONI1BSBIWGL7415, DUKHENGI1BDWTRAP4770 |  |  |  | 2d | 0d | LOADER [5 h]; POCLAIN [10 h]; TRUCK [5 h]; EQUIP OPERATORS [20 h]; LABOR- SUBCONTRACTOR [12 h]; EXCAVATION QTY [20 Cum] | 6,092 | 10 | 1BOBTRFR10 | DUKHCON1BOBTRGL7600 | DUKHCONI1BSBTRGL7600 | DH | CON | 1BF | OB | FR | TR | B05 | B05-D05 | RES-1B |
| DUKHCONI1BSBTRGL7605 |  | Construction of foundation & Grade slab | 20d | 2014-07-30 | 2014-08-25 | DUKHCONI1BSBTRGL7600 |  |  |  | 12d | 0d | STEEL FIXERS SK [32 h]; CARPENTERS SK [80 h]; CONCRETE MASON SK [48 h]; LABOR- SUBCONTRACTOR [120 h]; REINFORCEMENT BARS QTY [356 kg]; FORMWORK QTY [40 Sqm]; CONCRETE QTY [25 Cum] | 18,276 | 15 | 1BOBTRFR15 | DUKHCON1BOBTRGL7605 | DUKHCONI1BSBTRGL7605 | DH | CON | 1BF | OB | FR | TR | B05 | B05-D05 | RES-1B |
| DUKHCONI1BSBTRGL7610 |  | Construction Column,Beams & Roof Slab | 20d | 2014-08-26 | 2014-09-17 | DUKHCONI1BSBTRGL7605 |  |  |  | 12d | 0d | STEEL FIXERS SK [32 h]; CARPENTERS SK [80 h]; CONCRETE MASON SK [48 h]; LABOR- SUBCONTRACTOR [120 h]; REINFORCEMENT BARS QTY [356 kg]; FORMWORK QTY [40 Sqm]; CONCRETE QTY [25 Cum] | 18,276 | 20 | 1BOBTRFR20 | DUKHCON1BOBTRGL7610 | DUKHCONI1BSBTRGL7610 | DH | CON | 1BF | OB | FR | TR | B05 | B05-D05 | RES-1B |
| DUKHCONI1BSBTRGL7615 |  | Finishing Works | 25d | 2014-10-15 | 2014-11-12 | DUKHCONI1BSBTRGL7610 FS+21d |  |  |  | 12d | 9d | PAINTERS SK [200 h]; EPOXY SK [24 h]; SCREED MASON SK [40 h]; PLASTER MASON SK [400 h]; LABOR- SUBCONTRACTOR [246 h]; LABOR- SUBCONTRACTOR [90 h]; SCREED QTY [52 Sqm]; PLASTER QTY [248 Sqm]; PAINT QTY [248 Sqm]; EPOXY QTY [52 Sqm] | 12,183 | 25 | 1BOBTRFR25 | DUKHCON1BOBTRGL7615 | DUKHCONI1BSBTRGL7615 | DH | CON | 1BF | OB | FR | TR | B05 | B05-D05 | RES-1B |
| DUKHCONI1BSBTRGL7620 |  | Plumbing , Drainage & Firefighting works | 25d | 2014-11-06 | 2014-12-04 | DUKHCONI1BSBTRGL7615 SS+10d, DUKHCONI1BZ4IRGL5280 |  |  |  | 3d | 0d | LABOR- SUBCONTRACTOR [78 h]; MECHANICALS SK [172.8 h]; CABINET QTY [4 ea]; DRAINAGE PIPES QTY [15 lm]; PLUMB PIPES QTY [97 lm]; WATER TANK QTY [1 ea]; PUMP QTY [4 ea]; JOINERY WORK SK [32 h] | 3,276 | 30 | 1BOBTRFR30 | DUKHCON1BOBTRGL7620 | DUKHCONI1BSBTRGL7620 | DH | CON | 1BF | OB | FR | TR | B05 | B05-D05 | RES-1B |
| DUKHCONI1BSBTRGL7625 |  | AC Works | 25d | 2014-11-06 | 2014-12-04 | DUKHCONI1BSBTRGL7620 SS |  |  |  | 3d | 0d | LABOR- SUBCONTRACTOR [60 h]; AC TECHNICIAN SK [224 h]; AC PIPES QTY [10 lm]; VENTILIATION EQP QTY [1 ea] | 2,194 | 35 | 1BOBTRFR35 | DUKHCON1BOBTRGL7625 | DUKHCONI1BSBTRGL7625 | DH | CON | 1BF | OB | FR | TR | B05 | B05-D05 | RES-1B |
| DUKHCONI1BSBTRGL7630 |  | Electrical Works-Telecom Room | 25d | 2014-11-06 | 2014-12-04 | DUKHCONI1BZ4TCGL5310, DUKHCONI1BSBTRGL7625 SS, DUKHCONI1BZ1TCGL5310, DUKHCONI1BZ3TCGL5310, DUKHCONI1BZ2TCGL5310 |  |  |  | 3d | 0d | LABOR- SUBCONTRACTOR [114 h]; ELECTRICIANS SK [291.2 h]; MECHANICALS SK [10.8 h]; CABLE QTY [50 lm]; DB QTY [1 ea]; LIGHTS QTY [24 ea]; FIRE EXTINGUISHER QTY [2 ea]; ISOLATOR QTY [5 ea]; CABLE TRAY QTY [24 lm] | 6,722 | 40 | 1BOBTRFR40 | DUKHCON1BOBTRGL7630 | DUKHCONI1BSBTRGL7630 | DH | CON | 1BF | OB | FR | TR | B05 | B05-D05 | RES-1B |
| DUKHCONI1BSBTRGL7635 |  | Final Paintings | 5d | 2014-12-06 | 2014-12-10 | DUKHCONI1BSBTRGL7615, DUKHCONI1BSBTRGL7630, DUKHCONI1BSBTRGL7620, DUKHCONI1BSBTRGL7625 |  |  |  | 3d | 14d | LABOR- SUBCONTRACTOR [75 h]; PAINTERS SK [200 h] | 5,754 |  | 1BOBTRFR42 | DUKHCON1BOBTRGL7635 | DUKHCONI1BSBTRGL7635 | DH | CON | 1BF | OB | FR | TR | B05 | B05-D05 | RES-1B |
|  | 20 | **GUARD HOUSE** |  | 2014-07-30 | 2014-12-11 |  |  |  |  |  |  |  |  |  |  |  |  |  |  |  |  |  |  |  |  |  |
| DUKHCONI1BSBGHGL7800 |  | Excavation | 10d | 2014-07-30 | 2014-08-13 | DUKHCONI1BSBTRGL7600, DUKHENGI1BDWGHAP4790 |  |  |  | 2d | 0d | LOADER [5 h]; POCLAIN [10 h]; TRUCK [5 h]; EQUIP OPERATORS [20 h]; EXCAVATION QTY [20 Cum]; LABOR- SUBCONTRACTOR [12 h] | 1,676 | 10 | 1BOBGHFR10 | DUKHCON1BOBGHGL7800 | DUKHCONI1BSBGHGL7800 | DH | CON | 1BF | OB | FR | GH | B05 | B05-D10 | RES-1B |
| DUKHCONI1BSBGHGL7805 |  | Construction of foundation & Grade slab | 20d | 2014-08-14 | 2014-09-06 | DUKHCONI1BSBGHGL7800 |  |  |  | 2d | 0d | REINFORCEMENT BARS QTY [356 kg]; FORMWORK QTY [40 Sqm]; CONCRETE QTY [25 Cum]; STEEL FIXERS SK [32 h]; CARPENTERS SK [80 h]; CONCRETE MASON SK [48 h]; LABOR- SUBCONTRACTOR [120 h] | 6,704 | 15 | 1BOBGHFR15 | DUKHCON1BOBGHGL7805 | DUKHCONI1BSBGHGL7805 | DH | CON | 1BF | OB | FR | GH | B05 | B05-D10 | RES-1B |
| DUKHCONI1BSBGHGL7810 |  | Construction Column,Beams & Roof Slab | 20d | 2014-09-07 | 2014-09-29 | DUKHCONI1BSBGHGL7805 |  |  |  | 2d | 0d | REINFORCEMENT BARS QTY [356 kg]; FORMWORK QTY [40 Sqm]; CONCRETE QTY [25 Cum]; STEEL FIXERS SK [32 h]; CARPENTERS SK [80 h]; CONCRETE MASON SK [48 h]; LABOR- SUBCONTRACTOR [120 h] | 6,704 | 20 | 1BOBGHFR20 | DUKHCON1BOBGHGL7810 | DUKHCONI1BSBGHGL7810 | DH | CON | 1BF | OB | FR | GH | B05 | B05-D10 | RES-1B |
| DUKHCONI1BSBGHGL7815 |  | Finishing Works | 25d | 2014-10-27 | 2014-11-24 | DUKHCONI1BSBGHGL7810 FS+21d |  |  |  | 2d | 0d | SCREED QTY [52 Sqm]; PLASTER QTY [248 Sqm]; PAINT QTY [248 Sqm]; EPOXY QTY [52 Sqm]; SCREED MASON SK [40 h]; PLASTER MASON SK [400 h]; PAINTERS SK [200 h]; EPOXY SK [24 h]; LABOR- SUBCONTRACTOR [246 h]; LABOR- SUBCONTRACTOR [90 h] | 6,704 | 25 | 1BOBGHFR25 | DUKHCON1BOBGHGL7815 | DUKHCONI1BSBGHGL7815 | DH | CON | 1BF | OB | FR | GH | B05 | B05-D10 | RES-1B |
| DUKHCONI1BSBGHGL7820 |  | Plumbing , Drainage & Firefighting works | 25d | 2014-11-08 | 2014-12-06 | DUKHCONI1BSBGHGL7815 SS+10d |  |  |  | 2d | 0d | CABINET QTY [4 ea]; DRAINAGE PIPES QTY [15 lm]; PLUMB PIPES QTY [97 lm]; WATER TANK QTY [1 ea]; PUMP QTY [4 ea]; MECHANICALS SK [172.8 h]; JOINERY WORK SK [32 h]; LABOR- SUBCONTRACTOR [78 h] | 3,724 | 30 | 1BOBGHFR30 | DUKHCON1BOBGHGL7820 | DUKHCONI1BSBGHGL7820 | DH | CON | 1BF | OB | FR | GH | B05 | B05-D10 | RES-1B |
| DUKHCONI1BSBGHGL7825 |  | AC Works | 25d | 2014-11-08 | 2014-12-06 | DUKHCONI1BSBGHGL7820 SS |  |  |  | 2d | 0d | AC PIPES QTY [10 lm]; VENTILIATION EQP QTY [1 ea] | 3,724 | 35 | 1BOBGHFR35 | DUKHCON1BOBGHGL7825 | DUKHCONI1BSBGHGL7825 | DH | CON | 1BF | OB | FR | GH | B05 | B05-D10 | RES-1B |
| DUKHCONI1BSBGHGL7830 |  | Electrical Works-Telecom Room | 25d | 2014-11-08 | 2014-12-06 | DUKHCONI1BSBGHGL7825 SS |  |  |  | 2d | 0d | CABLE QTY [50 lm]; DB QTY [1 ea]; LIGHTS QTY [24 ea]; FIRE EXTINGUISHER QTY [2 ea]; ISOLATOR QTY [5 ea]; CABLE TRAY QTY [24 lm]; ELECTRICIANS SK [291.2 h]; MECHANICALS SK [10.8 h]; LABOR- SUBCONTRACTOR [114 h] | 3,724 | 40 | 1BOBGHFR40 | DUKHCON1BOBGHGL7830 | DUKHCONI1BSBGHGL7830 | DH | CON | 1BF | OB | FR | GH | B05 | B05-D10 | RES-1B |
| DUKHCONI1BSBGHGL7835 |  | Final Paintings | 5d | 2014-12-07 | 2014-12-11 | DUKHCONI1BSBGHGL7820, DUKHCONI1BSBGHGL7825, DUKHCONI1BSBGHGL7830, DUKHCONI1BSBGHGL7815 |  |  |  | 2d | 13d | LABOR- SUBCONTRACTOR [75 h]; PAINTERS SK [200 h] | 1,397 |  | 1BOBGHFR42 | DUKHCON1BOBGHGL7835 | DUKHCONI1BSBGHGL7835 | DH | CON | 1BF | OB | FR | GH | B05 | B05-D10 | RES-1B |
|  | 25 | **GAZEBO** |  | 2014-09-10 | 2014-11-09 |  |  |  |  |  |  |  |  |  |  |  |  |  |  |  |  |  |  |  |  |  |
| DUKHCONI1BSBGZGL7900 |  | Construction of Concrete structure | 20d | 2014-09-10 | 2014-10-02 | DUKHENGI1BDWGZAP4780, DUKHCONI1BZ3HDGL7020 |  |  |  | -6d | 0d | STEEL FIXERS SK [8 h]; CARPENTERS SK [32 h]; CONCRETE MASON SK [24 h]; LABOR- SUBCONTRACTOR [60 h]; EXCAVATION QTY [20 Cum]; REINFORCEMENT BARS QTY [85 kg]; FORMWORK QTY [15 Sqm]; CONCRETE QTY [10 Cum] | 4,276 | 10 | 1BOBGZFR10 | DUKHCON1BOBGZGL7900 | DUKHCONI1BSBGZGL7900 | DH | CON | 1BF | OB | FR | GZ | B05 | B05-D10 | RES-1B |
| DUKHCONI1BSBGZGL7905 |  | Installation of Wooden Works | 25d | 2014-09-22 | 2014-10-22 | DUKHCONI1BSBGZGL7900 SS+10d |  |  |  | -6d | 0d | LABOR- SUBCONTRACTOR [100 h]; WOODEN WORKS QTY [1 ea]; DOOR WORK SK [200 h] | 42,754 | 15 | 1BOBGZFR15 | DUKHCON1BOBGZGL7905 | DUKHCONI1BSBGZGL7905 | DH | CON | 1BF | OB | FR | GZ | B05 | B05-D10 | RES-1B |
| DUKHCONI1BSBGZGL7915 |  | Park Benches Installation | 15d | 2014-09-22 | 2014-10-08 | DUKHCONI1BSBGZGL7905 SS |  |  |  | 4d | 10d | LABOR- SUBCONTRACTOR [120 h]; WOODEN WORKS QTY [4 ea] | 34,204 | 20 | 1BOBGZFR30 | DUKHCON1BOBGZGL7915 | DUKHCONI1BSBGZGL7915 | DH | CON | 1BF | OB | FR | GZ | B05 | B05-D10 | RES-1B |
| DUKHCONI1BSBGZGL7910 |  | Electrical Works-Gazebo | 15d | 2014-10-23 | 2014-11-09 | DUKHCONI1BSBGZGL7905, DUKHCONI1BSBGZGL7915 |  |  |  | -6d | 5d | LABOR- SUBCONTRACTOR [36 h]; ELECTRICIANS SK [89.6 h]; CABLE QTY [50 lm]; LIGHTS QTY [15 ea] | 17,102 | 20 | 1BOBGZFR20 | DUKHCON1BOBGZGL7910 | DUKHCONI1BSBGZGL7910 | DH | CON | 1BF | OB | FR | GZ | B05 | B05-D10 | RES-1B |
|  | L35 | **PACKAGE-2A** |  | 2012-11-18 | 2014-07-26 |  |  |  |  |  |  |  |  |  |  |  |  |  |  |  |  |  |  |  |  |  |
|  | 03 | **SITE PREPARATORY WORKS** |  | 2012-11-18 | 2013-03-30 |  |  |  |  |  |  |  |  |  |  |  |  |  |  |  |  |  |  |  |  |  |
| DUKHCONP2AGNSP001000 |  | Survey works, | 20d | 2012-11-18 A | 2012-12-10 A | DUKHMOBP020000004000 SS+14d | 100% |  |  |  |  | SURVEYOR SK [50 h]; LABOR - CIVIL [37.5 h] | 8,553 |  | 2ASP010000 | DUKHCON2AGNCI001000 | DUKHCONP2AGNSP001000 | DH | CON | 2A | SP |  |  | B07 | B07-D02 | RSE-2A |
| DUKHCONP2AGNSP002000 |  | Scanning for Existing Services for rerouting | 10d | 2012-12-05 A | 2012-12-16 A | DUKHMOBP020000004000 SS+14d, DUKHCONP2AGNSP001000 FF+5d | 100% |  |  |  |  | ELECTRICIANS SK [70 h]; MECHANICALS SK [67.5 h]; LABOR - CIVIL [187.5 h] | 3,800 |  | 2ASP010010 | DUKHCON2AGNCI002000 | DUKHCONP2AGNSP002000 | DH | CON | 2A | SP |  |  | B07 | B07-D02 | RSE-2A |
| DUKHCONP2AGNSP003000 |  | Site stripping | 20d | 2012-12-05 A | 2012-12-29 A | DUKHCONP2AGNSP002000 SS | 100% |  |  |  |  | LABOR - CIVIL [375 h]; BOBCAT [100 h]; LOADER [100 h]; TRUCK [100 h]; EQUIP OPERATORS [300 h] | 79,299 |  | 2ASP010020 | DUKHCON2AGNCI003000 | DUKHCONP2AGNSP003000 | DH | CON | 2A | SP |  |  | B07 | B07-D03 | RSE-2A |
| DUKHCONP2AGNSP004000 |  | Demolition of Existing building & landscaping | 20d | 2012-12-12 A | 2012-12-31 A | DUKHCONP2AGNSP003000 SS+6d | 100% | 2012-12-12 | 2013-01-05 |  |  | LABOR - CIVIL [937.5 h]; POCLAIN [1000 h]; LOADER [250 h]; TRUCK [250 h]; EQUIP OPERATORS [1750 h]; BREAKER [250 h] | 49,407 |  | 2ASP010030 | DUKHCON2AGNCI004000 | DUKHCONP2AGNSP004000 | DH | CON | 2A | SP |  |  | B07 | B07-D02 | RSE-2A |
| DUKHCONP2AGNSP002100 |  | Submission of Scanning Reports | 7d | 2012-12-17 A | 2012-12-25 A | DUKHCONP2AGNSP002000 | 100% |  |  |  |  | QUANTITY SURVEYOUR [48 h] | 950 |  | 2ASP010010 | DUKHCON2AGNCI002000 | DUKHCONP2AGNSP002000 | DH | CON | 2A | SP |  |  | B07 | B07-D02 | RSE-2A |
| DUKHCONP2AGNSP005000 |  | Demolition of existing services works | 20d | 2012-12-20 A | 2013-01-12 A | DUKHCONP2AGNSP004000 SS+6d | 100% |  |  |  |  | POCLAIN [100 h]; LOADER [100 h]; TRUCK [100 h]; EQUIP OPERATORS [400 h]; LABOR - CIVIL [375 h]; BREAKER [100 h] | 74,584 |  | 2ASP010040 | DUKHCON2AGNCI005000 | DUKHCONP2AGNSP005000 | DH | CON | 2A | SP |  |  | B07 | B07-D02 | RSE-2A |
| DUKHCONP2AGNSP002200 |  | Information Required for Rerouting | 14d | 2012-12-26 A | 2013-01-10 A | DUKHCONP2AGNSP002100 | 100% |  |  |  |  |  |  |  | 2ASP010010 | DUKHCON2AGNCI002000 | DUKHCONP2AGNSP002000 | DH | CON | 2A | SP |  |  | B07 | B07-D02 | RSE-2A |
| DUKHCONP2AGNSP002300 |  | Preparation & Submission for New Layout | 7d | 2013-01-12 A | 2013-01-19 A | DUKHCONP2AGNSP002200 | 100% |  |  |  |  | QUANTITY SURVEYOUR [40 h] | 951 |  | 2ASP010010 | DUKHCON2AGNCI002000 | DUKHCONP2AGNSP002000 | DH | CON | 2A | SP |  |  | B07 | B07-D02 | RSE-2A |
| DUKHCONP2AGNSP002400 |  | Approval for new Layout for rerouting | 14d | 2013-01-20 A | 2013-02-01 A | DUKHCONP2AGNSP002300 | 100% | 2013-01-20 | 2013-02-04 |  |  |  |  |  | 2ASP010010 | DUKHCON2AGNCI002000 | DUKHCONP2AGNSP002000 | DH | CON | 2A | SP |  |  | B07 | B07-D02 | RSE-2A |
| DUKHCONP2AGNSP002500 |  | Rerouting Works | 25d | 2013-02-02 A | 2013-03-30 A | DUKHCONP2AGNSP002400 | 100% | 2013-02-02 | 2013-03-03 |  |  | ELECTRICIANS SK [70 h]; MECHANICALS SK [67.5 h]; LABOR - CIVIL [187.5 h] | 3,800 |  | 2ASP010010 | DUKHCON2AGNCI002000 | DUKHCONP2AGNSP002000 | DH | CON | 2A | SP |  |  | B07 | B07-D02 | RSE-2A |

Notes:
- DUKHCONI1BSBTRGL7600: Expenses: I1B-Telecommunication 6092
- DUKHCONI1BSBTRGL7605: Expenses: I1B-Telecommunication 18276
- DUKHCONI1BSBTRGL7610: Expenses: I1B-Telecommunication 18276
- DUKHCONI1BSBTRGL7615: Expenses: I1B-Telecommunication 12183
- DUKHCONI1BSBTRGL7620: Expenses: I1B-Telecommunication 3276
- DUKHCONI1BSBTRGL7625: Expenses: I1B-Telecommunication 2194
- DUKHCONI1BSBTRGL7630: Expenses: I1B-Telecommunication 6722
- DUKHCONI1BSBTRGL7635: Expenses: I1B-Telecommunication 5754
- DUKHCONI1BSBGHGL7800: Expenses: I1B-Hard and soft landscaping 1676
- DUKHCONI1BSBGHGL7805: Expenses: I1B-Hard and soft landscaping 6704
- DUKHCONI1BSBGHGL7810: Expenses: I1B-Hard and soft landscaping 6704
- DUKHCONI1BSBGHGL7815: Expenses: I1B-Hard and soft landscaping 6704
- DUKHCONI1BSBGHGL7820: Expenses: I1B-Hard and soft landscaping 3724
- DUKHCONI1BSBGHGL7825: Expenses: I1B-Hard and soft landscaping 3724
- DUKHCONI1BSBGHGL7830: Expenses: I1B-Hard and soft landscaping 3724
- DUKHCONI1BSBGHGL7835: Expenses: I1B-Hard and soft landscaping 1397
- DUKHCONI1BSBGZGL7900: Expenses: I1B-Hard and soft landscaping 4276
- DUKHCONI1BSBGZGL7905: Expenses: I1B-Hard and soft landscaping 42754
- DUKHCONI1BSBGZGL7915: Expenses: I1B-Hard and soft landscaping 34204
- DUKHCONI1BSBGZGL7910: Expenses: I1B-Hard and soft landscaping 17102
- DUKHCONP2AGNSP001000: Expenses: I2A-Demolition 8553
- DUKHCONP2AGNSP002000: Expenses: I2A-Demolition 3800
- DUKHCONP2AGNSP003000: Expenses: I2A-Site clearance general excavation and earthwork 79299
- DUKHCONP2AGNSP004000: Expenses: I2A-Demolition 49407
- DUKHCONP2AGNSP002100: Expenses: I2A-Demolition 950
- DUKHCONP2AGNSP005000: Expenses: I2A-Demolition 74584
- DUKHCONP2AGNSP002300: Expenses: I2A-Demolition 951
- DUKHCONP2AGNSP002500: Expenses: I2A-Demolition 3800

| ID | WBS | Activity | Duration | Start | Finish | Predecessors | Total float | Free float | Resources | Cost | rem | P3 ACTID | P6 ID (old) | NP61D | PROJECT | PHASES | PACKAGE | PART | ELEMENTS | STEP | FLOORS | BILL NOS | BILL DIVISION | RES PACK | EXECUTER |
| --- | --- | --- | --- | --- | --- | --- | --- | --- | --- | --- | --- | --- | --- | --- | --- | --- | --- | --- | --- | --- | --- | --- | --- | --- | --- |
|  | 05 | **MOCK UP VILLA** |  | 2013-11-02 | 2014-02-10 |  |  |  |  |  |  |  |  |  |  |  |  |  |  |  |  |  |  |  |  |
|  | 15 | **FINISHING WORKS** |  | 2013-11-02 | 2014-02-04 |  |  |  |  |  |  |  |  |  |  |  |  |  |  |  |  |  |  |  |  |
|  | 10 | **INTERNAL FINISHES** |  | 2013-11-05 | 2014-02-04 |  |  |  |  |  |  |  |  |  |  |  |  |  |  |  |  |  |  |  |  |
|  | 10 | **GROUND FLOOR** |  | 2013-11-05 | 2014-02-04 |  |  |  |  |  |  |  |  |  |  |  |  |  |  |  |  |  |  |  |  |
| DUKHCONP2AMKARGF3000 |  | Block work | 6d | 2013-11-05 | 2013-11-11 | DUKHCONP2AZ1STGF2015 SS+21d, DUKHPROGEN00PRDV3010 | -57d | 0d | BLOCK MASON SK [608 h]; LABOR- SUBCONTRACTOR [342 h]; BLOCK QTY [304 Sqm] | 24,182 | REM | 2AMKIFGF10 | DUKHCON2AMKARGF3000 | DUKHCONP2AMKARGF3000 | DH | CON | 2A | MK | FIN | IF | GF | B06 | B06-D03 | RSE-2A |  |
| DUKHCONP2AMKARGF3005 |  | Plastering work | 7d | 2013-11-18 | 2013-11-25 | DUKHCONP2AMKARGF3000, DUKHPROGEN00PRDV3040, DUKHCONP2AMKELGF4000 | -51d | 0d | PLASTER MASON SK [304 h]; LABOR- SUBCONTRACTOR [171 h]; PLASTER QTY [190 Sqm] | 2,470 | REM | 2AMKIFGF12 | DUKHCON2AMKARGF3005 | DUKHCONP2AMKARGF3005 | DH | CON | 2A | MK | FIN | IF | GF | B06 | B06-D10 | RSE-2A |  |
| DUKHCONP2AMKARGF3010 |  | Flooring screed | 7d | 2013-11-21 | 2013-11-28 | DUKHCONP2AMKARGF3005 SS+3d | -42d | 0d | SCREED MASON SK [77 h]; LABOR- SUBCONTRACTOR [29.25 h]; FLOORING SCREED QTY [96 Sqm] | 3,168 | REM | 2AMKIFGF15 | DUKHCON2AMKARGF3010 | DUKHCONP2AMKARGF3010 | DH | CON | 2A | MK | FIN | IF | GF | B06 | B06-D10 | RSE-2A |  |
| DUKHCONP2AMKARGF3015 |  | Wet area waterproofing & Protection Screed | 5d | 2013-11-25 | 2013-11-30 | DUKHCONP2AMKARGF3005 FF+3d, DUKHCONP2AMKARGF3010 SS+3d | -42d | 0d | LABOR- SUBCONTRACTOR [4.5 h]; WETAREA WATERPROOFING QTY [13 Sqm]; WATERPROOFING SPECIALIST SK [11 h] | 442 | REM | 2AMKIFGF18 | DUKHCON2AMKARGF3015 | DUKHCONP2AMKARGF3015 | DH | CON | 2A | MK | FIN | IF | GF | B06 | B06-D10 | RSE-2A |  |
| DUKHCONP2AMKARGF3020 |  | Ceramic Wall Tiling | 6d | 2013-12-01 | 2013-12-07 | DUKHCONP2AMKPLGF4310, DUKHCONP2AMKARGF3015, DUKHPROGEN00PRDV3120 | -37d | 0d | TILE MASON SK [108 h]; LABOR- SUBCONTRACTOR [60.75 h]; CERAMIC WALL TILE QTY [54 Sqm] | 5,856 | REM | 2AMKIFGF24 | DUKHCON2AMKARGF3020 | DUKHCONP2AMKARGF3020 | DH | CON | 2A | MK | FIN | IF | GF | B06 | B06-D10 | RSE-2A |  |
| DUKHCONP2AMKARGF3030 |  | Paint First coat | 5d | 2013-12-04 | 2013-12-09 | DUKHPROGEN00PRDV3320, DUKHCONP2AMKARGF3005 SS+14d | -48d | 4d | LABOR- SUBCONTRACTOR [81.9 h]; FIRSTCOAT PAINT QTY [273 Sqm]; PAINTERS SK [218.4 h] | 920 | REM | 2AMKIFGF21 | DUKHCON2AMKARGF3030 | DUKHCONP2AMKARGF3030 | DH | CON | 2A | MK | FIN | IF | GF | B06 | B06-D11 | RSE-2A | ENT |
| DUKHCONP2AMKARGF3025 |  | Porcelain Tile flooring | 6d | 2013-12-08 | 2013-12-14 | DUKHCONP2AMKARGF3010, DUKHPROGEN00PRDV3130, DUKHCONP2AMKARGF3020 | -37d | 0d | TILE MASON SK [110 h]; LABOR- SUBCONTRACTOR [62.25 h]; PORCELAIN FLOORING QTY [96 Sqm] | 8,888 | REM | 2AMKIFGF27 | DUKHCON2AMKARGF3025 | DUKHCONP2AMKARGF3025 | DH | CON | 2A | MK | FIN | IF | GF | B06 | B06-D10 | RSE-2A |  |
| DUKHCONP2AMKARGF3040 |  | Cobble Tile flooring | 5d | 2013-12-15 | 2013-12-21 | DUKHCONP2AMKARGF3010, DUKHPROGEN00PRDV3090, DUKHCONP2AMKARGF3025 | -11d | 0d | TILE MASON SK [32 h]; LABOR- SUBCONTRACTOR [18 h]; COBBLE STONE QTY [20 Sqm] | 1,668 | REM | 2AMKIFGF30 | DUKHCON2AMKARGF3040 | DUKHCONP2AMKARGF3040 | DH | CON | 2A | MK | FIN | IF | GF | B06 | B06-D10 | RSE-2A |  |
| DUKHCONP2AMKARGF3045 |  | Fixing of Suspension systems | 7d | 2013-12-15 | 2013-12-23 | DUKHCONP2AMKARGF3030, DUKHCONP2AMKARGF3025, DUKHCONP2AMKELGF4010 | -37d | 0d | LABOR- SUBCONTRACTOR [39.75 h]; SUSPENSION QTY [87 Sqm]; FALSE CEILING SKILLED SK [70 h] | 1,705 | REM | 2AMKIFGF39 | DUKHCON2AMKARGF3045 | DUKHCONP2AMKARGF3045 | DH | CON | 2A | MK | FIN | IF | GF | B06 | B06-D10 | RSE-2A | SUS |
| DUKHCONP2AMKARGF3075 |  | Carpentry & Joinery Works | 10d | 2013-12-16 | 2013-12-28 | DUKHPROGEN00PRDV3570, DUKHPROGEN00PRDV3550, DUKHPROGEN00PRDV3560 | 16d | 18d | LABOR- SUBCONTRACTOR [24 h]; CABINET QTY [6 ea]; WARDROBE QTY [2 ea]; JOINERY WORK SK [64 h] | 14,762 | REM | 2AMKIFGF57 | DUKHCON2AMKARGF3075 | DUKHCONP2AMKARGF3075 | DH | CON | 2A | MK | FIN | IF | GF | B06 | B06-D05 | RSE-2A |  |
| DUKHCONP2AMKARGF3035 |  | Slate Tile Flooring & Skirting | 5d | 2013-12-22 | 2013-12-26 | DUKHCONP2AMKARGF3010, DUKHCONP2AMKARGF3040, DUKHPROGEN00PRDV3100 | -11d | 27d | TILE MASON SK [168 h]; LABOR- SUBCONTRACTOR [94.5 h]; SLATE TILE QTY [105 Sqm] | 17,955 | REM | 2AMKIFGF33 | DUKHCON2AMKARGF3035 | DUKHCONP2AMKARGF3035 | DH | CON | 2A | MK | FIN | IF | GF | B06 | B06-D10 | RSE-2A |  |
| DUKHCONP2AMKARGF3060 |  | Gypsum board false ceiling | 8d | 2013-12-24 | 2014-01-01 | DUKHCONP2AMKARGF3045, DUKHCONP2AMKACGF4600, DUKHPROGEN00PRDV3300 | -37d | 0d | LABOR- SUBCONTRACTOR [39.75 h]; FALSE CEILING QTY [87 Sqm]; FALSE CEILING SKILLED SK [70 h] | 5,002 | REM | 2AMKIFGF45 | DUKHCON2AMKARGF3060 | DUKHCONP2AMKARGF3060 | DH | CON | 2A | MK | FIN | IF | GF | B06 | B06-D10 | RSE-2A | GYP |
| DUKHCONP2AMKARGF3065 |  | Wooden door | 7d | 2014-01-02 | 2014-01-09 | DUKHCONP2AMKARGF3060, DUKHPROGEN00PRDV3490, DUKHPROGEN00PRDV3450 | -37d | 0d | LABOR- SUBCONTRACTOR [9 h]; WOODEN DOOR QTY [6 ea]; DOOR ERECTOR SK [24 h] | 18,733 | REM | 2AMKIFGF48 | DUKHCON2AMKARGF3065 | DUKHCONP2AMKARGF3065 | DH | CON | 2A | MK | FIN | IF | GF | B06 | B06-D05 | RSE-2A |  |
| DUKHCONP2AMKARGF3080 |  | Aluminum windows | 7d | 2014-01-11 | 2014-01-18 | DUKHCONP2AMKARGF3065, DUKHPROGEN00PRDV3470 | 3d | 0d | LABOR- SUBCONTRACTOR [6 h]; ALUMINIUM WINDOWS QTY [6 ea]; WINDOW ERECTOR SK [16 h] | 4,568 | REM | 2AMKIFGF54 | DUKHCON2AMKARGF3080 | DUKHCONP2AMKARGF3080 | DH | CON | 2A | MK | FIN | IF | GF | B06 | B06-D06 | RSE-2A |  |
| DUKHCONP2AMKARGF3090 |  | Installation of Granite Counter Top | 7d | 2014-01-19 | 2014-01-26 | DUKHCONP2AMKARGF3080, DUKHCONP2AMKARGF3075 | 3d | 1d | GRANITE MASON SK [12 h]; LABOR- SUBCONTRACTOR [4.5 h]; GRANITE COUNTER TOP QTY [3 ea] | 3,560 | REM | 2AMKIFGF60 | DUKHCON2AMKARGF3090 | DUKHCONP2AMKARGF3090 | DH | CON | 2A | MK | FIN | IF | GF | B06 | B06-D10 | RSE-2A |  |
| DUKHCONP2AMKARGF3095 |  | Final Painting | 7d | 2014-01-28 | 2014-02-04 | DUKHCONP2AMKARGF3090, DUKHCONP2AMKELRF4070, DUKHCONP2AMKARGF3080, DUKHCONP2AMKELRF4075, DUKHCONP2AMKARGF3040, DUKHCONP2AMKACRF4635, DUKHCONP2AMKARGF3030, DUKHCONP2AMKARGF3060, DUKHPROGEN00PRDV3420, DUKHCONP2AMKARGF3035 | 35d | 64d | PAINTERS SK [218.4 h]; LABOR- SUBCONTRACTOR [81.9 h]; PAINT QTY [273 Sqm] | 3,856 | REM | 2AMKIFGF66 | DUKHCON2AMKARGF3095 | DUKHCONP2AMKARGF3095 | DH | CON | 2A | MK | FIN | IF | GF | B06 | B06-D11 | RSE-2A | PNT |
|  | 15 | **EXTERNAL FINISHES** |  | 2013-11-02 | 2013-12-12 |  |  |  |  |  |  |  |  |  |  |  |  |  |  |  |  |  |  |  |  |
|  | 10 | **ROOF** |  | 2013-11-02 | 2013-11-28 |  |  |  |  |  |  |  |  |  |  |  |  |  |  |  |  |  |  |  |  |
| DUKHCONP2AMKARRF3625 |  | Laying of Pitched Roof | 7d | 2013-11-02 | 2013-11-09 | DUKHPROGEN00PRDV3140, DUKHCONP2AZ1STRF2065 SS+5d, DUKHCONP2AZ1STRF2060 SS+5d | -33d | 0d | INTERLOCK MASON SK [31 h]; LABOR- SUBCONTRACTOR [12 h]; ROOF TILES QTY [39 Sqm] | 20,007 |  | 2AMKEFRF05 | DUKHCON2AMKARRF3625 | DUKHCONP2AMKARRF3625 | DH | CON | 2A | MK | FIN | EF | RF | B06 | B06-D04 | RSE-2A |  |
| DUKHCONP2AMKARRF3630 |  | Leveling Screed for Waterproofing | 2d | 2013-11-10 | 2013-11-11 | DUKHCONP2AMKARRF3625 | -33d | 0d | SCREED MASON SK [21 h]; LABOR- SUBCONTRACTOR [12 h]; ROOF WP SCREED QTY [52 Sqm] | 2,689 | REM | 2AMKEFRF10 | DUKHCON2AMKARRF3630 | DUKHCONP2AMKARRF3630 | DH | CON | 2A | MK | FIN | EF | RF | B06 | B06-D04 | RSE-2A |  |
| DUKHCONP2AMKARRF3635 |  | Laying of Waterproofing Membrane | 4d | 2013-11-12 | 2013-11-16 | DUKHCONP2AMKARRF3630 | -33d | 0d | LABOR- SUBCONTRACTOR [33 h]; ROOF WP MEMBRANE QTY [164 Sqm]; WATERPROOFING SPECIALIST SK [88 h] | 4,219 | REM | 2AMKEFRF15 | DUKHCON2AMKARRF3635 | DUKHCONP2AMKARRF3635 | DH | CON | 2A | MK | FIN | EF | RF | B06 | B06-D04 | RSE-2A |  |
| DUKHCONP2AMKARRF3640 |  | Installation of Insulation & Protection | 4d | 2013-11-17 | 2013-11-20 | DUKHCONP2AMKARRF3635 | -33d | 0d | LABOR- SUBCONTRACTOR [15.75 h]; ROOF WP INSULATION QTY [104 Sqm]; WATERPROOFING SPECIALIST SK [42 h] | 2,544 | REM | 2AMKEFRF20 | DUKHCON2AMKARRF3640 | DUKHCONP2AMKARRF3640 | DH | CON | 2A | MK | FIN | EF | RF | B06 | B06-D04 | RSE-2A |  |
| DUKHCONP2AMKARRF3645 |  | Lime Stone Chips & Paving slab Installation | 2d | 2013-11-21 | 2013-11-23 | DUKHCONP2AMKARRF3640 | -33d | 0d | TILE MASON SK [21 h]; LABOR- SUBCONTRACTOR [16.5 h]; LIME STONE QTY [52 Sqm]; PRECAST PAVING SLAB QTY [52 Sqm]; PRE CAST CONCRETE SK [21 h] | 4,940 | REM | 2AMKEFRF25 | DUKHCON2AMKARRF3645 | DUKHCONP2AMKARRF3645 | DH | CON | 2A | MK | FIN | EF | RF | B06 | B06-D04 | RSE-2A |  |
| DUKHCONP2AMKARRF3660 |  | Installation of Access Ladder | 5d | 2013-11-24 | 2013-11-28 | DUKHPROGEN00PRDV3400, DUKHCONP2AMKARRF3645 | 32d | 16d | LABOR- SUBCONTRACTOR [6 h]; LADDER QTY [2 ea]; LADDER ERECTOR SK [16 h] | 2,394 | REM | 2AMKEFRF40 | DUKHCON2AMKARRF3660 | DUKHCONP2AMKARRF3660 | DH | CON | 2A | MK | FIN | EF | RF | B06 | B06-D06 | RSE-2A |  |

Notes:
- DUKHCONP2AMKARGF3000: Expenses: P2A-Block work 24182
- DUKHCONP2AMKARGF3005: Expenses: P2A-Finishes 2470
- DUKHCONP2AMKARGF3010: Expenses: P2A-Finishes 3168
- DUKHCONP2AMKARGF3015: Expenses: P2A-Finishes 442
- DUKHCONP2AMKARGF3020: Expenses: P2A-Finishes 5856
- DUKHCONP2AMKARGF3030: Expenses: P2A-Painting and Decorating 920
- DUKHCONP2AMKARGF3025: Expenses: P2A-Finishes 8888
- DUKHCONP2AMKARGF3040: Expenses: P2A-Finishes 1668
- DUKHCONP2AMKARGF3045: Expenses: P2A-Finishes 1705
- DUKHCONP2AMKARGF3075: Expenses: P2A-Carpentry and Joinery 14762
- DUKHCONP2AMKARGF3035: Expenses: P2A-Finishes 17955
- DUKHCONP2AMKARGF3060: Expenses: P2A-Finishes 5002
- DUKHCONP2AMKARGF3065: Expenses: P2A-Carpentry and Joinery 18733
- DUKHCONP2AMKARGF3080: Expenses: P2A-Metal work 4568
- DUKHCONP2AMKARGF3090: Expenses: P2A-Finishes 3560
- DUKHCONP2AMKARGF3095: Expenses: P2A-Painting and Decorating 3856
- DUKHCONP2AMKARRF3625: Expenses: P2A-Roofing 20007
- DUKHCONP2AMKARRF3630: Expenses: P2A-Roofing 2689
- DUKHCONP2AMKARRF3635: Expenses: P2A-Roofing 4219
- DUKHCONP2AMKARRF3640: Expenses: P2A-Roofing 2544
- DUKHCONP2AMKARRF3645: Expenses: P2A-Roofing 4940
- DUKHCONP2AMKARRF3660: Expenses: P2A-Metal work 2394

| ID | WBS | Activity | Duration | Start | Finish | Predecessors | Total float | Free float | Resources | Cost | rem | P3 ACTID | P6 ID (old) | NP61D | PROJECT | PHASES | PACKAGE | PART | ELEMENTS | STEP | FLOORS | BILL NOS | BILL DIVISION | RES PACK |
| --- | --- | --- | --- | --- | --- | --- | --- | --- | --- | --- | --- | --- | --- | --- | --- | --- | --- | --- | --- | --- | --- | --- | --- | --- |
|  | 15 | **ELEVATION** |  | 2013-11-24 | 2013-12-12 |  |  |  |  |  |  |  |  |  |  |  |  |  |  |  |  |  |  |  |
| DUKHCONP2AMKAREL3665 |  | External Plastering | 10d | 2013-11-24 | 2013-12-04 | DUKHCONP2AMKARRF3645, DUKHCONP2AZ1STRF2060 SS+10d | -33d | 0d | PLASTER MASON SK [428 h]; LABOR- SUBCONTRACTOR [240.75 h]; EXTERNAL PLASTER QTY [214 Sqm] | 5,136 | REM | 2AMKEFEL10 | DUKHCON2AMKAREL3665 | DUKHCONP2AMKAREL3665 | DH | CON | 2A | MK | FIN | EF | EL | B06 | B06-D10 | RSE-2A |
| DUKHCONP2AMKAREL3680 |  | External Painting | 7d | 2013-12-05 | 2013-12-12 | DUKHCONP2AMKAREL3665 | -25d | 0d | LABOR- SUBCONTRACTOR [63.75 h]; PAINT QTY [214 Sqm]; PAINTERS SK [171 h] | 5,046 |  | 2AMKEFEL20 | DUKHCON2AMKAREL3680 | DUKHCONP2AMKAREL3680 | DH | CON | 2A | MK | FIN | EF | EL | B06 | B06-D11 | RSE-2A |
|  | 20 | **MEP WORKS** |  | 2013-11-12 | 2014-01-29 |  |  |  |  |  |  |  |  |  |  |  |  |  |  |  |  |  |  |  |
|  | 10 | **ELECTRICAL WORKS** |  | 2013-11-12 | 2014-01-27 |  |  |  |  |  |  |  |  |  |  |  |  |  |  |  |  |  |  |  |
|  | 10 | **GROUND FLOOR** |  | 2013-11-12 | 2014-01-13 |  |  |  |  |  |  |  |  |  |  |  |  |  |  |  |  |  |  |  |
| DUKHCONP2AMKELGF4000 |  | Fixing of wall conduits & switch socket boxes | 5d | 2013-11-12 | 2013-11-17 | DUKHCONP2AMKARGF3000 | -51d | 0d | LABOR- SUBCONTRACTOR [17.25 h]; ELECTRICIANS SK [82.6 h]; SOCKET BOXES QTY [37 ea]; CODUITS QTY [37 lm] | 3,969 |  | 2AMKEWGF10 | DUKHCON2AMKELGF4000 | DUKHCONP2AMKELGF4000 | DH | CON | 2A | MK | MEP | EW | GF | B06 | B06-D09 | RSE-2A |
| DUKHCONP2AMKELGF4005 |  | Cable tray & trunking installation | 5d | 2013-11-26 | 2013-12-01 | DUKHCONP2AMKELGF4000, DUKHCONP2AMKARGF3005 | -48d | 0d | LABOR- SUBCONTRACTOR [72 h]; ELECTRICIANS SK [268.8 h]; CABLE TRAY QTY [48 lm] | 1,650 |  | 2AMKEWGF15 | DUKHCON2AMKELGF4005 | DUKHCONP2AMKELGF4005 | DH | CON | 2A | MK | MEP | EW | GF | B06 | B06-D09 | RSE-2A |
| DUKHCONP2AMKELGF4010 |  | Installation of wiring & Main Cabling | 5d | 2013-12-02 | 2013-12-07 | DUKHCONP2AMKELGF4005, DUKHPROGEN00PRDV3180 | -31d | 4d | LABOR- SUBCONTRACTOR [15 h]; ELECTRICIANS SK [54.6 h]; CABLE QTY [48 lm] | 11,907 |  | 2AMKEWGF20 | DUKHCON2AMKELGF4010 | DUKHCONP2AMKELGF4010 | DH | CON | 2A | MK | MEP | EW | GF | B06 | B06-D09 | RSE-2A |
| DUKHCONP2AMKELGF4020 |  | Installation of DBS,MCCB Accessories. | 5d | 2014-01-02 | 2014-01-07 | DUKHCONP2AMKELGF4010, DUKHPROGEN00PRDV3170, DUKHCONP2AMKARGF3060 | 4d | 0d | LABOR- SUBCONTRACTOR [6 h]; ELECTRICIANS SK [22.4 h]; MCCB QTY [10 ea]; DB QTY [1 ea] | 9,652 |  | 2AMKEWGF25 | DUKHCON2AMKELGF4020 | DUKHCONP2AMKELGF4020 | DH | CON | 2A | MK | MEP | EW | GF | B06 | B06-D09 | RSE-2A |
| DUKHCONP2AMKELGF4015 |  | Install. of CAMS & Fire Fighting Accessories | 7d | 2014-01-06 | 2014-01-13 | DUKHPROGEN00PRDV3360, DUKHCONP2AMKARGF3060, DUKHCONP2AMKELGF4025 FF, DUKHPROGEN00PRDV3380, DUKHPROGEN00PRDV3370, DUKHPROGEN00PRDV3210, DUKHPROGEN00PRDV3260 | 4d | 54d | LABOR- SUBCONTRACTOR [66 h]; MECHANICALS SK [118.8 h]; SMOKE DETECTOR POINTS QTY [21 ea]; FIRE EXTINGUISHER QTY [1 ea] | 10,654 |  | 2AMKEWGF35 | DUKHCON2AMKELGF4015 | DUKHCONP2AMKELGF4015 | DH | CON | 2A | MK | MEP | EW | GF | B06 | B06-D09 | RSE-2A |
| DUKHCONP2AMKELGF4025 |  | Installation of Lighting fixtures & Accessories | 5d | 2014-01-08 | 2014-01-13 | DUKHPROGEN00PRDV3190, DUKHCONP2AMKELGF4020, DUKHCONP2AMKARGF3060 | 4d | 0d | LABOR- SUBCONTRACTOR [23.25 h]; ELECTRICIANS SK [43.4 h]; LIGHTS QTY [19 ea] | 16,548 |  | 2AMKEWGF30 | DUKHCON2AMKELGF4025 | DUKHCONP2AMKELGF4025 | DH | CON | 2A | MK | MEP | EW | GF | B06 | B06-D09 | RSE-2A |
| DUKHCONP2AMKELGF4030 |  | Installation of Telephone System | 5d | 2014-01-08 | 2014-01-13 | DUKHCONP2AMKARGF3060, DUKHPROGEN00PRDV3270, DUKHPROGEN00PRDV3280, DUKHCONP2AMKELGF4020 | 35d | 0d | LABOR- SUBCONTRACTOR [3 h]; ELECTRICIANS SK [22.4 h]; TELEPHONE SOCKETS QTY [2 ea] | 7,201 |  | 2AMKEWGF40 | DUKHCON2AMKELGF4030 | DUKHCONP2AMKELGF4030 | DH | CON | 2A | MK | MEP | EW | GF | B06 | B06-D09 | RSE-2A |
|  | 20 | **ROOF** |  | 2014-01-14 | 2014-01-27 |  |  |  |  |  |  |  |  |  |  |  |  |  |  |  |  |  |  |  |
| DUKHCONP2AMKELRF4070 |  | Installation of Isolator | 5d | 2014-01-14 | 2014-01-19 | DUKHCONP2AMKELGF4025, DUKHPROGEN00PRDV3200, DUKHCONP2AMKARRF3645, DUKHCONP2AMKELGF4010, DUKHCONP2AMKELGF4030 | 35d | 0d | LABOR- SUBCONTRACTOR [21 h]; ELECTRICIANS SK [39.2 h]; ISOLATOR QTY [7 ea] | 3,730 |  | 2AMKEWRF10 | DUKHCON2AMKELRF4070 | DUKHCONP2AMKELRF4070 | DH | CON | 2A | MK | MEP | EW | RF | B06 | B06-D09 | RSE-2A |
| DUKHCONP2AMKELRF4075 |  | Installation of TV Dish Antenna | 7d | 2014-01-20 | 2014-01-27 | DUKHCONP2AMKELRF4070, DUKHPROGEN00PRDV3290 | 35d | 0d | LABOR- SUBCONTRACTOR [9 h]; ELECTRICIANS SK [22.4 h]; CONTROL BOX QTY [1 ea]; SWITCHING BOX QTY [1 ea] | 3,953 |  | 2AMKEWRF15 | DUKHCON2AMKELRF4075 | DUKHCONP2AMKELRF4075 | DH | CON | 2A | MK | MEP | EW | RF | B06 | B06-D09 | RSE-2A |
|  | 15 | **PLUMBING, DRAINAGE & FIRE FIGHTING WORKS** |  | 2013-11-12 | 2014-01-29 |  |  |  |  |  |  |  |  |  |  |  |  |  |  |  |  |  |  |  |
|  | 10 | **GROUND FLOOR** |  | 2013-11-12 | 2014-01-23 |  |  |  |  |  |  |  |  |  |  |  |  |  |  |  |  |  |  |  |
| DUKHCONP2AMKPLGF4305 |  | Installation of Plumbing pipes & testing | 5d | 2013-11-12 | 2013-11-17 | DUKHCONP2AMKARGF3000, DUKHPROGEN00PRDV3080 | -49d | 0d | LABOR- SUBCONTRACTOR [51.75 h]; MECHANICALS SK [187.65 h]; PLUMB PIPES QTY [173 lm] | 10,812 |  | 2AMKPLGF10 | DUKHCON2AMKPLGF4305 | DUKHCONP2AMKPLGF4305 | DH | CON | 2A | MK | MEP | PL | GF | B06 | B06-D07 | RSE-2A |
| DUKHCONP2AMKPLGF4310 |  | Installation of Drainage pipes &testing | 5d | 2013-11-12 | 2013-11-17 | DUKHCONP2AMKARGF3000, DUKHCONP2AMKPLGF4305 SS | -48d | 0d | LABOR- SUBCONTRACTOR [3 h]; MECHANICALS SK [9.45 h]; DRAINAGE PIPES QTY [17 lm] | 422 |  | 2AMKPLGF15 | DUKHCON2AMKPLGF4310 | DUKHCONP2AMKPLGF4310 | DH | CON | 2A | MK | MEP | PL | GF | B06 | B06-D07 | RSE-2A |
| DUKHCONP2AMKPLGF4315 |  | Sanitary Fittings & Accessories | 7d | 2014-01-11 | 2014-01-18 | DUKHPROGEN00PRDV3770, DUKHPROGEN00PRDV3150, DUKHCONP2AMKARGF3065, DUKHCONP2AMKPLGF4310, DUKHPROGEN00PRDV3230 | -37d | 0d | LABOR- SUBCONTRACTOR [12.75 h]; MECHANICALS SK [22.95 h]; SANITARY ACC QTY [22 ea] | 9,880 |  | 2AMKPLGF20 | DUKHCON2AMKPLGF4315 | DUKHCONP2AMKPLGF4315 | DH | CON | 2A | MK | MEP | PL | GF | B06 | B06-D07 | RSE-2A |
| DUKHCONP2AMKPLGF4320 |  | Installation of Water Heater | 5d | 2014-01-19 | 2014-01-23 | DUKHCONP2AMKARGF3060, DUKHCONP2AMKPLGF4315 | -37d | 0d | LABOR- SUBCONTRACTOR [9 h]; MECHANICALS SK [16.2 h]; WATER HEATER QTY [3 ea] | 1,084 |  | 2AMKPLGF25 | DUKHCON2AMKPLGF4320 | DUKHCONP2AMKPLGF4320 | DH | CON | 2A | MK | MEP | PL | GF | B06 | B06-D07 | RSE-2A |
|  | 20 | **ROOF** |  | 2014-01-25 | 2014-01-29 |  |  |  |  |  |  |  |  |  |  |  |  |  |  |  |  |  |  |  |
| DUKHCONP2AMKPLRF4350 |  | Installation of Rain water Pipes | 5d | 2014-01-25 | 2014-01-29 | DUKHCONP2AMKARRF3645, DUKHCONP2AMKPLGF4315, DUKHCONP2AMKPLGF4320, DUKHCONP2AMKPLGF4305, DUKHCONP2AMKPLGF4310 | -37d | 0d | LABOR- SUBCONTRACTOR [9.75 h]; MECHANICALS SK [33.75 h]; RAINWATER PIPES QTY [16 lm] | 9,249 |  | 2AMKPLRF15 | DUKHCON2AMKPLRF4350 | DUKHCONP2AMKPLRF4350 | DH | CON | 2A | MK | MEP | PL | RF | B06 | B06-D07 | RSE-2A |

Notes:
- DUKHCONP2AMKAREL3665: Expenses: P2A-Finishes 5136
- DUKHCONP2AMKAREL3680: Expenses: P2A-Painting and Decorating 5046
- DUKHCONP2AMKELGF4000: Expenses: P2A-Electrical Installations 3969
- DUKHCONP2AMKELGF4005: Expenses: P2A-Electrical Installations 1650
- DUKHCONP2AMKELGF4010: Expenses: P2A-Electrical Installations 11907
- DUKHCONP2AMKELGF4020: Expenses: P2A-Electrical Installations 9652
- DUKHCONP2AMKELGF4015: Expenses: P2A-Electrical Installations 10654
- DUKHCONP2AMKELGF4025: Expenses: P2A-Electrical Installations 16548
- DUKHCONP2AMKELGF4030: Expenses: P2A-Electrical Installations 7201
- DUKHCONP2AMKELRF4070: Expenses: P2A-Electrical Installations 3730
- DUKHCONP2AMKELRF4075: Expenses: P2A-Electrical Installations 3953
- DUKHCONP2AMKPLGF4305: Expenses: P2A-Plumbing and Drainage works 10812
- DUKHCONP2AMKPLGF4310: Expenses: P2A-Plumbing and Drainage works 422
- DUKHCONP2AMKPLGF4315: Expenses: P2A-Plumbing and Drainage works 9880
- DUKHCONP2AMKPLGF4320: Expenses: P2A-Plumbing and Drainage works 1084
- DUKHCONP2AMKPLRF4350: Expenses: P2A-Plumbing and Drainage works 9249

| ID | WBS | Activity | Duration | Start | Finish | Predecessors | Total float | Free float | Resources | Cost | P3 ACTID | P6 ID (old) | NP61D | PROJECT | PHASES | PACKAGE | PART | ELEMENTS | STEP | FLOORS | BILL NOS | BILL DIVISION | RES PACK |
| --- | --- | --- | --- | --- | --- | --- | --- | --- | --- | --- | --- | --- | --- | --- | --- | --- | --- | --- | --- | --- | --- | --- | --- |
|  | 20 | **AC WORKS** |  | 2013-11-26 | 2014-01-26 |  |  |  |  |  |  |  |  |  |  |  |  |  |  |  |  |  |  |
|  | 10 | **GROUND FLOOR** |  | 2013-11-26 | 2014-01-16 |  |  |  |  |  |  |  |  |  |  |  |  |  |  |  |  |  |  |
| DUKHCONP2AMKACGF4600 |  | Installation AC Pipes | 5d | 2013-11-26 | 2013-12-01 | DUKHCONP2AMKARGF3005, DUKHPROGEN00PRDV3160 | -22d | 0d | LABOR- SUBCONTRACTOR [20.25 h]; AC TECHNICIAN SK [72.8 h]; AC PIPES QTY [197 lm] | 1,078 | 2AMKACGF10 | DUKHCON2AMKACGF4600 | DUKHCONP2AMKACGF4600 | DH | CON | 2A | MK | MEP | AC | GF | B06 | B06-D08 | RSE-2A |
| DUKHCONP2AMKACGF4605 |  | Fixing of Ventilation Equipments | 5d | 2014-01-02 | 2014-01-07 | DUKHCONP2AMKACGF4600, DUKHPROGEN00PRDV3530, DUKHCONP2AMKARGF3060, DUKHPROGEN00PRDV3340 | 30d | 0d | LABOR- SUBCONTRACTOR [3 h]; AC TECHNICIAN SK [11.2 h]; VENTILIATION EQP QTY [4 ea] | 2,458 | 2AMKACGF15 | DUKHCON2AMKACGF4605 | DUKHCONP2AMKACGF4605 | DH | CON | 2A | MK | MEP | AC | GF | B06 | B06-D08 | RSE-2A |
| DUKHCONP2AMKACGF4610 |  | Fixing of Split AC | 8d | 2014-01-08 | 2014-01-16 | DUKHCONP2AMKACGF4605, DUKHPROGEN00PRDV3240 | 36d | 0d | LABOR- SUBCONTRACTOR [9 h]; AC TECHNICIAN SK [16.8 h]; SPILIT UNIT QTY [3 ea] | 3,145 | 2AMKACGF20 | DUKHCON2AMKACGF4610 | DUKHCONP2AMKACGF4610 | DH | CON | 2A | MK | MEP | AC | GF | B06 | B06-D08 | RSE-2A |
|  | 20 | **ROOF** |  | 2013-12-02 | 2014-01-26 |  |  |  |  |  |  |  |  |  |  |  |  |  |  |  |  |  |  |
| DUKHCONP2AMKACRF4630 |  | Installation of Refrigerant Pipes | 5d | 2013-12-02 | 2013-12-07 | DUKHCONP2AMKARRF3645, DUKHCONP2AMKACGF4600 | 25d | 22d | LABOR- SUBCONTRACTOR [0.75 h]; AC TECHNICIAN SK [1.4 h]; AC PIPES QTY [7 lm] | 558 | 2AMKACRF10 | DUKHCON2AMKACRF4630 | DUKHCONP2AMKACRF4630 | DH | CON | 2A | MK | MEP | AC | RF | B06 | B06-D08 | RSE-2A |
| DUKHCONP2AMKACRF4635 |  | Installation of Condensing Unit | 8d | 2014-01-18 | 2014-01-26 | DUKHCONP2AMKACGF4610, DUKHCONP2AMKARRF3645, DUKHCONP2AMKACRF4630 | 36d | 1d | LABOR- SUBCONTRACTOR [5.25 h]; AC TECHNICIAN SK [16.8 h]; AC UNITS QTY [3 ea] | 4,106 | 2AMKACRF15 | DUKHCON2AMKACRF4635 | DUKHCONP2AMKACRF4635 | DH | CON | 2A | MK | MEP | AC | RF | B06 | B06-D08 | RSE-2A |
|  | 25 | **EXTERNAL WORKS** |  | 2013-11-18 | 2014-02-10 |  |  |  |  |  |  |  |  |  |  |  |  |  |  |  |  |  |  |
|  | 10 | **MISCELLANEOUS** |  | 2013-11-18 | 2013-12-19 |  |  |  |  |  |  |  |  |  |  |  |  |  |  |  |  |  |  |
| DUKHCONP2AMKMSEX5000 |  | Construction of Manholes | 7d | 2013-11-18 | 2013-11-25 | DUKHCONP2AMKPLGF4310 | -48d | 0d | MANHOLES SK [16 h]; LABOR- SUBCONTRACTOR [6 h]; MANHOLES QTY [2 ea] | 2,340 | 2AMKMSEX25 | DUKHCON2AMKMS005000 | DUKHCONP2AMKMSEX5000 | DH | CON | 2A | MK | EX | MS |  | B06 | B06-D12 | RSE-2A |
| DUKHCONP2AMKMSEX5005 |  | Construction of Soak pit, Chambers | 7d | 2013-11-26 | 2013-12-03 | DUKHCONP2AMKMSEX5000 | -48d | 0d | MANHOLES SK [8 h]; LABOR- SUBCONTRACTOR [3 h]; SOAKPIT QTY [1 ea] | 3,751 | 2AMKMSEX30 | DUKHCON2AMKMS005005 | DUKHCONP2AMKMSEX5005 | DH | CON | 2A | MK | EX | MS |  | B06 | B06-D12 | RSE-2A |
| DUKHCONP2AMKMSEX5015 |  | Construction of grease Trap | 7d | 2013-12-04 | 2013-12-11 | DUKHCONP2AMKMSEX5005 | -48d | 0d | LABOR- SUBCONTRACTOR [8.25 h]; GREASE TRAP QTY [10 lm]; HANDRAIL ERECTOR SKILLED [20 h] | 2,837 | 2AMKMSEX20 | DUKHCON2AMKMS005015 | DUKHCONP2AMKMSEX5015 | DH | CON | 2A | MK | EX | MS |  | B06 | B06-D07 | RSE-2A |
| DUKHCONP2AMKMSEX5020 |  | Construction Entrance Ramp | 7d | 2013-12-05 | 2013-12-12 | DUKHCONP2AMKAREL3665 | -33d | 0d | SCREED MASON SK [23 h]; CONCRETE MASON SK [5 h]; INTERLOCK MASON SK [23 h]; LABOR- SUBCONTRACTOR [12.75 h]; LABOR- SUBCONTRACTOR [9 h]; SCREED QTY [28 Sqm]; CONCRETE QTY [3 Cum]; INTERLOCK QTY [28 Sqm] | 7,168 | 2AMKMSEX10 | DUKHCON2AMKMS005020 | DUKHCONP2AMKMSEX5020 | DH | CON | 2A | MK | EX | MS |  | B06 | B06-D12 | RSE-2A |
| DUKHCONP2AMKMSEX5025 |  | SS.Handrails and Balustrades | 5d | 2013-12-14 | 2013-12-19 | DUKHCONP2AMKMSEX5020, DUKHCONP2AMKAREL3680 | -25d | 0d | LABOR- SUBCONTRACTOR [8.25 h]; S.S.BALUSTRADE QTY [7 lm]; HANDRAIL ERECTOR SKILLED [15 h] | 7,125 | 2AMKMSEX15 | DUKHCON2AMKMS005025 | DUKHCONP2AMKMSEX5025 | DH | CON | 2A | MK | EX | MS |  | B06 | B06-D12 | RSE-2A |
|  | 15 | **WATER TANK ENCLOSURE** |  | 2013-12-04 | 2014-02-10 |  |  |  |  |  |  |  |  |  |  |  |  |  |  |  |  |  |  |
| DUKHCONP2AMKWEEX5030 |  | Excavation | 4d | 2013-12-04 | 2013-12-08 | DUKHCONP2AMKMSEX5005, DUKHCONP2AMKMSEX5015 SS, DUKHCONP2AMKMSEX5000 | -48d | 0d | LABOR- SUBCONTRACTOR [6 h]; EXCAVATION QTY [10 Cum]; LOADER [18 h]; POCLAIN [36 h]; TRUCK [18 h]; EQUIP OPERATORS [72 h] | 112 | 2AMKWEEX10 | DUKHCON2AMKWE005030 | DUKHCONP2AMKWEEX5030 | DH | CON | 2A | MK | EX | WE |  | B06 | B06-D12 | RSE-2A |
| DUKHCONP2AMKWEEX5035 |  | Construction of Raft | 7d | 2013-12-09 | 2013-12-16 | DUKHCONP2AMKWEEX5030 | -38d | 0d | CONCRETE MASON SK [20 h]; LABOR- SUBCONTRACTOR [15 h]; CONCRETE QTY [10 Cum] | 1,710 | 2AMKWEEX15 | DUKHCON2AMKWE005035 | DUKHCONP2AMKWEEX5035 | DH | CON | 2A | MK | EX | WE |  | B06 | B06-D12 | RSE-2A |
| DUKHCONP2AMKWEEX5040 |  | Block works & Plastering | 7d | 2013-12-17 | 2013-12-25 | DUKHCONP2AMKWEEX5035 | -37d | 0d | BLOCK MASON SK [28 h]; PLASTER MASON SK [45 h]; LABOR- SUBCONTRACTOR [42 h]; BLOCK QTY [14 Sqm]; PLASTER QTY [28 Sqm] | 1,917 | 2AMKWEEX20 | DUKHCON2AMKWE005040 | DUKHCONP2AMKWEEX5040 | DH | CON | 2A | MK | EX | WE |  | B06 | B06-D12 | RSE-2A |
| DUKHCONP2AMKWEEX5045 |  | Flooring & Painting | 7d | 2013-12-26 | 2014-01-02 | DUKHCONP2AMKWEEX5040 | -34d | 0d | SCREED MASON SK [9 h]; LABOR- SUBCONTRACTOR [3.75 h]; LABOR- SUBCONTRACTOR [12 h]; SCREED QTY [11 Sqm]; PAINT QTY [39 Sqm]; PAINTERS SK [31 h] | 1,593 | 2AMKWEEX25 | DUKHCON2AMKWE005045 | DUKHCONP2AMKWEEX5045 | DH | CON | 2A | MK | EX | WE |  | B06 | B06-D12 | RSE-2A |
| DUKHCONP2AMKWEEX5050 |  | Installation of Steel Gate | 5d | 2014-01-04 | 2014-01-08 | DUKHPROGEN00PRDV3500, DUKHPROGEN00PRDV3510, DUKHPROGEN00PRDV3610, DUKHCONP2AMKWEEX5045 | -29d | 0d | GATE QTY [1 ea]; LADDER ERECTOR SK [8 h]; GATE ERECTOR SK [8 h]; LABOR- SUBCONTRACTOR [9 h]; LADDER QTY [1 ea] | 5,406 | 2AMKWEEX30 | DUKHCON2AMKWE005050 | DUKHCONP2AMKWEEX5050 | DH | CON | 2A | MK | EX | WE |  | B06 | B06-D12 | RSE-2A |
| DUKHCONP2AMKWEEX5060 |  | Structural steel & SS Shed cover installation | 10d | 2014-01-09 | 2014-01-20 | DUKHPROGEN00PRDV3620, DUKHCONP2AMKWEEX5050, DUKHCONP2AMKMSEX5025, DUKHPROGEN00PRDV3630 | -29d | 8d | LABOR- SUBCONTRACTOR [36.75 h]; STRUCTURAL STEEL QTY [73 kg]; SS SHED COVER QTY [10 Sqm]; STEEL ERECTOR SK [52 h] | 5,550 | 2AMKWEEX35 | DUKHCON2AMKWE005060 | DUKHCONP2AMKWEEX5060 | DH | CON | 2A | MK | EX | WE |  | B06 | B06-D12 | RSE-2A |
| DUKHCONP2AMKWEEX5065 |  | Install. of Water Tank,Chiller,Pump & Meter | 10d | 2014-01-30 | 2014-02-10 | DUKHPROGEN00PRDV3220, DUKHPROGEN00PRDV3330, DUKHPROGEN00PRDV3520, DUKHPROGEN00PRDV3640, DUKHCONP2AMKWEEX5060, DUKHCONP2AMKMSEX5015, DUKHPROGEN00PRDV3680, DUKHCONP2AMKPLRF4350 | -37d | 1d | LABOR- SUBCONTRACTOR [15 h]; AC TECHNICIAN SK [11.2 h]; MECHANICALS SK [21.6 h]; WATER TANK QTY [1 ea]; CHILLER QTY [10 ea]; PUMP QTY [1 ea] | 75,073 | 2AMKWEEX40 | DUKHCON2AMKWE005065 | DUKHCONP2AMKWEEX5065 | DH | CON | 2A | MK | EX | WE |  | B06 | B06-D07 | RSE-2A |
|  | 20 | **HARD LANDSCAPING** |  | 2013-12-21 | 2014-01-06 |  |  |  |  |  |  |  |  |  |  |  |  |  |  |  |  |  |  |
| DUKHCONP2AMKHDEX5090 |  | kerb works | 5d | 2013-12-21 | 2013-12-25 | DUKHCONP2AMKMSEX5020, DUKHPROGEN00PRDV3600, DUKHCONP2AMKMSEX5025 | -23d | 0d | KERBSTONE MASON SK [25 h]; LABOR- SUBCONTRACTOR [14.25 h]; KERBSTONE QTY [31 lm] | 2,860 | 2AMKHDEX10 | DUKHCON2AMKHD005090 | DUKHCONP2AMKHDEX5090 | DH | CON | 2A | MK | EX | HD |  | B06 | B06-D12 | RSE-2A |
| DUKHCONP2AMKHDEX5095 |  | Cobble Stone Works | 5d | 2013-12-26 | 2013-12-31 | DUKHCONP2AMKHDEX5090 | -18d | 0d | TILE MASON SK [9 h]; LABOR- SUBCONTRACTOR [5.25 h]; COBBLE STONE QTY [6 Sqm] | 834 | 2AMKHDEX15 | DUKHCON2AMKHD005095 | DUKHCONP2AMKHDEX5095 | DH | CON | 2A | MK | EX | HD |  | B06 | B06-D12 | RSE-2A |
| DUKHCONP2AMKHDEX5100 |  | Interlock works | 5d | 2014-01-01 | 2014-01-06 | DUKHPROGEN00PRDV3660, DUKHCONP2AMKHDEX5095 | -10d | 0d | INTERLOCK MASON SK [36 h]; LABOR- SUBCONTRACTOR [14.25 h]; INTERLOCK QTY [45 Sqm] | 3,848 | 2AMKHDEX20 | DUKHCON2AMKHD005100 | DUKHCONP2AMKHDEX5100 | DH | CON | 2A | MK | EX | HD |  | B06 | B06-D12 | RSE-2A |

Notes:
- DUKHCONP2AMKACGF4600: Expenses: P2A-Air-conditioning and Ventilation works 1078
- DUKHCONP2AMKACGF4605: Expenses: P2A-Air-conditioning and Ventilation works 2458
- DUKHCONP2AMKACGF4610: Expenses: P2A-Air-conditioning and Ventilation works 3145
- DUKHCONP2AMKACRF4630: Expenses: P2A-Air-conditioning and Ventilation works 558
- DUKHCONP2AMKACRF4635: Expenses: P2A-Air-conditioning and Ventilation works 4106
- DUKHCONP2AMKMSEX5000: Expenses: P2A-External works within the Plot Curtilage 2340
- DUKHCONP2AMKMSEX5005: Expenses: P2A-External works within the Plot Curtilage 3751
- DUKHCONP2AMKMSEX5015: Expenses: P2A-Plumbing and Drainage works 2837
- DUKHCONP2AMKMSEX5020: Expenses: P2A-External works within the Plot Curtilage 7168
- DUKHCONP2AMKMSEX5025: Expenses: P2A-External works within the Plot Curtilage 7125
- DUKHCONP2AMKWEEX5030: Expenses: P2A-External works within the Plot Curtilage 112
- DUKHCONP2AMKWEEX5035: Expenses: P2A-External works within the Plot Curtilage 1710
- DUKHCONP2AMKWEEX5040: Expenses: P2A-External works within the Plot Curtilage 1917
- DUKHCONP2AMKWEEX5045: Expenses: P2A-External works within the Plot Curtilage 1593
- DUKHCONP2AMKWEEX5050: Expenses: P2A-External works within the Plot Curtilage 5406
- DUKHCONP2AMKWEEX5060: Expenses: P2A-External works within the Plot Curtilage 5550
- DUKHCONP2AMKWEEX5065: Expenses: P2A-Plumbing and Drainage works 75073
- DUKHCONP2AMKHDEX5090: Expenses: P2A-External works within the Plot Curtilage 2860
- DUKHCONP2AMKHDEX5095: Expenses: P2A-External works within the Plot Curtilage 834
- DUKHCONP2AMKHDEX5100: Expenses: P2A-External works within the Plot Curtilage 3848

| ID | WBS | Activity | Duration | Start | Finish | Predecessors | Complete | Remaining | Planned start | Planned finish | Total float | Free float | Expected finish | Resources | Cost | P3 ACTID | P6 ID (old) | NP61D | PROJECT | PHASES | PACKAGE | PART | ELEMENTS | STEP | BILL NOS | BILL DIVISION | RES PACK | CODE | FLOORS | rem |
| --- | --- | --- | --- | --- | --- | --- | --- | --- | --- | --- | --- | --- | --- | --- | --- | --- | --- | --- | --- | --- | --- | --- | --- | --- | --- | --- | --- | --- | --- | --- |
|  | 25 | **SOFT LANDSCAPING** |  | 2014-01-07 | 2014-01-22 |  |  |  |  |  |  |  |  |  |  |  |  |  |  |  |  |  |  |  |  |  |  |  |  |  |
| DUKHCONP2AMKSLEX5105 |  | Laying of Grass/ green area | 7d | 2014-01-07 | 2014-01-14 | DUKHPROGEN00PRDV3670, DUKHPROGEN00PRDV3790, DUKHCONP2AMKHDEX5100 |  |  |  |  | -7d | 0d |  | LABOR- SUBCONTRACTOR [153 h]; SWEET SOIL QTY [49 Cum]; GRASS QTY [49 Sqm]; LANDSCAPING SK [204 h] | 6,027 | 2AMKSLEX10 | DUKHCON2AMKSL005105 | DUKHCONP2AMKSLEX5105 | DH | CON | 2A | MK | EX | SL | B06 | B06-D12 | RSE-2A |  |  |  |
| DUKHCONP2AMKSLEX5110 |  | Laying of Palm tree | 7d | 2014-01-15 | 2014-01-22 | DUKHCONP2AMKSLEX5105 |  |  |  |  | 36d | 24d |  | LABOR- SUBCONTRACTOR [39 h]; SWEET SOIL QTY [100 Cum]; PLAM TREES QTY [9 ea]; LANDSCAPING SK [52 h] | 14,014 | 2AMKSLEX15 | DUKHCON2AMKSL005110 | DUKHCONP2AMKSLEX5110 | DH | CON | 2A | MK | EX | SL | B06 | B06-D12 | RSE-2A |  |  |  |
|  | 10 | **ZONE - 1 (3 Twin Villas)** |  | 2013-02-19 | 2014-06-24 |  |  |  |  |  |  |  |  |  |  |  |  |  |  |  |  |  |  |  |  |  |  |  |  |  |
|  | 10 | **STRUCTURAL WORKS** |  | 2013-02-19 | 2013-11-18 |  |  |  |  |  |  |  |  |  |  |  |  |  |  |  |  |  |  |  |  |  |  |  |  |  |
|  | 10 | **SUB STRUCTURE** |  | 2013-02-19 | 2013-09-15 |  |  |  |  |  |  |  |  |  |  |  |  |  |  |  |  |  |  |  |  |  |  |  |  |  |
|  | 10 | **UPTO GRADE SLAB** |  | 2013-02-19 | 2013-09-15 |  |  |  |  |  |  |  |  |  |  |  |  |  |  |  |  |  |  |  |  |  |  |  |  |  |
| DUKHCONP2AZ1STUG1000 |  | Footing Excavation | 25d | 2013-02-19 A | 2013-03-30 A | DUKHMOBP020000004050, DUKHCONP2AGNSP005000 SS+6d, DUKHCONP2AGNSP002500 SS+14d | 100% |  | 2013-02-19 | 2013-03-19 |  |  |  | LABOR - CIVIL [252 h]; EXCAVATION QTY [420 Cum]; LOADER [56 h]; POCLAIN [112 h]; TRUCK [56 h]; EQUIP OPERATORS [224 h] | 39,690 | 2AP1SBUG10 | DUKHCON2AP1STUG1000 | DUKHCONP2AZ1STUG1000 | DH | CON | 2A | Z1 | ST | SB | B06 | B06-D01 | RSE-2A | 10 | UG |  |
| DUKHCONP2AZ1STUG1005 |  | Footing Antitermite | 20d | 2013-03-30 A | 2013-04-21 A | DUKHCONP2AZ1STUG1000 FF+5d, DUKHCONP2AZ1STUG1000 SS+5d | 100% |  |  |  |  |  |  | LABOR- SUBCONTRACTOR [246 h]; ANTITERMITE QTY [1638 sqft]; ANTITERMITE SK [656 h] | 4,913 | 2AP1SBUG15 | DUKHCON2AP1STUG1005 | DUKHCONP2AZ1STUG1005 | DH | CON | 2A | Z1 | ST | SB | B06 | B06-D01 | RSE-2A | 15 | UG | REM |
| DUKHCONP2AZ1STUG1010 |  | Footing Blinding | 20d | 2013-04-01 A | 2013-04-23 A | DUKHCONP2AZ1STUG1005 FF+2d, DUKHCONP2AZ1STUG1005 SS+2d | 100% |  |  |  |  |  |  | BLINDING QTY [21 Sqm]; BLINDING MASON SK [17 h]; LABOR- SUBCONTRACTOR [12.75 h] | 529 | 2AP1SBUG18 | DUKHCON2AP1STUG1010 | DUKHCONP2AZ1STUG1010 | DH | CON | 2A | Z1 | ST | SB | B06 | B06-D02 | RSE-2A | 15 | UG | REM |
| DUKHCONP2AZ1STUG1015 |  | Footing Waterproofing & Screed | 20d | 2013-04-04 A | 2013-04-27 A | DUKHENGP2ADWSTAP4800, DUKHCONP2AZ1STUG1010 FF+3d, DUKHPROGEN00PRDV3020, DUKHCONP2AZ1STUG1010 SS+3d | 100% |  |  |  |  |  |  | SCREED MASON SK [141 h]; LABOR- SUBCONTRACTOR [53.25 h]; LABOR- SUBCONTRACTOR [132.75 h]; SCREED QTY [176 Sqm]; WATERPROOFING QTY [442 Sqm]; WATERPROOFING SPECIALIST SK [354 h] | 17,698 | 2AP1SBUG20 | DUKHCON2AP1STUG1015 | DUKHCONP2AZ1STUG1015 | DH | CON | 2A | Z1 | ST | SB | B06 | B06-D02 | RSE-2A | 20 | UG | REM |
| DUKHCONP2AZ1STUG1020 |  | Construction of foundations | 20d | 2013-04-16 A | 2013-06-27 | DUKHMOBP020000004080, DUKHCONP2AZ1STUG1015 SS+10d, DUKHMOBP020000004060 FF, DUKHMOBP020000004090, DUKHCONP2AZ1STUG1015 FF+10d, DUKHMOBP020000004070 |  | 54d | 2013-04-16 | 2013-05-08 | -63d | 0d | 2013-06-27 | LABOR- SUBCONTRACTOR [572.25 h]; REINFORCEMENT BARS QTY [3430 kg]; FORMWORK QTY [220 Sqm]; CONCRETE QTY [24 Cum]; CONCRETE MASON SK [48 h]; STEEL FIXERS SK [275 h]; CARPENTERS SK [440 h] | 27,754 | 2AP1SBUG25 | DUKHCON2AP1STUG1020 | DUKHCONP2AZ1STUG1020 | DH | CON | 2A | Z1 | ST | SB | B06 | B06-D02 | RSE-2A | 25 | UG | REM |
| DUKHCONP2AZ1STUG1025 |  | Construction of neck of columns | 20d | 2013-04-25 A | 2013-07-07 | DUKHCONP2AZ1STUG1020 FF+8d, DUKHCONP2AZ1STUG1020 SS+8d |  | 20d | 2013-04-25 | 2013-05-18 | -63d | 0d | 2013-06-27 | STEEL FIXERS SK [690 h]; CARPENTERS SK [200 h]; CONCRETE MASON SK [100 h]; LABOR- SUBCONTRACTOR [400 h]; REINFORCEMENT BARS QTY [5719 kg]; FORMWORK QTY [156 Sqm]; CONCRETE QTY [12 Cum] | 33,259 | 2AP1SBUG30 | DUKHCON2AP1STUG1025 | DUKHCONP2AZ1STUG1025 | DH | CON | 2A | Z1 | ST | SB | B06 | B06-D02 | RSE-2A | 30 | UG | REM |
| DUKHCONP2AZ1STUG1030 |  | Waterproofing Footing & Neck Column | 20d | 2013-06-24 | 2013-07-16 | DUKHCONP2AZ1STUG1025 FF+8d, DUKHCONP2AZ1STUG1025 SS+8d |  |  |  |  | -63d | 0d |  | LABOR- SUBCONTRACTOR [34.5 h]; WATERPROOFING QTY [113 Sqm]; WATERPROOFING SPECIALIST SK [91 h] | 4,720 | 2AP1SBUG35 | DUKHCON2AP1STUG1030 | DUKHCONP2AZ1STUG1030 | DH | CON | 2A | Z1 | ST | SB | B06 | B06-D02 | RSE-2A | 35 | UG | REM |
| DUKHCONP2AZ1STUG1035 |  | Backfilling Upto Grade Beam Bottom | 20d | 2013-07-06 | 2013-07-28 | DUKHCONP2AZ1STUG1030 FF+10d, DUKHCONP2AZ1STUG1030 SS+10d |  |  |  |  | -63d | 0d |  | EQUIP OPERATORS [660 h]; LABOR- SUBCONTRACTOR [162 h]; BACKFILLING QTY [672 Cum]; BOBCAT [300 h]; PLATE COMPACTOR [300 h]; TRUCK [60 h] | 19,354 | 2AP1SBUG40 | DUKHCON2AP1STUG1035 | DUKHCONP2AZ1STUG1035 | DH | CON | 2A | Z1 | ST | SB | B06 | B06-D01 | RSE-2A | 40 | UG |  |
| DUKHCONP2AZ1STUG1040 |  | Construction of Grade Beams | 25d | 2013-07-17 | 2013-08-18 | DUKHENGP2ADWSTAP4810, DUKHCONP2AZ1STUG1035 SS+10d, DUKHCONP2AZ1STUG1035 FF+10d |  |  |  |  | -63d | 0d |  | BLINDING MASON SK [74 h]; STEEL FIXERS SK [183 h]; CARPENTERS SK [1024 h]; CONCRETE MASON SK [156 h]; LABOR- SUBCONTRACTOR [1077.75 h]; BLINDING QTY [92 Sqm]; REINFORCEMENT BARS QTY [2287 kg]; FORMWORK QTY [512 Sqm]; CONCRETE QTY [78 Cum] | 99,220 | 2AP1SBUG45 | DUKHCON2AP1STUG1040 | DUKHCONP2AZ1STUG1040 | DH | CON | 2A | Z1 | ST | SB | B06 | B06-D02 | RSE-2A | 45 | UG | REM |
| DUKHCONP2AZ1STUG1045 |  | Construction of slab on grade | 25d | 2013-08-18 | 2013-09-15 | DUKHCONP2AZ1PLUG4300 SS+8d, DUKHCONP2AZ1PLUG4300 FF+8d, DUKHCONP2AZ1STUG1040 SS+10d, DUKHENGP2ADWSTAP4810, DUKHCONP2AZ1STUG1040 FF+10d |  |  |  |  | -63d | 0d |  | BLINDING MASON SK [508 h]; STEEL FIXERS SK [205 h]; CONCRETE MASON SK [168 h]; LABOR- SUBCONTRACTOR [660.75 h]; BLINDING QTY [634 Sqm]; CONCRETE QTY [84 Cum]; WELDED WIRE MESH [768 Sqm] | 112,968 | 2AP1SBUG50 | DUKHCON2AP1STUG1045 | DUKHCONP2AZ1STUG1045 | DH | CON | 2A | Z1 | ST | SB | B06 | B06-D02 | RSE-2A | 50 | UG | REM |
|  | 15 | **SUPERSTRUCTURE** |  | 2013-09-04 | 2013-11-18 |  |  |  |  |  |  |  |  |  |  |  |  |  |  |  |  |  |  |  |  |  |  |  |  |  |
|  | 10 | **GROUND FLOOR** |  | 2013-09-04 | 2013-10-28 |  |  |  |  |  |  |  |  |  |  |  |  |  |  |  |  |  |  |  |  |  |  |  |  |  |
| DUKHCONP2AZ1STGF2000 |  | Column-Rebar & Formwork | 20d | 2013-09-04 | 2013-09-26 | DUKHCONP2AZ1STUG1045 FF+10d, DUKHENGP2ADWSTAP4820, DUKHCONP2AZ1STUG1045 SS+10d |  |  |  |  | -63d | 0d |  | STEEL FIXERS SK [151 h]; CARPENTERS SK [720 h]; LABOR- SUBCONTRACTOR [653.25 h]; REINFORCEMENT BARS QTY [1883 kg]; FORMWORK QTY [360 Sqm] | 26,498 | 2AP1SPGF10 | DUKHCON2AP1STGF2000 | DUKHCONP2AZ1STGF2000 | DH | CON | 2A | Z1 | ST | SP | B06 | B06-D02 | RSE-2A | 10 | GF | REM |
| DUKHCONP2AZ1STGF2005 |  | Column-Concrete | 15d | 2013-09-15 | 2013-10-01 | DUKHCONP2AZ1STGF2000 SS+7d, DUKHCONP2AZ1STGF2000 FF+4d |  |  |  |  | -63d | 0d |  | CONCRETE MASON SK [60 h]; LABOR- SUBCONTRACTOR [45 h]; CONCRETE QTY [30 Cum] | 8,613 | 2AP1SPGF15 | DUKHCON2AP1STGF2005 | DUKHCONP2AZ1STGF2005 | DH | CON | 2A | Z1 | ST | SP | B06 | B06-D02 | RSE-2A | 15 | GF | REM |
| DUKHCONP2AZ1STGF2010 |  | Beam, Stairs ,Slab-Rebar & Formwork | 25d | 2013-09-23 | 2013-10-23 | DUKHCONP2AZ1STGF2005 FF+7d, DUKHCONP2AZ1STGF2005 SS+7d, DUKHENGP2ADWSTAP4830 |  |  |  |  | -63d | 0d |  | STEEL FIXERS SK [1312 h]; CARPENTERS SK [2160 h]; LABOR- SUBCONTRACTOR [2604 h]; REINFORCEMENT BARS QTY [16392 kg]; FORMWORK QTY [1080 Sqm] | 156,724 | 2AP1SPGF20 | DUKHCON2AP1STGF2010 | DUKHCONP2AZ1STGF2010 | DH | CON | 2A | Z1 | ST | SP | B06 | B06-D02 | RSE-2A | 20 | GF | REM |
| DUKHCONP2AZ1STGF2015 |  | Beam, Stairs ,Slab-Concrete | 15d | 2013-10-09 | 2013-10-28 | DUKHCONP2AZ1STGF2010 FF+4d, DUKHCONP2AZ1STGF2010 SS+10d |  |  |  |  | -63d | 0d |  | CONCRETE MASON SK [744 h]; LABOR- SUBCONTRACTOR [558 h]; CONCRETE QTY [372 Cum] | 114,669 | 2AP1SPGF25 | DUKHCON2AP1STGF2015 | DUKHCONP2AZ1STGF2015 | DH | CON | 2A | Z1 | ST | SP | B06 | B06-D02 | RSE-2A | 25 | GF | REM |
|  | 20 | **ROOF** |  | 2013-10-20 | 2013-11-18 |  |  |  |  |  |  |  |  |  |  |  |  |  |  |  |  |  |  |  |  |  |  |  |  |  |
| DUKHCONP2AZ1STRF2060 |  | Construction of Parapets | 20d | 2013-10-20 | 2013-11-11 | DUKHCONP2AZ1STGF2015 SS+7d, DUKHCONP2AZ1STGF2015 FF+7d |  |  |  |  | -63d | 0d |  | STEEL FIXERS SK [46 h]; CARPENTERS SK [228 h]; CONCRETE MASON SK [24 h]; LABOR- SUBCONTRACTOR [223.5 h]; REINFORCEMENT BARS QTY [565 kg]; FORMWORK QTY [114 Sqm]; CONCRETE QTY [12 Cum] | 13,038 | 2AP1SPRF30 | DUKHCON2AP1STRF2060 | DUKHCONP2AZ1STRF2060 | DH | CON | 2A | Z1 | ST | SP | B06 | B06-D02 | RSE-2A | 30 | RF | REM |
| DUKHCONP2AZ1STRF2065 |  | Construction of up stands/Plinth | 20d | 2013-10-27 | 2013-11-18 | DUKHCONP2AZ1STRF2060 FF+6d, DUKHCONP2AZ1STRF2060 SS+6d |  |  |  |  | -33d | 0d |  | CARPENTERS SK [36 h]; CONCRETE MASON SK [12 h]; LABOR- SUBCONTRACTOR [36 h]; FORMWORK QTY [18 Sqm]; CONCRETE QTY [6 Cum] | 3,048 | 2AP1SPRF35 | DUKHCON2AP1STRF2065 | DUKHCONP2AZ1STRF2065 | DH | CON | 2A | Z1 | ST | SP | B06 | B06-D02 | RSE-2A | 35 | RF | REM |

Notes:
- DUKHCONP2AMKSLEX5105: Expenses: P2A-External works within the Plot Curtilage 6027
- DUKHCONP2AMKSLEX5110: Expenses: P2A-External works within the Plot Curtilage 14014
- DUKHCONP2AZ1STUG1000: Expenses: P2A-Excavation and Earth Works 39690
- DUKHCONP2AZ1STUG1005: Expenses: P2A-Excavation and Earth Works 4913
- DUKHCONP2AZ1STUG1010: Expenses: P2A-Concrete Works 529
- DUKHCONP2AZ1STUG1015: Expenses: P2A-Concrete Works 17698
- DUKHCONP2AZ1STUG1020: Expenses: P2A-Concrete Works 27754
- DUKHCONP2AZ1STUG1025: Expenses: P2A-Concrete Works 33259
- DUKHCONP2AZ1STUG1030: Expenses: P2A-Concrete Works 4720
- DUKHCONP2AZ1STUG1035: Expenses: P2A-Excavation and Earth Works 19354
- DUKHCONP2AZ1STUG1040: Expenses: P2A-Concrete Works 99220
- DUKHCONP2AZ1STUG1045: Expenses: P2A-Concrete Works 112968
- DUKHCONP2AZ1STGF2000: Expenses: P2A-Concrete Works 26498
- DUKHCONP2AZ1STGF2005: Expenses: P2A-Concrete Works 8613
- DUKHCONP2AZ1STGF2010: Expenses: P2A-Concrete Works 156724
- DUKHCONP2AZ1STGF2015: Expenses: P2A-Concrete Works 114669
- DUKHCONP2AZ1STRF2060: Expenses: P2A-Concrete Works 13038
- DUKHCONP2AZ1STRF2065: Expenses: P2A-Concrete Works 3048

| ID | WBS | Activity | Duration | Start | Finish | Predecessors | Total float | Free float | Resources | Cost | CODE | rem | P3 ACTID | P6 ID (old) | NP61D | PROJECT | PHASES | PACKAGE | PART | ELEMENTS | STEP | FLOORS | BILL NOS | BILL DIVISION | RES PACK | EXECUTER |
| --- | --- | --- | --- | --- | --- | --- | --- | --- | --- | --- | --- | --- | --- | --- | --- | --- | --- | --- | --- | --- | --- | --- | --- | --- | --- | --- |
|  | 15 | **FINISHING WORKS** |  | 2013-11-10 | 2014-05-20 |  |  |  |  |  |  |  |  |  |  |  |  |  |  |  |  |  |  |  |  |  |
|  | 10 | **INTERNAL FINISHES** |  | 2013-11-12 | 2014-05-20 |  |  |  |  |  |  |  |  |  |  |  |  |  |  |  |  |  |  |  |  |  |
|  | 10 | **GROUND FLOOR** |  | 2013-11-12 | 2014-05-20 |  |  |  |  |  |  |  |  |  |  |  |  |  |  |  |  |  |  |  |  |  |
| DUKHCONP2AZ1ARGF3000 |  | Block work | 25d | 2013-11-12 | 2013-12-10 | DUKHCONP2AMKARGF3000, DUKHCONP2AZ1STGF2015 SS+21d, DUKHCONP2AZ1STGF2015 FF+21d | -57d | 0d | BLOCK MASON SK [3040 h]; LABOR- SUBCONTRACTOR [1710 h]; BLOCK QTY [1520 Sqm] | 120,912 | 10 | REM | 2AP1IFGF10 | DUKHCON2AP1ARGF3000 | DUKHCONP2AZ1ARGF3000 | DH | CON | 2A | Z1 | FIN | IF | GF | B06 | B06-D03 | RSE-2A |  |
| DUKHCONP2AZ1ARGF3005 |  | Plastering work | 25d | 2013-12-03 | 2014-01-01 | DUKHCONP2AZ1PLGF4305 FF+5d, DUKHCONP2AZ1ARGF3000 SS+8d, DUKHCONP2AMKARGF3005, DUKHCONP2AZ1ELGF4000 FF+5d, DUKHCONP2AZ1ELGF4000 SS+5d, DUKHCONP2AZ1ARGF3000 FF+8d, DUKHCONP2AZ1PLGF4305 SS+5d | -57d | 0d | PLASTER MASON SK [1520 h]; LABOR- SUBCONTRACTOR [855 h]; PLASTER QTY [950 Sqm] | 12,350 | 12 | REM | 2AP1IFGF12 | DUKHCON2AP1ARGF3005 | DUKHCONP2AZ1ARGF3005 | DH | CON | 2A | Z1 | FIN | IF | GF | B06 | B06-D10 | RSE-2A |  |
| DUKHCONP2AZ1ARGF3010 |  | Flooring screed | 20d | 2013-12-15 | 2014-01-07 | DUKHCONP2AZ1ARGF3005 SS+5d, DUKHCONP2AMKARGF3010, DUKHCONP2AZ1ARGF3005 FF+5d | -38d | 0d | SCREED MASON SK [384 h]; LABOR- SUBCONTRACTOR [144 h]; FLOORING SCREED QTY [480 Sqm] | 15,840 | 15 | REM | 2AP1IFGF15 | DUKHCON2AP1ARGF3010 | DUKHCONP2AZ1ARGF3010 | DH | CON | 2A | Z1 | FIN | IF | GF | B06 | B06-D10 | RSE-2A |  |
| DUKHCONP2AZ1ARGF3015 |  | Wet area waterproofing & Protection Screed | 20d | 2013-12-17 | 2014-01-09 | DUKHCONP2AZ1ARGF3005 SS+7d, DUKHCONP2AMKARGF3015, DUKHCONP2AZ1ARGF3005 FF+7d | -56d | 0d | LABOR- SUBCONTRACTOR [19.5 h]; WETAREA WATERPROOFING QTY [65 Sqm]; WATERPROOFING SPECIALIST SK [52 h] | 2,210 | 18 | REM | 2AP1IFGF18 | DUKHCON2AP1ARGF3015 | DUKHCONP2AZ1ARGF3015 | DH | CON | 2A | Z1 | FIN | IF | GF | B06 | B06-D10 | RSE-2A |  |
| DUKHCONP2AZ1ARGF3030 |  | Paint First coat | 20d | 2013-12-22 | 2014-01-13 | DUKHCONP2AZ1ARGF3005 FF+10d, DUKHCONP2AZ1ARGF3005 SS+10d, DUKHCONP2AMKARGF3030 | -57d | 0d | LABOR- SUBCONTRACTOR [409.5 h]; FIRSTCOAT PAINT QTY [1365 Sqm]; PAINTERS SK [1092 h] | 4,599 | 21 | REM | 2AP1IFGF21 | DUKHCON2AP1ARGF3030 | DUKHCONP2AZ1ARGF3030 | DH | CON | 2A | Z1 | FIN | IF | GF | B06 | B06-D11 | RSE-2A | ENT |
| DUKHCONP2AZ1ARGF3020 |  | Ceramic Wall Tiling | 15d | 2014-01-06 | 2014-01-22 | DUKHCONP2AZ1PLGF4305 FF+11d, DUKHCONP2AZ1PLGF4310 SS+5d, DUKHCONP2AZ1ARGF3015 FF+11d, DUKHCONP2AZ1PLGF4310 FF+5d, DUKHCONP2AMKARGF3020, DUKHCONP2AZ1ARGF3015 SS+11d, DUKHCONP2AZ1PLGF4305 SS+11d | -56d | 0d | TILE MASON SK [540 h]; LABOR- SUBCONTRACTOR [303.75 h]; CERAMIC WALL TILE QTY [270 Sqm] | 29,280 | 24 | REM | 2AP1IFGF24 | DUKHCON2AP1ARGF3020 | DUKHCONP2AZ1ARGF3020 | DH | CON | 2A | Z1 | FIN | IF | GF | B06 | B06-D10 | RSE-2A |  |
| DUKHCONP2AZ1ARGF3025 |  | Porcelain Tile flooring | 20d | 2014-01-22 | 2014-02-15 | DUKHCONP2AZ1ARGF3010 FF+14d, DUKHCONP2AZ1ARGF3020 FF+14d, DUKHCONP2AZ1ARGF3020 SS+14d, DUKHCONP2AMKARGF3025, DUKHCONP2AZ1ARGF3010 SS+14d | -56d | 0d | TILE MASON SK [549 h]; LABOR- SUBCONTRACTOR [309 h]; PORCELAIN FLOORING QTY [480 Sqm] | 44,444 | 27 | REM | 2AP1IFGF27 | DUKHCON2AP1ARGF3025 | DUKHCONP2AZ1ARGF3025 | DH | CON | 2A | Z1 | FIN | IF | GF | B06 | B06-D10 | RSE-2A |  |
| DUKHCONP2AZ1ARGF3035 |  | Slate Tile Flooring & Skirting | 18d | 2014-02-09 | 2014-03-02 | DUKHCONP2AZ1ARGF3025 FF+13d, DUKHCONP2AZ1ARGF3025 SS+13d, DUKHCONP2AZ1ARGF3010 FF+13d, DUKHCONP2AZ1ARGF3010 SS+13d, DUKHCONP2AMKARGF3035 | -48d | 0d | TILE MASON SK [840 h]; LABOR- SUBCONTRACTOR [472.5 h]; SLATE TILE QTY [525 Sqm] | 89,775 | 33 | REM | 2AP1IFGF33 | DUKHCON2AP1ARGF3035 | DUKHCONP2AZ1ARGF3035 | DH | CON | 2A | Z1 | FIN | IF | GF | B06 | B06-D10 | RSE-2A |  |
| DUKHCONP2AZ1ARGF3045 |  | Fixing of Suspension systems | 15d | 2014-02-15 | 2014-03-03 | DUKHCONP2AZ1ARGF3030 FF+14d, DUKHCONP2AZ1ARGF3025 FF+14d, DUKHCONP2AZ1ELGF4010 SS+14d, DUKHCONP2AZ1ELGF4010 FF+14d, DUKHCONP2AZ1ARGF3030 SS+14d, DUKHCONP2AZ1ARGF3025 SS+14d, DUKHCONP2AMKARGF3045 | -56d | 0d | LABOR- SUBCONTRACTOR [195.75 h]; SUSPENSION QTY [435 Sqm]; FALSE CEILING SKILLED SK [348 h] | 8,525 | 39 | REM | 2AP1IFGF39 | DUKHCON2AP1ARGF3045 | DUKHCONP2AZ1ARGF3045 | DH | CON | 2A | Z1 | FIN | IF | GF | B06 | B06-D10 | RSE-2A | SUS |
| DUKHCONP2AZ1ARGF3040 |  | Cobble Tile flooring | 15d | 2014-03-01 | 2014-03-17 | DUKHCONP2AZ1ARGF3025 FF+13d, DUKHCONP2AZ1ARGF3035 SS+13d, DUKHCONP2AZ1ARGF3025 SS+13d, DUKHCONP2AZ1ARGF3010 FF+13d, DUKHCONP2AZ1ARGF3010 SS+13d, DUKHCONP2AZ1ARGF3035 FF+13d, DUKHCONP2AMKARGF3040 | -32d | 5d | TILE MASON SK [160 h]; LABOR- SUBCONTRACTOR [90 h]; COBBLE STONE QTY [100 Sqm] | 8,340 | 30 | REM | 2AP1IFGF30 | DUKHCON2AP1ARGF3040 | DUKHCONP2AZ1ARGF3040 | DH | CON | 2A | Z1 | FIN | IF | GF | B06 | B06-D10 | RSE-2A |  |
| DUKHCONP2AZ1ARGF3060 |  | Gypsum board false ceiling | 20d | 2014-03-03 | 2014-03-25 | DUKHCONP2AMKARGF3060, DUKHCONP2AZ1ARGF3045 SS+14d, DUKHCONP2AZ1ARGF3045 FF+14d, DUKHCONP2AZ1ACGF4600 SS+14d, DUKHCONP2AZ1ACGF4600 FF+14d | -56d | 0d | LABOR- SUBCONTRACTOR [195.75 h]; FALSE CEILING QTY [435 Sqm]; FALSE CEILING SKILLED SK [348 h] | 25,018 | 45 | REM | 2AP1IFGF45 | DUKHCON2AP1ARGF3060 | DUKHCONP2AZ1ARGF3060 | DH | CON | 2A | Z1 | FIN | IF | GF | B06 | B06-D10 | RSE-2A | GYP |
| DUKHCONP2AZ1ARGF3065 |  | Wooden door | 15d | 2014-03-15 | 2014-03-31 | DUKHCONP2AMKARGF3065, DUKHCONP2AZ1ARGF3035 FF+7d, DUKHCONP2AZ1ARGF3060 FF+5d, DUKHCONP2AZ1ARGF3060 SS+5d, DUKHCONP2AZ1ARGF3035 SS+7d | -56d | 0d | LABOR- SUBCONTRACTOR [45 h]; WOODEN DOOR QTY [30 ea]; DOOR ERECTOR SK [120 h] | 93,661 | 48 | REM | 2AP1IFGF48 | DUKHCON2AP1ARGF3065 | DUKHCONP2AZ1ARGF3065 | DH | CON | 2A | Z1 | FIN | IF | GF | B06 | B06-D05 | RSE-2A |  |
| DUKHCONP2AZ1ARGF3075 |  | Carpentry & Joinery Works | 18d | 2014-03-20 | 2014-04-09 | DUKHCONP2AZ1ARGF3065 FF+5d, DUKHCONP2AMKARGF3075, DUKHCONP2AZ1ARGF3065 SS+5d | -53d | 0d | LABOR- SUBCONTRACTOR [120 h]; CABINET QTY [30 ea]; WARDROBE QTY [10 ea]; JOINERY WORK SK [320 h] | 73,810 | 57 | REM | 2AP1IFGF57 | DUKHCON2AP1ARGF3075 | DUKHCONP2AZ1ARGF3075 | DH | CON | 2A | Z1 | FIN | IF | GF | B06 | B06-D05 | RSE-2A |  |
| DUKHCONP2AZ1ARGF3090 |  | Installation of Granite Counter Top | 15d | 2014-03-31 | 2014-04-16 | DUKHCONP2AZ1ARGF3075 SS+7d, DUKHCONP2AMKARGF3090, DUKHCONP2AZ1ARGF3075 FF+6d | -50d | 5d | GRANITE MASON SK [60 h]; LABOR- SUBCONTRACTOR [22.5 h]; GRANITE COUNTER TOP QTY [15 ea] | 17,796 | 60 | REM | 2AP1IFGF60 | DUKHCON2AP1ARGF3090 | DUKHCONP2AZ1ARGF3090 | DH | CON | 2A | Z1 | FIN | IF | GF | B06 | B06-D10 | RSE-2A |  |
| DUKHCONP2AZ1ARGF3080 |  | Aluminum windows | 18d | 2014-04-01 | 2014-04-21 | DUKHCONP2AMKARGF3080, DUKHCONP2AZ1ARGF3065 | -19d | 2d | LABOR- SUBCONTRACTOR [30 h]; ALUMINIUM WINDOWS QTY [30 ea]; WINDOW ERECTOR SK [80 h] | 22,834 | 54 | REM | 2AP1IFGF54 | DUKHCON2AP1ARGF3080 | DUKHCONP2AZ1ARGF3080 | DH | CON | 2A | Z1 | FIN | IF | GF | B06 | B06-D06 | RSE-2A |  |
| DUKHCONP2AZ1ARGF3095 |  | Final Painting | 25d | 2014-04-22 | 2014-05-20 | DUKHCONP2AZ1ARGF3040 FF+13d, DUKHCONP2AZ1ARGF3035 SS+13d, DUKHCONP2AZ1ARGF3065, DUKHCONP2AZ1ARGF3035 FF+13d, DUKHCONP2AZ1ARGF3080 SS+8d, DUKHCONP2AZ1ARGF3090 FF+5d, DUKHCONP2AZ1ARGF3030 FF+10d, DUKHCONP2AZ1ARGF3080 FF+8d, DUKHCONP2AZ1ACGF4610 SS+10d, DUKHCONP2AZ1ARGF3090 SS+5d, DUKHCONP2AZ1ARGF3030 SS+10d, DUKHCONP2AZ1ARGF3060 FF+8d, DUKHCONP2AZ1ARGF3040 SS+13d, DUKHCONP2AZ1ARGF3060 SS+8d, DUKHCONP2AMKARGF3095, DUKHCONP2AZ1ACGF4610 FF+10d | -29d | 0d | LABOR- SUBCONTRACTOR [409.5 h]; PAINT QTY [1365 Sqm]; PAINTERS SK [1092 h] | 19,278 | 66 | REM | 2AP1IFGF66 | DUKHCON2AP1ARGF3095 | DUKHCONP2AZ1ARGF3095 | DH | CON | 2A | Z1 | FIN | IF | GF | B06 | B06-D11 | RSE-2A | PNT |
|  | 15 | **EXTERNAL FINISHES** |  | 2013-11-10 | 2014-02-08 |  |  |  |  |  |  |  |  |  |  |  |  |  |  |  |  |  |  |  |  |  |
|  | 10 | **ROOF** |  | 2013-11-10 | 2014-01-11 |  |  |  |  |  |  |  |  |  |  |  |  |  |  |  |  |  |  |  |  |  |
| DUKHCONP2AZ1ARRF3625 |  | Laying of Pitched Roof | 25d | 2013-11-10 | 2013-12-08 | DUKHCONP2AZ1STRF2060 SS+10d, DUKHCONP2AZ1STRF2060 FF+10d, DUKHCONP2AZ1STRF2065 FF+10d, DUKHCONP2AMKARRF3625, DUKHCONP2AZ1STRF2065 SS+10d, DUKHPROGEN00PRDV3140 | -33d | 0d | INTERLOCK MASON SK [153 h]; LABOR- SUBCONTRACTOR [60 h]; ROOF TILES QTY [195 Sqm] | 100,035 | 10 |  | 2AP1EFRF05 | DUKHCON2AP1ARRF3625 | DUKHCONP2AZ1ARRF3625 | DH | CON | 2A | Z1 | FIN | EF | RF | B06 | B06-D04 | RSE-2A |  |
| DUKHCONP2AZ1ARRF3630 |  | Leveling Screed for Waterproofing | 18d | 2013-11-24 | 2013-12-14 | DUKHCONP2AZ1ARRF3625 FF+5d, DUKHCONP2AMKARRF3630, DUKHCONP2AZ1ARRF3625 SS+5d | -33d | 0d | SCREED MASON SK [104 h]; LABOR- SUBCONTRACTOR [58.5 h]; ROOF WP SCREED QTY [260 Sqm] | 13,445 | 15 | REM | 2AP1EFRF10 | DUKHCON2AP1ARRF3630 | DUKHCONP2AZ1ARRF3630 | DH | CON | 2A | Z1 | FIN | EF | RF | B06 | B06-D04 | RSE-2A |  |
| DUKHCONP2AZ1ARRF3635 |  | Laying of Waterproofing Membrane | 18d | 2013-11-30 | 2013-12-21 | DUKHCONP2AMKARRF3635, DUKHCONP2AZ1ARRF3630 SS+5d, DUKHPROGEN00PRDV3050, DUKHCONP2AZ1ARRF3630 FF+5d | -28d | 0d | LABOR- SUBCONTRACTOR [164.25 h]; ROOF WP MEMBRANE QTY [820 Sqm]; WATERPROOFING SPECIALIST SK [438 h] | 21,097 | 20 | REM | 2AP1EFRF15 | DUKHCON2AP1ARRF3635 | DUKHCONP2AZ1ARRF3635 | DH | CON | 2A | Z1 | FIN | EF | RF | B06 | B06-D04 | RSE-2A |  |
| DUKHCONP2AZ1ARRF3640 |  | Installation of Insulation & Protection | 18d | 2013-12-04 | 2013-12-25 | DUKHCONP2AZ1ARRF3635 FF+4d, DUKHCONP2AZ1ARRF3635 SS+4d, DUKHCONP2AMKARRF3640 | -28d | 0d | LABOR- SUBCONTRACTOR [78 h]; ROOF WP INSULATION QTY [520 Sqm]; WATERPROOFING SPECIALIST SK [208 h] | 12,720 | 25 | REM | 2AP1EFRF20 | DUKHCON2AP1ARRF3640 | DUKHCONP2AZ1ARRF3640 | DH | CON | 2A | Z1 | FIN | EF | RF | B06 | B06-D04 | RSE-2A |  |
| DUKHCONP2AZ1ARRF3645 |  | Lime Stone Chips & Paving slab Installation | 18d | 2013-12-12 | 2014-01-02 | DUKHCONP2AZ1ARRF3640 FF+7d, DUKHCONP2AZ1ARRF3640 SS+7d, DUKHCONP2AMKARRF3645 | -28d | 0d | TILE MASON SK [104 h]; LABOR- SUBCONTRACTOR [78 h]; LIME STONE QTY [260 Sqm]; PRECAST PAVING SLAB QTY [260 Sqm]; PRE CAST CONCRETE SK [104 h] | 24,700 | 35 | REM | 2AP1EFRF25 | DUKHCON2AP1ARRF3645 | DUKHCONP2AZ1ARRF3645 | DH | CON | 2A | Z1 | FIN | EF | RF | B06 | B06-D04 | RSE-2A |  |
| DUKHCONP2AZ1ARRF3660 |  | Installation of Access Ladder | 20d | 2013-12-19 | 2014-01-11 | DUKHCONP2AMKARRF3660, DUKHCONP2AZ1ARRF3645 FF+5d, DUKHCONP2AZ1ARRF3645 SS+5d | 16d | 10d | LABOR- SUBCONTRACTOR [30 h]; LADDER QTY [10 ea]; LADDER ERECTOR SK [80 h] | 11,970 | 40 | REM | 2AP1EFRF40 | DUKHCON2AP1ARRF3660 | DUKHCONP2AZ1ARRF3660 | DH | CON | 2A | Z1 | FIN | EF | RF | B06 | B06-D06 | RSE-2A |  |

Notes:
- DUKHCONP2AZ1ARGF3000: Expenses: P2A-Block work 120912
- DUKHCONP2AZ1ARGF3005: Expenses: P2A-Finishes 12350
- DUKHCONP2AZ1ARGF3010: Expenses: P2A-Finishes 15840
- DUKHCONP2AZ1ARGF3015: Expenses: P2A-Finishes 2210
- DUKHCONP2AZ1ARGF3030: Expenses: P2A-Painting and Decorating 4599
- DUKHCONP2AZ1ARGF3020: Expenses: P2A-Finishes 29280
- DUKHCONP2AZ1ARGF3025: Expenses: P2A-Finishes 44444
- DUKHCONP2AZ1ARGF3035: Expenses: P2A-Finishes 89775
- DUKHCONP2AZ1ARGF3045: Expenses: P2A-Finishes 8525
- DUKHCONP2AZ1ARGF3040: Expenses: P2A-Finishes 8340
- DUKHCONP2AZ1ARGF3060: Expenses: P2A-Finishes 25018
- DUKHCONP2AZ1ARGF3065: Expenses: P2A-Carpentry and Joinery 93661
- DUKHCONP2AZ1ARGF3075: Expenses: P2A-Carpentry and Joinery 73810
- DUKHCONP2AZ1ARGF3090: Expenses: P2A-Finishes 17796
- DUKHCONP2AZ1ARGF3080: Expenses: P2A-Metal work 22834
- DUKHCONP2AZ1ARGF3095: Expenses: P2A-Painting and Decorating 19278
- DUKHCONP2AZ1ARRF3625: Expenses: P2A-Roofing 100035
- DUKHCONP2AZ1ARRF3630: Expenses: P2A-Roofing 13445
- DUKHCONP2AZ1ARRF3635: Expenses: P2A-Roofing 21097
- DUKHCONP2AZ1ARRF3640: Expenses: P2A-Roofing 12720
- DUKHCONP2AZ1ARRF3645: Expenses: P2A-Roofing 24700
- DUKHCONP2AZ1ARRF3660: Expenses: P2A-Metal work 11970

| ID | WBS | Activity | Duration | Start | Finish | Predecessors | Total float | Free float | Resources | Cost | CODE | rem | P3 ACTID | P6 ID (old) | NP61D | PROJECT | PHASES | PACKAGE | PART | ELEMENTS | STEP | FLOORS | BILL NOS | BILL DIVISION | RES PACK |
| --- | --- | --- | --- | --- | --- | --- | --- | --- | --- | --- | --- | --- | --- | --- | --- | --- | --- | --- | --- | --- | --- | --- | --- | --- | --- |
|  | 15 | **ELEVATION** |  | 2013-12-25 | 2014-02-08 |  |  |  |  |  |  |  |  |  |  |  |  |  |  |  |  |  |  |  |  |
| DUKHCONP2AZ1AREL3665 |  | External Plastering | 25d | 2013-12-25 | 2014-01-22 | DUKHCONP2AZ1STRF2065 SS+7d, DUKHCONP2AZ1ARRF3645 SS+10d, DUKHCONP2AZ1ARRF3645 FF+10d, DUKHCONP2AZ1STRF2065 FF+7d, DUKHCONP2AMKAREL3665 | -28d | 0d | PLASTER MASON SK [2140 h]; LABOR- SUBCONTRACTOR [1203.75 h]; EXTERNAL PLASTER QTY [1070 Sqm] | 25,680 | 10 | REM | 2AP1EFEL10 | DUKHCON2AP1AREL3665 | DUKHCONP2AZ1AREL3665 | DH | CON | 2A | Z1 | FIN | EF | EL | B06 | B06-D10 | RSE-2A |
| DUKHCONP2AZ1AREL3680 |  | External Painting | 20d | 2014-01-16 | 2014-02-08 | DUKHCONP2AZ1AREL3665 SS+14d, DUKHCONP2AZ1ARRF3660 FF+10d, DUKHCONP2AMKAREL3680, DUKHCONP2AZ1AREL3665 FF+14d | 2d | 10d | LABOR- SUBCONTRACTOR [320.25 h]; PAINT QTY [1070 Sqm]; PAINTERS SK [853 h] | 25,228 | 20 |  | 2AP1EFEL20 | DUKHCON2AP1AREL3680 | DUKHCONP2AZ1AREL3680 | DH | CON | 2A | Z1 | FIN | EF | EL | B06 | B06-D11 | RSE-2A |
|  | 20 | **MEP WORKS** |  | 2013-08-05 | 2014-05-14 |  |  |  |  |  |  |  |  |  |  |  |  |  |  |  |  |  |  |  |  |
|  | 10 | **ELECTRICAL WORKS** |  | 2013-11-26 | 2014-05-10 |  |  |  |  |  |  |  |  |  |  |  |  |  |  |  |  |  |  |  |  |
|  | 10 | **GROUND FLOOR** |  | 2013-11-26 | 2014-04-14 |  |  |  |  |  |  |  |  |  |  |  |  |  |  |  |  |  |  |  |  |
| DUKHCONP2AZ1ELGF4000 |  | Fixing of wall conduits & switch socket boxes | 20d | 2013-11-26 | 2013-12-19 | DUKHCONP2AZ1ARGF3000 FF+7d, DUKHCONP2AMKELGF4000, DUKHCONP2AZ1ARGF3000 SS+7d | -56d | 0d | LABOR- SUBCONTRACTOR [84.75 h]; ELECTRICIANS SK [410.2 h]; SOCKET BOXES QTY [185 ea]; CODUITS QTY [185 lm] | 19,845 | 10 |  | 2AP1EWGF10 | DUKHCON2AP1ELGF4000 | DUKHCONP2AZ1ELGF4000 | DH | CON | 2A | Z1 | MEP | EW | GF | B06 | B06-D09 | RSE-2A |
| DUKHCONP2AZ1ELGF4005 |  | Cable tray & trunking installation | 20d | 2013-12-04 | 2013-12-28 | DUKHCONP2AZ1ELGF4000 SS+7d, DUKHCONP2AMKELGF4005, DUKHCONP2AZ1ELGF4000 FF+7d | -50d | 0d | LABOR- SUBCONTRACTOR [360 h]; ELECTRICIANS SK [1344 h]; CABLE TRAY QTY [240 lm] | 8,250 | 15 |  | 2AP1EWGF15 | DUKHCON2AP1ELGF4005 | DUKHCONP2AZ1ELGF4005 | DH | CON | 2A | Z1 | MEP | EW | GF | B06 | B06-D09 | RSE-2A |
| DUKHCONP2AZ1ELGF4010 |  | Installation of wiring & Main Cabling | 20d | 2013-12-12 | 2014-01-05 | DUKHCONP2AZ1ELGF4005 SS+7d, DUKHCONP2AZ1ELGF4005 FF+7d, DUKHCONP2AMKELGF4010 | -22d | 34d | LABOR- SUBCONTRACTOR [75 h]; ELECTRICIANS SK [270.2 h]; CABLE QTY [240 lm] | 59,535 | 20 |  | 2AP1EWGF20 | DUKHCON2AP1ELGF4010 | DUKHCONP2AZ1ELGF4010 | DH | CON | 2A | Z1 | MEP | EW | GF | B06 | B06-D09 | RSE-2A |
| DUKHCONP2AZ1ELGF4020 |  | Installation of DBS,MCCB Accessories. | 20d | 2014-03-11 | 2014-04-02 | DUKHCONP2AZ1ARGF3060 SS+7d, DUKHCONP2AZ1ELGF4010 FF+5d, DUKHCONP2AZ1ELGF4010 SS+5d, DUKHCONP2AZ1ARGF3060 FF+7d, DUKHCONP2AMKELGF4020 | -15d | 0d | LABOR- SUBCONTRACTOR [30 h]; ELECTRICIANS SK [112 h]; MCCB QTY [50 ea]; DB QTY [5 ea] | 32,172 | 25 |  | 2AP1EWGF25 | DUKHCON2AP1ELGF4020 | DUKHCONP2AZ1ELGF4020 | DH | CON | 2A | Z1 | MEP | EW | GF | B06 | B06-D09 | RSE-2A |
| DUKHCONP2AZ1ELGF4015 |  | Install. of CAMS & Fire Fighting Accessories | 20d | 2014-03-19 | 2014-04-10 | DUKHCONP2AZ1ARGF3060 SS+14d, DUKHCONP2AMKELGF4015, DUKHCONP2AZ1ARGF3060 FF+14d | -50d | 0d | MECHANICALS SK [594 h]; SMOKE DETECTOR POINTS QTY [105 ea]; FIRE EXTINGUISHER QTY [5 ea]; LABOR- SUBCONTRACTOR [330 h] | 44,394 | 35 |  | 2AP1EWGF35 | DUKHCON2AP1ELGF4015 | DUKHCONP2AZ1ELGF4015 | DH | CON | 2A | Z1 | MEP | EW | GF | B06 | B06-D09 | RSE-2A |
| DUKHCONP2AZ1ELGF4025 |  | Installation of Lighting fixtures & Accessories | 20d | 2014-03-23 | 2014-04-14 | DUKHCONP2AZ1ARGF3060 SS+10d, DUKHCONP2AMKELGF4025, DUKHCONP2AZ1ELGF4020 FF+10d, DUKHCONP2AZ1ARGF3060 FF+10d, DUKHCONP2AZ1ELGF4020 SS+10d | -15d | 0d | LABOR- SUBCONTRACTOR [114.75 h]; ELECTRICIANS SK [214.2 h]; LIGHTS QTY [95 ea] | 82,740 | 30 |  | 2AP1EWGF30 | DUKHCON2AP1ELGF4025 | DUKHCONP2AZ1ELGF4025 | DH | CON | 2A | Z1 | MEP | EW | GF | B06 | B06-D09 | RSE-2A |
| DUKHCONP2AZ1ELGF4030 |  | Installation of Telephone System | 20d | 2014-03-23 | 2014-04-14 | DUKHCONP2AZ1ARGF3060 FF+5d, DUKHCONP2AZ1ELGF4020 SS+10d, DUKHCONP2AZ1ELGF4020 FF+10d, DUKHCONP2AZ1ARGF3060 SS+5d, DUKHCONP2AZ1MSEX5010, DUKHCONP2AMKELGF4030 | -12d | 0d | ELECTRICIANS SK [112 h]; TELEPHONE SOCKETS QTY [10 ea]; LABOR- SUBCONTRACTOR [15 h] | 36,002 | 40 |  | 2AP1EWGF40 | DUKHCON2AP1ELGF4030 | DUKHCONP2AZ1ELGF4030 | DH | CON | 2A | Z1 | MEP | EW | GF | B06 | B06-D09 | RSE-2A |
|  | 20 | **ROOF** |  | 2014-04-06 | 2014-05-10 |  |  |  |  |  |  |  |  |  |  |  |  |  |  |  |  |  |  |  |  |
| DUKHCONP2AZ1ELRF4070 |  | Installation of Isolator | 18d | 2014-04-06 | 2014-04-26 | DUKHCONP2AZ1ELGF4010 FF+10d, DUKHCONP2AZ1ELGF4025 SS+10d, DUKHCONP2AZ1ELGF4025 FF+10d, DUKHCONP2AZ1ELGF4030 FF+7d, DUKHCONP2AZ1ARRF3645 SS+7d, DUKHCONP2AZ1ELGF4030 SS+5d, DUKHCONP2AZ1ARRF3645 FF+7d, DUKHCONP2AMKELRF4070, DUKHCONP2AZ1ELGF4010 SS+10d | -15d | 0d | LABOR- SUBCONTRACTOR [105 h]; ELECTRICIANS SK [196 h]; ISOLATOR QTY [35 ea] | 18,648 | 10 |  | 2AP1EWRF10 | DUKHCON2AP1ELRF4070 | DUKHCONP2AZ1ELRF4070 | DH | CON | 2A | Z1 | MEP | EW | RF | B06 | B06-D09 | RSE-2A |
| DUKHCONP2AZ1ELRF4075 |  | Installation of TV Dish Antenna | 20d | 2014-04-17 | 2014-05-10 | DUKHCONP2AMKELRF4075, DUKHCONP2AZ1ELRF4070 FF+10d, DUKHCONP2AZ1ELRF4070 SS+10d | -15d | 0d | LABOR- SUBCONTRACTOR [45 h]; ELECTRICIANS SK [112 h]; CONTROL BOX QTY [5 ea]; SWITCHING BOX QTY [5 ea] | 19,763 | 15 |  | 2AP1EWRF15 | DUKHCON2AP1ELRF4075 | DUKHCONP2AZ1ELRF4075 | DH | CON | 2A | Z1 | MEP | EW | RF | B06 | B06-D09 | RSE-2A |
|  | 15 | **PLUMBING, DRAINAGE & FIRE FIGHTING WORKS** |  | 2013-08-05 | 2014-04-29 |  |  |  |  |  |  |  |  |  |  |  |  |  |  |  |  |  |  |  |  |
|  | 10 | **GROUND FLOOR** |  | 2013-08-05 | 2014-04-29 |  |  |  |  |  |  |  |  |  |  |  |  |  |  |  |  |  |  |  |  |
| DUKHCONP2AZ1PLUG4300 |  | Drainage / Storm Pipes in Grade Slab | 20d | 2013-08-05 | 2013-08-31 | DUKHCONP2AZ1STUG1040 FF+11d, DUKHCONP2AZ1STUG1040 SS+10d, DUKHPROGEN00PRDV3060, DUKHPROGEN00PRDV3070 | -63d | 0d | LABOR- SUBCONTRACTOR [42 h]; MECHANICALS SK [140.4 h]; DRAINAGE PIPES QTY [252 lm] | 10,110 | 10 |  | 2AP1PLUG10 | DUKHCON2AP1PLUG4300 | DUKHCONP2AZ1PLUG4300 | DH | CON | 2A | Z1 | ST | SB | UG | B06 | B06-D07 | RSE-2A |
| DUKHCONP2AZ1PLGF4305 |  | Installation of Plumbing pipes & testing | 20d | 2013-11-27 | 2013-12-21 | DUKHCONP2AZ1ARGF3000 SS+8d, DUKHCONP2AZ1ARGF3000 FF+8d, DUKHCONP2AMKPLGF4305 | -57d | 0d | LABOR- SUBCONTRACTOR [260.25 h]; MECHANICALS SK [935.55 h]; PLUMB PIPES QTY [865 lm] | 54,060 | 10 |  | 2AP1PLGF10 | DUKHCON2AP1PLGF4305 | DUKHCONP2AZ1PLGF4305 | DH | CON | 2A | Z1 | MEP | PL | GF | B06 | B06-D07 | RSE-2A |
| DUKHCONP2AZ1PLGF4310 |  | Installation of Drainage pipes &testing | 18d | 2013-11-30 | 2013-12-21 | DUKHCONP2AZ1PLGF4305 FF, DUKHCONP2AZ1PLGF4305 SS, DUKHCONP2AZ1ARGF3000 SS+7d, DUKHCONP2AMKPLGF4310, DUKHCONP2AZ1ARGF3000 FF+8d | -33d | 0d | LABOR- SUBCONTRACTOR [15 h]; MECHANICALS SK [44.55 h]; DRAINAGE PIPES QTY [85 lm] | 2,110 | 15 |  | 2AP1PLGF15 | DUKHCON2AP1PLGF4310 | DUKHCONP2AZ1PLGF4310 | DH | CON | 2A | Z1 | MEP | PL | GF | B06 | B06-D07 | RSE-2A |
| DUKHCONP2AZ1PLGF4315 |  | Sanitary Fittings & Accessories | 20d | 2014-03-20 | 2014-04-12 | DUKHCONP2AZ1PLGF4310 FF+5d, DUKHCONP2AZ1ARGF3065 SS+5d, DUKHCONP2AMKPLGF4315, DUKHCONP2AZ1PLGF4310 SS+5d, DUKHCONP2AZ1ARGF3065 FF+5d | -56d | 0d | LABOR- SUBCONTRACTOR [65.25 h]; MECHANICALS SK [117.45 h]; SANITARY ACC QTY [110 ea] | 49,398 | 20 |  | 2AP1PLGF20 | DUKHCON2AP1PLGF4315 | DUKHCONP2AZ1PLGF4315 | DH | CON | 2A | Z1 | MEP | PL | GF | B06 | B06-D07 | RSE-2A |
| DUKHCONP2AZ1PLGF4320 |  | Installation of Water Heater | 15d | 2014-04-13 | 2014-04-29 | DUKHCONP2AZ1ARGF3060 SS+5d, DUKHCONP2AZ1ARGF3060 FF+5d, DUKHCONP2AZ1PLGF4315, DUKHCONP2AMKPLGF4320 | -1d | 0d | LABOR- SUBCONTRACTOR [45 h]; MECHANICALS SK [81 h]; WATER HEATER QTY [15 ea] | 5,418 | 25 |  | 2AP1PLGF25 | DUKHCON2AP1PLGF4320 | DUKHCONP2AZ1PLGF4320 | DH | CON | 2A | Z1 | MEP | PL | GF | B06 | B06-D07 | RSE-2A |
|  | 20 | **ROOF** |  | 2014-01-30 | 2014-02-17 |  |  |  |  |  |  |  |  |  |  |  |  |  |  |  |  |  |  |  |  |
| DUKHCONP2AZ1PLRF4350 |  | Installation of Rain water Pipes | 15d | 2014-01-30 | 2014-02-17 | DUKHCONP2AZ1AREL3665 SS+7d, DUKHCONP2AZ1AREL3665 FF+7d, DUKHCONP2AZ1ARRF3645 FF+5d, DUKHCONP2AZ1PLGF4305 FF+5d, DUKHCONP2AZ1PLGF4305 SS+5d, DUKHCONP2AZ1PLGF4310 FF+5d, DUKHCONP2AMKPLRF4350, DUKHCONP2AZ1PLGF4310 SS+5d, DUKHCONP2AZ1ARRF3645 SS+5d | -32d | 1d | LABOR- SUBCONTRACTOR [50.25 h]; MECHANICALS SK [171.45 h]; RAINWATER PIPES QTY [80 lm] | 46,246 | 15 |  | 2AP1PLRF15 | DUKHCON2AP1PLRF4350 | DUKHCONP2AZ1PLRF4350 | DH | CON | 2A | Z1 | MEP | PL | RF | B06 | B06-D07 | RSE-2A |

Notes:
- DUKHCONP2AZ1AREL3665: Expenses: P2A-Finishes 25680
- DUKHCONP2AZ1AREL3680: Expenses: P2A-Painting and Decorating 25228
- DUKHCONP2AZ1ELGF4000: Expenses: P2A-Electrical Installations 19845
- DUKHCONP2AZ1ELGF4005: Expenses: P2A-Electrical Installations 8250
- DUKHCONP2AZ1ELGF4010: Expenses: P2A-Electrical Installations 59535
- DUKHCONP2AZ1ELGF4020: Expenses: P2A-Electrical Installations 32172
- DUKHCONP2AZ1ELGF4015: Expenses: P2A-Electrical Installations 44394
- DUKHCONP2AZ1ELGF4025: Expenses: P2A-Electrical Installations 82740
- DUKHCONP2AZ1ELGF4030: Expenses: P2A-Electrical Installations 36002
- DUKHCONP2AZ1ELRF4070: Expenses: P2A-Electrical Installations 18648
- DUKHCONP2AZ1ELRF4075: Expenses: P2A-Electrical Installations 19763
- DUKHCONP2AZ1PLUG4300: Expenses: P2A-Plumbing and Drainage works 10110
- DUKHCONP2AZ1PLGF4305: Expenses: P2A-Plumbing and Drainage works 54060
- DUKHCONP2AZ1PLGF4310: Expenses: P2A-Plumbing and Drainage works 2110
- DUKHCONP2AZ1PLGF4315: Expenses: P2A-Plumbing and Drainage works 49398
- DUKHCONP2AZ1PLGF4320: Expenses: P2A-Plumbing and Drainage works 5418
- DUKHCONP2AZ1PLRF4350: Expenses: P2A-Plumbing and Drainage works 46246

| ID | WBS | Activity | Duration | Start | Finish | Predecessors | Total float | Free float | Resources | Cost | CODE | P3 ACTID | P6 ID (old) | NP61D | PROJECT | PHASES | PACKAGE | PART | ELEMENTS | STEP | FLOORS | BILL NOS | BILL DIVISION | RES PACK |
| --- | --- | --- | --- | --- | --- | --- | --- | --- | --- | --- | --- | --- | --- | --- | --- | --- | --- | --- | --- | --- | --- | --- | --- | --- |
|  | 20 | **AC WORKS** |  | 2013-12-17 | 2014-05-14 |  |  |  |  |  |  |  |  |  |  |  |  |  |  |  |  |  |  |  |
|  | 10 | **GROUND FLOOR** |  | 2013-12-17 | 2014-05-03 |  |  |  |  |  |  |  |  |  |  |  |  |  |  |  |  |  |  |  |
| DUKHCONP2AZ1ACGF4600 |  | Installation AC Pipes | 20d | 2013-12-17 | 2014-01-09 | DUKHCONP2AZ1ARGF3005 SS+7d, DUKHCONP2AMKACGF4600, DUKHCONP2AZ1ARGF3005 FF+7d | -35d | 0d | LABOR- SUBCONTRACTOR [99.75 h]; AC TECHNICIAN SK [364 h]; AC PIPES QTY [985 lm] | 3,593 | 10 | 2AP1ACGF10 | DUKHCON2AP1ACGF4600 | DUKHCONP2AZ1ACGF4600 | DH | CON | 2A | Z1 | MEP | AC | GF | B06 | B06-D08 | RSE-2A |
| DUKHCONP2AZ1ACGF4605 |  | Fixing of Ventilation Equipments | 25d | 2014-03-19 | 2014-04-16 | DUKHCONP2AZ1ARGF3060 FF+14d, DUKHCONP2AZ1ACGF4600 SS+10d, DUKHCONP2AZ1ARGF3060 SS+14d, DUKHCONP2AZ1ACGF4600 FF+10d, DUKHCONP2AMKACGF4605 | -29d | 0d | LABOR- SUBCONTRACTOR [15 h]; AC TECHNICIAN SK [56 h]; VENTILIATION EQP QTY [20 ea] | 12,291 | 15 | 2AP1ACGF15 | DUKHCON2AP1ACGF4605 | DUKHCONP2AZ1ACGF4605 | DH | CON | 2A | Z1 | MEP | AC | GF | B06 | B06-D08 | RSE-2A |
| DUKHCONP2AZ1ACGF4610 |  | Fixing of Split AC | 20d | 2014-04-10 | 2014-05-03 | DUKHCONP2AZ1ACGF4605 SS+14d, DUKHCONP2AMKACGF4610, DUKHCONP2AZ1ACGF4605 FF+14d | -29d | 0d | LABOR- SUBCONTRACTOR [45 h]; AC TECHNICIAN SK [84 h]; SPILIT UNIT QTY [15 ea] | 15,728 | 20 | 2AP1ACGF20 | DUKHCON2AP1ACGF4610 | DUKHCONP2AZ1ACGF4610 | DH | CON | 2A | Z1 | MEP | AC | GF | B06 | B06-D08 | RSE-2A |
|  | 20 | **ROOF** |  | 2014-01-04 | 2014-05-14 |  |  |  |  |  |  |  |  |  |  |  |  |  |  |  |  |  |  |  |
| DUKHCONP2AZ1ACRF4630 |  | Installation of Refrigerant Pipes | 20d | 2014-01-04 | 2014-01-26 | DUKHCONP2AZ1ACGF4600 FF+14d, DUKHCONP2AZ1ARRF3645 FF+14d, DUKHCONP2AZ1ARRF3645 SS+14d, DUKHCONP2AZ1ACGF4600 SS+14d, DUKHCONP2AMKACRF4630 | 3d | 6d | LABOR- SUBCONTRACTOR [5.25 h]; AC TECHNICIAN SK [9.8 h]; AC PIPES QTY [35 lm] | 2,790 | 10 | 2AP1ACRF10 | DUKHCON2AP1ACRF4630 | DUKHCONP2AZ1ACRF4630 | DH | CON | 2A | Z1 | MEP | AC | RF | B06 | B06-D08 | RSE-2A |
| DUKHCONP2AZ1ACRF4635 |  | Installation of Condensing Unit | 25d | 2014-04-16 | 2014-05-14 | DUKHCONP2AZ1ACGF4610 SS+5d, DUKHCONP2AZ1ACGF4610 FF+5d, DUKHCONP2AZ1ACRF4630 SS+10d, DUKHCONP2AMKACRF4635, DUKHCONP2AZ1ACRF4630 FF+10d | -24d | 0d | LABOR- SUBCONTRACTOR [24.75 h]; AC TECHNICIAN SK [84 h]; AC UNITS QTY [15 ea] | 20,529 | 15 | 2AP1ACRF15 | DUKHCON2AP1ACRF4635 | DUKHCONP2AZ1ACRF4635 | DH | CON | 2A | Z1 | MEP | AC | RF | B06 | B06-D08 | RSE-2A |
|  | 25 | **EXTERNAL WORKS** |  | 2013-12-05 | 2014-06-24 |  |  |  |  |  |  |  |  |  |  |  |  |  |  |  |  |  |  |  |
|  | 10 | **MISCELLANEOUS** |  | 2013-12-05 | 2014-06-24 |  |  |  |  |  |  |  |  |  |  |  |  |  |  |  |  |  |  |  |
| DUKHCONP2AZ1MSEX5020 |  | Construction Entrance Ramp | 20d | 2013-12-05 | 2013-12-29 | DUKHCONP2AZ1STRF2065 SS, DUKHCONP2AZ1STRF2065 FF, DUKHCONP2AMKMSEX5020 SS | -33d | 0d | SCREED MASON SK [113 h]; CONCRETE MASON SK [27 h]; INTERLOCK MASON SK [113 h]; LABOR- SUBCONTRACTOR [65.25 h]; LABOR- SUBCONTRACTOR [45 h]; SCREED QTY [140 Sqm]; CONCRETE QTY [14 Cum]; INTERLOCK QTY [140 Sqm] | 35,840 | 10 | 2AP1MSEX10 | DUKHCON2AP1MS005020 | DUKHCONP2AZ1MSEX5020 | DH | CON | 2A | Z1 | EX | MS |  | B06 | B06-D12 | RSE-2A |
| DUKHCONP2AZ1MSEX5055 |  | Installation Steel Door | 20d | 2013-12-11 | 2014-01-04 | DUKHCONP2AZ1MSEX5020 SS+5d | -28d | 0d | LABOR- SUBCONTRACTOR [80 h]; GATE QTY [6 ea]; GATE ERECTOR SK [100 h] | 23,090 | 20 | 2AP1MSEX35 | DUKHCON2AP1MS005055 | DUKHCONP2AZ1MSEX5055 | DH | CON | 2A | Z1 | EX | MS |  | B06 | B06-D06 | RSE-2A |
| DUKHCONP2AZ1MSEX5000 |  | Construction of Manholes | 25d | 2013-12-14 | 2014-01-12 | DUKHCONP2AZ1STRF2065 FF+5d, DUKHCONP2AZ1PLGF4310 SS+12d, DUKHCONP2AZ1PLGF4310 FF+10d, DUKHCONP2AZ1STRF2065 SS+5d, DUKHCONP2AMKMSEX5000 | -21d | 0d | MANHOLES SK [80 h]; MANHOLES QTY [10 ea]; LABOR- SUBCONTRACTOR [30 h] | 11,700 | 25 | 2AP1MSEX25 | DUKHCON2AP1MS005000 | DUKHCONP2AZ1MSEX5000 | DH | CON | 2A | Z1 | EX | MS |  | B06 | B06-D12 | RSE-2A |
| DUKHCONP2AZ1MSEX5025 |  | SS.Handrails and Balustrades | 20d | 2013-12-24 | 2014-01-15 | DUKHCONP2AZ1MSEX5020 FF+10d, DUKHCONP2AMKMSEX5025, DUKHCONP2AZ1MSEX5020 SS+10d, DUKHCONP2AZ1MSEX5055 SS+10d | -28d | 0d | LABOR- SUBCONTRACTOR [39.75 h]; S.S.BALUSTRADE QTY [35 lm]; HANDRAIL ERECTOR SKILLED [73 h] | 35,622 | 15 | 2AP1MSEX15 | DUKHCON2AP1MS005025 | DUKHCONP2AZ1MSEX5025 | DH | CON | 2A | Z1 | EX | MS |  | B06 | B06-D12 | RSE-2A |
| DUKHCONP2AZ1MSEX5005 |  | Construction of Soak pit, Chambers | 25d | 2013-12-29 | 2014-01-26 | DUKHCONP2AMKMSEX5005, DUKHCONP2AZ1MSEX5000 SS+12d, DUKHCONP2AZ1MSEX5000 FF+12d | -21d | 0d | MANHOLES SK [40 h]; LABOR- SUBCONTRACTOR [15 h]; SOAKPIT QTY [5 ea] | 18,755 | 30 | 2AP1MSEX30 | DUKHCON2AP1MS005005 | DUKHCONP2AZ1MSEX5005 | DH | CON | 2A | Z1 | EX | MS |  | B06 | B06-D12 | RSE-2A |
| DUKHCONP2AZ1MSEX5015 |  | Construction of grease Trap | 20d | 2014-01-18 | 2014-02-09 | DUKHCONP2AZ1MSEX5005 SS+12d, DUKHCONP2AMKMSEX5015, DUKHCONP2AZ1MSEX5005 FF+12d | -21d | 0d | LABOR- SUBCONTRACTOR [39.75 h]; GREASE TRAP QTY [50 lm]; HANDRAIL ERECTOR SKILLED [100 h] | 14,185 | 20 | 2AP1MSEX20 | DUKHCON2AP1MS005015 | DUKHCONP2AZ1MSEX5015 | DH | CON | 2A | Z1 | EX | MS |  | B06 | B06-D07 | RSE-2A |
| DUKHCONP2AZ1MSEX5010 |  | Telephone cable laying | 25d | 2014-02-10 | 2014-03-11 | DUKHCONP2AZ1MSEX5015 | -3d | 9d | LABOR- SUBCONTRACTOR [125 h]; ELECTRICIANS SK [125 h]; CONCRETE MASON SK [125 h] | 992 |  | 2AP1MSEX40 | DUKHCON2AP1MS005010 | DUKHCONP2AZ1MSEX5010 | DH | CON | 2A | Z1 | EX | MS |  | B06 | B06-D12 | RSE-2A |
| DUKHCONP2AZ1MSEX5335 |  | Aluminum Roll-up Shutter with 2m Wall | 25d | 2014-05-27 | 2014-06-24 | DUKHCONI2AZ1BWGL5325 | -34d | 2d | LABOR- SUBCONTRACTOR [200 h]; DOOR ERECTOR SK [200 h]; ROLLING SHUTTER QTY [6 ea] | 25,259 | 25 | 2AP1BWFR25 | DUKHCON2AP1MS005335 | DUKHCONP2AZ1MSEX5335 | DH | CON | 2A | Z1 | EX | MS |  | B06 | B06-D12 | RSE-2A |
|  | 15 | **WATER TANK ENCLOSURE** |  | 2013-12-09 | 2014-03-16 |  |  |  |  |  |  |  |  |  |  |  |  |  |  |  |  |  |  |  |
| DUKHCONP2AZ1WEEX5030 |  | Excavation | 20d | 2013-12-09 | 2014-01-01 | DUKHCONP2AMKWEEX5030, DUKHCONP2AZ1STGF2010 SS | -48d | 0d | LABOR- SUBCONTRACTOR [30 h]; EXCAVATION QTY [50 Cum]; LOADER [20 h]; POCLAIN [40 h]; TRUCK [20 h]; EQUIP OPERATORS [80 h] | 560 | 10 | 2AP1WEEX10 | DUKHCON2AP1WE005030 | DUKHCONP2AZ1WEEX5030 | DH | CON | 2A | Z1 | EX | WE |  | B06 | B06-D12 | RSE-2A |
| DUKHCONP2AZ1WEEX5035 |  | Construction of Raft | 25d | 2013-12-17 | 2014-01-15 | DUKHCONP2AZ1WEEX5030 SS+5d, DUKHCONP2AZ1WEEX5030 FF+10d, DUKHCONP2AMKWEEX5035 | -38d | 0d | CONCRETE MASON SK [100 h]; LABOR- SUBCONTRACTOR [75 h]; CONCRETE QTY [50 Cum] | 8,550 | 15 | 2AP1WEEX15 | DUKHCON2AP1WE005035 | DUKHCONP2AZ1WEEX5035 | DH | CON | 2A | Z1 | EX | WE |  | B06 | B06-D12 | RSE-2A |
| DUKHCONP2AZ1WEEX5040 |  | Block works & Plastering | 25d | 2013-12-28 | 2014-01-25 | DUKHCONP2AZ1WEEX5035 SS+8d, DUKHCONP2AZ1WEEX5035 FF+8d, DUKHCONP2AMKWEEX5040 | -38d | 0d | BLOCK MASON SK [140 h]; PLASTER MASON SK [227 h]; LABOR- SUBCONTRACTOR [210 h]; BLOCK QTY [70 Sqm]; PLASTER QTY [140 Sqm] | 9,586 | 20 | 2AP1WEEX20 | DUKHCON2AP1WE005040 | DUKHCONP2AZ1WEEX5040 | DH | CON | 2A | Z1 | EX | WE |  | B06 | B06-D12 | RSE-2A |
| DUKHCONP2AZ1WEEX5045 |  | Flooring & Painting | 25d | 2014-01-08 | 2014-02-05 | DUKHCONP2AZ1WEEX5040 FF+10d, DUKHCONP2AZ1WEEX5040 SS+10d, DUKHCONP2AMKWEEX5045 | -38d | 0d | SCREED MASON SK [47 h]; LABOR- SUBCONTRACTOR [20.25 h]; LABOR- SUBCONTRACTOR [60 h]; SCREED QTY [55 Sqm]; PAINT QTY [195 Sqm]; PAINTERS SK [153 h] | 7,965 | 25 | 2AP1WEEX25 | DUKHCON2AP1WE005045 | DUKHCONP2AZ1WEEX5045 | DH | CON | 2A | Z1 | EX | WE |  | B06 | B06-D12 | RSE-2A |
| DUKHCONP2AZ1WEEX5050 |  | Installation of Steel Gate | 20d | 2014-01-26 | 2014-02-18 | DUKHCONP2AZ1MSEX5025 SS+10d, DUKHCONP2AZ1MSEX5025 FF+10d, DUKHCONP2AMKWEEX5050, DUKHCONP2AZ1WEEX5045 FF+10d, DUKHCONP2AZ1WEEX5045 SS+5d | -38d | 0d | LABOR- SUBCONTRACTOR [45 h]; LADDER QTY [5 ea]; GATE QTY [5 ea]; LADDER ERECTOR SK [40 h]; GATE ERECTOR SK [40 h] | 27,030 | 30 | 2AP1WEEX30 | DUKHCON2AP1WE005050 | DUKHCONP2AZ1WEEX5050 | DH | CON | 2A | Z1 | EX | WE |  | B06 | B06-D12 | RSE-2A |
| DUKHCONP2AZ1WEEX5060 |  | Structural steel & SS Shed cover installation | 25d | 2014-02-01 | 2014-03-02 | DUKHCONP2AZ1WEEX5050 FF+10d, DUKHCONP2AZ1WEEX5050 SS+5d, DUKHCONP2AMKWEEX5060 | -38d | 0d | STRUCTURAL STEEL QTY [365 kg]; SS SHED COVER QTY [50 Sqm]; STEEL ERECTOR SK [260 h]; LABOR- SUBCONTRACTOR [185.25 h] | 27,764 | 35 | 2AP1WEEX35 | DUKHCON2AP1WE005060 | DUKHCONP2AZ1WEEX5060 | DH | CON | 2A | Z1 | EX | WE |  | B06 | B06-D12 | RSE-2A |
| DUKHCONP2AZ1WEEX5065 |  | Install. of Water Tank,Chiller,Pump & Meter | 25d | 2014-02-13 | 2014-03-13 | DUKHCONP2AZ1PLRF4350 FF+5d, DUKHCONP2AZ1PLRF4350 SS+5d, DUKHCONP2AZ1MSEX5015 FF+5d, DUKHCONP2AZ1WEEX5060 SS+10d, DUKHCONP2AZ1MSEX5015 SS+5d, DUKHCONP2AZ1WEEX5060 FF+10d, DUKHCONP2AMKWEEX5065 | -38d | 0d | LABOR- SUBCONTRACTOR [75 h]; AC TECHNICIAN SK [56 h]; MECHANICALS SK [108 h]; WATER TANK QTY [5 ea]; CHILLER QTY [50 ea]; PUMP QTY [5 ea] | 375,375 | 40 | 2AP1WEEX40 | DUKHCON2AP1WE005065 | DUKHCONP2AZ1WEEX5065 | DH | CON | 2A | Z1 | EX | WE |  | B06 | B06-D07 | RSE-2A |
| DUKHCONP2AZ1WEEX5070 |  | Installation ladder for water Tank | 20d | 2014-02-22 | 2014-03-16 | DUKHCONP2AZ1WEEX5065 SS+7d | -28d | 5d | LABOR- SUBCONTRACTOR [100 h]; LADDER QTY [6 ea]; LADDER ERECTOR SK [100 h] | 8,550 | 40 | 2AP1WEEX45 | DUKHCON2AP1WE005070 | DUKHCONP2AZ1WEEX5070 | DH | CON | 2A | Z1 | EX | WE |  | B06 | B06-D06 | RSE-2A |

Notes:
- DUKHCONP2AZ1ACGF4600: Expenses: P2A-Air-conditioning and Ventilation works 3593
- DUKHCONP2AZ1ACGF4605: Expenses: P2A-Air-conditioning and Ventilation works 12291
- DUKHCONP2AZ1ACGF4610: Expenses: P2A-Air-conditioning and Ventilation works 15728
- DUKHCONP2AZ1ACRF4630: Expenses: P2A-Air-conditioning and Ventilation works 2790
- DUKHCONP2AZ1ACRF4635: Expenses: P2A-Air-conditioning and Ventilation works 20529
- DUKHCONP2AZ1MSEX5020: Expenses: P2A-External works within the Plot Curtilage 35840
- DUKHCONP2AZ1MSEX5055: Expenses: P2A-Metal work 23090
- DUKHCONP2AZ1MSEX5000: Expenses: P2A-External works within the Plot Curtilage 11700
- DUKHCONP2AZ1MSEX5025: Expenses: P2A-External works within the Plot Curtilage 35622
- DUKHCONP2AZ1MSEX5005: Expenses: P2A-External works within the Plot Curtilage 18755
- DUKHCONP2AZ1MSEX5015: Expenses: P2A-Plumbing and Drainage works 14185
- DUKHCONP2AZ1MSEX5010: Expenses: P2A-External works within the Plot Curtilage 992
- DUKHCONP2AZ1MSEX5335: Expenses: P2A-External works within the Plot Curtilage 25259
- DUKHCONP2AZ1WEEX5030: Expenses: P2A-External works within the Plot Curtilage 560
- DUKHCONP2AZ1WEEX5035: Expenses: P2A-External works within the Plot Curtilage 8550
- DUKHCONP2AZ1WEEX5040: Expenses: P2A-External works within the Plot Curtilage 9586
- DUKHCONP2AZ1WEEX5045: Expenses: P2A-External works within the Plot Curtilage 7965
- DUKHCONP2AZ1WEEX5050: Expenses: P2A-External works within the Plot Curtilage 27030
- DUKHCONP2AZ1WEEX5060: Expenses: P2A-External works within the Plot Curtilage 27764
- DUKHCONP2AZ1WEEX5065: Expenses: P2A-Plumbing and Drainage works 375375
- DUKHCONP2AZ1WEEX5070: Expenses: P2A-Metal work 8550
